# Apex-shrine

How a schedule from Primavera P6 changed from version to version. A marks actual dates.

## Version 4 (data date 2025-04-04, saved 2026-09-20, file APX_2025-04-04.xer)

| ID | WBS | Task | Duration | Start | Finish | Predecessors | Complete | Total float |
| --- | --- | --- | --- | --- | --- | --- | --- | --- |
|  | 1 | **Project Genisis** |  | 2023-10-04 | 2027-03-01 |  |  |  |
| PG-32433 |  | Project Close Out | 4.67d | 2027-02-23 | 2027-03-01 | PG-32397, PG-31533, PG-32387, PG-32386, PG-32378, PG-32373, PG-32376, PG-32375, PG-32374, PG-32377, PG-31528 |  | 0d |
|  | 1.1 | **Contractor Appointment and Site team mobilisation** |  | 2023-10-04 | 2023-11-09 |  |  |  |
| PG-0998 |  | General Contractor appointment | 0.67d | 2023-10-04 A | 2023-10-04 A |  | 100% |  |
| PG-0999 |  | GC Team Mobilisation | 29.67d | 2023-10-05 A | 2023-11-09 A | PG-0998 | 100% |  |
|  | 1.2 | **Procurement and Materials requirement to Site** |  | 2023-10-04 | 2026-07-22 |  |  |  |
|  | 1.2.1 | **Modular Aluminium Shuttering** |  | 2023-10-23 | 2024-08-09 |  |  |  |
| PG-10000 |  | Shell Drawings Approval & Signoff | 44.67d | 2023-10-23 A | 2023-12-15 A | PG-0998 FF+60d | 100% |  |
| PG-10001 |  | Purchase Order works ( By Contractor to F/W Vendor ) | 1.67d | 2023-12-15 A | 2023-12-18 A | PG-10000 | 100% |  |
| PG-10002 |  | Materials to reach at site for marking | 59.67d | 2024-05-07 A | 2024-07-16 A | PG-10001 FS+120d | 100% |  |
| PG-10003 |  | Marking and setting up of materials area wise | 59.67d | 2024-05-30 A | 2024-08-09 A | PG-10002 FF+20d | 100% |  |
|  | 1.2.2 | **Tiles & Marble Supply** |  | 2024-11-08 | 2026-07-03 |  |  |  |
|  | 1.2.2.1 | **Toilet dado and Floor tiles** |  | 2024-11-08 | 2026-04-17 |  |  |  |
| PG-10004 |  | Purchase Order works | 2d | 2024-11-08 A | 2024-11-11 A | PG-11750 FF+60d | 100% |  |
| PG-10005 |  | First Consignment Supply to site ( GF to 4th Floor ) | 10d | 2025-02-24 A | 2025-03-06 A | PG-10004 FS+90d | 100% |  |
| PG-10006 |  | Second Consignment Supply to site ( 5th to 14th Floor ) | 10d | 2025-06-02 | 2025-06-13 | PG-10005 FS+75d |  | 41.5d |
| PG-10007 |  | Third Consignment Supply to site ( 15th to 29th Floor ) | 9.67d | 2025-11-04 | 2025-11-15 | PG-10006 FS+120d |  | 41.5d |
| PG-10008 |  | Fourth Consignment Supply to site ( Balance Floor wise - 30th to 41st Floor ) | 10.67d | 2026-04-06 | 2026-04-17 | PG-10007 FS+120d |  | 268.5d |
|  | 1.2.2.2 | **Vitrified Floor Tiles including corridor Flooring & Cladding** |  | 2024-11-08 | 2026-07-03 |  |  |  |
| PG-10009 |  | Purchase Order works | 2d | 2024-11-08 A | 2024-11-11 A | PG-11750 FF+60d | 100% |  |
| PG-10010 |  | First Consignment Supply to site ( GF to 4th Floor ) | 10d | 2025-02-24 A | 2025-03-06 A | PG-10009 FS+90d | 100% |  |
| PG-10011 |  | Second Consignment Supply to site ( 5th to 14th Floor ) | 10d | 2025-05-27 | 2025-06-07 | PG-10010 FS+70d |  | 17.33d |
| PG-10012 |  | Third Consignment Supply to site ( 15th to 29th Floor ) | 10d | 2025-11-10 | 2025-11-21 | PG-10011 FS+130d |  | 17.33d |
| PG-10013 |  | Fourth Consignment Supply to site ( Balance Floor wise - 30th to 41st Floor ) | 10.67d | 2026-06-20 | 2026-07-03 | PG-10012 FS+180d |  | 17.33d |
|  | 1.2.3 | **CP & Sanitary Supply** |  | 2023-10-04 | 2025-03-10 |  |  |  |
| PG-10019 |  | Purchase Order works | 2d | 2023-10-04 A | 2023-10-06 A |  | 100% |  |
| PG-10020 |  | First Consignment Supply to site ( GF to 4th Floor ) | 9.67d | 2023-12-05 A | 2023-12-16 A | PG-10019 FF+60d | 100% |  |
| PG-10021 |  | Second Consignment Supply to site ( 5th to 14th Floor ) | 10.67d | 2024-02-13 A | 2024-02-26 A | PG-10020 FF+60d | 100% |  |
| PG-10022 |  | Third Consignment Supply to site ( 15th to 29th Floor ) | 9.67d | 2024-07-26 A | 2024-08-07 A | PG-10021 FF+140d | 100% |  |
| PG-10023 |  | Fourth Consignment Supply to site ( Balance Floor wise ) | 9.67d | 2025-02-25 A | 2025-03-10 A | PG-10022 FF+180d | 100% |  |
|  | 1.2.4 | **FRP Tanks Supply** |  | 2025-05-05 | 2025-12-01 |  |  |  |
| PG-10024 |  | Purchase Order works | 6.67d | 2025-05-05 | 2025-05-13 | PG-10165 |  | 211.58d |
| PG-10025 |  | Materials Supply to site ( Tower - 1, 2, 3, 9, 14, 18 & 19 ) | 28.67d | 2025-06-30 | 2025-08-02 | PG-10024 FF+70d |  | 211.58d |
| PG-10026 |  | Materials Supply to site ( Tower - 4, 8, 10 & 13 ) | 30.67d | 2025-08-01 | 2025-09-08 | PG-10025 FF+30d |  | 211.58d |
| PG-10027 |  | Materials Supply to site ( Tower - 5, 6, 7, 11, 12, 15, 16 & 17 ) | 28.67d | 2025-10-27 | 2025-12-01 | PG-10026 FF+70d |  | 211.58d |
|  | 1.2.5 | **Lift Supply** |  | 2025-04-22 | 2025-11-24 |  |  |  |
| PG-10028 |  | Purchase Order works | 7d | 2025-04-22 | 2025-04-30 | PG-10160 |  | 103.08d |
| PG-10029 |  | Materials Supply to site ( First Lot - T1, T2. T3,T4, T8, T9, T13, T14, T18 & T19 ) | 20d | 2025-08-13 | 2025-09-06 | PG-10028 FF+110d |  | 103.08d |
| PG-10030 |  | Materials Supply to site ( First Lot - T5, T6. T7,T11, T12, T15, T16 & T17 ) | 30d | 2025-10-18 | 2025-11-24 | PG-10029 FF+65d |  | 103.08d |
|  | 1.2.6 | **Electrical Panel Supply** |  | 2025-04-10 | 2025-08-25 |  |  |  |
| PG-10031 |  | Purchase Order works | 9.67d | 2025-04-10 | 2025-04-22 | PG-10572 |  | 212.51d |
| PG-10032 |  | Materials Supply to site | 28.67d | 2025-07-21 | 2025-08-25 | PG-10031, PG-10655 |  | 135.58d |
|  | 1.2.7 | **DG Supply** |  | 2023-10-04 | 2024-04-06 |  |  |  |
| PG-10033 |  | Purchase Order works | 8.67d | 2023-10-04 A | 2023-10-13 A |  | 100% |  |
| PG-10034 |  | Materials Supply to site | 28.67d | 2024-03-04 A | 2024-04-06 A | PG-10033 FS+120d | 100% |  |
|  | 1.2.8 | **Transformer Supply** |  | 2026-02-20 | 2026-07-22 |  |  |  |
| PG-10035 |  | Purchase Order works | 9.67d | 2026-02-20 | 2026-03-04 | PG-12661 |  | 103.33d |
| PG-10036 |  | Materials Supply to site | 29.67d | 2026-06-17 | 2026-07-22 | PG-10035 FF+120d |  | 103.33d |
|  | 1.2.9 | **STP Equipment Supply** |  | 2024-01-30 | 2024-05-08 |  |  |  |
| PG-10037 |  | Purchase Order works | 10d | 2024-01-30 A | 2024-02-10 A | PG-30510 FF+60d | 100% |  |
| PG-10038 |  | Materials Supply to site | 30d | 2024-04-03 A | 2024-05-08 A | PG-10037 FF+75d | 100% |  |
|  | 1.3 | **Construction** |  | 2023-10-04 | 2026-10-10 |  |  |  |
|  | 1.3.1 | **Building 1** |  | 2023-10-04 | 2026-10-10 |  |  |  |
|  | 1.3.1.1 | **Tower 1 ( 2B+G+23 ) TYP 4 Units - 94 Units** |  | 2023-10-27 | 2026-07-27 |  |  |  |
|  | 1.3.1.1.1 | **Foundation works** |  | 2023-10-27 | 2024-04-16 |  |  |  |
| PG-10047 |  | Setting out - Marking | 3d | 2023-10-27 A | 2023-10-31 A | PG-10844 FS+7d | 100% |  |
| PG-10048 |  | Excavation Works | 45d | 2023-10-31 A | 2023-12-23 A | PG-10047 | 100% |  |
| PG-10049 |  | Piling Works - 148 Nos | 38d | 2023-12-20 A | 2024-02-02 A | PG-10048 FF+35d | 100% |  |
| PG-10050 |  | Backfilling and Consolidation | 19.67d | 2024-01-24 A | 2024-02-17 A | PG-10049 FF+12d | 100% |  |
| PG-10051 |  | Waterproofing & PCC works | 15d | 2024-02-14 A | 2024-03-02 A | PG-10050 FF+12d | 100% |  |
| PG-10052 |  | Raft Reinforcement | 15d | 2024-03-02 A | 2024-03-20 A | PG-10051 FF+15d | 100% |  |
| PG-10053 |  | Raft Formwork | 8d | 2024-03-28 A | 2024-04-06 A | PG-10052 FF+15d | 100% |  |
| PG-10054 |  | Raft Concreting | 3d | 2024-04-12 A | 2024-04-16 A | PG-10053 FF+8d | 100% |  |
|  | 1.3.1.1.2 | **Structure works** |  | 2024-04-16 | 2025-08-18 |  |  |  |
|  | 1.3.1.1.2.1 | **LBF** |  | 2024-04-16 | 2024-05-14 |  |  |  |
|  | 1.3.1.1.2.1.1 | **Columns / shear walls** |  | 2024-04-16 | 2024-05-02 |  |  |  |
| PG-10055 |  | Reinforcement | 4d | 2024-04-16 A | 2024-04-20 A | PG-10054 | 100% |  |
| PG-10057 |  | Concrete | 9.5d | 2024-04-20 A | 2024-05-02 A | PG-10056 FF+5d | 100% |  |
| PG-10056 |  | Formwork | 4d | 2024-04-22 A | 2024-04-26 A | PG-10055 FF+5d | 100% |  |
|  | 1.3.1.1.2.1.2 | **Slab, Beams & Staircase** |  | 2024-05-02 | 2024-05-14 |  |  |  |

| ID | WBS | Task | Duration | Start | Finish | Predecessors | Complete |
| --- | --- | --- | --- | --- | --- | --- | --- |
| PG-10058 |  | Formwork | 3d | 2024-05-02 A | 2024-05-06 A | PG-10057 | 100% |
| PG-10059 |  | Reinforcement | 3d | 2024-05-08 A | 2024-05-11 A | PG-10058 FF+5d | 100% |
| PG-10060 |  | Concrete | 1d | 2024-05-13 A | 2024-05-14 A | PG-10059 FS+1d | 100% |
|  | 1.3.1.1.2.2 | **UBF** |  | 2024-05-14 | 2024-06-11 |  |  |
|  | 1.3.1.1.2.2.1 | **Columns / shear walls** |  | 2024-05-14 | 2024-05-30 |  |  |
| PG-10061 |  | Reinforcement | 4d | 2024-05-14 A | 2024-05-18 A | PG-10060 | 100% |
| PG-10063 |  | Concrete | 9.5d | 2024-05-18 A | 2024-05-30 A | PG-10062 FF+5d | 100% |
| PG-10062 |  | Formwork | 4d | 2024-05-20 A | 2024-05-24 A | PG-10061 FF+5d | 100% |
|  | 1.3.1.1.2.2.2 | **Slab, Beams & Staircase** |  | 2024-05-30 | 2024-06-11 |  |  |
| PG-10064 |  | Formwork | 3d | 2024-05-30 A | 2024-06-01 A | PG-10063 | 100% |
| PG-10065 |  | Reinforcement | 3d | 2024-06-05 A | 2024-06-07 A | PG-10064 FF+5d | 100% |
| PG-10066 |  | Concrete | 1d | 2024-06-10 A | 2024-06-11 A | PG-10065 FS+1d | 100% |
|  | 1.3.1.1.2.3 | **Ground Floor** |  | 2024-06-11 | 2024-07-04 |  |  |
|  | 1.3.1.1.2.3.1 | **Columns / shear walls** |  | 2024-06-11 | 2024-06-22 |  |  |
| PG-10067 |  | Reinforcement | 4d | 2024-06-11 A | 2024-06-15 A | PG-10066 | 100% |
| PG-10069 |  | Concrete | 7.5d | 2024-06-14 A | 2024-06-22 A | PG-10068 FF+3d | 100% |
| PG-10068 |  | Formwork | 4d | 2024-06-15 A | 2024-06-20 A | PG-10067 FF+4d | 100% |
|  | 1.3.1.1.2.3.2 | **Slab, Beams & Staircase** |  | 2024-06-24 | 2024-07-04 |  |  |
| PG-10070 |  | Formwork | 3d | 2024-06-24 A | 2024-06-26 A | PG-10069 | 100% |
| PG-10071 |  | Reinforcement | 3d | 2024-06-28 A | 2024-07-01 A | PG-10070 FF+4d | 100% |
| PG-10072 |  | Concrete | 1d | 2024-07-03 A | 2024-07-04 A | PG-10071 FS+1d | 100% |
|  | 1.3.1.1.2.4 | **Floor 01** |  | 2024-07-04 | 2024-07-27 |  |  |
|  | 1.3.1.1.2.4.1 | **Columns / shear walls** |  | 2024-07-04 | 2024-07-16 |  |  |
| PG-10073 |  | Reinforcement | 4d | 2024-07-04 A | 2024-07-09 A | PG-10072 | 100% |
| PG-10075 |  | Concrete | 7.5d | 2024-07-08 A | 2024-07-16 A | PG-10074 FF+3d | 100% |
| PG-10074 |  | Formwork | 4d | 2024-07-09 A | 2024-07-13 A | PG-10073 FF+4d | 100% |
|  | 1.3.1.1.2.4.2 | **Slab, Beams & Staircase** |  | 2024-07-17 | 2024-07-27 |  |  |
| PG-10076 |  | Formwork | 3d | 2024-07-17 A | 2024-07-20 A | PG-10075 | 100% |
| PG-10077 |  | Reinforcement | 3d | 2024-07-22 A | 2024-07-25 A | PG-10076 FF+4d | 100% |
| PG-10078 |  | Concrete | 1d | 2024-07-26 A | 2024-07-27 A | PG-10077 FS+1d | 100% |
|  | 1.3.1.1.2.5 | **Floor 02** |  | 2024-07-27 | 2024-08-21 |  |  |
|  | 1.3.1.1.2.5.1 | **Columns / shear walls** |  | 2024-07-27 | 2024-08-09 |  |  |
| PG-10079 |  | Reinforcement | 4d | 2024-07-27 A | 2024-08-01 A | PG-10078 | 100% |
| PG-10080 |  | Formwork | 4d | 2024-08-01 A | 2024-08-06 A | PG-10079 FF+4d | 100% |
| PG-10081 |  | Concrete | 3.67d | 2024-08-05 A | 2024-08-09 A | PG-10080 FF+3d | 100% |
|  | 1.3.1.1.2.5.2 | **Slab, Beams & Staircase** |  | 2024-08-09 | 2024-08-21 |  |  |
| PG-10082 |  | Formwork | 3d | 2024-08-09 A | 2024-08-12 A | PG-10081 | 100% |
| PG-10083 |  | Reinforcement | 3d | 2024-08-14 A | 2024-08-17 A | PG-10082 FF+4d | 100% |
| PG-10084 |  | Concrete | 1d | 2024-08-20 A | 2024-08-21 A | PG-10083 FS+1d | 100% |
|  | 1.3.1.1.2.6 | **Floor 03** |  | 2024-08-21 | 2024-09-13 |  |  |
|  | 1.3.1.1.2.6.1 | **Columns / shear walls** |  | 2024-08-21 | 2024-09-03 |  |  |
| PG-10085 |  | Reinforcement | 4d | 2024-08-21 A | 2024-08-24 A | PG-10084 | 100% |
| PG-10086 |  | Formwork | 4d | 2024-08-26 A | 2024-08-30 A | PG-10085 FF+4d | 100% |
| PG-10087 |  | Concrete | 3.67d | 2024-08-29 A | 2024-09-03 A | PG-10086 FF+3d | 100% |
|  | 1.3.1.1.2.6.2 | **Slab, Beams & Staircase** |  | 2024-09-03 | 2024-09-13 |  |  |
| PG-10088 |  | Formwork | 3d | 2024-09-03 A | 2024-09-06 A | PG-10087 | 100% |
| PG-10089 |  | Reinforcement | 3d | 2024-09-07 A | 2024-09-11 A | PG-10088 FF+4d | 100% |
| PG-10090 |  | Concrete | 1d | 2024-09-12 A | 2024-09-13 A | PG-10089 FS+1d | 100% |
|  | 1.3.1.1.2.7 | **Floor 04** |  | 2024-09-13 | 2024-10-04 |  |  |
|  | 1.3.1.1.2.7.1 | **Columns / shear walls** |  | 2024-09-13 | 2024-09-23 |  |  |
| PG-10091 |  | Reinforcement | 4d | 2024-09-13 A | 2024-09-18 A | PG-10090 | 100% |
| PG-10092 |  | Formwork | 4d | 2024-09-18 A | 2024-09-23 A | PG-10091 FF+4d | 100% |
|  | 1.3.1.1.2.7.2 | **Slab, Beams & Staircase** |  | 2024-09-24 | 2024-10-04 |  |  |
| PG-10093 |  | Formwork | 3d | 2024-09-24 A | 2024-09-26 A | PG-10092 FF+4d | 100% |
| PG-10094 |  | Reinforcement | 3d | 2024-09-28 A | 2024-10-03 A | PG-10093 FF+4d | 100% |
| PG-10095 |  | Concrete | 1d | 2024-10-03 A | 2024-10-04 A | PG-10094 | 100% |
|  | 1.3.1.1.2.8 | **Floor 05** |  | 2024-10-04 | 2024-10-24 |  |  |
|  | 1.3.1.1.2.8.1 | **Columns / shear walls** |  | 2024-10-04 | 2024-10-14 |  |  |
| PG-10096 |  | Reinforcement | 4d | 2024-10-04 A | 2024-10-08 A | PG-10095 | 100% |
| PG-10097 |  | Formwork | 4d | 2024-10-09 A | 2024-10-14 A | PG-10096 FF+4d | 100% |
|  | 1.3.1.1.2.8.2 | **Slab, Beams & Staircase** |  | 2024-10-15 | 2024-10-24 |  |  |
| PG-10098 |  | Formwork | 3d | 2024-10-15 A | 2024-10-18 A | PG-10097 FF+4d | 100% |
| PG-10099 |  | Reinforcement | 3d | 2024-10-19 A | 2024-10-23 A | PG-10098 FF+4d | 100% |
| PG-10100 |  | Concrete | 1d | 2024-10-23 A | 2024-10-24 A | PG-10099 | 100% |
|  | 1.3.1.1.2.9 | **Floor 06** |  | 2024-10-24 | 2024-11-09 |  |  |
|  | 1.3.1.1.2.9.1 | **Columns / shear walls** |  | 2024-10-24 | 2024-11-04 |  |  |
| PG-10101 |  | Reinforcement | 4d | 2024-10-24 A | 2024-10-29 A | PG-10100 | 100% |
| PG-10102 |  | Formwork | 4d | 2024-10-29 A | 2024-11-04 A | PG-10101 FF+4d | 100% |
|  | 1.3.1.1.2.9.2 | **Slab, Beams & Staircase** |  | 2024-11-02 | 2024-11-09 |  |  |
| PG-10103 |  | Formwork | 3d | 2024-11-02 A | 2024-11-06 A | PG-10102 FF+2d | 100% |

| ID | WBS | Task | Duration | Start | Finish | Predecessors | Complete |
| --- | --- | --- | --- | --- | --- | --- | --- |
| PG-10104 |  | Reinforcement | 3d | 2024-11-05 A | 2024-11-08 A | PG-10103 FF+2d | 100% |
| PG-10105 |  | Concrete | 1d | 2024-11-08 A | 2024-11-09 A | PG-10104 | 100% |
|  | 1.3.1.1.2.10 | **Floor 07** |  | 2024-11-09 | 2024-11-25 |  |  |
|  | 1.3.1.1.2.10.1 | **Columns / shear walls** |  | 2024-11-09 | 2024-11-19 |  |  |
| PG-10106 |  | Reinforcement | 4d | 2024-11-09 A | 2024-11-14 A | PG-10105 | 100% |
| PG-10107 |  | Formwork | 4d | 2024-11-14 A | 2024-11-19 A | PG-10106 FF+4d | 100% |
|  | 1.3.1.1.2.10.2 | **Slab, Beams & Staircase** |  | 2024-11-18 | 2024-11-25 |  |  |
| PG-10108 |  | Formwork | 3d | 2024-11-18 A | 2024-11-21 A | PG-10107 FF+2d | 100% |
| PG-10109 |  | Reinforcement | 3d | 2024-11-20 A | 2024-11-23 A | PG-10108 FF+2d | 100% |
| PG-10110 |  | Concrete | 1d | 2024-11-23 A | 2024-11-25 A | PG-10109 | 100% |
|  | 1.3.1.1.2.11 | **Floor 08** |  | 2024-11-25 | 2024-12-10 |  |  |
|  | 1.3.1.1.2.11.1 | **Columns / shear walls** |  | 2024-11-25 | 2024-12-04 |  |  |
| PG-10111 |  | Reinforcement | 4d | 2024-11-25 A | 2024-11-29 A | PG-10110 | 100% |
| PG-10112 |  | Formwork | 4d | 2024-11-29 A | 2024-12-04 A | PG-10111 FF+4d | 100% |
|  | 1.3.1.1.2.11.2 | **Slab, Beams & Staircase** |  | 2024-12-03 | 2024-12-10 |  |  |
| PG-10113 |  | Formwork | 3d | 2024-12-03 A | 2024-12-06 A | PG-10112 FF+2d | 100% |
| PG-10114 |  | Reinforcement | 3d | 2024-12-05 A | 2024-12-09 A | PG-10113 FF+2d | 100% |
| PG-10115 |  | Concrete | 1d | 2024-12-09 A | 2024-12-10 A | PG-10114 | 100% |
|  | 1.3.1.1.2.12 | **Floor 09** |  | 2024-12-10 | 2024-12-25 |  |  |
|  | 1.3.1.1.2.12.1 | **Columns / shear walls** |  | 2024-12-10 | 2024-12-19 |  |  |
| PG-10116 |  | Reinforcement | 4d | 2024-12-10 A | 2024-12-14 A | PG-10115 | 100% |
| PG-10117 |  | Formwork | 4d | 2024-12-14 A | 2024-12-19 A | PG-10116 FF+4d | 100% |
|  | 1.3.1.1.2.12.2 | **Slab, Beams & Staircase** |  | 2024-12-18 | 2024-12-25 |  |  |
| PG-10118 |  | Formwork | 3d | 2024-12-18 A | 2024-12-21 A | PG-10117 FF+2d | 100% |
| PG-10119 |  | Reinforcement | 3d | 2024-12-20 A | 2024-12-24 A | PG-10118 FF+2d | 100% |
| PG-10120 |  | Concrete | 1d | 2024-12-24 A | 2024-12-25 A | PG-10119 | 100% |
|  | 1.3.1.1.2.13 | **Floor 10** |  | 2024-12-25 | 2025-01-09 |  |  |
|  | 1.3.1.1.2.13.1 | **Columns / shear walls** |  | 2024-12-25 | 2025-01-03 |  |  |
| PG-10121 |  | Reinforcement | 4d | 2024-12-25 A | 2024-12-30 A | PG-10120 | 100% |
| PG-10122 |  | Formwork | 4d | 2024-12-30 A | 2025-01-03 A | PG-10121 FF+4d | 100% |
|  | 1.3.1.1.2.13.2 | **Slab, Beams & Staircase** |  | 2025-01-02 | 2025-01-09 |  |  |
| PG-10123 |  | Formwork | 3d | 2025-01-02 A | 2025-01-06 A | PG-10122 FF+2d | 100% |
| PG-10124 |  | Reinforcement | 3d | 2025-01-04 A | 2025-01-08 A | PG-10123 FF+2d | 100% |
| PG-10125 |  | Concrete | 1d | 2025-01-08 A | 2025-01-09 A | PG-10124 | 100% |
|  | 1.3.1.1.2.14 | **Floor 11** |  | 2025-01-09 | 2025-01-24 |  |  |
|  | 1.3.1.1.2.14.1 | **Columns / shear walls** |  | 2025-01-09 | 2025-01-18 |  |  |
| PG-10126 |  | Reinforcement | 4d | 2025-01-09 A | 2025-01-14 A | PG-10125 | 100% |
| PG-10127 |  | Formwork | 4d | 2025-01-14 A | 2025-01-18 A | PG-10126 FF+4d | 100% |
|  | 1.3.1.1.2.14.2 | **Slab, Beams & Staircase** |  | 2025-01-17 | 2025-01-24 |  |  |
| PG-10128 |  | Formwork | 3d | 2025-01-17 A | 2025-01-21 A | PG-10127 FF+2d | 100% |
| PG-10129 |  | Reinforcement | 3d | 2025-01-20 A | 2025-01-23 A | PG-10128 FF+2d | 100% |
| PG-10130 |  | Concrete | 1d | 2025-01-23 A | 2025-01-24 A | PG-10129 | 100% |
|  | 1.3.1.1.2.15 | **Floor 12** |  | 2025-01-24 | 2025-02-08 |  |  |
|  | 1.3.1.1.2.15.1 | **Columns / shear walls** |  | 2025-01-24 | 2025-02-03 |  |  |
| PG-10131 |  | Reinforcement | 4d | 2025-01-24 A | 2025-01-29 A | PG-10130 | 100% |
| PG-10132 |  | Formwork | 4d | 2025-01-29 A | 2025-02-03 A | PG-10131 FF+4d | 100% |
|  | 1.3.1.1.2.15.2 | **Slab, Beams & Staircase** |  | 2025-02-01 | 2025-02-08 |  |  |
| PG-10133 |  | Formwork | 3d | 2025-02-01 A | 2025-02-05 A | PG-10132 FF+2d | 100% |
| PG-10134 |  | Reinforcement | 3d | 2025-02-04 A | 2025-02-07 A | PG-10133 FF+2d | 100% |
| PG-10135 |  | Concrete | 1d | 2025-02-07 A | 2025-02-08 A | PG-10134 | 100% |
|  | 1.3.1.1.2.16 | **Floor 13** |  | 2025-02-08 | 2025-02-25 |  |  |
|  | 1.3.1.1.2.16.1 | **Columns / shear walls** |  | 2025-02-08 | 2025-02-19 |  |  |
| PG-10136 |  | Reinforcement | 4d | 2025-02-08 A | 2025-02-14 A | PG-10135 | 100% |
| PG-10137 |  | Formwork | 4d | 2025-02-14 A | 2025-02-19 A | PG-10136 FF+4d | 100% |
|  | 1.3.1.1.2.16.2 | **Slab, Beams & Staircase** |  | 2025-02-18 | 2025-02-25 |  |  |
| PG-10138 |  | Formwork | 3d | 2025-02-18 A | 2025-02-20 A | PG-10137 FF+2d | 100% |
| PG-10139 |  | Reinforcement | 3d | 2025-02-19 A | 2025-02-22 A | PG-10138 FF+2d | 100% |
| PG-10140 |  | Concrete | 1d | 2025-02-22 A | 2025-02-25 A | PG-10139 | 100% |
|  | 1.3.1.1.2.17 | **Floor 14** |  | 2025-02-25 | 2025-03-12 |  |  |
|  | 1.3.1.1.2.17.1 | **Columns / shear walls** |  | 2025-02-25 | 2025-03-06 |  |  |
| PG-10141 |  | Reinforcement | 4d | 2025-02-25 A | 2025-03-01 A | PG-10140 | 100% |
| PG-10142 |  | Formwork | 4d | 2025-03-01 A | 2025-03-06 A | PG-10141 FF+4d | 100% |
|  | 1.3.1.1.2.17.2 | **Slab, Beams & Staircase** |  | 2025-03-05 | 2025-03-12 |  |  |
| PG-10143 |  | Formwork | 3d | 2025-03-05 A | 2025-03-08 A | PG-10142 FF+2d | 100% |
| PG-10144 |  | Reinforcement | 3d | 2025-03-07 A | 2025-03-11 A | PG-10143 FF+2d | 100% |
| PG-10145 |  | Concrete | 1d | 2025-03-11 A | 2025-03-12 A | PG-10144 | 100% |
|  | 1.3.1.1.2.18 | **Floor 15** |  | 2025-03-12 | 2025-03-27 |  |  |
|  | 1.3.1.1.2.18.1 | **Columns / shear walls** |  | 2025-03-12 | 2025-03-21 |  |  |
| PG-10146 |  | Reinforcement | 4d | 2025-03-12 A | 2025-03-17 A | PG-10145 | 100% |
| PG-10147 |  | Formwork | 4d | 2025-03-17 A | 2025-03-21 A | PG-10146 FF+4d | 100% |

| ID | WBS | Task | Duration | Start | Finish | Predecessors | Complete | Total float |
| --- | --- | --- | --- | --- | --- | --- | --- | --- |
|  | 1.3.1.1.2.18.2 | **Slab, Beams & Staircase** |  | 2025-03-20 | 2025-03-27 |  |  |  |
| PG-10148 |  | Formwork | 3d | 2025-03-20 A | 2025-03-24 A | PG-10147 FF+2d | 100% |  |
| PG-10149 |  | Reinforcement | 3d | 2025-03-22 A | 2025-03-26 A | PG-10148 FF+2d | 100% |  |
| PG-10150 |  | Concrete | 1d | 2025-03-26 A | 2025-03-27 A | PG-10149 | 100% |  |
|  | 1.3.1.1.2.19 | **Floor 16** |  | 2025-03-27 | 2025-04-09 |  |  |  |
|  | 1.3.1.1.2.19.1 | **Columns / shear walls** |  | 2025-03-27 | 2025-04-03 |  |  |  |
| PG-10151 |  | Reinforcement | 4d | 2025-03-27 A | 2025-04-01 A | PG-10150 | 100% |  |
| PG-10152 |  | Formwork | 4d | 2025-03-29 A | 2025-04-03 A | PG-10151 FF+2d | 100% |  |
|  | 1.3.1.1.2.19.2 | **Slab, Beams & Staircase** |  | 2025-04-02 | 2025-04-09 |  |  |  |
| PG-10153 |  | Formwork | 3d | 2025-04-02 A | 2025-04-05 | PG-10152 FF+2d | 79% | 40.58d |
| PG-10154 |  | Reinforcement | 3d | 2025-04-04 A | 2025-04-08 | PG-10153 FF+2d | 7% | 40.58d |
| PG-10155 |  | Concrete | 1d | 2025-04-08 | 2025-04-09 | PG-10154 |  | 40.58d |
|  | 1.3.1.1.2.20 | **Floor 17** |  | 2025-04-09 | 2025-04-22 |  |  |  |
|  | 1.3.1.1.2.20.1 | **Columns / shear walls** |  | 2025-04-09 | 2025-04-16 |  |  |  |
| PG-10156 |  | Reinforcement | 4d | 2025-04-09 | 2025-04-14 | PG-10155 |  | 40.58d |
| PG-10157 |  | Formwork | 4d | 2025-04-11 | 2025-04-16 | PG-10156 FF+2d |  | 40.58d |
|  | 1.3.1.1.2.20.2 | **Slab, Beams & Staircase** |  | 2025-04-15 | 2025-04-22 |  |  |  |
| PG-10158 |  | Formwork | 3d | 2025-04-15 | 2025-04-18 | PG-10157 FF+2d |  | 40.58d |
| PG-10159 |  | Reinforcement | 3d | 2025-04-17 | 2025-04-21 | PG-10158 FF+2d |  | 40.58d |
| PG-10160 |  | Concrete | 1d | 2025-04-21 | 2025-04-22 | PG-10159 |  | 40.58d |
|  | 1.3.1.1.2.21 | **Floor 18** |  | 2025-04-22 | 2025-05-05 |  |  |  |
|  | 1.3.1.1.2.21.1 | **Columns / shear walls** |  | 2025-04-22 | 2025-04-29 |  |  |  |
| PG-10161 |  | Reinforcement | 4d | 2025-04-22 | 2025-04-26 | PG-10160 |  | 40.58d |
| PG-10162 |  | Formwork | 4d | 2025-04-24 | 2025-04-29 | PG-10161 FF+2d |  | 40.58d |
|  | 1.3.1.1.2.21.2 | **Slab, Beams & Staircase** |  | 2025-04-28 | 2025-05-05 |  |  |  |
| PG-10163 |  | Formwork | 3d | 2025-04-28 | 2025-05-01 | PG-10162 FF+2d |  | 40.58d |
| PG-10164 |  | Reinforcement | 3d | 2025-04-30 | 2025-05-03 | PG-10163 FF+2d |  | 40.58d |
| PG-10165 |  | Concrete | 1d | 2025-05-03 | 2025-05-05 | PG-10164 |  | 40.58d |
|  | 1.3.1.1.2.22 | **Floor 19** |  | 2025-05-05 | 2025-05-17 |  |  |  |
|  | 1.3.1.1.2.22.1 | **Columns / shear walls** |  | 2025-05-05 | 2025-05-12 |  |  |  |
| PG-10166 |  | Reinforcement | 4d | 2025-05-05 | 2025-05-09 | PG-10165 |  | 40.58d |
| PG-10167 |  | Formwork | 4d | 2025-05-07 | 2025-05-12 | PG-10166 FF+2d |  | 40.58d |
|  | 1.3.1.1.2.22.2 | **Slab, Beams & Staircase** |  | 2025-05-10 | 2025-05-17 |  |  |  |
| PG-10168 |  | Formwork | 3d | 2025-05-10 | 2025-05-14 | PG-10167 FF+2d |  | 40.58d |
| PG-10169 |  | Reinforcement | 3d | 2025-05-13 | 2025-05-16 | PG-10168 FF+2d |  | 40.58d |
| PG-10170 |  | Concrete | 1d | 2025-05-16 | 2025-05-17 | PG-10169 |  | 40.58d |
|  | 1.3.1.1.2.23 | **Floor 20** |  | 2025-05-17 | 2025-05-30 |  |  |  |
|  | 1.3.1.1.2.23.1 | **Columns / shear walls** |  | 2025-05-17 | 2025-05-24 |  |  |  |
| PG-10171 |  | Reinforcement | 4d | 2025-05-17 | 2025-05-22 | PG-10170 |  | 40.58d |
| PG-10172 |  | Formwork | 4d | 2025-05-20 | 2025-05-24 | PG-10171 FF+2d |  | 40.58d |
|  | 1.3.1.1.2.23.2 | **Slab, Beams & Staircase** |  | 2025-05-23 | 2025-05-30 |  |  |  |
| PG-10173 |  | Formwork | 3d | 2025-05-23 | 2025-05-27 | PG-10172 FF+2d |  | 40.58d |
| PG-10174 |  | Reinforcement | 3d | 2025-05-26 | 2025-05-29 | PG-10173 FF+2d |  | 40.58d |
| PG-10175 |  | Concrete | 1d | 2025-05-29 | 2025-05-30 | PG-10174 |  | 40.58d |
|  | 1.3.1.1.2.24 | **Floor 21** |  | 2025-05-30 | 2025-06-12 |  |  |  |
|  | 1.3.1.1.2.24.1 | **Columns / shear walls** |  | 2025-05-30 | 2025-06-06 |  |  |  |
| PG-10176 |  | Reinforcement | 4d | 2025-05-30 | 2025-06-04 | PG-10175 |  | 40.58d |
| PG-10177 |  | Formwork | 4d | 2025-06-02 | 2025-06-06 | PG-10176 FF+2d |  | 40.58d |
|  | 1.3.1.1.2.24.2 | **Slab, Beams & Staircase** |  | 2025-06-05 | 2025-06-12 |  |  |  |
| PG-10178 |  | Formwork | 3d | 2025-06-05 | 2025-06-09 | PG-10177 FF+2d |  | 40.58d |
| PG-10179 |  | Reinforcement | 3d | 2025-06-07 | 2025-06-11 | PG-10178 FF+2d |  | 40.58d |
| PG-10180 |  | Concrete | 1d | 2025-06-11 | 2025-06-12 | PG-10179 |  | 40.58d |
|  | 1.3.1.1.2.25 | **Floor 22** |  | 2025-06-12 | 2025-06-25 |  |  |  |
|  | 1.3.1.1.2.25.1 | **Columns / shear walls** |  | 2025-06-12 | 2025-06-19 |  |  |  |
| PG-10181 |  | Reinforcement | 4d | 2025-06-12 | 2025-06-17 | PG-10180 |  | 40.58d |
| PG-10182 |  | Formwork | 4d | 2025-06-14 | 2025-06-19 | PG-10181 FF+2d |  | 40.58d |
|  | 1.3.1.1.2.25.2 | **Slab, Beams & Staircase** |  | 2025-06-18 | 2025-06-25 |  |  |  |
| PG-10183 |  | Formwork | 3d | 2025-06-18 | 2025-06-21 | PG-10182 FF+2d |  | 40.58d |
| PG-10184 |  | Reinforcement | 3d | 2025-06-20 | 2025-06-24 | PG-10183 FF+2d |  | 40.58d |
| PG-10185 |  | Concrete | 1d | 2025-06-24 | 2025-06-25 | PG-10184 |  | 40.58d |
|  | 1.3.1.1.2.26 | **Floor 23** |  | 2025-06-25 | 2025-07-08 |  |  |  |
|  | 1.3.1.1.2.26.1 | **Columns / shear walls** |  | 2025-06-25 | 2025-07-02 |  |  |  |
| PG-10186 |  | Reinforcement | 4d | 2025-06-25 | 2025-06-30 | PG-10185 |  | 40.58d |
| PG-10187 |  | Formwork | 4d | 2025-06-27 | 2025-07-02 | PG-10186 FF+2d |  | 40.58d |
|  | 1.3.1.1.2.26.2 | **Slab, Beams & Staircase** |  | 2025-07-01 | 2025-07-08 |  |  |  |
| PG-10188 |  | Formwork | 3d | 2025-07-01 | 2025-07-04 | PG-10187 FF+2d |  | 40.58d |
| PG-10189 |  | Reinforcement | 3d | 2025-07-03 | 2025-07-07 | PG-10188 FF+2d |  | 40.58d |
| PG-10190 |  | Concrete | 1d | 2025-07-07 | 2025-07-08 | PG-10189 |  | 40.58d |
|  | 1.3.1.1.2.27 | **Above Terrace Floor** |  | 2025-07-08 | 2025-08-18 |  |  |  |
|  | 1.3.1.1.2.27.1 | **Columns / shear walls/Parapet Walls** |  | 2025-07-08 | 2025-07-22 |  |  |  |

| ID | WBS | Task | Duration | Start | Finish | Predecessors | Complete | Total float |
| --- | --- | --- | --- | --- | --- | --- | --- | --- |
| PG-10191 |  | Reinforcement | 4d | 2025-07-08 | 2025-07-12 | PG-10190 |  | 118.08d |
| PG-10192 |  | Formwork | 5d | 2025-07-10 | 2025-07-16 | PG-10191 FF+3d |  | 118.08d |
| PG-10193 |  | Concrete | 5d | 2025-07-16 | 2025-07-22 | PG-10192 |  | 118.08d |
|  | 1.3.1.1.2.27.2 | **Slab, Beams & Staircase Head rooms, Lift headroom** |  | 2025-07-12 | 2025-08-18 |  |  |  |
| PG-10197 |  | Terrace Waterproofing and Protective finishing. | 30d | 2025-07-12 | 2025-08-18 | PG-10196 FF+10d |  | 243.25d |
| PG-10194 |  | Formwork | 5d | 2025-07-22 | 2025-07-28 | PG-10193 |  | 243.25d |
| PG-10195 |  | Reinforcement | 5d | 2025-07-28 | 2025-08-02 | PG-10194 FF+5d |  | 243.25d |
| PG-10196 |  | Concrete | 2d | 2025-08-02 | 2025-08-05 | PG-10195 |  | 243.25d |
|  | 1.3.1.1.3 | **MEP Internal works** |  | 2024-10-24 | 2026-01-16 |  |  |  |
|  | 1.3.1.1.3.1 | **LBF** |  | 2024-10-24 | 2025-01-07 |  |  |  |
| PG-10198 |  | Surface Drainage System (Chambers and Pipeline for Sump) | 15d | 2024-10-24 A | 2024-11-12 A | PG-10100 | 100% |  |
| PG-10199 |  | Pump fixing for collection sump | 2d | 2024-12-05 A | 2024-12-07 A | PG-10422 | 100% |  |
| PG-10200 |  | FPS Piping and Sprinkler Fixing works | 9.67d | 2024-12-23 A | 2025-01-03 A | PG-10199, PG-10425 FF+5d | 100% |  |
| PG-10201 |  | Electrical Conducting and Light Fixing works | 9.67d | 2024-12-25 A | 2025-01-07 A | PG-10425 FF+7d | 100% |  |
|  | 1.3.1.1.3.2 | **UBF** |  | 2024-12-17 | 2025-01-24 |  |  |  |
| PG-10202 |  | Piping for Rainwater and Soil lines in Ceiling | 20d | 2024-12-17 A | 2025-01-09 A | PG-10425 FF+10d | 100% |  |
| PG-10203 |  | FPS Piping and Sprinkler Fixing works | 9.67d | 2025-01-01 A | 2025-01-13 A | PG-12710 FF+5d, PG-10200 FF+5d | 100% |  |
| PG-10204 |  | Electrical Conducting and Light Fixing works | 9.67d | 2025-01-13 A | 2025-01-24 A | PG-10203, PG-12711 FF+5d, PG-10201 FF+5d | 100% |  |
|  | 1.3.1.1.3.3 | **Ground Floor** |  | 2024-10-24 | 2025-01-15 |  |  |  |
|  | 1.3.1.1.3.3.1 | **PHE Works** |  | 2024-10-24 | 2025-01-14 |  |  |  |
| PG-10205 |  | 1st Fix - Piping works | 12d | 2024-10-24 A | 2024-11-08 A | PG-10100 | 100% |  |
| PG-10206 |  | 2nd Fix - diverter fixing & Pressure testing | 10d | 2024-11-04 A | 2024-11-15 A | PG-10205 FF+6d | 100% |  |
| PG-10207 |  | Final Fix - CP & Sanitary fixtures | 10.5d | 2025-01-02 A | 2025-01-14 A | PG-10435, PG-10441 FF+6d | 100% |  |
|  | 1.3.1.1.3.3.2 | **Fire Fighting Works** |  | 2024-11-04 | 2025-01-15 |  |  |  |
| PG-10208 |  | 1st Fix - Piping and Shaft hydrant works | 11.67d | 2024-11-04 A | 2024-11-18 A | PG-10432 FF+6d | 100% |  |
| PG-10209 |  | 2nd Fix - Sprinkler fixing & Pressure testing | 9.67d | 2024-12-11 A | 2024-12-23 A | PG-10440 FF+6d | 100% |  |
| PG-10210 |  | Final Fix - Smoke & heat detectors, FHC , FAS Etc. | 9.67d | 2025-01-02 A | 2025-01-15 A | PG-10209, PG-10441 FF+6d | 100% |  |
|  | 1.3.1.1.3.3.3 | **Electrical Works** |  | 2024-10-24 | 2025-01-15 |  |  |  |
| PG-10211 |  | 1st Fix - GI wire pulling | 8d | 2024-10-24 A | 2024-11-04 A | PG-10100 | 100% |  |
| PG-10212 |  | 2nd Fix - Wiring works | 14.67d | 2024-12-04 A | 2024-12-23 A | PG-10440 FF+5d | 100% |  |
| PG-10213 |  | Final Fix - Electrical Fixtures | 5.67d | 2025-01-08 A | 2025-01-15 A | PG-10212, PG-10441 FF+6d | 100% |  |
|  | 1.3.1.1.3.4 | **Floor 1** |  | 2024-11-09 | 2025-02-01 |  |  |  |
|  | 1.3.1.1.3.4.1 | **PHE Works** |  | 2024-11-09 | 2025-02-01 |  |  |  |
| PG-10214 |  | 1st Fix - Piping works | 12d | 2024-11-09 A | 2024-11-23 A | PG-10105 | 100% |  |
| PG-10215 |  | 2nd Fix - diverter fixing & Pressure testing | 10d | 2024-11-19 A | 2024-11-30 A | PG-10214 FF+6d | 100% |  |
| PG-10216 |  | Final Fix - CP & Sanitary fixtures | 9.67d | 2025-01-20 A | 2025-02-01 A | PG-10449, PG-10455 FF+6d | 100% |  |
|  | 1.3.1.1.3.4.2 | **Fire Fighting Works** |  | 2024-11-19 | 2025-01-31 |  |  |  |
| PG-10217 |  | 1st Fix - Piping and Shaft hydrant works | 11.67d | 2024-11-19 A | 2024-12-03 A | PG-10446 FF+6d | 100% |  |
| PG-10218 |  | 2nd Fix - Sprinkler fixing & Pressure testing | 9.67d | 2024-12-27 A | 2025-01-08 A | PG-10454 FF+6d | 100% |  |
| PG-10219 |  | Final Fix - Smoke & heat detectors, FHC , FAS Etc. | 9.67d | 2025-01-20 A | 2025-01-31 A | PG-10218, PG-10455 FF+6d | 100% |  |
|  | 1.3.1.1.3.4.3 | **Electrical Works** |  | 2024-11-09 | 2025-01-31 |  |  |  |
| PG-10220 |  | 1st Fix - GI wire pulling | 8d | 2024-11-09 A | 2024-11-19 A | PG-10105 | 100% |  |
| PG-10221 |  | 2nd Fix - Wiring works | 14.67d | 2024-12-20 A | 2025-01-06 A | PG-10454 FF+5d | 100% |  |
| PG-10222 |  | Final Fix - Electrical Fixtures | 5.67d | 2025-01-24 A | 2025-01-31 A | PG-10221, PG-10455 FF+6d | 100% |  |
|  | 1.3.1.1.3.5 | **Floor 2** |  | 2024-11-25 | 2025-02-14 |  |  |  |
|  | 1.3.1.1.3.5.1 | **PHE Works** |  | 2024-11-25 | 2025-02-14 |  |  |  |
| PG-10223 |  | 1st Fix - Piping works | 12d | 2024-11-25 A | 2024-12-09 A | PG-10110 | 100% |  |
| PG-10224 |  | 2nd Fix - diverter fixing & Pressure testing | 10d | 2024-12-04 A | 2024-12-16 A | PG-10223 FF+6d | 100% |  |
| PG-10225 |  | Final Fix - CP & Sanitary fixtures | 9.67d | 2025-02-03 A | 2025-02-14 A | PG-10463, PG-10469 FF+6d | 100% |  |
|  | 1.3.1.1.3.5.2 | **Fire Fighting Works** |  | 2024-12-04 | 2025-02-14 |  |  |  |
| PG-10226 |  | 1st Fix - Piping and Shaft hydrant works | 11.67d | 2024-12-04 A | 2024-12-19 A | PG-10460 FF+6d | 100% |  |
| PG-10227 |  | 2nd Fix - Sprinkler fixing & Pressure testing | 9.67d | 2025-01-10 A | 2025-01-22 A | PG-10468 FF+6d | 100% |  |
| PG-10228 |  | Final Fix - Smoke & heat detectors, FHC , FAS Etc. | 9.67d | 2025-02-03 A | 2025-02-14 A | PG-10227, PG-10469 FF+6d | 100% |  |
|  | 1.3.1.1.3.5.3 | **Electrical Works** |  | 2024-11-25 | 2025-02-14 |  |  |  |
| PG-10229 |  | 1st Fix - GI wire pulling | 8d | 2024-11-25 A | 2024-12-04 A | PG-10110 | 100% |  |
| PG-10230 |  | 2nd Fix - Wiring works | 14.67d | 2025-01-03 A | 2025-01-20 A | PG-10468 FF+5d | 100% |  |
| PG-10231 |  | Final Fix - Electrical Fixtures | 5.83d | 2025-02-07 A | 2025-02-14 A | PG-10230, PG-10469 FF+6d | 100% |  |
|  | 1.3.1.1.3.6 | **Floor 3** |  | 2024-12-10 | 2025-03-04 |  |  |  |
|  | 1.3.1.1.3.6.1 | **PHE Works** |  | 2024-12-10 | 2025-03-04 |  |  |  |
| PG-10232 |  | 1st Fix - Piping works | 12d | 2024-12-10 A | 2024-12-24 A | PG-10115 | 100% |  |
| PG-10233 |  | 2nd Fix - diverter fixing & Pressure testing | 10d | 2024-12-19 A | 2025-01-01 A | PG-10232 FF+6d | 100% |  |
| PG-10234 |  | Final Fix - CP & Sanitary fixtures | 9.67d | 2025-02-20 A | 2025-03-04 A | PG-10477, PG-10483 FF+6d | 100% |  |
|  | 1.3.1.1.3.6.2 | **Fire Fighting Works** |  | 2024-12-19 | 2025-03-04 |  |  |  |
| PG-10235 |  | 1st Fix - Piping and Shaft hydrant works | 11.67d | 2024-12-19 A | 2025-01-02 A | PG-10474 FF+6d | 100% |  |
| PG-10236 |  | 2nd Fix - Sprinkler fixing & Pressure testing | 9.67d | 2025-01-27 A | 2025-02-06 A | PG-10482 FF+6d | 100% |  |
| PG-10237 |  | Final Fix - Smoke & heat detectors, FHC , FAS Etc. | 9.67d | 2025-02-20 A | 2025-03-04 A | PG-10236, PG-10483 FF+6d | 100% |  |
|  | 1.3.1.1.3.6.3 | **Electrical Works** |  | 2024-12-10 | 2025-03-04 |  |  |  |
| PG-10238 |  | 1st Fix - GI wire pulling | 8d | 2024-12-10 A | 2024-12-19 A | PG-10115 | 100% |  |
| PG-10239 |  | 2nd Fix - Wiring works | 14.67d | 2025-01-20 A | 2025-02-05 A | PG-10482 FF+5d | 100% |  |
| PG-10240 |  | Final Fix - Electrical Fixtures | 5.67d | 2025-02-25 A | 2025-03-04 A | PG-10239, PG-10483 FF+6d | 100% |  |

| ID | WBS | Task | Duration | Start | Finish | Predecessors | Complete | Total float |
| --- | --- | --- | --- | --- | --- | --- | --- | --- |
|  | 1.3.1.1.3.7 | **Floor 4** |  | 2024-12-25 | 2025-03-17 |  |  |  |
|  | 1.3.1.1.3.7.1 | **PHE Works** |  | 2024-12-25 | 2025-03-17 |  |  |  |
| PG-10241 |  | 1st Fix - Piping works | 12d | 2024-12-25 A | 2025-01-09 A | PG-10120 | 100% |  |
| PG-10242 |  | 2nd Fix - diverter fixing & Pressure testing | 10d | 2025-01-04 A | 2025-01-15 A | PG-10241 FF+6d | 100% |  |
| PG-10243 |  | Final Fix - CP & Sanitary fixtures | 9.67d | 2025-03-05 A | 2025-03-17 A | PG-10491, PG-10497 FF+6d | 100% |  |
|  | 1.3.1.1.3.7.2 | **Fire Fighting Works** |  | 2025-01-04 | 2025-03-17 |  |  |  |
| PG-10244 |  | 1st Fix - Piping and Shaft hydrant works | 11.67d | 2025-01-04 A | 2025-01-17 A | PG-10488 FF+6d | 100% |  |
| PG-10245 |  | 2nd Fix - Sprinkler fixing & Pressure testing | 9.67d | 2025-02-10 A | 2025-02-21 A | PG-10496 FF+6d | 100% |  |
| PG-10246 |  | Final Fix - Smoke & heat detectors, FHC , FAS Etc. | 9.67d | 2025-03-05 A | 2025-03-17 A | PG-10245, PG-10497 FF+6d | 100% |  |
|  | 1.3.1.1.3.7.3 | **Electrical Works** |  | 2024-12-25 | 2025-03-17 |  |  |  |
| PG-10247 |  | 1st Fix - GI wire pulling | 8d | 2024-12-25 A | 2025-01-03 A | PG-10120 | 100% |  |
| PG-10248 |  | 2nd Fix - Wiring works | 14.67d | 2025-02-03 A | 2025-02-19 A | PG-10496 FF+5d | 100% |  |
| PG-10249 |  | Final Fix - Electrical Fixtures | 5.67d | 2025-03-11 A | 2025-03-17 A | PG-10248, PG-10497 FF+6d | 100% |  |
|  | 1.3.1.1.3.8 | **Floor 5** |  | 2025-01-09 | 2025-04-02 |  |  |  |
|  | 1.3.1.1.3.8.1 | **PHE Works** |  | 2025-01-09 | 2025-04-01 |  |  |  |
| PG-10250 |  | 1st Fix - Piping works | 12d | 2025-01-09 A | 2025-01-22 A | PG-10125 | 100% |  |
| PG-10251 |  | 2nd Fix - diverter fixing & Pressure testing | 10d | 2025-01-18 A | 2025-01-30 A | PG-10250 FF+6d | 100% |  |
| PG-10252 |  | Final Fix - CP & Sanitary fixtures | 9.67d | 2025-03-20 A | 2025-04-01 A | PG-10505, PG-10511 FF+6d | 100% |  |
|  | 1.3.1.1.3.8.2 | **Fire Fighting Works** |  | 2025-01-18 | 2025-04-02 |  |  |  |
| PG-10253 |  | 1st Fix - Piping and Shaft hydrant works | 11.67d | 2025-01-18 A | 2025-02-01 A | PG-10502 FF+6d | 100% |  |
| PG-10254 |  | 2nd Fix - Sprinkler fixing & Pressure testing | 9.67d | 2025-02-26 A | 2025-03-08 A | PG-10510 FF+6d | 100% |  |
| PG-10255 |  | Final Fix - Smoke & heat detectors, FHC , FAS Etc. | 9.67d | 2025-03-20 A | 2025-04-02 A | PG-10254, PG-10511 FF+6d | 100% |  |
|  | 1.3.1.1.3.8.3 | **Electrical Works** |  | 2025-01-09 | 2025-04-02 |  |  |  |
| PG-10256 |  | 1st Fix - GI wire pulling | 8d | 2025-01-09 A | 2025-01-18 A | PG-10125 | 100% |  |
| PG-10257 |  | 2nd Fix - Wiring works | 14.67d | 2025-02-19 A | 2025-03-10 A | PG-10510 FF+5d | 100% |  |
| PG-10258 |  | Final Fix - Electrical Fixtures | 5.83d | 2025-03-25 A | 2025-04-02 A | PG-10257, PG-10511 FF+6d | 100% |  |
|  | 1.3.1.1.3.9 | **Floor 6** |  | 2025-01-24 | 2025-04-16 |  |  |  |
|  | 1.3.1.1.3.9.1 | **PHE Works** |  | 2025-01-24 | 2025-04-16 |  |  |  |
| PG-10259 |  | 1st Fix - Piping works | 12d | 2025-01-24 A | 2025-02-08 A | PG-10130 | 100% |  |
| PG-10260 |  | 2nd Fix - diverter fixing & Pressure testing | 10d | 2025-02-04 A | 2025-02-15 A | PG-10259 FF+6d | 100% |  |
| PG-10261 |  | Final Fix - CP & Sanitary fixtures | 9.67d | 2025-04-04 | 2025-04-16 | PG-10519, PG-10525 FF+6d |  | 414.72d |
|  | 1.3.1.1.3.9.2 | **Fire Fighting Works** |  | 2025-02-03 | 2025-04-16 |  |  |  |
| PG-10262 |  | 1st Fix - Piping and Shaft hydrant works | 11.67d | 2025-02-03 A | 2025-02-17 A | PG-10516 FF+6d | 100% |  |
| PG-10263 |  | 2nd Fix - Sprinkler fixing & Pressure testing | 9.67d | 2025-03-12 A | 2025-03-24 A | PG-10524 FF+6d | 100% |  |
| PG-10264 |  | Final Fix - Smoke & heat detectors, FHC , FAS Etc. | 9.67d | 2025-04-04 | 2025-04-16 | PG-10263, PG-10525 FF+6d |  | 414.72d |
|  | 1.3.1.1.3.9.3 | **Electrical Works** |  | 2025-01-24 | 2025-04-16 |  |  |  |
| PG-10265 |  | 1st Fix - GI wire pulling | 8d | 2025-01-24 A | 2025-02-03 A | PG-10130 | 100% |  |
| PG-10266 |  | 2nd Fix - Wiring works | 14.67d | 2025-03-05 A | 2025-03-22 A | PG-10524 FF+5d | 100% |  |
| PG-10267 |  | Final Fix - Electrical Fixtures | 5.67d | 2025-04-09 | 2025-04-16 | PG-10266, PG-10525 FF+6d |  | 414.72d |
|  | 1.3.1.1.3.10 | **Floor 7** |  | 2025-02-08 | 2025-05-01 |  |  |  |
|  | 1.3.1.1.3.10.1 | **PHE Works** |  | 2025-02-08 | 2025-05-01 |  |  |  |
| PG-10268 |  | 1st Fix - Piping works | 12d | 2025-02-08 A | 2025-02-24 A | PG-10135 | 100% |  |
| PG-10269 |  | 2nd Fix - diverter fixing & Pressure testing | 10d | 2025-02-19 A | 2025-03-04 A | PG-10268 FF+6d | 100% |  |
| PG-10270 |  | Final Fix - CP & Sanitary fixtures | 9.83d | 2025-04-19 | 2025-05-01 | PG-10533, PG-10539 FF+6d |  | 402.59d |
|  | 1.3.1.1.3.10.2 | **Fire Fighting Works** |  | 2025-02-18 | 2025-05-01 |  |  |  |
| PG-10271 |  | 1st Fix - Piping and Shaft hydrant works | 11.67d | 2025-02-18 A | 2025-03-05 A | PG-10530 FF+6d | 100% |  |
| PG-10272 |  | 2nd Fix - Sprinkler fixing & Pressure testing | 9.67d | 2025-03-29 A | 2025-04-10 | PG-10538 FF+6d | 47% | 411d |
| PG-10273 |  | Final Fix - Smoke & heat detectors, FHC , FAS Etc. | 9.67d | 2025-04-19 | 2025-05-01 | PG-10272, PG-10539 FF+6d |  | 402.59d |
|  | 1.3.1.1.3.10.3 | **Electrical Works** |  | 2025-02-08 | 2025-05-01 |  |  |  |
| PG-10274 |  | 1st Fix - GI wire pulling | 8d | 2025-02-08 A | 2025-02-19 A | PG-10135 | 100% |  |
| PG-10275 |  | 2nd Fix - Wiring works | 14.67d | 2025-03-22 A | 2025-04-09 | PG-10538 FF+5d | 78% | 416.5d |
| PG-10276 |  | Final Fix - Electrical Fixtures | 5.67d | 2025-04-25 | 2025-05-01 | PG-10275, PG-10539 FF+6d |  | 402.59d |
|  | 1.3.1.1.3.11 | **Floor 8** |  | 2025-02-25 | 2025-05-15 |  |  |  |
|  | 1.3.1.1.3.11.1 | **PHE Works** |  | 2025-02-25 | 2025-05-15 |  |  |  |
| PG-10277 |  | 1st Fix - Piping works | 12d | 2025-02-25 A | 2025-03-10 A | PG-10140 | 100% |  |
| PG-10278 |  | 2nd Fix - diverter fixing & Pressure testing | 10d | 2025-03-05 A | 2025-03-17 A | PG-10277 FF+6d | 100% |  |
| PG-10279 |  | Final Fix - CP & Sanitary fixtures | 9.83d | 2025-05-03 | 2025-05-15 | PG-10547, PG-10553 FF+6d |  | 388.83d |
|  | 1.3.1.1.3.11.2 | **Fire Fighting Works** |  | 2025-03-06 | 2025-05-15 |  |  |  |
| PG-10280 |  | 1st Fix - Piping and Shaft hydrant works | 11.67d | 2025-03-06 A | 2025-03-21 A | PG-10544 FF+6d | 100% |  |
| PG-10281 |  | 2nd Fix - Sprinkler fixing & Pressure testing | 9.67d | 2025-04-12 | 2025-04-23 | PG-10552 FF+6d |  | 397.33d |
| PG-10282 |  | Final Fix - Smoke & heat detectors, FHC , FAS Etc. | 9.83d | 2025-05-03 | 2025-05-15 | PG-10281, PG-10553 FF+6d |  | 388.83d |
|  | 1.3.1.1.3.11.3 | **Electrical Works** |  | 2025-02-25 | 2025-05-15 |  |  |  |
| PG-10283 |  | 1st Fix - GI wire pulling | 8d | 2025-02-25 A | 2025-03-06 A | PG-10140 | 100% |  |
| PG-10284 |  | 2nd Fix - Wiring works | 14.67d | 2025-04-05 | 2025-04-22 | PG-10552 FF+5d |  | 402.83d |
| PG-10285 |  | Final Fix - Electrical Fixtures | 5.67d | 2025-05-09 | 2025-05-15 | PG-10284, PG-10553 FF+6d |  | 388.83d |
|  | 1.3.1.1.3.12 | **Floor 9** |  | 2025-03-12 | 2025-05-29 |  |  |  |
|  | 1.3.1.1.3.12.1 | **PHE Works** |  | 2025-03-12 | 2025-05-29 |  |  |  |
| PG-10286 |  | 1st Fix - Piping works | 12d | 2025-03-12 A | 2025-03-25 A | PG-10145 | 100% |  |
| PG-10287 |  | 2nd Fix - diverter fixing & Pressure testing | 10d | 2025-03-20 A | 2025-04-02 A | PG-10286 FF+6d | 100% |  |
| PG-10288 |  | Final Fix - CP & Sanitary fixtures | 9.83d | 2025-05-17 | 2025-05-29 | PG-10561, PG-10567 FF+6d |  | 377.6d |

| ID | WBS | Task | Duration | Start | Finish | Predecessors | Complete | Total float |
| --- | --- | --- | --- | --- | --- | --- | --- | --- |
|  | 1.3.1.1.3.12.2 | **Fire Fighting Works** |  | 2025-03-21 | 2025-05-29 |  |  |  |
| PG-10289 |  | 1st Fix - Piping and Shaft hydrant works | 11.67d | 2025-03-21 A | 2025-04-04 A | PG-10558 FF+6d | 100% |  |
| PG-10290 |  | 2nd Fix - Sprinkler fixing & Pressure testing | 9.67d | 2025-04-26 | 2025-05-08 | PG-10566 FF+6d |  | 385.93d |
| PG-10291 |  | Final Fix - Smoke & heat detectors, FHC , FAS Etc. | 9.83d | 2025-05-17 | 2025-05-29 | PG-10290, PG-10567 FF+6d |  | 377.6d |
|  | 1.3.1.1.3.12.3 | **Electrical Works** |  | 2025-03-12 | 2025-05-29 |  |  |  |
| PG-10292 |  | 1st Fix - GI wire pulling | 8d | 2025-03-12 A | 2025-03-20 A | PG-10145 | 100% |  |
| PG-10293 |  | 2nd Fix - Wiring works | 14.83d | 2025-04-19 | 2025-05-07 | PG-10566 FF+5d |  | 391.43d |
| PG-10294 |  | Final Fix - Electrical Fixtures | 6d | 2025-05-23 | 2025-05-29 | PG-10293, PG-10567 FF+6d |  | 377.6d |
|  | 1.3.1.1.3.13 | **Floor 10** |  | 2025-03-27 | 2025-06-12 |  |  |  |
|  | 1.3.1.1.3.13.1 | **PHE Works** |  | 2025-03-27 | 2025-06-12 |  |  |  |
| PG-10295 |  | 1st Fix - Piping works | 12d | 2025-03-27 A | 2025-04-09 | PG-10150 | 64% | 364.72d |
| PG-10296 |  | 2nd Fix - diverter fixing & Pressure testing | 10d | 2025-04-04 | 2025-04-16 | PG-10295 FF+6d |  | 364.72d |
| PG-10297 |  | Final Fix - CP & Sanitary fixtures | 10d | 2025-06-02 | 2025-06-12 | PG-10575, PG-10581 FF+6d |  | 364.72d |
|  | 1.3.1.1.3.13.2 | **Fire Fighting Works** |  | 2025-04-04 | 2025-06-12 |  |  |  |
| PG-10298 |  | 1st Fix - Piping and Shaft hydrant works | 11.67d | 2025-04-04 | 2025-04-17 | PG-10572 FF+6d |  | 413.67d |
| PG-10299 |  | 2nd Fix - Sprinkler fixing & Pressure testing | 9.83d | 2025-05-12 | 2025-05-23 | PG-10580 FF+6d |  | 372.55d |
| PG-10300 |  | Final Fix - Smoke & heat detectors, FHC , FAS Etc. | 10d | 2025-06-02 | 2025-06-12 | PG-10299, PG-10581 FF+6d |  | 364.72d |
|  | 1.3.1.1.3.13.3 | **Electrical Works** |  | 2025-03-27 | 2025-06-12 |  |  |  |
| PG-10301 |  | 1st Fix - GI wire pulling | 8d | 2025-03-27 A | 2025-04-04 A | PG-10150 | 100% |  |
| PG-10302 |  | 2nd Fix - Wiring works | 14.83d | 2025-05-05 | 2025-05-22 | PG-10580 FF+5d |  | 377.39d |
| PG-10303 |  | Final Fix - Electrical Fixtures | 6d | 2025-06-05 | 2025-06-12 | PG-10302, PG-10581 FF+6d |  | 364.72d |
|  | 1.3.1.1.3.14 | **Floor 11** |  | 2025-04-09 | 2025-06-26 |  |  |  |
|  | 1.3.1.1.3.14.1 | **PHE Works** |  | 2025-04-09 | 2025-06-26 |  |  |  |
| PG-10304 |  | 1st Fix - Piping works | 12d | 2025-04-09 | 2025-04-23 | PG-10155 |  | 352.42d |
| PG-10305 |  | 2nd Fix - diverter fixing & Pressure testing | 10d | 2025-04-18 | 2025-04-30 | PG-10304 FF+6d |  | 352.42d |
| PG-10306 |  | Final Fix - CP & Sanitary fixtures | 10d | 2025-06-16 | 2025-06-26 | PG-10589, PG-10595 FF+6d |  | 352.42d |
|  | 1.3.1.1.3.14.2 | **Fire Fighting Works** |  | 2025-04-18 | 2025-06-26 |  |  |  |
| PG-10307 |  | 1st Fix - Piping and Shaft hydrant works | 11.67d | 2025-04-18 | 2025-05-02 | PG-10586 FF+6d |  | 401.08d |
| PG-10308 |  | 2nd Fix - Sprinkler fixing & Pressure testing | 10d | 2025-05-26 | 2025-06-06 | PG-10594 FF+6d |  | 360.42d |
| PG-10309 |  | Final Fix - Smoke & heat detectors, FHC , FAS Etc. | 10d | 2025-06-16 | 2025-06-26 | PG-10308, PG-10595 FF+6d |  | 352.42d |
|  | 1.3.1.1.3.14.3 | **Electrical Works** |  | 2025-04-09 | 2025-06-26 |  |  |  |
| PG-10310 |  | 1st Fix - GI wire pulling | 8d | 2025-04-09 | 2025-04-18 | PG-10155 |  | 401.08d |
| PG-10311 |  | 2nd Fix - Wiring works | 15d | 2025-05-19 | 2025-06-05 | PG-10594 FF+5d |  | 365.25d |
| PG-10312 |  | Final Fix - Electrical Fixtures | 6d | 2025-06-20 | 2025-06-26 | PG-10311, PG-10595 FF+6d |  | 352.42d |
|  | 1.3.1.1.3.15 | **Floor 12** |  | 2025-04-22 | 2025-07-10 |  |  |  |
|  | 1.3.1.1.3.15.1 | **PHE Works** |  | 2025-04-22 | 2025-07-10 |  |  |  |
| PG-10313 |  | 1st Fix - Piping works | 12d | 2025-04-22 | 2025-05-06 | PG-10160 |  | 342.92d |
| PG-10314 |  | 2nd Fix - diverter fixing & Pressure testing | 10d | 2025-05-01 | 2025-05-13 | PG-10313 FF+6d |  | 342.92d |
| PG-10315 |  | Final Fix - CP & Sanitary fixtures | 10d | 2025-06-28 | 2025-07-10 | PG-10603, PG-10609 FF+6d |  | 342.92d |
|  | 1.3.1.1.3.15.2 | **Fire Fighting Works** |  | 2025-05-01 | 2025-07-10 |  |  |  |
| PG-10316 |  | 1st Fix - Piping and Shaft hydrant works | 11.83d | 2025-05-01 | 2025-05-15 | PG-10600 FF+6d |  | 389.75d |
| PG-10317 |  | 2nd Fix - Sprinkler fixing & Pressure testing | 10d | 2025-06-07 | 2025-06-19 | PG-10608 FF+6d |  | 350.58d |
| PG-10318 |  | Final Fix - Smoke & heat detectors, FHC , FAS Etc. | 10d | 2025-06-28 | 2025-07-10 | PG-10317, PG-10609 FF+6d |  | 342.92d |
|  | 1.3.1.1.3.15.3 | **Electrical Works** |  | 2025-04-22 | 2025-07-10 |  |  |  |
| PG-10319 |  | 1st Fix - GI wire pulling | 8d | 2025-04-22 | 2025-05-01 | PG-10160 |  | 389.75d |
| PG-10320 |  | 2nd Fix - Wiring works | 15d | 2025-05-31 | 2025-06-18 | PG-10608 FF+5d |  | 355.58d |
| PG-10321 |  | Final Fix - Electrical Fixtures | 6d | 2025-07-03 | 2025-07-10 | PG-10320, PG-10609 FF+6d |  | 342.92d |
|  | 1.3.1.1.3.16 | **Floor 13** |  | 2025-05-05 | 2025-07-24 |  |  |  |
|  | 1.3.1.1.3.16.1 | **PHE Works** |  | 2025-05-05 | 2025-07-24 |  |  |  |
| PG-10322 |  | 1st Fix - Piping works | 12d | 2025-05-05 | 2025-05-19 | PG-10165 |  | 330.42d |
| PG-10323 |  | 2nd Fix - diverter fixing & Pressure testing | 10d | 2025-05-14 | 2025-05-26 | PG-10322 FF+6d |  | 330.42d |
| PG-10324 |  | Final Fix - CP & Sanitary fixtures | 10d | 2025-07-12 | 2025-07-24 | PG-10617, PG-10623 FF+6d |  | 330.42d |
|  | 1.3.1.1.3.16.2 | **Fire Fighting Works** |  | 2025-05-14 | 2025-07-24 |  |  |  |
| PG-10325 |  | 1st Fix - Piping and Shaft hydrant works | 11.83d | 2025-05-14 | 2025-05-28 | PG-10614 FF+6d |  | 375.08d |
| PG-10326 |  | 2nd Fix - Sprinkler fixing & Pressure testing | 10d | 2025-06-20 | 2025-07-02 | PG-10622 FF+6d |  | 340.42d |
| PG-10327 |  | Final Fix - Smoke & heat detectors, FHC , FAS Etc. | 10d | 2025-07-14 | 2025-07-24 | PG-10326, PG-10623 FF+6d |  | 330.42d |
|  | 1.3.1.1.3.16.3 | **Electrical Works** |  | 2025-05-05 | 2025-07-24 |  |  |  |
| PG-10328 |  | 1st Fix - GI wire pulling | 8d | 2025-05-05 | 2025-05-14 | PG-10165 |  | 375.08d |
| PG-10329 |  | 2nd Fix - Wiring works | 15d | 2025-06-13 | 2025-07-01 | PG-10622 FF+5d |  | 345.42d |
| PG-10330 |  | Final Fix - Electrical Fixtures | 6d | 2025-07-18 | 2025-07-24 | PG-10329, PG-10623 FF+6d |  | 330.42d |
|  | 1.3.1.1.3.17 | **Floor 14** |  | 2025-05-17 | 2025-08-06 |  |  |  |
|  | 1.3.1.1.3.17.1 | **PHE Works** |  | 2025-05-17 | 2025-08-06 |  |  |  |
| PG-10331 |  | 1st Fix - Piping works | 12d | 2025-05-17 | 2025-05-31 | PG-10170 |  | 319.42d |
| PG-10332 |  | 2nd Fix - diverter fixing & Pressure testing | 10d | 2025-05-27 | 2025-06-07 | PG-10331 FF+6d |  | 319.42d |
| PG-10333 |  | Final Fix - CP & Sanitary fixtures | 10d | 2025-07-26 | 2025-08-06 | PG-10631, PG-10637 FF+6d |  | 319.42d |
|  | 1.3.1.1.3.17.2 | **Fire Fighting Works** |  | 2025-05-27 | 2025-08-06 |  |  |  |
| PG-10334 |  | 1st Fix - Piping and Shaft hydrant works | 12d | 2025-05-27 | 2025-06-10 | PG-10628 FF+6d |  | 366.08d |
| PG-10335 |  | 2nd Fix - Sprinkler fixing & Pressure testing | 10d | 2025-07-03 | 2025-07-15 | PG-10636 FF+6d |  | 329.42d |
| PG-10336 |  | Final Fix - Smoke & heat detectors, FHC , FAS Etc. | 10d | 2025-07-26 | 2025-08-06 | PG-10335, PG-10637 FF+6d |  | 319.42d |
|  | 1.3.1.1.3.17.3 | **Electrical Works** |  | 2025-05-17 | 2025-08-06 |  |  |  |

| ID | WBS | Task | Duration | Start | Finish | Predecessors | Total float |
| --- | --- | --- | --- | --- | --- | --- | --- |
| PG-10337 |  | 1st Fix - GI wire pulling | 8d | 2025-05-17 | 2025-05-27 | PG-10170 | 366.08d |
| PG-10338 |  | 2nd Fix - Wiring works | 15d | 2025-06-26 | 2025-07-14 | PG-10636 FF+5d | 334.42d |
| PG-10339 |  | Final Fix - Electrical Fixtures | 6d | 2025-07-31 | 2025-08-06 | PG-10338, PG-10637 FF+6d | 319.42d |
|  | 1.3.1.1.3.18 | **Floor 15** |  | 2025-05-30 | 2025-08-19 |  |  |
|  | 1.3.1.1.3.18.1 | **PHE Works** |  | 2025-05-30 | 2025-08-19 |  |  |
| PG-10340 |  | 1st Fix - Piping works | 12d | 2025-05-30 | 2025-06-13 | PG-10175 | 126.92d |
| PG-10341 |  | 2nd Fix - diverter fixing & Pressure testing | 10d | 2025-06-09 | 2025-06-20 | PG-10340 FF+6d | 126.92d |
| PG-10342 |  | Final Fix - CP & Sanitary fixtures | 10d | 2025-08-07 | 2025-08-19 | PG-10645, PG-10651 FF+6d | 309.42d |
|  | 1.3.1.1.3.18.2 | **Fire Fighting Works** |  | 2025-06-09 | 2025-08-19 |  |  |
| PG-10343 |  | 1st Fix - Piping and Shaft hydrant works | 12d | 2025-06-09 | 2025-06-23 | PG-10642 FF+6d | 356.08d |
| PG-10344 |  | 2nd Fix - Sprinkler fixing & Pressure testing | 10d | 2025-07-16 | 2025-07-28 | PG-10650 FF+6d | 318.42d |
| PG-10345 |  | Final Fix - Smoke & heat detectors, FHC , FAS Etc. | 10d | 2025-08-07 | 2025-08-19 | PG-10344, PG-10651 FF+6d | 309.42d |
|  | 1.3.1.1.3.18.3 | **Electrical Works** |  | 2025-05-30 | 2025-08-19 |  |  |
| PG-10346 |  | 1st Fix - GI wire pulling | 8d | 2025-05-30 | 2025-06-09 | PG-10175 | 356.08d |
| PG-10347 |  | 2nd Fix - Wiring works | 15d | 2025-07-09 | 2025-07-26 | PG-10650 FF+5d | 323.42d |
| PG-10348 |  | Final Fix - Electrical Fixtures | 6d | 2025-08-12 | 2025-08-19 | PG-10347, PG-10651 FF+6d | 309.42d |
|  | 1.3.1.1.3.19 | **Floor 16** |  | 2025-06-12 | 2025-09-01 |  |  |
|  | 1.3.1.1.3.19.1 | **PHE Works** |  | 2025-06-12 | 2025-09-01 |  |  |
| PG-10349 |  | 1st Fix - Piping works | 12d | 2025-06-12 | 2025-06-26 | PG-10180 | 298.42d |
| PG-10350 |  | 2nd Fix - diverter fixing & Pressure testing | 10d | 2025-06-21 | 2025-07-03 | PG-10349 FF+6d | 298.42d |
| PG-10351 |  | Final Fix - CP & Sanitary fixtures | 10d | 2025-08-21 | 2025-09-01 | PG-10659, PG-10665 FF+6d | 298.42d |
|  | 1.3.1.1.3.19.2 | **Fire Fighting Works** |  | 2025-06-21 | 2025-09-01 |  |  |
| PG-10352 |  | 1st Fix - Piping and Shaft hydrant works | 12d | 2025-06-21 | 2025-07-05 | PG-10656 FF+6d | 345.08d |
| PG-10353 |  | 2nd Fix - Sprinkler fixing & Pressure testing | 10d | 2025-07-29 | 2025-08-09 | PG-10664 FF+6d | 307.42d |
| PG-10354 |  | Final Fix - Smoke & heat detectors, FHC , FAS Etc. | 10d | 2025-08-21 | 2025-09-01 | PG-10353, PG-10665 FF+6d | 298.42d |
|  | 1.3.1.1.3.19.3 | **Electrical Works** |  | 2025-06-12 | 2025-09-01 |  |  |
| PG-10355 |  | 1st Fix - GI wire pulling | 8d | 2025-06-12 | 2025-06-21 | PG-10180 | 345.08d |
| PG-10356 |  | 2nd Fix - Wiring works | 15d | 2025-07-22 | 2025-08-08 | PG-10664 FF+5d | 312.42d |
| PG-10357 |  | Final Fix - Electrical Fixtures | 6d | 2025-08-26 | 2025-09-01 | PG-10356, PG-10665 FF+6d | 298.42d |
|  | 1.3.1.1.3.20 | **Floor 17** |  | 2025-06-25 | 2025-09-13 |  |  |
|  | 1.3.1.1.3.20.1 | **PHE Works** |  | 2025-06-25 | 2025-09-13 |  |  |
| PG-10358 |  | 1st Fix - Piping works | 12d | 2025-06-25 | 2025-07-09 | PG-10185 | 287.42d |
| PG-10359 |  | 2nd Fix - diverter fixing & Pressure testing | 10d | 2025-07-04 | 2025-07-16 | PG-10358 FF+6d | 287.42d |
| PG-10360 |  | Final Fix - CP & Sanitary fixtures | 10d | 2025-09-03 | 2025-09-13 | PG-10673, PG-10679 FF+6d | 287.42d |
|  | 1.3.1.1.3.20.2 | **Fire Fighting Works** |  | 2025-07-04 | 2025-09-13 |  |  |
| PG-10361 |  | 1st Fix - Piping and Shaft hydrant works | 12d | 2025-07-04 | 2025-07-18 | PG-10670 FF+6d | 334.08d |
| PG-10362 |  | 2nd Fix - Sprinkler fixing & Pressure testing | 10d | 2025-08-11 | 2025-08-23 | PG-10678 FF+6d | 296.42d |
| PG-10363 |  | Final Fix - Smoke & heat detectors, FHC , FAS Etc. | 10d | 2025-09-03 | 2025-09-13 | PG-10362, PG-10679 FF+6d | 287.42d |
|  | 1.3.1.1.3.20.3 | **Electrical Works** |  | 2025-06-25 | 2025-09-13 |  |  |
| PG-10364 |  | 1st Fix - GI wire pulling | 8d | 2025-06-25 | 2025-07-04 | PG-10185 | 334.08d |
| PG-10365 |  | 2nd Fix - Wiring works | 15d | 2025-08-04 | 2025-08-22 | PG-10678 FF+5d | 301.42d |
| PG-10366 |  | Final Fix - Electrical Fixtures | 6d | 2025-09-08 | 2025-09-13 | PG-10365, PG-10679 FF+6d | 287.42d |
|  | 1.3.1.1.3.21 | **Floor 18** |  | 2025-07-08 | 2025-09-26 |  |  |
|  | 1.3.1.1.3.21.1 | **PHE Works** |  | 2025-07-08 | 2025-09-26 |  |  |
| PG-10367 |  | 1st Fix - Piping works | 12d | 2025-07-08 | 2025-07-22 | PG-10190 | 40.58d |
| PG-10368 |  | 2nd Fix - diverter fixing & Pressure testing | 10d | 2025-07-17 | 2025-07-29 | PG-10367 FF+6d | 276.42d |
| PG-10369 |  | Final Fix - CP & Sanitary fixtures | 10d | 2025-09-16 | 2025-09-26 | PG-10687, PG-10693 FF+6d | 276.42d |
|  | 1.3.1.1.3.21.2 | **Fire Fighting Works** |  | 2025-07-17 | 2025-09-26 |  |  |
| PG-10370 |  | 1st Fix - Piping and Shaft hydrant works | 12d | 2025-07-17 | 2025-07-31 | PG-10684 FF+6d | 323.08d |
| PG-10371 |  | 2nd Fix - Sprinkler fixing & Pressure testing | 10d | 2025-08-25 | 2025-09-05 | PG-10692 FF+6d | 285.42d |
| PG-10372 |  | Final Fix - Smoke & heat detectors, FHC , FAS Etc. | 10d | 2025-09-16 | 2025-09-26 | PG-10371, PG-10693 FF+6d | 276.42d |
|  | 1.3.1.1.3.21.3 | **Electrical Works** |  | 2025-07-08 | 2025-09-26 |  |  |
| PG-10373 |  | 1st Fix - GI wire pulling | 8d | 2025-07-08 | 2025-07-17 | PG-10190 | 323.08d |
| PG-10374 |  | 2nd Fix - Wiring works | 15d | 2025-08-18 | 2025-09-04 | PG-10692 FF+5d | 290.42d |
| PG-10375 |  | Final Fix - Electrical Fixtures | 6d | 2025-09-20 | 2025-09-26 | PG-10374, PG-10693 FF+6d | 276.42d |
|  | 1.3.1.1.3.22 | **Floor 19** |  | 2025-07-30 | 2025-10-22 |  |  |
|  | 1.3.1.1.3.22.1 | **PHE Works** |  | 2025-07-30 | 2025-10-22 |  |  |
| PG-10376 |  | 1st Fix - Piping works | 12d | 2025-07-30 | 2025-08-13 | PG-10367 FS+7d | 159.58d |
| PG-10377 |  | 2nd Fix - diverter fixing & Pressure testing | 10d | 2025-08-08 | 2025-08-21 | PG-10376 FF+6d | 159.58d |
| PG-10378 |  | Final Fix - CP & Sanitary fixtures | 9.67d | 2025-10-11 | 2025-10-22 | PG-10701, PG-10707 FF+6d | 255.42d |
|  | 1.3.1.1.3.22.2 | **Fire Fighting Works** |  | 2025-08-08 | 2025-10-22 |  |  |
| PG-10379 |  | 1st Fix - Piping and Shaft hydrant works | 12d | 2025-08-08 | 2025-08-23 | PG-10698 FF+6d | 171.58d |
| PG-10380 |  | 2nd Fix - Sprinkler fixing & Pressure testing | 9.67d | 2025-09-16 | 2025-09-27 | PG-10706 FF+6d | 266.42d |
| PG-10381 |  | Final Fix - Smoke & heat detectors, FHC , FAS Etc. | 9.67d | 2025-10-11 | 2025-10-22 | PG-10380, PG-10707 FF+6d | 255.42d |
|  | 1.3.1.1.3.22.3 | **Electrical Works** |  | 2025-07-30 | 2025-10-22 |  |  |
| PG-10382 |  | 1st Fix - GI wire pulling | 8d | 2025-07-30 | 2025-08-08 | PG-10367 FS+7d | 40.58d |
| PG-10383 |  | 2nd Fix - Wiring works | 14.67d | 2025-09-09 | 2025-09-26 | PG-10706 FF+5d | 271.42d |
| PG-10384 |  | Final Fix - Electrical Fixtures | 5.67d | 2025-10-16 | 2025-10-22 | PG-10383, PG-10707 FF+6d | 255.42d |
|  | 1.3.1.1.3.23 | **Floor 20** |  | 2025-08-22 | 2025-11-14 |  |  |
|  | 1.3.1.1.3.23.1 | **PHE Works** |  | 2025-08-22 | 2025-11-14 |  |  |

| ID | WBS | Task | Duration | Start | Finish | Predecessors | Complete | Total float |
| --- | --- | --- | --- | --- | --- | --- | --- | --- |
| PG-10385 |  | 1st Fix - Piping works | 12d | 2025-08-22 | 2025-09-05 | PG-10376 FS+7d |  | 181.25d |
| PG-10386 |  | 2nd Fix - diverter fixing & Pressure testing | 10d | 2025-09-01 | 2025-09-12 | PG-10385 FF+6d |  | 236.25d |
| PG-10387 |  | Final Fix - CP & Sanitary fixtures | 9.67d | 2025-11-03 | 2025-11-14 | PG-10715, PG-10721 FF+6d |  | 236.25d |
|  | 1.3.1.1.3.23.2 | **Fire Fighting Works** |  | 2025-09-01 | 2025-11-14 |  |  |  |
| PG-10388 |  | 1st Fix - Piping and Shaft hydrant works | 12d | 2025-09-01 | 2025-09-15 | PG-10712 FF+6d |  | 282.92d |
| PG-10389 |  | 2nd Fix - Sprinkler fixing & Pressure testing | 9.67d | 2025-10-09 | 2025-10-21 | PG-10720 FF+6d |  | 245.92d |
| PG-10390 |  | Final Fix - Smoke & heat detectors, FHC , FAS Etc. | 9.67d | 2025-11-03 | 2025-11-14 | PG-10389, PG-10721 FF+6d |  | 236.25d |
|  | 1.3.1.1.3.23.3 | **Electrical Works** |  | 2025-08-22 | 2025-11-14 |  |  |  |
| PG-10391 |  | 1st Fix - GI wire pulling | 8d | 2025-08-22 | 2025-09-01 | PG-10376 FS+7d |  | 282.92d |
| PG-10392 |  | 2nd Fix - Wiring works | 14.67d | 2025-10-01 | 2025-10-20 | PG-10720 FF+5d |  | 251.25d |
| PG-10393 |  | Final Fix - Electrical Fixtures | 5.67d | 2025-11-07 | 2025-11-14 | PG-10392, PG-10721 FF+6d |  | 236.25d |
|  | 1.3.1.1.3.24 | **Floor 21** |  | 2025-09-13 | 2025-12-06 |  |  |  |
|  | 1.3.1.1.3.24.1 | **PHE Works** |  | 2025-09-13 | 2025-12-06 |  |  |  |
| PG-10394 |  | 1st Fix - Piping works | 12d | 2025-09-13 | 2025-09-27 | PG-10385 FS+7d |  | 181.25d |
| PG-10395 |  | 2nd Fix - diverter fixing & Pressure testing | 10d | 2025-09-23 | 2025-10-06 | PG-10394 FF+6d |  | 217.25d |
| PG-10396 |  | Final Fix - CP & Sanitary fixtures | 9.83d | 2025-11-25 | 2025-12-06 | PG-10729, PG-10735 FF+6d |  | 217.25d |
|  | 1.3.1.1.3.24.2 | **Fire Fighting Works** |  | 2025-09-23 | 2025-12-06 |  |  |  |
| PG-10397 |  | 1st Fix - Piping and Shaft hydrant works | 12d | 2025-09-23 | 2025-10-08 | PG-10726 FF+6d |  | 263.92d |
| PG-10398 |  | 2nd Fix - Sprinkler fixing & Pressure testing | 9.67d | 2025-10-31 | 2025-11-13 | PG-10734 FF+6d |  | 227.25d |
| PG-10399 |  | Final Fix - Smoke & heat detectors, FHC , FAS Etc. | 9.83d | 2025-11-25 | 2025-12-06 | PG-10398, PG-10735 FF+6d |  | 217.25d |
|  | 1.3.1.1.3.24.3 | **Electrical Works** |  | 2025-09-13 | 2025-12-06 |  |  |  |
| PG-10400 |  | 1st Fix - GI wire pulling | 8d | 2025-09-13 | 2025-09-23 | PG-10385 FS+7d |  | 263.92d |
| PG-10401 |  | 2nd Fix - Wiring works | 14.83d | 2025-10-24 | 2025-11-12 | PG-10734 FF+5d |  | 232.25d |
| PG-10402 |  | Final Fix - Electrical Fixtures | 5.83d | 2025-11-29 | 2025-12-06 | PG-10401, PG-10735 FF+6d |  | 217.25d |
|  | 1.3.1.1.3.25 | **Floor 22** |  | 2025-10-07 | 2025-12-27 |  |  |  |
|  | 1.3.1.1.3.25.1 | **PHE Works** |  | 2025-10-07 | 2025-12-27 |  |  |  |
| PG-10403 |  | 1st Fix - Piping works | 12d | 2025-10-07 | 2025-10-21 | PG-10394 FS+7d |  | 181.25d |
| PG-10404 |  | 2nd Fix - diverter fixing & Pressure testing | 10d | 2025-10-16 | 2025-10-28 | PG-10403 FF+6d |  | 197.25d |
| PG-10405 |  | Final Fix - CP & Sanitary fixtures | 9.67d | 2025-12-17 | 2025-12-27 | PG-10743, PG-10749 FF+6d |  | 197.25d |
|  | 1.3.1.1.3.25.2 | **Fire Fighting Works** |  | 2025-10-16 | 2025-12-27 |  |  |  |
| PG-10406 |  | 1st Fix - Piping and Shaft hydrant works | 12d | 2025-10-16 | 2025-10-30 | PG-10740 FF+6d |  | 244.92d |
| PG-10407 |  | 2nd Fix - Sprinkler fixing & Pressure testing | 9.67d | 2025-11-24 | 2025-12-05 | PG-10748 FF+6d |  | 207.25d |
| PG-10408 |  | Final Fix - Smoke & heat detectors, FHC , FAS Etc. | 9.67d | 2025-12-17 | 2025-12-27 | PG-10407, PG-10749 FF+6d |  | 197.25d |
|  | 1.3.1.1.3.25.3 | **Electrical Works** |  | 2025-10-07 | 2025-12-27 |  |  |  |
| PG-10409 |  | 1st Fix - GI wire pulling | 8d | 2025-10-07 | 2025-10-16 | PG-10394 FS+7d |  | 244.92d |
| PG-10410 |  | 2nd Fix - Wiring works | 14.67d | 2025-11-17 | 2025-12-04 | PG-10748 FF+5d |  | 212.25d |
| PG-10411 |  | Final Fix - Electrical Fixtures | 5.67d | 2025-12-22 | 2025-12-27 | PG-10410, PG-10749 FF+6d |  | 197.25d |
|  | 1.3.1.1.3.26 | **Floor 23** |  | 2025-10-29 | 2026-01-16 |  |  |  |
|  | 1.3.1.1.3.26.1 | **PHE Works** |  | 2025-10-29 | 2026-01-16 |  |  |  |
| PG-10412 |  | 1st Fix - Piping works | 12d | 2025-10-29 | 2025-11-13 | PG-10403 FS+7d |  | 181.25d |
| PG-10413 |  | 2nd Fix - diverter fixing & Pressure testing | 10d | 2025-11-08 | 2025-11-20 | PG-10412 FF+6d |  | 181.25d |
| PG-10414 |  | Final Fix - CP & Sanitary fixtures | 10d | 2026-01-05 | 2026-01-16 | PG-10757, PG-10763 FF+6d |  | 181.25d |
|  | 1.3.1.1.3.26.2 | **Fire Fighting Works** |  | 2025-11-08 | 2026-01-16 |  |  |  |
| PG-10415 |  | 1st Fix - Piping and Shaft hydrant works | 12d | 2025-11-08 | 2025-11-22 | PG-10754 FF+6d |  | 226.08d |
| PG-10416 |  | 2nd Fix - Sprinkler fixing & Pressure testing | 10d | 2025-12-16 | 2025-12-27 | PG-10762 FF+6d |  | 188.75d |
| PG-10417 |  | Final Fix - Smoke & heat detectors, FHC , FAS Etc. | 10d | 2026-01-05 | 2026-01-16 | PG-10416, PG-10763 FF+6d, PG-10023 |  | 181.25d |
|  | 1.3.1.1.3.26.3 | **Electrical Works** |  | 2025-10-29 | 2026-01-16 |  |  |  |
| PG-10418 |  | 1st Fix - GI wire pulling | 8d | 2025-10-29 | 2025-11-08 | PG-10403 FS+7d |  | 226.08d |
| PG-10419 |  | 2nd Fix - Wiring works | 15d | 2025-12-09 | 2025-12-26 | PG-10762 FF+5d |  | 193.75d |
| PG-10420 |  | Final Fix - Electrical Fixtures | 6d | 2026-01-09 | 2026-01-16 | PG-10419, PG-10763 FF+6d |  | 181.25d |
|  | 1.3.1.1.4 | **Civil Finishes - Units** |  | 2024-10-24 | 2026-01-12 |  |  |  |
|  | 1.3.1.1.4.1 | **LBF** |  | 2024-10-24 | 2025-01-24 |  |  |  |
| PG-10421 |  | Back Filling above Raft | 30d | 2024-10-24 A | 2024-11-28 A | PG-10100 | 100% |  |
| PG-10422 |  | Car wash water collection sump with cap | 15d | 2024-11-18 A | 2024-12-05 A | PG-12708 FF+5d, PG-10421 FF+5d, PG-10198 FF+5d | 100% |  |
| PG-10423 |  | Surface Drain to slope | 10d | 2024-11-29 A | 2024-12-11 A | PG-10422 FF+5d | 100% |  |
| PG-10424 |  | Grade Slab | 10d | 2024-12-05 A | 2024-12-17 A | PG-10423 FF+5d | 100% |  |
| PG-10425 |  | First Coat Painting works | 14.67d | 2024-12-11 A | 2024-12-28 A | PG-10424 FF+10d | 100% |  |
| PG-10426 |  | Final coat painting | 10.5d | 2025-01-07 A | 2025-01-18 A | PG-10201 | 100% |  |
| PG-10427 |  | Car park marking and column corner beading fixing | 8.67d | 2025-01-14 A | 2025-01-24 A | PG-10426 FF+5d | 100% |  |
|  | 1.3.1.1.4.2 | **UBF** |  | 2024-12-11 | 2025-02-18 |  |  |  |
| PG-10428 |  | Surface Drain with Grade Slab to slope | 15d | 2024-12-11 A | 2024-12-28 A | PG-10421 FS+10d | 100% |  |
| PG-10429 |  | First Coat Paint works | 11.67d | 2025-01-09 A | 2025-01-24 A | PG-10428, PG-10202 | 100% |  |
| PG-10430 |  | Final Coat Paint Works | 9.67d | 2025-01-24 A | 2025-02-05 A | PG-10429, PG-10204 FF+5d | 100% |  |
| PG-10431 |  | Car park marking and column corner beading fixing | 10.67d | 2025-02-05 A | 2025-02-18 A | PG-10430 | 100% |  |
|  | 1.3.1.1.4.3 | **Ground Floor** |  | 2024-10-24 | 2025-01-07 |  |  |  |
|  | 1.3.1.1.4.3.1 | **Ceiling Finishing works - Civil** |  | 2024-11-04 | 2025-01-07 |  |  |  |
| PG-10432 |  | Gypsum Plastering | 6d | 2024-11-04 A | 2024-11-11 A | PG-10211 | 100% |  |
| PG-10433 |  | Cornice fixing | 4d | 2024-11-20 A | 2024-11-25 A | PG-10208 FF+6d | 100% |  |
| PG-10435 |  | Toilet False ceiling | 4d | 2024-11-28 A | 2024-12-03 A | PG-10443 FF+5d | 100% |  |
| PG-10434 |  | Painting Works - Putty, Primer and 1st | 6d | 2024-12-09 A | 2024-12-16 A | PG-10433, PG-10438 | 100% |  |

| ID | WBS | Task | Duration | Start | Finish | Predecessors | Complete |
| --- | --- | --- | --- | --- | --- | --- | --- |
| PG-10436 |  | Final Coat Painting | 18.5d | 2024-12-16 A | 2025-01-07 A | PG-10434, PG-10445 | 100% |
|  | 1.3.1.1.4.3.2 | **Wall Finishing works - Civil** |  | 2024-10-24 | 2025-01-07 |  |  |
| PG-10437 |  | Balcony Railing Fixing works | 4d | 2024-10-24 A | 2024-10-29 A | PG-10100 | 100% |
| PG-10439 |  | Dadoing - Wet area | 5d | 2024-11-15 A | 2024-11-21 A | PG-10206 | 100% |
| PG-10438 |  | UPVC Windows & Sliding doors | 5d | 2024-12-03 A | 2024-12-09 A | PG-10437, PG-10444 FF+5d | 100% |
| PG-10440 |  | Painting Works - Putty, Primer and 1st | 6d | 2024-12-09 A | 2024-12-16 A | PG-10438 | 100% |
| PG-10441 |  | Final Coat Painting | 18.5d | 2024-12-16 A | 2025-01-07 A | PG-10445 | 100% |
|  | 1.3.1.1.4.3.3 | **Floor Finishing Works - Civil** |  | 2024-10-24 | 2024-12-16 |  |  |
| PG-10442 |  | Waterproofing for sunken areas | 3d | 2024-10-24 A | 2024-10-28 A | PG-10100 | 100% |
| PG-10443 |  | Floor Tiling - Wet area | 5d | 2024-11-21 A | 2024-11-27 A | PG-10442, PG-10439 | 100% |
| PG-10444 |  | Floor Tiling - Dry area | 5d | 2024-11-27 A | 2024-12-03 A | PG-10443 FF+5d | 100% |
| PG-10445 |  | Wooden doors | 5d | 2024-12-10 A | 2024-12-16 A | PG-10440 FF | 100% |
|  | 1.3.1.1.4.4 | **Floor 1** |  | 2024-11-09 | 2025-01-24 |  |  |
|  | 1.3.1.1.4.4.1 | **Ceiling Finishing works - Civil** |  | 2024-11-19 | 2025-01-23 |  |  |
| PG-10446 |  | Gypsum Plastering | 6d | 2024-11-19 A | 2024-11-26 A | PG-10220 | 100% |
| PG-10447 |  | Cornice fixing | 4d | 2024-12-05 A | 2024-12-10 A | PG-10217 FF+6d | 100% |
| PG-10449 |  | Toilet False ceiling | 4d | 2024-12-14 A | 2024-12-19 A | PG-10457 FF+5d | 100% |
| PG-10448 |  | Painting Works - Putty, Primer and 1st | 6d | 2024-12-25 A | 2025-01-01 A | PG-10447, PG-10452 | 100% |
| PG-10450 |  | Final Coat Painting | 18.5d | 2025-01-01 A | 2025-01-23 A | PG-10448, PG-10459 | 100% |
|  | 1.3.1.1.4.4.2 | **Wall Finishing works - Civil** |  | 2024-11-09 | 2025-01-24 |  |  |
| PG-10451 |  | Balcony Railing Fixing works | 4d | 2024-11-09 A | 2024-11-14 A | PG-10105 | 100% |
| PG-10453 |  | Dadoing - Wet area | 5d | 2024-11-30 A | 2024-12-07 A | PG-10215 | 100% |
| PG-10452 |  | UPVC Windows & Sliding doors | 5d | 2024-12-19 A | 2024-12-25 A | PG-10451, PG-10458 FF+5d | 100% |
| PG-10454 |  | Painting Works - Putty, Primer and 1st | 6d | 2024-12-25 A | 2025-01-01 A | PG-10452 | 100% |
| PG-10455 |  | Final Coat Painting | 18.5d | 2025-01-01 A | 2025-01-24 A | PG-10459 | 100% |
|  | 1.3.1.1.4.4.3 | **Floor Finishing Works - Civil** |  | 2024-11-09 | 2025-01-01 |  |  |
| PG-10456 |  | Waterproofing for sunken areas | 3d | 2024-11-09 A | 2024-11-13 A | PG-10105 | 100% |
| PG-10457 |  | Floor Tiling - Wet area | 5d | 2024-12-07 A | 2024-12-13 A | PG-10456, PG-10453 | 100% |
| PG-10458 |  | Floor Tiling - Dry area | 5d | 2024-12-13 A | 2024-12-19 A | PG-10457 FF+5d | 100% |
| PG-10459 |  | Wooden doors | 5d | 2024-12-26 A | 2025-01-01 A | PG-10454 FF | 100% |
|  | 1.3.1.1.4.5 | **Floor 2** |  | 2024-11-25 | 2025-02-07 |  |  |
|  | 1.3.1.1.4.5.1 | **Ceiling Finishing works - Civil** |  | 2024-12-04 | 2025-02-05 |  |  |
| PG-10460 |  | Gypsum Plastering | 6d | 2024-12-04 A | 2024-12-11 A | PG-10229 | 100% |
| PG-10461 |  | Cornice fixing | 4d | 2024-12-21 A | 2024-12-26 A | PG-10226 FF+6d | 100% |
| PG-10463 |  | Toilet False ceiling | 4d | 2024-12-28 A | 2025-01-02 A | PG-10471 FF+5d | 100% |
| PG-10462 |  | Painting Works - Putty, Primer and 1st | 6d | 2025-01-08 A | 2025-01-15 A | PG-10461, PG-10466 | 100% |
| PG-10464 |  | Final Coat Painting | 18.5d | 2025-01-15 A | 2025-02-05 A | PG-10462, PG-10473 | 100% |
|  | 1.3.1.1.4.5.2 | **Wall Finishing works - Civil** |  | 2024-11-25 | 2025-02-07 |  |  |
| PG-10465 |  | Balcony Railing Fixing works | 4d | 2024-11-25 A | 2024-11-29 A | PG-10110 | 100% |
| PG-10467 |  | Dadoing - Wet area | 5d | 2024-12-16 A | 2024-12-21 A | PG-10224 | 100% |
| PG-10466 |  | UPVC Windows & Sliding doors | 5d | 2025-01-02 A | 2025-01-08 A | PG-10465, PG-10472 FF+5d | 100% |
| PG-10468 |  | Painting Works - Putty, Primer and 1st | 6d | 2025-01-08 A | 2025-01-15 A | PG-10466 | 100% |
| PG-10469 |  | Final Coat Painting | 18.5d | 2025-01-15 A | 2025-02-07 A | PG-10473 | 100% |
|  | 1.3.1.1.4.5.3 | **Floor Finishing Works - Civil** |  | 2024-11-25 | 2025-01-15 |  |  |
| PG-10470 |  | Waterproofing for sunken areas | 3d | 2024-11-25 A | 2024-11-28 A | PG-10110 | 100% |
| PG-10471 |  | Floor Tiling - Wet area | 5d | 2024-12-21 A | 2024-12-27 A | PG-10470, PG-10467 | 100% |
| PG-10472 |  | Floor Tiling - Dry area | 5d | 2024-12-27 A | 2025-01-02 A | PG-10471 FF+5d | 100% |
| PG-10473 |  | Wooden doors | 5d | 2025-01-09 A | 2025-01-15 A | PG-10468 FF | 100% |
|  | 1.3.1.1.4.6 | **Floor 3** |  | 2024-12-10 | 2025-02-25 |  |  |
|  | 1.3.1.1.4.6.1 | **Ceiling Finishing works - Civil** |  | 2024-12-19 | 2025-02-24 |  |  |
| PG-10474 |  | Gypsum Plastering | 6d | 2024-12-19 A | 2024-12-26 A | PG-10238 | 100% |
| PG-10475 |  | Cornice fixing | 4d | 2025-01-04 A | 2025-01-09 A | PG-10235 FF+6d | 100% |
| PG-10477 |  | Toilet False ceiling | 4d | 2025-01-14 A | 2025-01-18 A | PG-10485 FF+5d | 100% |
| PG-10476 |  | Painting Works - Putty, Primer and 1st | 6d | 2025-01-24 A | 2025-01-30 A | PG-10475, PG-10480 | 100% |
| PG-10478 |  | Final Coat Painting | 19.5d | 2025-01-31 A | 2025-02-24 A | PG-10476, PG-10487 | 100% |
|  | 1.3.1.1.4.6.2 | **Wall Finishing works - Civil** |  | 2024-12-10 | 2025-02-25 |  |  |
| PG-10479 |  | Balcony Railing Fixing works | 4d | 2024-12-10 A | 2024-12-14 A | PG-10115 | 100% |
| PG-10481 |  | Dadoing - Wet area | 5d | 2025-01-01 A | 2025-01-07 A | PG-10233 | 100% |
| PG-10480 |  | UPVC Windows & Sliding doors | 5d | 2025-01-18 A | 2025-01-24 A | PG-10479, PG-10486 FF+5d | 100% |
| PG-10482 |  | Painting Works - Putty, Primer and 1st | 6d | 2025-01-24 A | 2025-01-31 A | PG-10480 | 100% |
| PG-10483 |  | Final Coat Painting | 19.5d | 2025-01-31 A | 2025-02-25 A | PG-10487 | 100% |
|  | 1.3.1.1.4.6.3 | **Floor Finishing Works - Civil** |  | 2024-12-10 | 2025-01-31 |  |  |
| PG-10484 |  | Waterproofing for sunken areas | 3d | 2024-12-10 A | 2024-12-13 A | PG-10115 | 100% |
| PG-10485 |  | Floor Tiling - Wet area | 5d | 2025-01-07 A | 2025-01-13 A | PG-10481 | 100% |
| PG-10486 |  | Floor Tiling - Dry area | 5d | 2025-01-13 A | 2025-01-18 A | PG-10485 FF+5d | 100% |
| PG-10487 |  | Wooden doors | 5d | 2025-01-25 A | 2025-01-31 A | PG-10484, PG-10482 FF | 100% |
|  | 1.3.1.1.4.7 | **Floor 4** |  | 2024-12-25 | 2025-03-10 |  |  |
|  | 1.3.1.1.4.7.1 | **Ceiling Finishing works - Civil** |  | 2025-01-03 | 2025-03-10 |  |  |
| PG-10488 |  | Gypsum Plastering | 6d | 2025-01-03 A | 2025-01-11 A | PG-10247 | 100% |
| PG-10489 |  | Cornice fixing | 4d | 2025-01-20 A | 2025-01-24 A | PG-10244 FF+6d | 100% |

| ID | WBS | Task | Duration | Start | Finish | Predecessors | Complete | Total float |
| --- | --- | --- | --- | --- | --- | --- | --- | --- |
| PG-10491 |  | Toilet False ceiling | 4d | 2025-01-29 A | 2025-02-03 A | PG-10499 FF+5d | 100% |  |
| PG-10490 |  | Painting Works - Putty, Primer and 1st | 6d | 2025-02-07 A | 2025-02-15 A | PG-10489, PG-10494 | 100% |  |
| PG-10492 |  | Final Coat Painting | 18.5d | 2025-02-15 A | 2025-03-10 A | PG-10490, PG-10501 | 100% |  |
|  | 1.3.1.1.4.7.2 | **Wall Finishing works - Civil** |  | 2024-12-25 | 2025-03-10 |  |  |  |
| PG-10493 |  | Balcony Railing Fixing works | 4d | 2024-12-25 A | 2024-12-30 A | PG-10120 | 100% |  |
| PG-10495 |  | Dadoing - Wet area | 5d | 2025-01-15 A | 2025-01-22 A | PG-10242 | 100% |  |
| PG-10494 |  | UPVC Windows & Sliding doors | 5d | 2025-02-03 A | 2025-02-07 A | PG-10493, PG-10500 FF+5d | 100% |  |
| PG-10496 |  | Painting Works - Putty, Primer and 1st | 6d | 2025-02-07 A | 2025-02-14 A | PG-10494 | 100% |  |
| PG-10497 |  | Final Coat Painting | 18.5d | 2025-02-14 A | 2025-03-10 A | PG-10501 | 100% |  |
|  | 1.3.1.1.4.7.3 | **Floor Finishing Works - Civil** |  | 2024-12-25 | 2025-02-14 |  |  |  |
| PG-10498 |  | Waterproofing for sunken areas | 3d | 2024-12-25 A | 2024-12-28 A | PG-10120 | 100% |  |
| PG-10499 |  | Floor Tiling - Wet area | 5d | 2025-01-22 A | 2025-01-28 A | PG-10498, PG-10495 | 100% |  |
| PG-10500 |  | Floor Tiling - Dry area | 5d | 2025-01-28 A | 2025-02-03 A | PG-10499 FF+5d | 100% |  |
| PG-10501 |  | Wooden doors | 5d | 2025-02-08 A | 2025-02-14 A | PG-10496 FF | 100% |  |
|  | 1.3.1.1.4.8 | **Floor 5** |  | 2025-01-09 | 2025-03-26 |  |  |  |
|  | 1.3.1.1.4.8.1 | **Ceiling Finishing works - Civil** |  | 2025-01-18 | 2025-03-26 |  |  |  |
| PG-10502 |  | Gypsum Plastering | 6d | 2025-01-18 A | 2025-01-25 A | PG-10256 | 100% |  |
| PG-10503 |  | Cornice fixing | 4d | 2025-02-04 A | 2025-02-08 A | PG-10253 FF+6d | 100% |  |
| PG-10505 |  | Toilet False ceiling | 4d | 2025-02-12 A | 2025-02-17 A | PG-10513 FF+5d | 100% |  |
| PG-10504 |  | Painting Works - Putty, Primer and 1st | 6d | 2025-02-22 A | 2025-03-01 A | PG-10503, PG-10508 | 100% |  |
| PG-10506 |  | Final Coat Painting | 18.67d | 2025-03-03 A | 2025-03-26 A | PG-10504, PG-10515 | 100% |  |
|  | 1.3.1.1.4.8.2 | **Wall Finishing works - Civil** |  | 2025-01-09 | 2025-03-25 |  |  |  |
| PG-10507 |  | Balcony Railing Fixing works | 4d | 2025-01-09 A | 2025-01-14 A | PG-10125 | 100% |  |
| PG-10509 |  | Dadoing - Wet area | 5d | 2025-01-30 A | 2025-02-05 A | PG-10251 | 100% |  |
| PG-10508 |  | UPVC Windows & Sliding doors | 5d | 2025-02-17 A | 2025-02-22 A | PG-10507, PG-10514 FF+5d | 100% |  |
| PG-10510 |  | Painting Works - Putty, Primer and 1st | 6d | 2025-02-22 A | 2025-03-03 A | PG-10508 | 100% |  |
| PG-10511 |  | Final Coat Painting | 18.67d | 2025-03-03 A | 2025-03-25 A | PG-10515 | 100% |  |
|  | 1.3.1.1.4.8.3 | **Floor Finishing Works - Civil** |  | 2025-01-09 | 2025-03-03 |  |  |  |
| PG-10512 |  | Waterproofing for sunken areas | 3d | 2025-01-09 A | 2025-01-13 A | PG-10125 | 100% |  |
| PG-10513 |  | Floor Tiling - Wet area | 5d | 2025-02-05 A | 2025-02-11 A | PG-10512, PG-10509 | 100% |  |
| PG-10514 |  | Floor Tiling - Dry area | 5d | 2025-02-11 A | 2025-02-17 A | PG-10513 FF+5d | 100% |  |
| PG-10515 |  | Wooden doors | 5d | 2025-02-25 A | 2025-03-03 A | PG-10510 FF | 100% |  |
|  | 1.3.1.1.4.9 | **Floor 6** |  | 2025-01-24 | 2025-04-09 |  |  |  |
|  | 1.3.1.1.4.9.1 | **Ceiling Finishing works - Civil** |  | 2025-02-03 | 2025-04-08 |  |  |  |
| PG-10516 |  | Gypsum Plastering | 6d | 2025-02-03 A | 2025-02-10 A | PG-10265 | 100% |  |
| PG-10517 |  | Cornice fixing | 4d | 2025-02-19 A | 2025-02-24 A | PG-10262 FF+6d | 100% |  |
| PG-10519 |  | Toilet False ceiling | 4d | 2025-02-28 A | 2025-03-05 A | PG-10527 FF+5d | 100% |  |
| PG-10518 |  | Painting Works - Putty, Primer and 1st | 6d | 2025-03-10 A | 2025-03-18 A | PG-10517, PG-10522 | 100% |  |
| PG-10520 |  | Final Coat Painting | 18.67d | 2025-03-18 A | 2025-04-08 | PG-10518, PG-10529 | 84% | 451.79d |
|  | 1.3.1.1.4.9.2 | **Wall Finishing works - Civil** |  | 2025-01-24 | 2025-04-09 |  |  |  |
| PG-10521 |  | Balcony Railing Fixing works | 4d | 2025-01-24 A | 2025-01-29 A | PG-10130 | 100% |  |
| PG-10523 |  | Dadoing - Wet area | 5d | 2025-02-15 A | 2025-02-21 A | PG-10260 | 100% |  |
| PG-10522 |  | UPVC Windows & Sliding doors | 5d | 2025-03-04 A | 2025-03-10 A | PG-10521, PG-10528 FF+5d | 100% |  |
| PG-10524 |  | Painting Works - Putty, Primer and 1st | 6d | 2025-03-10 A | 2025-03-17 A | PG-10522 | 100% |  |
| PG-10525 |  | Final Coat Painting | 18.67d | 2025-03-17 A | 2025-04-09 | PG-10529 | 76% | 414.72d |
|  | 1.3.1.1.4.9.3 | **Floor Finishing Works - Civil** |  | 2025-01-24 | 2025-03-17 |  |  |  |
| PG-10526 |  | Waterproofing for sunken areas | 3d | 2025-01-24 A | 2025-01-28 A | PG-10130 | 100% |  |
| PG-10527 |  | Floor Tiling - Wet area | 5d | 2025-02-21 A | 2025-02-27 A | PG-10526, PG-10523 | 100% |  |
| PG-10528 |  | Floor Tiling - Dry area | 5d | 2025-02-27 A | 2025-03-04 A | PG-10527 FF+5d | 100% |  |
| PG-10529 |  | Wooden doors | 5d | 2025-03-11 A | 2025-03-17 A | PG-10524 FF | 100% |  |
|  | 1.3.1.1.4.10 | **Floor 7** |  | 2025-02-08 | 2025-04-24 |  |  |  |
|  | 1.3.1.1.4.10.1 | **Ceiling Finishing works - Civil** |  | 2025-02-19 | 2025-04-24 |  |  |  |
| PG-10530 |  | Gypsum Plastering | 6d | 2025-02-19 A | 2025-02-25 A | PG-10274 | 100% |  |
| PG-10531 |  | Cornice fixing | 4d | 2025-03-07 A | 2025-03-12 A | PG-10271 FF+6d | 100% |  |
| PG-10533 |  | Toilet False ceiling | 4d | 2025-03-17 A | 2025-03-21 A | PG-10541 FF+5d | 100% |  |
| PG-10532 |  | Painting Works - Putty, Primer and 1st | 6d | 2025-03-27 A | 2025-04-03 A | PG-10531, PG-10536 | 100% |  |
| PG-10534 |  | Final Coat Painting | 19.5d | 2025-04-03 A | 2025-04-24 | PG-10532, PG-10543 | 9% | 437.34d |
|  | 1.3.1.1.4.10.2 | **Wall Finishing works - Civil** |  | 2025-02-08 | 2025-04-24 |  |  |  |
| PG-10535 |  | Balcony Railing Fixing works | 4d | 2025-02-08 A | 2025-02-13 A | PG-10135 | 100% |  |
| PG-10537 |  | Dadoing - Wet area | 5d | 2025-03-04 A | 2025-03-10 A | PG-10269 | 100% |  |
| PG-10536 |  | UPVC Windows & Sliding doors | 5d | 2025-03-21 A | 2025-03-27 A | PG-10535, PG-10542 FF+5d | 100% |  |
| PG-10538 |  | Painting Works - Putty, Primer and 1st | 6d | 2025-03-27 A | 2025-04-03 A | PG-10536 | 100% |  |
| PG-10539 |  | Final Coat Painting | 19.5d | 2025-04-03 A | 2025-04-24 | PG-10543 | 9% | 402.59d |
|  | 1.3.1.1.4.10.3 | **Floor Finishing Works - Civil** |  | 2025-02-08 | 2025-04-03 |  |  |  |
| PG-10540 |  | Waterproofing for sunken areas | 3d | 2025-02-08 A | 2025-02-12 A | PG-10135 | 100% |  |
| PG-10541 |  | Floor Tiling - Wet area | 5d | 2025-03-10 A | 2025-03-15 A | PG-10537 | 100% |  |
| PG-10542 |  | Floor Tiling - Dry area | 5d | 2025-03-15 A | 2025-03-21 A | PG-10541 FF+5d | 100% |  |
| PG-10543 |  | Wooden doors | 5d | 2025-03-28 A | 2025-04-03 A | PG-10540, PG-10538 FF | 100% |  |
|  | 1.3.1.1.4.11 | **Floor 8** |  | 2025-02-25 | 2025-05-08 |  |  |  |
|  | 1.3.1.1.4.11.1 | **Ceiling Finishing works - Civil** |  | 2025-03-06 | 2025-05-08 |  |  |  |

| ID | WBS | Task | Duration | Start | Finish | Predecessors | Complete | Total float |
| --- | --- | --- | --- | --- | --- | --- | --- | --- |
| PG-10544 |  | Gypsum Plastering | 6d | 2025-03-06 A | 2025-03-13 A | PG-10283 | 100% |  |
| PG-10545 |  | Cornice fixing | 4d | 2025-03-24 A | 2025-03-28 A | PG-10280 FF+6d | 100% |  |
| PG-10547 |  | Toilet False ceiling | 4d | 2025-03-31 A | 2025-04-04 A | PG-10555 FF+5d | 100% |  |
| PG-10546 |  | Painting Works - Putty, Primer and 1st | 6d | 2025-04-10 | 2025-04-16 | PG-10545, PG-10550 |  | 423.5d |
| PG-10548 |  | Final Coat Painting | 18.5d | 2025-04-17 | 2025-05-08 | PG-10546, PG-10557 |  | 423.5d |
|  | 1.3.1.1.4.11.2 | **Wall Finishing works - Civil** |  | 2025-02-25 | 2025-05-08 |  |  |  |
| PG-10549 |  | Balcony Railing Fixing works | 4d | 2025-02-25 A | 2025-03-01 A | PG-10140 | 100% |  |
| PG-10551 |  | Dadoing - Wet area | 5d | 2025-03-17 A | 2025-03-22 A | PG-10278 | 100% |  |
| PG-10550 |  | UPVC Windows & Sliding doors | 5d | 2025-04-04 A | 2025-04-09 | PG-10549, PG-10556 FF+5d | 19% | 388.83d |
| PG-10552 |  | Painting Works - Putty, Primer and 1st | 6d | 2025-04-10 | 2025-04-16 | PG-10550 |  | 388.83d |
| PG-10553 |  | Final Coat Painting | 18.5d | 2025-04-17 | 2025-05-08 | PG-10557 |  | 388.83d |
|  | 1.3.1.1.4.11.3 | **Floor Finishing Works - Civil** |  | 2025-02-25 | 2025-04-16 |  |  |  |
| PG-10554 |  | Waterproofing for sunken areas | 3d | 2025-02-25 A | 2025-02-27 A | PG-10140 | 100% |  |
| PG-10555 |  | Floor Tiling - Wet area | 5d | 2025-03-22 A | 2025-03-29 A | PG-10554, PG-10551 | 100% |  |
| PG-10556 |  | Floor Tiling - Dry area | 5d | 2025-03-29 A | 2025-04-04 A | PG-10555 FF+5d | 100% |  |
| PG-10557 |  | Wooden doors | 5d | 2025-04-11 | 2025-04-16 | PG-10552 FF |  | 388.83d |
|  | 1.3.1.1.4.12 | **Floor 9** |  | 2025-03-12 | 2025-05-22 |  |  |  |
|  | 1.3.1.1.4.12.1 | **Ceiling Finishing works - Civil** |  | 2025-03-20 | 2025-05-22 |  |  |  |
| PG-10558 |  | Gypsum Plastering | 6d | 2025-03-20 A | 2025-03-28 A | PG-10292 | 100% |  |
| PG-10559 |  | Cornice fixing | 4d | 2025-04-07 | 2025-04-10 | PG-10289 FF+6d |  | 423.67d |
| PG-10561 |  | Toilet False ceiling | 4d | 2025-04-14 | 2025-04-18 | PG-10569 FF+5d |  | 402.93d |
| PG-10560 |  | Painting Works - Putty, Primer and 1st | 6d | 2025-04-24 | 2025-05-01 | PG-10559, PG-10564 |  | 412.27d |
| PG-10562 |  | Final Coat Painting | 18.33d | 2025-05-01 | 2025-05-22 | PG-10560, PG-10571 |  | 412.27d |
|  | 1.3.1.1.4.12.2 | **Wall Finishing works - Civil** |  | 2025-03-12 | 2025-05-22 |  |  |  |
| PG-10563 |  | Balcony Railing Fixing works | 4d | 2025-03-12 A | 2025-03-17 A | PG-10145 | 100% |  |
| PG-10565 |  | Dadoing - Wet area | 5d | 2025-04-02 A | 2025-04-07 | PG-10287 | 52% | 377.6d |
| PG-10564 |  | UPVC Windows & Sliding doors | 5d | 2025-04-18 | 2025-04-24 | PG-10563, PG-10570 FF+5d |  | 377.6d |
| PG-10566 |  | Painting Works - Putty, Primer and 1st | 6d | 2025-04-24 | 2025-05-01 | PG-10564 |  | 377.6d |
| PG-10567 |  | Final Coat Painting | 18.33d | 2025-05-01 | 2025-05-22 | PG-10571 |  | 377.6d |
|  | 1.3.1.1.4.12.3 | **Floor Finishing Works - Civil** |  | 2025-03-12 | 2025-05-01 |  |  |  |
| PG-10568 |  | Waterproofing for sunken areas | 3d | 2025-03-12 A | 2025-03-15 A | PG-10145 | 100% |  |
| PG-10569 |  | Floor Tiling - Wet area | 5d | 2025-04-07 | 2025-04-12 | PG-10568, PG-10565 |  | 377.6d |
| PG-10570 |  | Floor Tiling - Dry area | 5d | 2025-04-12 | 2025-04-18 | PG-10569 FF+5d |  | 377.6d |
| PG-10571 |  | Wooden doors | 5d | 2025-04-25 | 2025-05-01 | PG-10566 FF |  | 377.6d |
|  | 1.3.1.1.4.13 | **Floor 10** |  | 2025-03-27 | 2025-06-05 |  |  |  |
|  | 1.3.1.1.4.13.1 | **Ceiling Finishing works - Civil** |  | 2025-04-04 | 2025-06-05 |  |  |  |
| PG-10572 |  | Gypsum Plastering | 6d | 2025-04-04 A | 2025-04-10 | PG-10301 | 3% | 212.51d |
| PG-10573 |  | Cornice fixing | 4d | 2025-04-21 | 2025-04-24 | PG-10298 FF+6d |  | 413.67d |
| PG-10575 |  | Toilet False ceiling | 4d | 2025-04-29 | 2025-05-03 | PG-10583 FF+5d |  | 389.55d |
| PG-10574 |  | Painting Works - Putty, Primer and 1st | 6d | 2025-05-09 | 2025-05-16 | PG-10573, PG-10578 |  | 401.39d |
| PG-10576 |  | Final Coat Painting | 17.33d | 2025-05-16 | 2025-06-05 | PG-10574, PG-10585 |  | 401.39d |
|  | 1.3.1.1.4.13.2 | **Wall Finishing works - Civil** |  | 2025-03-27 | 2025-06-05 |  |  |  |
| PG-10577 |  | Balcony Railing Fixing works | 4d | 2025-03-27 A | 2025-04-01 A | PG-10150 | 100% |  |
| PG-10579 |  | Dadoing - Wet area | 5d | 2025-04-16 | 2025-04-22 | PG-10296 |  | 364.72d |
| PG-10578 |  | UPVC Windows & Sliding doors | 5d | 2025-05-03 | 2025-05-09 | PG-10577, PG-10584 FF+5d |  | 364.72d |
| PG-10580 |  | Painting Works - Putty, Primer and 1st | 6d | 2025-05-09 | 2025-05-16 | PG-10578 |  | 364.72d |
| PG-10581 |  | Final Coat Painting | 17.33d | 2025-05-16 | 2025-06-05 | PG-10585 |  | 364.72d |
|  | 1.3.1.1.4.13.3 | **Floor Finishing Works - Civil** |  | 2025-03-27 | 2025-05-16 |  |  |  |
| PG-10582 |  | Waterproofing for sunken areas | 3d | 2025-03-27 A | 2025-03-31 A | PG-10150 | 100% |  |
| PG-10583 |  | Floor Tiling - Wet area | 5d | 2025-04-22 | 2025-04-28 | PG-10582, PG-10579 |  | 364.72d |
| PG-10584 |  | Floor Tiling - Dry area | 5d | 2025-04-28 | 2025-05-03 | PG-10583 FF+5d |  | 364.72d |
| PG-10585 |  | Wooden doors | 5d | 2025-05-10 | 2025-05-16 | PG-10580 FF |  | 364.72d |
|  | 1.3.1.1.4.14 | **Floor 11** |  | 2025-04-09 | 2025-06-19 |  |  |  |
|  | 1.3.1.1.4.14.1 | **Ceiling Finishing works - Civil** |  | 2025-04-18 | 2025-06-19 |  |  |  |
| PG-10586 |  | Gypsum Plastering | 6d | 2025-04-18 | 2025-04-25 | PG-10310 |  | 401.08d |
| PG-10587 |  | Cornice fixing | 4d | 2025-05-05 | 2025-05-09 | PG-10307 FF+6d |  | 401.08d |
| PG-10589 |  | Toilet False ceiling | 4d | 2025-05-13 | 2025-05-17 | PG-10597 FF+5d |  | 377.42d |
| PG-10588 |  | Painting Works - Putty, Primer and 1st | 6d | 2025-05-23 | 2025-05-30 | PG-10587, PG-10592 |  | 389.08d |
| PG-10590 |  | Final Coat Painting | 17.5d | 2025-05-30 | 2025-06-19 | PG-10588, PG-10599 |  | 389.08d |
|  | 1.3.1.1.4.14.2 | **Wall Finishing works - Civil** |  | 2025-04-09 | 2025-06-19 |  |  |  |
| PG-10591 |  | Balcony Railing Fixing works | 4d | 2025-04-09 | 2025-04-14 | PG-10155 |  | 381.42d |
| PG-10593 |  | Dadoing - Wet area | 5d | 2025-04-30 | 2025-05-06 | PG-10305 |  | 352.42d |
| PG-10592 |  | UPVC Windows & Sliding doors | 5d | 2025-05-17 | 2025-05-23 | PG-10591, PG-10598 FF+5d |  | 352.42d |
| PG-10594 |  | Painting Works - Putty, Primer and 1st | 6d | 2025-05-23 | 2025-05-30 | PG-10592 |  | 352.42d |
| PG-10595 |  | Final Coat Painting | 17.5d | 2025-05-30 | 2025-06-19 | PG-10599 |  | 352.42d |
|  | 1.3.1.1.4.14.3 | **Floor Finishing Works - Civil** |  | 2025-04-09 | 2025-05-30 |  |  |  |
| PG-10596 |  | Waterproofing for sunken areas | 3d | 2025-04-09 | 2025-04-12 | PG-10155 |  | 372.42d |
| PG-10597 |  | Floor Tiling - Wet area | 5d | 2025-05-06 | 2025-05-12 | PG-10596, PG-10593 |  | 352.42d |
| PG-10598 |  | Floor Tiling - Dry area | 5d | 2025-05-12 | 2025-05-17 | PG-10597 FF+5d |  | 352.42d |
| PG-10599 |  | Wooden doors | 5d | 2025-05-24 | 2025-05-30 | PG-10594 FF |  | 352.42d |

| ID | WBS | Task | Duration | Start | Finish | Predecessors | Total float |
| --- | --- | --- | --- | --- | --- | --- | --- |
|  | 1.3.1.1.4.15 | **Floor 12** |  | 2025-04-22 | 2025-07-03 |  |  |
|  | 1.3.1.1.4.15.1 | **Ceiling Finishing works - Civil** |  | 2025-05-01 | 2025-07-03 |  |  |
| PG-10600 |  | Gypsum Plastering | 6d | 2025-05-01 | 2025-05-08 | PG-10319 | 389.75d |
| PG-10601 |  | Cornice fixing | 4d | 2025-05-17 | 2025-05-22 | PG-10316 FF+6d | 389.75d |
| PG-10603 |  | Toilet False ceiling | 4d | 2025-05-26 | 2025-05-30 | PG-10611 FF+5d | 367.58d |
| PG-10602 |  | Painting Works - Putty, Primer and 1st | 6d | 2025-06-05 | 2025-06-12 | PG-10601, PG-10606 | 377.75d |
| PG-10604 |  | Final Coat Painting | 17.67d | 2025-06-12 | 2025-07-03 | PG-10602, PG-10613 | 377.75d |
|  | 1.3.1.1.4.15.2 | **Wall Finishing works - Civil** |  | 2025-04-22 | 2025-07-03 |  |  |
| PG-10605 |  | Balcony Railing Fixing works | 4d | 2025-04-22 | 2025-04-26 | PG-10160 | 371.92d |
| PG-10607 |  | Dadoing - Wet area | 5d | 2025-05-13 | 2025-05-19 | PG-10314 | 342.92d |
| PG-10606 |  | UPVC Windows & Sliding doors | 5d | 2025-05-30 | 2025-06-05 | PG-10605, PG-10612 FF+5d | 342.92d |
| PG-10608 |  | Painting Works - Putty, Primer and 1st | 6d | 2025-06-05 | 2025-06-12 | PG-10606 | 342.92d |
| PG-10609 |  | Final Coat Painting | 17.67d | 2025-06-12 | 2025-07-03 | PG-10613 | 342.92d |
|  | 1.3.1.1.4.15.3 | **Floor Finishing Works - Civil** |  | 2025-04-22 | 2025-06-12 |  |  |
| PG-10610 |  | Waterproofing for sunken areas | 3d | 2025-04-22 | 2025-04-25 | PG-10160 | 362.92d |
| PG-10611 |  | Floor Tiling - Wet area | 5d | 2025-05-19 | 2025-05-24 | PG-10610, PG-10607 | 342.92d |
| PG-10612 |  | Floor Tiling - Dry area | 5d | 2025-05-24 | 2025-05-30 | PG-10611 FF+5d | 342.92d |
| PG-10613 |  | Wooden doors | 5d | 2025-06-06 | 2025-06-12 | PG-10608 FF | 342.92d |
|  | 1.3.1.1.4.16 | **Floor 13** |  | 2025-05-05 | 2025-07-19 |  |  |
|  | 1.3.1.1.4.16.1 | **Ceiling Finishing works - Civil** |  | 2025-05-14 | 2025-07-19 |  |  |
| PG-10614 |  | Gypsum Plastering | 6d | 2025-05-14 | 2025-05-21 | PG-10328 | 375.08d |
| PG-10615 |  | Cornice fixing | 4d | 2025-05-30 | 2025-06-04 | PG-10325 FF+6d | 375.08d |
| PG-10617 |  | Toilet False ceiling | 4d | 2025-06-07 | 2025-06-12 | PG-10625 FF+5d | 356.92d |
| PG-10616 |  | Painting Works - Putty, Primer and 1st | 6d | 2025-06-18 | 2025-06-25 | PG-10615, PG-10620 | 363.08d |
| PG-10618 |  | Final Coat Painting | 21.5d | 2025-06-25 | 2025-07-19 | PG-10616, PG-10627 | 363.08d |
|  | 1.3.1.1.4.16.2 | **Wall Finishing works - Civil** |  | 2025-05-05 | 2025-07-17 |  |  |
| PG-10619 |  | Balcony Railing Fixing works | 4d | 2025-05-05 | 2025-05-09 | PG-10165 | 359.42d |
| PG-10621 |  | Dadoing - Wet area | 5d | 2025-05-26 | 2025-05-31 | PG-10323 | 330.42d |
| PG-10620 |  | UPVC Windows & Sliding doors | 5d | 2025-06-12 | 2025-06-18 | PG-10619, PG-10626 FF+5d | 330.42d |
| PG-10622 |  | Painting Works - Putty, Primer and 1st | 6d | 2025-06-18 | 2025-06-25 | PG-10620 | 330.42d |
| PG-10623 |  | Final Coat Painting | 19.5d | 2025-06-25 | 2025-07-17 | PG-10627 | 330.42d |
|  | 1.3.1.1.4.16.3 | **Floor Finishing Works - Civil** |  | 2025-05-05 | 2025-06-25 |  |  |
| PG-10624 |  | Waterproofing for sunken areas | 3d | 2025-05-05 | 2025-05-08 | PG-10165 | 350.42d |
| PG-10625 |  | Floor Tiling - Wet area | 5d | 2025-05-31 | 2025-06-06 | PG-10624, PG-10621 | 330.42d |
| PG-10626 |  | Floor Tiling - Dry area | 5d | 2025-06-06 | 2025-06-12 | PG-10625 FF+5d | 330.42d |
| PG-10627 |  | Wooden doors | 5d | 2025-06-19 | 2025-06-25 | PG-10622 FF | 330.42d |
|  | 1.3.1.1.4.17 | **Floor 14** |  | 2025-05-17 | 2025-07-30 |  |  |
|  | 1.3.1.1.4.17.1 | **Ceiling Finishing works - Civil** |  | 2025-05-27 | 2025-07-30 |  |  |
| PG-10628 |  | Gypsum Plastering | 6d | 2025-05-27 | 2025-06-03 | PG-10337 | 366.08d |
| PG-10629 |  | Cornice fixing | 4d | 2025-06-12 | 2025-06-17 | PG-10334 FF+6d | 366.08d |
| PG-10631 |  | Toilet False ceiling | 4d | 2025-06-20 | 2025-06-25 | PG-10639 FF+5d | 346.42d |
| PG-10630 |  | Painting Works - Putty, Primer and 1st | 6d | 2025-07-01 | 2025-07-08 | PG-10629, PG-10634 | 354.08d |
| PG-10632 |  | Final Coat Painting | 19.5d | 2025-07-08 | 2025-07-30 | PG-10630, PG-10641 | 354.08d |
|  | 1.3.1.1.4.17.2 | **Wall Finishing works - Civil** |  | 2025-05-17 | 2025-07-30 |  |  |
| PG-10633 |  | Balcony Railing Fixing works | 4d | 2025-05-17 | 2025-05-22 | PG-10170 | 348.42d |
| PG-10635 |  | Dadoing - Wet area | 5d | 2025-06-07 | 2025-06-13 | PG-10332 | 319.42d |
| PG-10634 |  | UPVC Windows & Sliding doors | 5d | 2025-06-25 | 2025-07-01 | PG-10633, PG-10640 FF+5d | 319.42d |
| PG-10636 |  | Painting Works - Putty, Primer and 1st | 6d | 2025-07-01 | 2025-07-08 | PG-10634 | 319.42d |
| PG-10637 |  | Final Coat Painting | 19.5d | 2025-07-08 | 2025-07-30 | PG-10641 | 319.42d |
|  | 1.3.1.1.4.17.3 | **Floor Finishing Works - Civil** |  | 2025-05-17 | 2025-07-08 |  |  |
| PG-10638 |  | Waterproofing for sunken areas | 3d | 2025-05-17 | 2025-05-21 | PG-10170 | 339.42d |
| PG-10639 |  | Floor Tiling - Wet area | 5d | 2025-06-13 | 2025-06-19 | PG-10638, PG-10635 | 319.42d |
| PG-10640 |  | Floor Tiling - Dry area | 5d | 2025-06-19 | 2025-06-25 | PG-10639 FF+5d | 319.42d |
| PG-10641 |  | Wooden doors | 5d | 2025-07-02 | 2025-07-08 | PG-10636 FF | 319.42d |
|  | 1.3.1.1.4.18 | **Floor 15** |  | 2025-05-30 | 2025-08-11 |  |  |
|  | 1.3.1.1.4.18.1 | **Ceiling Finishing works - Civil** |  | 2025-06-09 | 2025-08-11 |  |  |
| PG-10642 |  | Gypsum Plastering | 6d | 2025-06-09 | 2025-06-16 | PG-10346 | 356.08d |
| PG-10643 |  | Cornice fixing | 4d | 2025-06-25 | 2025-06-30 | PG-10343 FF+6d | 356.08d |
| PG-10645 |  | Toilet False ceiling | 4d | 2025-07-03 | 2025-07-08 | PG-10653 FF+5d | 335.42d |
| PG-10644 |  | Painting Works - Putty, Primer and 1st | 6d | 2025-07-14 | 2025-07-21 | PG-10643, PG-10648 | 344.08d |
| PG-10646 |  | Final Coat Painting | 18.5d | 2025-07-21 | 2025-08-11 | PG-10644, PG-10655 | 344.08d |
|  | 1.3.1.1.4.18.2 | **Wall Finishing works - Civil** |  | 2025-05-30 | 2025-08-11 |  |  |
| PG-10647 |  | Balcony Railing Fixing works | 4d | 2025-05-30 | 2025-06-04 | PG-10175 | 155.92d |
| PG-10649 |  | Dadoing - Wet area | 5d | 2025-06-20 | 2025-06-26 | PG-10341 | 126.92d |
| PG-10648 |  | UPVC Windows & Sliding doors | 5d | 2025-07-08 | 2025-07-14 | PG-10647, PG-10654 FF+5d | 126.92d |
| PG-10650 |  | Painting Works - Putty, Primer and 1st | 6d | 2025-07-14 | 2025-07-21 | PG-10648 | 126.92d |
| PG-10651 |  | Final Coat Painting | 18.5d | 2025-07-21 | 2025-08-11 | PG-10655 | 309.42d |
|  | 1.3.1.1.4.18.3 | **Floor Finishing Works - Civil** |  | 2025-05-30 | 2025-07-21 |  |  |
| PG-10652 |  | Waterproofing for sunken areas | 3d | 2025-05-30 | 2025-06-03 | PG-10175 | 146.92d |
| PG-10653 |  | Floor Tiling - Wet area | 5d | 2025-06-26 | 2025-07-02 | PG-10652, PG-10649 | 126.92d |

| ID | WBS | Task | Duration | Start | Finish | Predecessors | Total float |
| --- | --- | --- | --- | --- | --- | --- | --- |
| PG-10654 |  | Floor Tiling - Dry area | 5d | 2025-07-02 | 2025-07-08 | PG-10653 FF+5d | 126.92d |
| PG-10655 |  | Wooden doors | 5d | 2025-07-15 | 2025-07-21 | PG-10650 FF | 126.92d |
|  | 1.3.1.1.4.19 | **Floor 16** |  | 2025-06-12 | 2025-08-25 |  |  |
|  | 1.3.1.1.4.19.1 | **Ceiling Finishing works - Civil** |  | 2025-06-21 | 2025-08-25 |  |  |
| PG-10656 |  | Gypsum Plastering | 6d | 2025-06-21 | 2025-06-28 | PG-10355 | 345.08d |
| PG-10657 |  | Cornice fixing | 4d | 2025-07-08 | 2025-07-12 | PG-10352 FF+6d | 345.08d |
| PG-10659 |  | Toilet False ceiling | 4d | 2025-07-16 | 2025-07-21 | PG-10667 FF+5d | 324.42d |
| PG-10658 |  | Painting Works - Putty, Primer and 1st | 6d | 2025-07-26 | 2025-08-02 | PG-10657, PG-10662 | 333.08d |
| PG-10660 |  | Final Coat Painting | 18.5d | 2025-08-02 | 2025-08-25 | PG-10658, PG-10669 | 333.08d |
|  | 1.3.1.1.4.19.2 | **Wall Finishing works - Civil** |  | 2025-06-12 | 2025-08-25 |  |  |
| PG-10661 |  | Balcony Railing Fixing works | 4d | 2025-06-12 | 2025-06-17 | PG-10180 | 327.42d |
| PG-10663 |  | Dadoing - Wet area | 5d | 2025-07-03 | 2025-07-09 | PG-10350 | 298.42d |
| PG-10662 |  | UPVC Windows & Sliding doors | 5d | 2025-07-21 | 2025-07-26 | PG-10661, PG-10668 FF+5d | 298.42d |
| PG-10664 |  | Painting Works - Putty, Primer and 1st | 6d | 2025-07-26 | 2025-08-02 | PG-10662 | 298.42d |
| PG-10665 |  | Final Coat Painting | 18.5d | 2025-08-02 | 2025-08-25 | PG-10669 | 298.42d |
|  | 1.3.1.1.4.19.3 | **Floor Finishing Works - Civil** |  | 2025-06-12 | 2025-08-02 |  |  |
| PG-10666 |  | Waterproofing for sunken areas | 3d | 2025-06-12 | 2025-06-16 | PG-10180 | 318.42d |
| PG-10667 |  | Floor Tiling - Wet area | 5d | 2025-07-09 | 2025-07-15 | PG-10666, PG-10663 | 298.42d |
| PG-10668 |  | Floor Tiling - Dry area | 5d | 2025-07-15 | 2025-07-21 | PG-10667 FF+5d | 298.42d |
| PG-10669 |  | Wooden doors | 5d | 2025-07-28 | 2025-08-02 | PG-10664 FF | 298.42d |
|  | 1.3.1.1.4.20 | **Floor 17** |  | 2025-06-25 | 2025-09-06 |  |  |
|  | 1.3.1.1.4.20.1 | **Ceiling Finishing works - Civil** |  | 2025-07-04 | 2025-09-06 |  |  |
| PG-10670 |  | Gypsum Plastering | 6d | 2025-07-04 | 2025-07-11 | PG-10364 | 334.08d |
| PG-10671 |  | Cornice fixing | 4d | 2025-07-21 | 2025-07-25 | PG-10361 FF+6d | 334.08d |
| PG-10673 |  | Toilet False ceiling | 4d | 2025-07-29 | 2025-08-02 | PG-10681 FF+5d | 313.42d |
| PG-10672 |  | Painting Works - Putty, Primer and 1st | 6d | 2025-08-08 | 2025-08-16 | PG-10671, PG-10676 | 322.08d |
| PG-10674 |  | Final Coat Painting | 18.5d | 2025-08-16 | 2025-09-06 | PG-10672, PG-10683 | 322.08d |
|  | 1.3.1.1.4.20.2 | **Wall Finishing works - Civil** |  | 2025-06-25 | 2025-09-06 |  |  |
| PG-10675 |  | Balcony Railing Fixing works | 4d | 2025-06-25 | 2025-06-30 | PG-10185 | 316.42d |
| PG-10677 |  | Dadoing - Wet area | 5d | 2025-07-16 | 2025-07-22 | PG-10359 | 287.42d |
| PG-10676 |  | UPVC Windows & Sliding doors | 5d | 2025-08-02 | 2025-08-08 | PG-10675, PG-10682 FF+5d | 287.42d |
| PG-10678 |  | Painting Works - Putty, Primer and 1st | 6d | 2025-08-08 | 2025-08-16 | PG-10676 | 287.42d |
| PG-10679 |  | Final Coat Painting | 18.5d | 2025-08-16 | 2025-09-06 | PG-10683 | 287.42d |
|  | 1.3.1.1.4.20.3 | **Floor Finishing Works - Civil** |  | 2025-06-25 | 2025-08-16 |  |  |
| PG-10680 |  | Waterproofing for sunken areas | 3d | 2025-06-25 | 2025-06-28 | PG-10185 | 307.42d |
| PG-10681 |  | Floor Tiling - Wet area | 5d | 2025-07-22 | 2025-07-28 | PG-10680, PG-10677 | 287.42d |
| PG-10682 |  | Floor Tiling - Dry area | 5d | 2025-07-28 | 2025-08-02 | PG-10681 FF+5d | 287.42d |
| PG-10683 |  | Wooden doors | 5d | 2025-08-09 | 2025-08-16 | PG-10678 FF | 287.42d |
|  | 1.3.1.1.4.21 | **Floor 18** |  | 2025-07-08 | 2025-09-19 |  |  |
|  | 1.3.1.1.4.21.1 | **Ceiling Finishing works - Civil** |  | 2025-07-17 | 2025-09-19 |  |  |
| PG-10684 |  | Gypsum Plastering | 6d | 2025-07-17 | 2025-07-24 | PG-10373 | 323.08d |
| PG-10685 |  | Cornice fixing | 4d | 2025-08-02 | 2025-08-07 | PG-10370 FF+6d | 323.08d |
| PG-10687 |  | Toilet False ceiling | 4d | 2025-08-11 | 2025-08-16 | PG-10695 FF+5d | 302.42d |
| PG-10686 |  | Painting Works - Putty, Primer and 1st | 6d | 2025-08-22 | 2025-08-29 | PG-10685, PG-10690 | 311.08d |
| PG-10688 |  | Final Coat Painting | 18.5d | 2025-08-29 | 2025-09-19 | PG-10686, PG-10697 | 311.08d |
|  | 1.3.1.1.4.21.2 | **Wall Finishing works - Civil** |  | 2025-07-08 | 2025-09-19 |  |  |
| PG-10689 |  | Balcony Railing Fixing works | 4d | 2025-07-08 | 2025-07-12 | PG-10190 | 305.42d |
| PG-10691 |  | Dadoing - Wet area | 5d | 2025-07-29 | 2025-08-04 | PG-10368 | 276.42d |
| PG-10690 |  | UPVC Windows & Sliding doors | 5d | 2025-08-16 | 2025-08-22 | PG-10689, PG-10696 FF+5d | 276.42d |
| PG-10692 |  | Painting Works - Putty, Primer and 1st | 6d | 2025-08-22 | 2025-08-29 | PG-10690 | 276.42d |
| PG-10693 |  | Final Coat Painting | 18.5d | 2025-08-29 | 2025-09-19 | PG-10697 | 276.42d |
|  | 1.3.1.1.4.21.3 | **Floor Finishing Works - Civil** |  | 2025-07-08 | 2025-08-29 |  |  |
| PG-10694 |  | Waterproofing for sunken areas | 3d | 2025-07-08 | 2025-07-11 | PG-10190 | 296.42d |
| PG-10695 |  | Floor Tiling - Wet area | 5d | 2025-08-04 | 2025-08-09 | PG-10694, PG-10691 | 276.42d |
| PG-10696 |  | Floor Tiling - Dry area | 5d | 2025-08-09 | 2025-08-16 | PG-10695 FF+5d | 276.42d |
| PG-10697 |  | Wooden doors | 5d | 2025-08-23 | 2025-08-29 | PG-10692 FF | 276.42d |
|  | 1.3.1.1.4.22 | **Floor 19** |  | 2025-07-30 | 2025-10-15 |  |  |
|  | 1.3.1.1.4.22.1 | **Ceiling Finishing works - Civil** |  | 2025-08-08 | 2025-10-15 |  |  |
| PG-10698 |  | Gypsum Plastering | 6d | 2025-08-08 | 2025-08-16 | PG-10382 | 171.58d |
| PG-10699 |  | Cornice fixing | 4d | 2025-08-26 | 2025-08-30 | PG-10379 FF+6d | 171.58d |
| PG-10701 |  | Toilet False ceiling | 4d | 2025-09-03 | 2025-09-08 | PG-10709 FF+5d | 283.42d |
| PG-10700 |  | Painting Works - Putty, Primer and 1st | 6d | 2025-09-13 | 2025-09-20 | PG-10699, PG-10704 | 159.58d |
| PG-10702 |  | Final Coat Painting | 20.5d | 2025-09-20 | 2025-10-15 | PG-10700, PG-10711 | 290.08d |
|  | 1.3.1.1.4.22.2 | **Wall Finishing works - Civil** |  | 2025-07-30 | 2025-10-15 |  |  |
| PG-10703 |  | Balcony Railing Fixing works | 4d | 2025-07-30 | 2025-08-04 | PG-10367 FS+7d | 188.58d |
| PG-10705 |  | Dadoing - Wet area | 5d | 2025-08-21 | 2025-08-27 | PG-10377 | 159.58d |
| PG-10704 |  | UPVC Windows & Sliding doors | 5d | 2025-09-08 | 2025-09-13 | PG-10703, PG-10710 FF+5d | 159.58d |
| PG-10706 |  | Painting Works - Putty, Primer and 1st | 6d | 2025-09-13 | 2025-09-20 | PG-10704 | 255.42d |
| PG-10707 |  | Final Coat Painting | 20.5d | 2025-09-20 | 2025-10-15 | PG-10711 | 255.42d |
|  | 1.3.1.1.4.22.3 | **Floor Finishing Works - Civil** |  | 2025-07-30 | 2025-09-20 |  |  |

| ID | WBS | Task | Duration | Start | Finish | Predecessors | Total float |
| --- | --- | --- | --- | --- | --- | --- | --- |
| PG-10708 |  | Waterproofing for sunken areas | 3d | 2025-07-30 | 2025-08-02 | PG-10367 FS+7d | 179.58d |
| PG-10709 |  | Floor Tiling - Wet area | 5d | 2025-08-27 | 2025-09-02 | PG-10708, PG-10705 | 159.58d |
| PG-10710 |  | Floor Tiling - Dry area | 5d | 2025-09-02 | 2025-09-08 | PG-10709 FF+5d | 159.58d |
| PG-10711 |  | Wooden doors | 5d | 2025-09-15 | 2025-09-20 | PG-10706 FF | 255.42d |
|  | 1.3.1.1.4.23 | **Floor 20** |  | 2025-08-22 | 2025-11-07 |  |  |
|  | 1.3.1.1.4.23.1 | **Ceiling Finishing works - Civil** |  | 2025-09-01 | 2025-11-07 |  |  |
| PG-10712 |  | Gypsum Plastering | 6d | 2025-09-01 | 2025-09-08 | PG-10391 | 282.92d |
| PG-10713 |  | Cornice fixing | 4d | 2025-09-17 | 2025-09-22 | PG-10388 FF+6d | 282.92d |
| PG-10715 |  | Toilet False ceiling | 4d | 2025-09-25 | 2025-09-30 | PG-10723 FF+5d | 262.92d |
| PG-10714 |  | Painting Works - Putty, Primer and 1st | 6d | 2025-10-07 | 2025-10-14 | PG-10713, PG-10718 | 270.92d |
| PG-10716 |  | Final Coat Painting | 19.67d | 2025-10-14 | 2025-11-07 | PG-10714, PG-10725 | 270.92d |
|  | 1.3.1.1.4.23.2 | **Wall Finishing works - Civil** |  | 2025-08-22 | 2025-11-07 |  |  |
| PG-10717 |  | Balcony Railing Fixing works | 4d | 2025-08-22 | 2025-08-27 | PG-10376 FS+7d | 265.25d |
| PG-10719 |  | Dadoing - Wet area | 5d | 2025-09-12 | 2025-09-18 | PG-10386 | 236.25d |
| PG-10718 |  | UPVC Windows & Sliding doors | 5d | 2025-09-30 | 2025-10-07 | PG-10717, PG-10724 FF+5d | 236.25d |
| PG-10720 |  | Painting Works - Putty, Primer and 1st | 6d | 2025-10-07 | 2025-10-14 | PG-10718 | 236.25d |
| PG-10721 |  | Final Coat Painting | 19.67d | 2025-10-14 | 2025-11-07 | PG-10725 | 236.25d |
|  | 1.3.1.1.4.23.3 | **Floor Finishing Works - Civil** |  | 2025-08-22 | 2025-10-14 |  |  |
| PG-10722 |  | Waterproofing for sunken areas | 3d | 2025-08-22 | 2025-08-26 | PG-10376 FS+7d | 256.25d |
| PG-10723 |  | Floor Tiling - Wet area | 5d | 2025-09-18 | 2025-09-24 | PG-10722, PG-10719 | 236.25d |
| PG-10724 |  | Floor Tiling - Dry area | 5d | 2025-09-24 | 2025-09-30 | PG-10723 FF+5d | 236.25d |
| PG-10725 |  | Wooden doors | 5d | 2025-10-08 | 2025-10-14 | PG-10720 FF | 236.25d |
|  | 1.3.1.1.4.24 | **Floor 21** |  | 2025-09-13 | 2025-11-29 |  |  |
|  | 1.3.1.1.4.24.1 | **Ceiling Finishing works - Civil** |  | 2025-09-23 | 2025-11-29 |  |  |
| PG-10726 |  | Gypsum Plastering | 6d | 2025-09-23 | 2025-09-30 | PG-10400 | 263.92d |
| PG-10727 |  | Cornice fixing | 4d | 2025-10-10 | 2025-10-15 | PG-10397 FF+6d | 263.92d |
| PG-10729 |  | Toilet False ceiling | 4d | 2025-10-18 | 2025-10-23 | PG-10737 FF+5d | 244.25d |
| PG-10728 |  | Painting Works - Putty, Primer and 1st | 6d | 2025-10-29 | 2025-11-06 | PG-10727, PG-10732 | 251.92d |
| PG-10730 |  | Final Coat Painting | 19.67d | 2025-11-06 | 2025-11-29 | PG-10728, PG-10739 | 251.92d |
|  | 1.3.1.1.4.24.2 | **Wall Finishing works - Civil** |  | 2025-09-13 | 2025-11-29 |  |  |
| PG-10731 |  | Balcony Railing Fixing works | 4d | 2025-09-13 | 2025-09-18 | PG-10385 FS+7d | 246.25d |
| PG-10733 |  | Dadoing - Wet area | 5d | 2025-10-06 | 2025-10-11 | PG-10395 | 217.25d |
| PG-10732 |  | UPVC Windows & Sliding doors | 5d | 2025-10-23 | 2025-10-29 | PG-10731, PG-10738 FF+5d | 217.25d |
| PG-10734 |  | Painting Works - Putty, Primer and 1st | 6d | 2025-10-29 | 2025-11-06 | PG-10732 | 217.25d |
| PG-10735 |  | Final Coat Painting | 19.67d | 2025-11-06 | 2025-11-29 | PG-10739 | 217.25d |
|  | 1.3.1.1.4.24.3 | **Floor Finishing Works - Civil** |  | 2025-09-13 | 2025-11-06 |  |  |
| PG-10736 |  | Waterproofing for sunken areas | 3d | 2025-09-13 | 2025-09-17 | PG-10385 FS+7d | 237.25d |
| PG-10737 |  | Floor Tiling - Wet area | 5d | 2025-10-11 | 2025-10-17 | PG-10736, PG-10733 | 217.25d |
| PG-10738 |  | Floor Tiling - Dry area | 5d | 2025-10-17 | 2025-10-23 | PG-10737 FF+5d | 217.25d |
| PG-10739 |  | Wooden doors | 5d | 2025-10-30 | 2025-11-06 | PG-10734 FF | 217.25d |
|  | 1.3.1.1.4.25 | **Floor 22** |  | 2025-10-07 | 2025-12-20 |  |  |
|  | 1.3.1.1.4.25.1 | **Ceiling Finishing works - Civil** |  | 2025-10-16 | 2025-12-20 |  |  |
| PG-10740 |  | Gypsum Plastering | 6d | 2025-10-16 | 2025-10-23 | PG-10409 | 244.92d |
| PG-10741 |  | Cornice fixing | 4d | 2025-11-03 | 2025-11-07 | PG-10406 FF+6d | 244.92d |
| PG-10743 |  | Toilet False ceiling | 4d | 2025-11-11 | 2025-11-15 | PG-10751 FF+5d | 224.25d |
| PG-10742 |  | Painting Works - Putty, Primer and 1st | 6d | 2025-11-21 | 2025-11-28 | PG-10741, PG-10746 | 232.92d |
| PG-10744 |  | Final Coat Painting | 19.5d | 2025-11-28 | 2025-12-20 | PG-10742, PG-10753 | 232.92d |
|  | 1.3.1.1.4.25.2 | **Wall Finishing works - Civil** |  | 2025-10-07 | 2025-12-20 |  |  |
| PG-10745 |  | Balcony Railing Fixing works | 4d | 2025-10-07 | 2025-10-11 | PG-10394 FS+7d | 226.25d |
| PG-10747 |  | Dadoing - Wet area | 5d | 2025-10-28 | 2025-11-04 | PG-10404 | 197.25d |
| PG-10746 |  | UPVC Windows & Sliding doors | 5d | 2025-11-15 | 2025-11-21 | PG-10745, PG-10752 FF+5d | 197.25d |
| PG-10748 |  | Painting Works - Putty, Primer and 1st | 6d | 2025-11-21 | 2025-11-28 | PG-10746 | 197.25d |
| PG-10749 |  | Final Coat Painting | 19.5d | 2025-11-28 | 2025-12-20 | PG-10753 | 197.25d |
|  | 1.3.1.1.4.25.3 | **Floor Finishing Works - Civil** |  | 2025-10-07 | 2025-11-28 |  |  |
| PG-10750 |  | Waterproofing for sunken areas | 3d | 2025-10-07 | 2025-10-10 | PG-10394 FS+7d | 217.25d |
| PG-10751 |  | Floor Tiling - Wet area | 5d | 2025-11-04 | 2025-11-10 | PG-10750, PG-10747 | 197.25d |
| PG-10752 |  | Floor Tiling - Dry area | 5d | 2025-11-10 | 2025-11-15 | PG-10751 FF+5d | 197.25d |
| PG-10753 |  | Wooden doors | 5d | 2025-11-22 | 2025-11-28 | PG-10748 FF | 197.25d |
|  | 1.3.1.1.4.26 | **Floor 23** |  | 2025-10-29 | 2026-01-12 |  |  |
|  | 1.3.1.1.4.26.1 | **Ceiling Finishing works - Civil** |  | 2025-11-08 | 2026-01-12 |  |  |
| PG-10754 |  | Gypsum Plastering | 6d | 2025-11-08 | 2025-11-15 | PG-10418 | 226.08d |
| PG-10755 |  | Cornice fixing | 4d | 2025-11-25 | 2025-11-29 | PG-10415 FF+6d | 226.08d |
| PG-10757 |  | Toilet False ceiling | 4d | 2025-12-03 | 2025-12-08 | PG-10765 FF+5d | 205.75d |
| PG-10756 |  | Painting Works - Putty, Primer and 1st | 6d | 2025-12-13 | 2025-12-20 | PG-10755, PG-10760 | 214.08d |
| PG-10758 |  | Final Coat Painting | 19.5d | 2025-12-20 | 2026-01-12 | PG-10756, PG-10767 | 214.08d |
|  | 1.3.1.1.4.26.2 | **Wall Finishing works - Civil** |  | 2025-10-29 | 2026-01-09 |  |  |
| PG-10759 |  | Balcony Railing Fixing works | 4d | 2025-10-29 | 2025-11-04 | PG-10403 FS+7d | 210.25d |
| PG-10761 |  | Dadoing - Wet area | 5d | 2025-11-20 | 2025-11-26 | PG-10413 | 181.25d |
| PG-10760 |  | UPVC Windows & Sliding doors | 5d | 2025-12-08 | 2025-12-13 | PG-10759, PG-10766 FF+5d | 181.25d |
| PG-10762 |  | Painting Works - Putty, Primer and 1st | 6d | 2025-12-13 | 2025-12-20 | PG-10760 | 181.25d |

| ID | WBS | Task | Duration | Start | Finish | Predecessors | Total float |
| --- | --- | --- | --- | --- | --- | --- | --- |
| PG-10763 |  | Final Coat Painting | 17.5d | 2025-12-20 | 2026-01-09 | PG-10767 | 181.25d |
|  | 1.3.1.1.4.26.3 | **Floor Finishing Works - Civil** |  | 2025-10-29 | 2025-12-20 |  |  |
| PG-10764 |  | Waterproofing for sunken areas | 3d | 2025-10-29 | 2025-11-03 | PG-10403 FS+7d | 201.25d |
| PG-10765 |  | Floor Tiling - Wet area | 5d | 2025-11-26 | 2025-12-02 | PG-10764, PG-10761 | 181.25d |
| PG-10766 |  | Floor Tiling - Dry area | 5d | 2025-12-02 | 2025-12-08 | PG-10765 FF+5d | 181.25d |
| PG-10767 |  | Wooden doors | 5d | 2025-12-15 | 2025-12-20 | PG-10762 FF | 181.25d |
|  | 1.3.1.1.4.27 | **External Finishing works** |  | 2025-08-05 | 2025-12-03 |  |  |
| PG-10768 |  | External walls tie rod hole plugging with GP2 | 30d | 2025-08-05 | 2025-09-10 | PG-10196 | 245.42d |
| PG-10769 |  | External walls grinding works | 40d | 2025-08-29 | 2025-10-16 | PG-10768 FF+30d | 245.42d |
| PG-10770 |  | Texture and painting works | 45d | 2025-10-10 | 2025-12-03 | PG-10769 FF+40d | 245.42d |
|  | 1.3.1.1.5 | **Corridor & Fire Staircase Finishing works** |  | 2025-10-13 | 2026-07-27 |  |  |
|  | 1.3.1.1.5.1 | **Ceiling Finishing works - Civil** |  | 2025-10-13 | 2026-01-23 |  |  |
| PG-10771 |  | Gypsum Plastering | 6d | 2025-10-13 | 2025-10-20 | PG-10382 FF+60d | 40.58d |
| PG-10772 |  | Cornice fixing | 4d | 2025-10-18 | 2025-10-23 | PG-10699 FF+45d | 171.58d |
| PG-10773 |  | Painting Works - Putty, Primer and 1st | 6d | 2025-11-07 | 2025-11-14 | PG-10700 FF+45d, PG-10772 | 159.58d |
| PG-10774 |  | False ceiling | 30d | 2025-11-14 | 2025-12-19 | PG-10773 | 159.58d |
| PG-10775 |  | Final Coat Painting | 29.67d | 2025-12-19 | 2026-01-23 | PG-10774 | 174.58d |
|  | 1.3.1.1.5.2 | **Wall Finishing works - Civil** |  | 2025-11-19 | 2026-07-27 |  |  |
| PG-10776 |  | UPVC Windows & Sliding doors | 5d | 2025-11-19 | 2025-11-25 | PG-10704 FF+60d | 165.58d |
| PG-10777 |  | Wall Cladding Upto 1.2 Mts | 20d | 2025-12-06 | 2025-12-30 | PG-10776 FF+30d | 165.58d |
| PG-10778 |  | Painting Works - Texture & one coat Painting works | 15d | 2026-01-06 | 2026-01-23 | PG-10777, PG-10774 FF+30d | 159.58d |
| PG-10779 |  | Final Coat Painting | 20.33d | 2026-07-03 | 2026-07-27 | PG-10781, PG-10778 FF+15d, PG-10013 | 17.33d |
|  | 1.3.1.1.5.3 | **Floor Finishing Works - Civil** |  | 2025-10-20 | 2025-11-19 |  |  |
| PG-10780 |  | Fire Doors installation | 10d | 2025-10-20 | 2025-10-31 | PG-10771 | 210.25d |
| PG-10781 |  | Verified tile flooring works | 15d | 2025-10-31 | 2025-11-19 | PG-10780 | 210.25d |
|  | 1.3.1.1.5.4 | **Fire Staircase Finishing Works - Civil** |  | 2025-10-20 | 2026-02-10 |  |  |
| PG-10782 |  | Staircase Railing Fixing works | 20d | 2025-10-20 | 2025-11-13 | PG-10771 | 40.58d |
| PG-10783 |  | Wall and ceiling Gypsum plastering | 30d | 2025-10-31 | 2025-12-06 | PG-10782 FF+20d | 40.58d |
| PG-10784 |  | Staircase Flooring and Skirting Works | 40d | 2025-11-19 | 2026-01-05 | PG-10783 FF+25d | 40.58d |
| PG-10785 |  | UPVC Window fixing works | 15d | 2026-01-05 | 2026-01-22 | PG-10784 FF+15d | 40.58d |
| PG-10786 |  | Staircase Painting works | 20d | 2026-01-16 | 2026-02-10 | PG-10785 FF+15d | 40.58d |
|  | 1.3.1.1.6 | **MEP Civil Works (Shaft, Lift Shaft & OHT )** |  | 2025-07-22 | 2026-01-09 |  |  |
|  | 1.3.1.1.6.1 | **Lift Shaft Works** |  | 2025-07-22 | 2026-01-09 |  |  |
| PG-10787 |  | Tie rod hole packing | 8d | 2025-07-22 | 2025-07-31 | PG-10193 | 118.08d |
| PG-10788 |  | Grinding works | 5d | 2025-07-31 | 2025-08-06 | PG-10787 | 118.08d |
| PG-10789 |  | Lift pit waterproofing works | 21d | 2025-08-06 | 2025-09-01 | PG-10788 | 118.08d |
| PG-10790 |  | Shaft door opening finishing | 7d | 2025-09-01 | 2025-09-09 | PG-10789 | 118.08d |
| PG-10791 |  | Painting works | 8d | 2025-09-09 | 2025-09-18 | PG-10790 | 118.08d |
| PG-10792 |  | Lift Wall Cladding Works | 15.33d | 2025-12-23 | 2026-01-09 | PG-10827 | 138.08d |
|  | 1.3.1.1.6.2 | **Electrical Shaft works** |  | 2025-07-22 | 2025-08-25 |  |  |
| PG-10793 |  | Tie rod hole packing | 8d | 2025-07-22 | 2025-07-31 | PG-10193 | 256.92d |
| PG-10794 |  | Grinding works | 5d | 2025-07-31 | 2025-08-06 | PG-10793 | 256.92d |
| PG-10795 |  | Shaft door opening finishing | 7d | 2025-08-06 | 2025-08-14 | PG-10794 | 256.92d |
| PG-10796 |  | Painting works | 8d | 2025-08-14 | 2025-08-25 | PG-10795 | 256.92d |
|  | 1.3.1.1.6.3 | **FPS Shaft works** |  | 2025-07-22 | 2025-08-25 |  |  |
| PG-10797 |  | Tie rod hole packing | 8d | 2025-07-22 | 2025-07-31 | PG-10193 | 256.58d |
| PG-10798 |  | Grinding works | 5d | 2025-07-31 | 2025-08-06 | PG-10797 | 256.58d |
| PG-10799 |  | Shaft door opening finishing | 7d | 2025-08-06 | 2025-08-14 | PG-10798 | 256.58d |
| PG-10800 |  | Painting works | 8d | 2025-08-14 | 2025-08-25 | PG-10799 | 256.58d |
|  | 1.3.1.1.6.4 | **PHE Shaft works** |  | 2025-07-22 | 2025-08-25 |  |  |
| PG-10801 |  | Tie rod hole packing | 8d | 2025-07-22 | 2025-07-31 | PG-10193 | 215.25d |
| PG-10802 |  | Grinding works | 5d | 2025-07-31 | 2025-08-06 | PG-10801 | 215.25d |
| PG-10803 |  | Shaft door opening finishing | 7d | 2025-08-06 | 2025-08-14 | PG-10802 | 215.25d |
| PG-10804 |  | Painting works | 8d | 2025-08-14 | 2025-08-25 | PG-10803 | 215.25d |
|  | 1.3.1.1.6.5 | **Data & Communication Shaft** |  | 2025-07-22 | 2025-08-22 |  |  |
| PG-10805 |  | Tie rod hole packing | 8d | 2025-07-22 | 2025-07-31 | PG-10193 | 251.58d |
| PG-10806 |  | Grinding works | 5d | 2025-07-31 | 2025-08-06 | PG-10805 | 251.58d |
| PG-10807 |  | Shaft door opening finishing | 5d | 2025-08-06 | 2025-08-12 | PG-10806 | 251.58d |
| PG-10808 |  | Painting works | 8d | 2025-08-12 | 2025-08-22 | PG-10807 | 251.58d |
|  | 1.3.1.1.6.6 | **OHT Works** |  | 2025-08-02 | 2025-09-22 |  |  |
| PG-10809 |  | Tank materials Supply & Shifting | 10d | 2025-08-02 | 2025-08-14 | PG-10025, PG-10193 | 213.58d |
| PG-10810 |  | Assembling OHT FRP Tank | 10d | 2025-08-14 | 2025-08-27 | PG-10809 | 213.58d |
| PG-10811 |  | Installation of OHT Tank | 15d | 2025-08-27 | 2025-09-13 | PG-10810 | 213.58d |
| PG-10812 |  | Water tightness works and checking | 7d | 2025-09-13 | 2025-09-22 | PG-10811 | 213.58d |
|  | 1.3.1.1.7 | **MEP Shaft works** |  | 2025-08-22 | 2025-11-15 |  |  |
|  | 1.3.1.1.7.1 | **Electrical** |  | 2025-08-25 | 2025-10-06 |  |  |
| PG-10813 |  | Tray Works | 10d | 2025-08-25 | 2025-09-05 | PG-10796 | 256.92d |
| PG-10814 |  | Cable & Conducting works | 10d | 2025-09-05 | 2025-09-17 | PG-10813 | 256.92d |
| PG-10815 |  | Wiring/DB/connector box installation and termination works | 15d | 2025-09-17 | 2025-10-06 | PG-10814 | 256.92d |
|  | 1.3.1.1.7.2 | **FPS** |  | 2025-08-25 | 2025-10-06 |  |  |

| ID | WBS | Task | Duration | Start | Finish | Predecessors | Complete | Total float |
| --- | --- | --- | --- | --- | --- | --- | --- | --- |
| PG-10816 |  | Shaft MS Piping & fixtures installation | 20d | 2025-08-25 | 2025-09-17 | PG-10800 |  | 256.58d |
| PG-10817 |  | Tray / cabling / conducting & wiring works | 15d | 2025-09-17 | 2025-10-06 | PG-10816 |  | 256.58d |
|  | 1.3.1.1.7.3 | **Data & Communication** |  | 2025-08-22 | 2025-10-11 |  |  |  |
| PG-10818 |  | Tray Works | 12d | 2025-08-22 | 2025-09-05 | PG-10808 |  | 251.58d |
| PG-10819 |  | Tray / cabling / conducting & wiring works | 15d | 2025-09-05 | 2025-09-23 | PG-10818 |  | 251.58d |
| PG-10820 |  | Wiring/DB/connector box installation and termination works | 15d | 2025-09-23 | 2025-10-11 | PG-10819 |  | 251.58d |
|  | 1.3.1.1.7.4 | **PHE** |  | 2025-08-25 | 2025-11-15 |  |  |  |
| PG-10821 |  | Bracket fixing works | 7d | 2025-08-25 | 2025-09-02 | PG-10804 |  | 215.25d |
| PG-10822 |  | Piping Works | 15d | 2025-09-02 | 2025-09-19 | PG-10821 |  | 215.25d |
| PG-10823 |  | Terrace Ring main & OHT Connection works | 40d | 2025-09-22 | 2025-11-08 | PG-10197, PG-10822, PG-10812 |  | 213.58d |
| PG-10824 |  | Commissioning | 5.67d | 2025-11-08 | 2025-11-15 | PG-10823 |  | 213.58d |
|  | 1.3.1.1.8 | **Lift Installation and Testing works** |  | 2025-08-06 | 2026-03-27 |  |  |  |
| PG-10825 |  | Lift Shaft Survey works | 10d | 2025-08-06 | 2025-08-18 | PG-10788 |  | 144.58d |
| PG-10826 |  | Guide Rails fixing works | 40d | 2025-09-18 | 2025-11-06 | PG-10029, PG-10825, PG-10791 |  | 118.08d |
| PG-10827 |  | Lift Frame fixing works | 24.67d | 2025-11-24 | 2025-12-23 | PG-10826, PG-10030 |  | 103.08d |
| PG-10828 |  | CAR Assembly works | 20d | 2025-12-23 | 2026-01-15 | PG-10827 |  | 103.08d |
| PG-10829 |  | Lift Machine Room Works | 30d | 2026-01-15 | 2026-02-20 | PG-10828 |  | 103.08d |
| PG-10830 |  | Slow Speed & High Speed Testing works | 30d | 2026-02-20 | 2026-03-27 | PG-10792, PG-10829 |  | 103.08d |
|  | 1.3.1.1.9 | **Electrical Panel Works** |  | 2025-07-21 | 2026-02-26 |  |  |  |
|  | 1.3.1.1.9.1 | **Civil Finishing Works** |  | 2025-07-21 | 2025-09-03 |  |  |  |
| PG-10831 |  | Wall Tie rod hole packing & Grinding works. | 15d | 2025-07-21 | 2025-08-07 | PG-10655 |  | 126.92d |
| PG-10832 |  | Window, Louver and Door fixing works | 7d | 2025-08-07 | 2025-08-16 | PG-10831 |  | 126.92d |
| PG-10833 |  | Pedestal works | 10d | 2025-08-16 | 2025-08-27 | PG-10832 |  | 126.92d |
| PG-10834 |  | Painting works | 6d | 2025-08-27 | 2025-09-03 | PG-10833 |  | 126.92d |
|  | 1.3.1.1.9.2 | **Electrical Panel works** |  | 2025-09-03 | 2026-02-26 |  |  |  |
| PG-10835 |  | Electrical Panel assembly works | 58.5d | 2025-09-03 | 2025-11-13 | PG-10032, PG-10834 |  | 126.92d |
| PG-10836 |  | Electrical Panel installation and cable termination. | 59.67d | 2025-11-13 | 2026-01-21 | PG-10835 |  | 126.92d |
| PG-10837 |  | Electrical Panel Testing and commissioning works | 29.5d | 2026-01-21 | 2026-02-26 | PG-10836 |  | 126.92d |
|  | 1.3.1.1.10 | **Entrance Lobby works** |  | 2026-02-10 | 2026-06-30 |  |  |  |
| PG-10838 |  | Flooring Works | 30.67d | 2026-02-10 | 2026-03-18 | PG-10786 |  | 40.58d |
| PG-10839 |  | Glass Door and False ceiling Works | 29.83d | 2026-03-18 | 2026-04-21 | PG-10838 |  | 40.58d |
| PG-10841 |  | Canopy Works | 25.67d | 2026-03-18 | 2026-04-16 | PG-10838 |  | 59.42d |
| PG-10840 |  | Painting Works | 14.67d | 2026-04-21 | 2026-05-08 | PG-10839 |  | 40.58d |
| PG-10842 |  | Interior Works | 44.83d | 2026-05-08 | 2026-06-30 | PG-10841, PG-10840 |  | 40.58d |
|  | 1.3.1.1.11 | **Lightening Arrester works** |  | 2025-12-03 | 2025-12-15 |  |  |  |
| PG-10843 |  | Conductor will be lifted with RCC Works, But Terrace works will be done once Parapet Painting done | 10.5d | 2025-12-03 | 2025-12-15 | PG-10770 |  | 245.42d |
|  | 1.3.1.2 | **Tower 2 ( 2B+G+26 ) TYP 4 Units - 106 Units** |  | 2023-10-16 | 2026-08-05 |  |  |  |
|  | 1.3.1.2.1 | **Foundation works** |  | 2023-10-16 | 2024-04-11 |  |  |  |
| PG-10844 |  | Setting out - Marking | 3d | 2023-10-16 A | 2023-10-19 A | PG-11725 FS+7d | 100% |  |
| PG-10845 |  | Excavation Works | 45d | 2023-10-19 A | 2023-12-12 A | PG-10844 | 100% |  |
| PG-10846 |  | Piling Works - 177 Nos | 45d | 2023-12-06 A | 2024-01-30 A | PG-10845 FF+40d | 100% |  |
| PG-10847 |  | Backfilling and Consolidation | 19.67d | 2024-01-19 A | 2024-02-13 A | PG-10846 FF+12d | 100% |  |
| PG-10848 |  | Waterproofing & PCC works | 15d | 2024-02-09 A | 2024-02-27 A | PG-10847 FF+12d | 100% |  |
| PG-10849 |  | Raft Reinforcement | 15d | 2024-02-27 A | 2024-03-15 A | PG-10848 FF+15d | 100% |  |
| PG-10850 |  | Raft Formwork | 8d | 2024-03-23 A | 2024-04-02 A | PG-10849 FF+15d | 100% |  |
| PG-10851 |  | Raft Concreting | 3d | 2024-04-08 A | 2024-04-11 A | PG-10850 FF+8d | 100% |  |
|  | 1.3.1.2.2 | **Structure works** |  | 2024-04-11 | 2025-09-25 |  |  |  |
|  | 1.3.1.2.2.1 | **LBF** |  | 2024-04-11 | 2024-05-09 |  |  |  |
|  | 1.3.1.2.2.1.1 | **Columns / shear walls** |  | 2024-04-11 | 2024-04-27 |  |  |  |
| PG-10852 |  | Reinforcement | 4d | 2024-04-11 A | 2024-04-16 A | PG-10851 | 100% |  |
| PG-10854 |  | Concrete | 9.5d | 2024-04-16 A | 2024-04-27 A | PG-10853 FF+5d | 100% |  |
| PG-10853 |  | Formwork | 4d | 2024-04-17 A | 2024-04-22 A | PG-10852 FF+5d | 100% |  |
|  | 1.3.1.2.2.1.2 | **Slab, Beams & Staircase** |  | 2024-04-27 | 2024-05-09 |  |  |  |
| PG-10855 |  | Formwork | 3d | 2024-04-27 A | 2024-05-01 A | PG-10854 | 100% |  |
| PG-10856 |  | Reinforcement | 3d | 2024-05-03 A | 2024-05-07 A | PG-10855 FF+5d | 100% |  |
| PG-10857 |  | Concrete | 1d | 2024-05-08 A | 2024-05-09 A | PG-10856 FS+1d | 100% |  |
|  | 1.3.1.2.2.2 | **UBF** |  | 2024-05-09 | 2024-06-06 |  |  |  |
|  | 1.3.1.2.2.2.1 | **Columns / shear walls** |  | 2024-05-09 | 2024-05-25 |  |  |  |
| PG-10858 |  | Reinforcement | 4d | 2024-05-09 A | 2024-05-14 A | PG-10857 | 100% |  |
| PG-10860 |  | Concrete | 9.5d | 2024-05-14 A | 2024-05-25 A | PG-10859 FF+5d | 100% |  |
| PG-10859 |  | Formwork | 4d | 2024-05-15 A | 2024-05-20 A | PG-10858 FF+5d | 100% |  |
|  | 1.3.1.2.2.2.2 | **Slab, Beams & Staircase** |  | 2024-05-25 | 2024-06-06 |  |  |  |
| PG-10861 |  | Formwork | 3d | 2024-05-25 A | 2024-05-29 A | PG-10860 | 100% |  |
| PG-10862 |  | Reinforcement | 3d | 2024-05-31 A | 2024-06-04 A | PG-10861 FF+5d | 100% |  |
| PG-10863 |  | Concrete | 1d | 2024-06-05 A | 2024-06-06 A | PG-10862 FS+1d | 100% |  |
|  | 1.3.1.2.2.3 | **Ground Floor** |  | 2024-06-06 | 2024-06-29 |  |  |  |
|  | 1.3.1.2.2.3.1 | **Columns / shear walls** |  | 2024-06-06 | 2024-06-19 |  |  |  |
| PG-10864 |  | Reinforcement | 4d | 2024-06-06 A | 2024-06-11 A | PG-10863 | 100% |  |
| PG-10866 |  | Concrete | 7.5d | 2024-06-10 A | 2024-06-19 A | PG-10865 FF+3d | 100% |  |
| PG-10865 |  | Formwork | 4d | 2024-06-11 A | 2024-06-15 A | PG-10864 FF+4d | 100% |  |

| ID | WBS | Task | Duration | Start | Finish | Predecessors | Complete |
| --- | --- | --- | --- | --- | --- | --- | --- |
|  | 1.3.1.2.2.3.2 | **Slab, Beams & Staircase** |  | 2024-06-19 | 2024-06-29 |  |  |
| PG-10867 |  | Formwork | 3d | 2024-06-19 A | 2024-06-22 A | PG-10866 | 100% |
| PG-10868 |  | Reinforcement | 3d | 2024-06-24 A | 2024-06-27 A | PG-10867 FF+4d | 100% |
| PG-10869 |  | Concrete | 1d | 2024-06-28 A | 2024-06-29 A | PG-10868 FS+1d | 100% |
|  | 1.3.1.2.2.4 | **Floor 01** |  | 2024-06-29 | 2024-07-23 |  |  |
|  | 1.3.1.2.2.4.1 | **Columns / shear walls** |  | 2024-06-29 | 2024-07-12 |  |  |
| PG-10870 |  | Reinforcement | 4d | 2024-06-29 A | 2024-07-04 A | PG-10869 | 100% |
| PG-10872 |  | Concrete | 7.5d | 2024-07-03 A | 2024-07-12 A | PG-10871 FF+3d | 100% |
| PG-10871 |  | Formwork | 4d | 2024-07-04 A | 2024-07-09 A | PG-10870 FF+4d | 100% |
|  | 1.3.1.2.2.4.2 | **Slab, Beams & Staircase** |  | 2024-07-12 | 2024-07-23 |  |  |
| PG-10873 |  | Formwork | 3d | 2024-07-12 A | 2024-07-16 A | PG-10872 | 100% |
| PG-10874 |  | Reinforcement | 3d | 2024-07-17 A | 2024-07-20 A | PG-10873 FF+4d | 100% |
| PG-10875 |  | Concrete | 1d | 2024-07-22 A | 2024-07-23 A | PG-10874 FS+1d | 100% |
|  | 1.3.1.2.2.5 | **Floor 02** |  | 2024-07-23 | 2024-08-17 |  |  |
|  | 1.3.1.2.2.5.1 | **Columns / shear walls** |  | 2024-07-23 | 2024-08-05 |  |  |
| PG-10876 |  | Reinforcement | 4d | 2024-07-23 A | 2024-07-27 A | PG-10875 | 100% |
| PG-10877 |  | Formwork | 4d | 2024-07-27 A | 2024-08-01 A | PG-10876 FF+4d | 100% |
| PG-10878 |  | Concrete | 3.67d | 2024-07-31 A | 2024-08-05 A | PG-10877 FF+3d | 100% |
|  | 1.3.1.2.2.5.2 | **Slab, Beams & Staircase** |  | 2024-08-05 | 2024-08-17 |  |  |
| PG-10879 |  | Formwork | 3d | 2024-08-05 A | 2024-08-08 A | PG-10878 | 100% |
| PG-10880 |  | Reinforcement | 3d | 2024-08-09 A | 2024-08-14 A | PG-10879 FF+4d | 100% |
| PG-10881 |  | Concrete | 1d | 2024-08-16 A | 2024-08-17 A | PG-10880 FS+1d | 100% |
|  | 1.3.1.2.2.6 | **Floor 03** |  | 2024-08-17 | 2024-09-10 |  |  |
|  | 1.3.1.2.2.6.1 | **Columns / shear walls** |  | 2024-08-17 | 2024-08-30 |  |  |
| PG-10882 |  | Reinforcement | 4d | 2024-08-17 A | 2024-08-22 A | PG-10881 | 100% |
| PG-10883 |  | Formwork | 4d | 2024-08-22 A | 2024-08-27 A | PG-10882 FF+4d | 100% |
| PG-10884 |  | Concrete | 3.67d | 2024-08-26 A | 2024-08-30 A | PG-10883 FF+3d | 100% |
|  | 1.3.1.2.2.6.2 | **Slab, Beams & Staircase** |  | 2024-08-30 | 2024-09-10 |  |  |
| PG-10885 |  | Formwork | 3d | 2024-08-30 A | 2024-09-03 A | PG-10884 | 100% |
| PG-10886 |  | Reinforcement | 3d | 2024-09-04 A | 2024-09-07 A | PG-10885 FF+4d | 100% |
| PG-10887 |  | Concrete | 1d | 2024-09-09 A | 2024-09-10 A | PG-10886 FS+1d | 100% |
|  | 1.3.1.2.2.7 | **Floor 04** |  | 2024-09-10 | 2024-09-30 |  |  |
|  | 1.3.1.2.2.7.1 | **Columns / shear walls** |  | 2024-09-10 | 2024-09-19 |  |  |
| PG-10888 |  | Reinforcement | 4d | 2024-09-10 A | 2024-09-14 A | PG-10887 | 100% |
| PG-10889 |  | Formwork | 4d | 2024-09-14 A | 2024-09-19 A | PG-10888 FF+4d | 100% |
|  | 1.3.1.2.2.7.2 | **Slab, Beams & Staircase** |  | 2024-09-20 | 2024-09-30 |  |  |
| PG-10890 |  | Formwork | 3d | 2024-09-20 A | 2024-09-24 A | PG-10889 FF+4d | 100% |
| PG-10891 |  | Reinforcement | 3d | 2024-09-25 A | 2024-09-28 A | PG-10890 FF+4d | 100% |
| PG-10892 |  | Concrete | 1d | 2024-09-28 A | 2024-09-30 A | PG-10891 | 100% |
|  | 1.3.1.2.2.8 | **Floor 05** |  | 2024-09-30 | 2024-10-21 |  |  |
|  | 1.3.1.2.2.8.1 | **Columns / shear walls** |  | 2024-09-30 | 2024-10-10 |  |  |
| PG-10893 |  | Reinforcement | 4d | 2024-09-30 A | 2024-10-05 A | PG-10892 | 100% |
| PG-10894 |  | Formwork | 4d | 2024-10-05 A | 2024-10-10 A | PG-10893 FF+4d | 100% |
|  | 1.3.1.2.2.8.2 | **Slab, Beams & Staircase** |  | 2024-10-11 | 2024-10-21 |  |  |
| PG-10895 |  | Formwork | 3d | 2024-10-11 A | 2024-10-15 A | PG-10894 FF+4d | 100% |
| PG-10896 |  | Reinforcement | 3d | 2024-10-16 A | 2024-10-19 A | PG-10895 FF+4d | 100% |
| PG-10897 |  | Concrete | 1d | 2024-10-19 A | 2024-10-21 A | PG-10896 | 100% |
|  | 1.3.1.2.2.9 | **Floor 06** |  | 2024-10-21 | 2024-11-06 |  |  |
|  | 1.3.1.2.2.9.1 | **Columns / shear walls** |  | 2024-10-21 | 2024-10-30 |  |  |
| PG-10898 |  | Reinforcement | 4d | 2024-10-21 A | 2024-10-25 A | PG-10897 | 100% |
| PG-10899 |  | Formwork | 4d | 2024-10-25 A | 2024-10-30 A | PG-10898 FF+4d | 100% |
|  | 1.3.1.2.2.9.2 | **Slab, Beams & Staircase** |  | 2024-10-29 | 2024-11-06 |  |  |
| PG-10900 |  | Formwork | 3d | 2024-10-29 A | 2024-11-02 A | PG-10899 FF+2d | 100% |
| PG-10901 |  | Reinforcement | 3d | 2024-10-31 A | 2024-11-05 A | PG-10900 FF+2d | 100% |
| PG-10902 |  | Concrete | 1d | 2024-11-05 A | 2024-11-06 A | PG-10901 | 100% |
|  | 1.3.1.2.2.10 | **Floor 07** |  | 2024-11-06 | 2024-11-22 |  |  |
|  | 1.3.1.2.2.10.1 | **Columns / shear walls** |  | 2024-11-06 | 2024-11-16 |  |  |
| PG-10903 |  | Reinforcement | 4d | 2024-11-06 A | 2024-11-11 A | PG-10902 | 100% |
| PG-10904 |  | Formwork | 4d | 2024-11-11 A | 2024-11-16 A | PG-10903 FF+4d | 100% |
|  | 1.3.1.2.2.10.2 | **Slab, Beams & Staircase** |  | 2024-11-15 | 2024-11-22 |  |  |
| PG-10905 |  | Formwork | 3d | 2024-11-15 A | 2024-11-19 A | PG-10904 FF+2d | 100% |
| PG-10906 |  | Reinforcement | 3d | 2024-11-18 A | 2024-11-21 A | PG-10905 FF+2d | 100% |
| PG-10907 |  | Concrete | 1d | 2024-11-21 A | 2024-11-22 A | PG-10906 | 100% |
|  | 1.3.1.2.2.11 | **Floor 08** |  | 2024-11-22 | 2024-12-07 |  |  |
|  | 1.3.1.2.2.11.1 | **Columns / shear walls** |  | 2024-11-22 | 2024-12-02 |  |  |
| PG-10908 |  | Reinforcement | 4d | 2024-11-22 A | 2024-11-27 A | PG-10907 | 100% |
| PG-10909 |  | Formwork | 4d | 2024-11-27 A | 2024-12-02 A | PG-10908 FF+4d | 100% |
|  | 1.3.1.2.2.11.2 | **Slab, Beams & Staircase** |  | 2024-11-30 | 2024-12-07 |  |  |
| PG-10910 |  | Formwork | 3d | 2024-11-30 A | 2024-12-04 A | PG-10909 FF+2d | 100% |
| PG-10911 |  | Reinforcement | 3d | 2024-12-03 A | 2024-12-06 A | PG-10910 FF+2d | 100% |

| ID | WBS | Task | Duration | Start | Finish | Predecessors | Complete | Total float |
| --- | --- | --- | --- | --- | --- | --- | --- | --- |
| PG-10912 |  | Concrete | 1d | 2024-12-06 A | 2024-12-07 A | PG-10911 | 100% |  |
|  | 1.3.1.2.2.12 | **Floor 09** |  | 2024-12-07 | 2024-12-23 |  |  |  |
|  | 1.3.1.2.2.12.1 | **Columns / shear walls** |  | 2024-12-07 | 2024-12-17 |  |  |  |
| PG-10913 |  | Reinforcement | 4d | 2024-12-07 A | 2024-12-12 A | PG-10912 | 100% |  |
| PG-10914 |  | Formwork | 4d | 2024-12-12 A | 2024-12-17 A | PG-10913 FF+4d | 100% |  |
|  | 1.3.1.2.2.12.2 | **Slab, Beams & Staircase** |  | 2024-12-16 | 2024-12-23 |  |  |  |
| PG-10915 |  | Formwork | 3d | 2024-12-16 A | 2024-12-19 A | PG-10914 FF+2d | 100% |  |
| PG-10916 |  | Reinforcement | 3d | 2024-12-18 A | 2024-12-21 A | PG-10915 FF+2d | 100% |  |
| PG-10917 |  | Concrete | 1d | 2024-12-21 A | 2024-12-23 A | PG-10916 | 100% |  |
|  | 1.3.1.2.2.13 | **Floor 10** |  | 2024-12-23 | 2025-01-07 |  |  |  |
|  | 1.3.1.2.2.13.1 | **Columns / shear walls** |  | 2024-12-23 | 2025-01-01 |  |  |  |
| PG-10918 |  | Reinforcement | 4d | 2024-12-23 A | 2024-12-27 A | PG-10917 | 100% |  |
| PG-10919 |  | Formwork | 4d | 2024-12-27 A | 2025-01-01 A | PG-10918 FF+4d | 100% |  |
|  | 1.3.1.2.2.13.2 | **Slab, Beams & Staircase** |  | 2024-12-31 | 2025-01-07 |  |  |  |
| PG-10920 |  | Formwork | 3d | 2024-12-31 A | 2025-01-03 A | PG-10919 FF+2d | 100% |  |
| PG-10921 |  | Reinforcement | 3d | 2025-01-02 A | 2025-01-06 A | PG-10920 FF+2d | 100% |  |
| PG-10922 |  | Concrete | 1d | 2025-01-06 A | 2025-01-07 A | PG-10921 | 100% |  |
|  | 1.3.1.2.2.14 | **Floor 11** |  | 2025-01-07 | 2025-01-23 |  |  |  |
|  | 1.3.1.2.2.14.1 | **Columns / shear walls** |  | 2025-01-07 | 2025-01-17 |  |  |  |
| PG-10923 |  | Reinforcement | 4d | 2025-01-07 A | 2025-01-11 A | PG-10922 | 100% |  |
| PG-10924 |  | Formwork | 4d | 2025-01-11 A | 2025-01-17 A | PG-10923 FF+4d | 100% |  |
|  | 1.3.1.2.2.14.2 | **Slab, Beams & Staircase** |  | 2025-01-16 | 2025-01-23 |  |  |  |
| PG-10925 |  | Formwork | 3d | 2025-01-16 A | 2025-01-20 A | PG-10924 FF+2d | 100% |  |
| PG-10926 |  | Reinforcement | 3d | 2025-01-18 A | 2025-01-22 A | PG-10925 FF+2d | 100% |  |
| PG-10927 |  | Concrete | 1d | 2025-01-22 A | 2025-01-23 A | PG-10926 | 100% |  |
|  | 1.3.1.2.2.15 | **Floor 12** |  | 2025-01-23 | 2025-02-07 |  |  |  |
|  | 1.3.1.2.2.15.1 | **Columns / shear walls** |  | 2025-01-23 | 2025-02-01 |  |  |  |
| PG-10928 |  | Reinforcement | 4d | 2025-01-23 A | 2025-01-28 A | PG-10927 | 100% |  |
| PG-10929 |  | Formwork | 4d | 2025-01-28 A | 2025-02-01 A | PG-10928 FF+4d | 100% |  |
|  | 1.3.1.2.2.15.2 | **Slab, Beams & Staircase** |  | 2025-01-31 | 2025-02-07 |  |  |  |
| PG-10930 |  | Formwork | 3d | 2025-01-31 A | 2025-02-04 A | PG-10929 FF+2d | 100% |  |
| PG-10931 |  | Reinforcement | 3d | 2025-02-03 A | 2025-02-06 A | PG-10930 FF+2d | 100% |  |
| PG-10932 |  | Concrete | 1d | 2025-02-06 A | 2025-02-07 A | PG-10931 | 100% |  |
|  | 1.3.1.2.2.16 | **Floor 13** |  | 2025-02-07 | 2025-02-22 |  |  |  |
|  | 1.3.1.2.2.16.1 | **Columns / shear walls** |  | 2025-02-07 | 2025-02-17 |  |  |  |
| PG-10933 |  | Reinforcement | 4d | 2025-02-07 A | 2025-02-12 A | PG-10932 | 100% |  |
| PG-10934 |  | Formwork | 4d | 2025-02-12 A | 2025-02-17 A | PG-10933 FF+4d | 100% |  |
|  | 1.3.1.2.2.16.2 | **Slab, Beams & Staircase** |  | 2025-02-15 | 2025-02-22 |  |  |  |
| PG-10935 |  | Formwork | 3d | 2025-02-15 A | 2025-02-19 A | PG-10934 FF+2d | 100% |  |
| PG-10936 |  | Reinforcement | 3d | 2025-02-18 A | 2025-02-21 A | PG-10935 FF+2d | 100% |  |
| PG-10937 |  | Concrete | 1d | 2025-02-21 A | 2025-02-22 A | PG-10936 | 100% |  |
|  | 1.3.1.2.2.17 | **Floor 14** |  | 2025-02-22 | 2025-03-11 |  |  |  |
|  | 1.3.1.2.2.17.1 | **Columns / shear walls** |  | 2025-02-22 | 2025-03-05 |  |  |  |
| PG-10938 |  | Reinforcement | 4d | 2025-02-22 A | 2025-02-27 A | PG-10937 | 100% |  |
| PG-10939 |  | Formwork | 4d | 2025-02-27 A | 2025-03-05 A | PG-10938 FF+4d | 100% |  |
|  | 1.3.1.2.2.17.2 | **Slab, Beams & Staircase** |  | 2025-03-04 | 2025-03-11 |  |  |  |
| PG-10940 |  | Formwork | 3d | 2025-03-04 A | 2025-03-07 A | PG-10939 FF+2d | 100% |  |
| PG-10941 |  | Reinforcement | 3d | 2025-03-06 A | 2025-03-10 A | PG-10940 FF+2d | 100% |  |
| PG-10942 |  | Concrete | 1d | 2025-03-10 A | 2025-03-11 A | PG-10941 | 100% |  |
|  | 1.3.1.2.2.18 | **Floor 15** |  | 2025-03-11 | 2025-03-27 |  |  |  |
|  | 1.3.1.2.2.18.1 | **Columns / shear walls** |  | 2025-03-11 | 2025-03-20 |  |  |  |
| PG-10943 |  | Reinforcement | 4d | 2025-03-11 A | 2025-03-15 A | PG-10942 | 100% |  |
| PG-10944 |  | Formwork | 4d | 2025-03-15 A | 2025-03-20 A | PG-10943 FF+4d | 100% |  |
|  | 1.3.1.2.2.18.2 | **Slab, Beams & Staircase** |  | 2025-03-19 | 2025-03-27 |  |  |  |
| PG-10945 |  | Formwork | 3d | 2025-03-19 A | 2025-03-22 A | PG-10944 FF+2d | 100% |  |
| PG-10946 |  | Reinforcement | 3d | 2025-03-21 A | 2025-03-26 A | PG-10945 FF+2d | 100% |  |
| PG-10947 |  | Concrete | 1d | 2025-03-26 A | 2025-03-27 A | PG-10946 | 100% |  |
|  | 1.3.1.2.2.19 | **Floor 16** |  | 2025-03-27 | 2025-04-09 |  |  |  |
|  | 1.3.1.2.2.19.1 | **Columns / shear walls** |  | 2025-03-27 | 2025-04-03 |  |  |  |
| PG-10948 |  | Reinforcement | 4d | 2025-03-27 A | 2025-04-01 A | PG-10947 | 100% |  |
| PG-10949 |  | Formwork | 4d | 2025-03-29 A | 2025-04-03 A | PG-10948 FF+2d | 100% |  |
|  | 1.3.1.2.2.19.2 | **Slab, Beams & Staircase** |  | 2025-04-02 | 2025-04-09 |  |  |  |
| PG-10950 |  | Formwork | 3d | 2025-04-02 A | 2025-04-05 | PG-10949 FF+2d | 85% | 10.67d |
| PG-10951 |  | Reinforcement | 3d | 2025-04-04 A | 2025-04-08 | PG-10950 FF+2d | 15% | 10.67d |
| PG-10952 |  | Concrete | 1d | 2025-04-08 | 2025-04-09 | PG-10951 |  | 10.67d |
|  | 1.3.1.2.2.20 | **Floor 17** |  | 2025-04-09 | 2025-04-22 |  |  |  |
|  | 1.3.1.2.2.20.1 | **Columns / shear walls** |  | 2025-04-09 | 2025-04-16 |  |  |  |
| PG-10953 |  | Reinforcement | 4d | 2025-04-09 | 2025-04-14 | PG-10952 |  | 10.67d |
| PG-10954 |  | Formwork | 4d | 2025-04-11 | 2025-04-16 | PG-10953 FF+2d |  | 10.67d |
|  | 1.3.1.2.2.20.2 | **Slab, Beams & Staircase** |  | 2025-04-15 | 2025-04-22 |  |  |  |

| ID | WBS | Task | Duration | Start | Finish | Predecessors | Total float |
| --- | --- | --- | --- | --- | --- | --- | --- |
| PG-10955 |  | Formwork | 3d | 2025-04-15 | 2025-04-18 | PG-10954 FF+2d | 10.67d |
| PG-10956 |  | Reinforcement | 3d | 2025-04-17 | 2025-04-21 | PG-10955 FF+2d | 10.67d |
| PG-10957 |  | Concrete | 1d | 2025-04-21 | 2025-04-22 | PG-10956 | 10.67d |
|  | 1.3.1.2.2.21 | **Floor 18** |  | 2025-04-22 | 2025-05-05 |  |  |
|  | 1.3.1.2.2.21.1 | **Columns / shear walls** |  | 2025-04-22 | 2025-04-29 |  |  |
| PG-10958 |  | Reinforcement | 4d | 2025-04-22 | 2025-04-26 | PG-10957 | 10.67d |
| PG-10959 |  | Formwork | 4d | 2025-04-24 | 2025-04-29 | PG-10958 FF+2d | 10.67d |
|  | 1.3.1.2.2.21.2 | **Slab, Beams & Staircase** |  | 2025-04-28 | 2025-05-05 |  |  |
| PG-10960 |  | Formwork | 3d | 2025-04-28 | 2025-05-01 | PG-10959 FF+2d | 10.67d |
| PG-10961 |  | Reinforcement | 3d | 2025-04-30 | 2025-05-03 | PG-10960 FF+2d | 10.67d |
| PG-10962 |  | Concrete | 1d | 2025-05-03 | 2025-05-05 | PG-10961 | 10.67d |
|  | 1.3.1.2.2.22 | **Floor 19** |  | 2025-05-05 | 2025-05-17 |  |  |
|  | 1.3.1.2.2.22.1 | **Columns / shear walls** |  | 2025-05-05 | 2025-05-12 |  |  |
| PG-10963 |  | Reinforcement | 4d | 2025-05-05 | 2025-05-09 | PG-10962 | 10.67d |
| PG-10964 |  | Formwork | 4d | 2025-05-07 | 2025-05-12 | PG-10963 FF+2d | 10.67d |
|  | 1.3.1.2.2.22.2 | **Slab, Beams & Staircase** |  | 2025-05-10 | 2025-05-17 |  |  |
| PG-10965 |  | Formwork | 3d | 2025-05-10 | 2025-05-14 | PG-10964 FF+2d | 10.67d |
| PG-10966 |  | Reinforcement | 3d | 2025-05-13 | 2025-05-16 | PG-10965 FF+2d | 10.67d |
| PG-10967 |  | Concrete | 1d | 2025-05-16 | 2025-05-17 | PG-10966 | 10.67d |
|  | 1.3.1.2.2.23 | **Floor 20** |  | 2025-05-17 | 2025-05-30 |  |  |
|  | 1.3.1.2.2.23.1 | **Columns / shear walls** |  | 2025-05-17 | 2025-05-24 |  |  |
| PG-10968 |  | Reinforcement | 4d | 2025-05-17 | 2025-05-22 | PG-10967 | 10.67d |
| PG-10969 |  | Formwork | 4d | 2025-05-20 | 2025-05-24 | PG-10968 FF+2d | 10.67d |
|  | 1.3.1.2.2.23.2 | **Slab, Beams & Staircase** |  | 2025-05-23 | 2025-05-30 |  |  |
| PG-10970 |  | Formwork | 3d | 2025-05-23 | 2025-05-27 | PG-10969 FF+2d | 10.67d |
| PG-10971 |  | Reinforcement | 3d | 2025-05-26 | 2025-05-29 | PG-10970 FF+2d | 10.67d |
| PG-10972 |  | Concrete | 1d | 2025-05-29 | 2025-05-30 | PG-10971 | 10.67d |
|  | 1.3.1.2.2.24 | **Floor 21** |  | 2025-05-30 | 2025-06-12 |  |  |
|  | 1.3.1.2.2.24.1 | **Columns / shear walls** |  | 2025-05-30 | 2025-06-06 |  |  |
| PG-10973 |  | Reinforcement | 4d | 2025-05-30 | 2025-06-04 | PG-10972 | 10.67d |
| PG-10974 |  | Formwork | 4d | 2025-06-02 | 2025-06-06 | PG-10973 FF+2d | 10.67d |
|  | 1.3.1.2.2.24.2 | **Slab, Beams & Staircase** |  | 2025-06-05 | 2025-06-12 |  |  |
| PG-10975 |  | Formwork | 3d | 2025-06-05 | 2025-06-09 | PG-10974 FF+2d | 10.67d |
| PG-10976 |  | Reinforcement | 3d | 2025-06-07 | 2025-06-11 | PG-10975 FF+2d | 10.67d |
| PG-10977 |  | Concrete | 1d | 2025-06-11 | 2025-06-12 | PG-10976 | 10.67d |
|  | 1.3.1.2.2.25 | **Floor 22** |  | 2025-06-12 | 2025-06-25 |  |  |
|  | 1.3.1.2.2.25.1 | **Columns / shear walls** |  | 2025-06-12 | 2025-06-19 |  |  |
| PG-10978 |  | Reinforcement | 4d | 2025-06-12 | 2025-06-17 | PG-10977 | 10.67d |
| PG-10979 |  | Formwork | 4d | 2025-06-14 | 2025-06-19 | PG-10978 FF+2d | 10.67d |
|  | 1.3.1.2.2.25.2 | **Slab, Beams & Staircase** |  | 2025-06-18 | 2025-06-25 |  |  |
| PG-10980 |  | Formwork | 3d | 2025-06-18 | 2025-06-21 | PG-10979 FF+2d | 10.67d |
| PG-10981 |  | Reinforcement | 3d | 2025-06-20 | 2025-06-24 | PG-10980 FF+2d | 10.67d |
| PG-10982 |  | Concrete | 1d | 2025-06-24 | 2025-06-25 | PG-10981 | 10.67d |
|  | 1.3.1.2.2.26 | **Floor 23** |  | 2025-06-25 | 2025-07-08 |  |  |
|  | 1.3.1.2.2.26.1 | **Columns / shear walls** |  | 2025-06-25 | 2025-07-02 |  |  |
| PG-10983 |  | Reinforcement | 4d | 2025-06-25 | 2025-06-30 | PG-10982 | 10.67d |
| PG-10984 |  | Formwork | 4d | 2025-06-27 | 2025-07-02 | PG-10983 FF+2d | 10.67d |
|  | 1.3.1.2.2.26.2 | **Slab, Beams & Staircase** |  | 2025-07-01 | 2025-07-08 |  |  |
| PG-10985 |  | Formwork | 3d | 2025-07-01 | 2025-07-04 | PG-10984 FF+2d | 10.67d |
| PG-10986 |  | Reinforcement | 3d | 2025-07-03 | 2025-07-07 | PG-10985 FF+2d | 10.67d |
| PG-10987 |  | Concrete | 1d | 2025-07-07 | 2025-07-08 | PG-10986 | 10.67d |
|  | 1.3.1.2.2.27 | **Floor 24** |  | 2025-07-08 | 2025-07-21 |  |  |
|  | 1.3.1.2.2.27.1 | **Columns / shear walls** |  | 2025-07-08 | 2025-07-15 |  |  |
| PG-10988 |  | Reinforcement | 4d | 2025-07-08 | 2025-07-12 | PG-10987 | 10.67d |
| PG-10989 |  | Formwork | 4d | 2025-07-10 | 2025-07-15 | PG-10988 FF+2d | 10.67d |
|  | 1.3.1.2.2.27.2 | **Slab, Beams & Staircase** |  | 2025-07-14 | 2025-07-21 |  |  |
| PG-10990 |  | Formwork | 3d | 2025-07-14 | 2025-07-17 | PG-10989 FF+2d | 10.67d |
| PG-10991 |  | Reinforcement | 3d | 2025-07-16 | 2025-07-19 | PG-10990 FF+2d | 10.67d |
| PG-10992 |  | Concrete | 1d | 2025-07-19 | 2025-07-21 | PG-10991 | 10.67d |
|  | 1.3.1.2.2.28 | **Floor 25** |  | 2025-07-21 | 2025-08-02 |  |  |
|  | 1.3.1.2.2.28.1 | **Columns / shear walls** |  | 2025-07-21 | 2025-07-28 |  |  |
| PG-10993 |  | Reinforcement | 4d | 2025-07-21 | 2025-07-25 | PG-10992 | 10.67d |
| PG-10994 |  | Formwork | 4d | 2025-07-23 | 2025-07-28 | PG-10993 FF+2d | 10.67d |
|  | 1.3.1.2.2.28.2 | **Slab, Beams & Staircase** |  | 2025-07-26 | 2025-08-02 |  |  |
| PG-10995 |  | Formwork | 3d | 2025-07-26 | 2025-07-30 | PG-10994 FF+2d | 10.67d |
| PG-10996 |  | Reinforcement | 3d | 2025-07-29 | 2025-08-01 | PG-10995 FF+2d | 10.67d |
| PG-10997 |  | Concrete | 1d | 2025-08-01 | 2025-08-02 | PG-10996 | 10.67d |
|  | 1.3.1.2.2.29 | **Floor 26** |  | 2025-08-02 | 2025-08-16 |  |  |
|  | 1.3.1.2.2.29.1 | **Columns / shear walls** |  | 2025-08-02 | 2025-08-09 |  |  |
| PG-10998 |  | Reinforcement | 4d | 2025-08-02 | 2025-08-07 | PG-10997 | 10.67d |

| ID | WBS | Task | Duration | Start | Finish | Predecessors | Complete | Total float |
| --- | --- | --- | --- | --- | --- | --- | --- | --- |
| PG-10999 |  | Formwork | 4d | 2025-08-05 | 2025-08-09 | PG-10998 FF+2d |  | 10.67d |
|  | 1.3.1.2.2.29.2 | **Slab, Beams & Staircase** |  | 2025-08-08 | 2025-08-16 |  |  |  |
| PG-11000 |  | Formwork | 3d | 2025-08-08 | 2025-08-12 | PG-10999 FF+2d |  | 10.67d |
| PG-11001 |  | Reinforcement | 3d | 2025-08-11 | 2025-08-14 | PG-11000 FF+2d |  | 10.67d |
| PG-11002 |  | Concrete | 1d | 2025-08-14 | 2025-08-16 | PG-11001 |  | 10.67d |
|  | 1.3.1.2.2.30 | **Above Terrace Floor** |  | 2025-08-16 | 2025-09-25 |  |  |  |
|  | 1.3.1.2.2.30.1 | **Columns / shear walls/Parapet Walls** |  | 2025-08-16 | 2025-08-30 |  |  |  |
| PG-11003 |  | Reinforcement | 4d | 2025-08-16 | 2025-08-21 | PG-11002, PG-10997, PG-10992, PG-10987 |  | 116.17d |
| PG-11004 |  | Formwork | 5d | 2025-08-19 | 2025-08-25 | PG-11003 FF+3d |  | 116.17d |
| PG-11005 |  | Concrete | 4.67d | 2025-08-25 | 2025-08-30 | PG-11004 |  | 116.17d |
|  | 1.3.1.2.2.30.2 | **Slab, Beams & Staircase Head rooms, Lift headroom** |  | 2025-08-22 | 2025-09-25 |  |  |  |
| PG-11009 |  | Terrace Waterproofing and Protective finishing. | 28.67d | 2025-08-22 | 2025-09-25 | PG-11008 FF+10d |  | 208.83d |
| PG-11006 |  | Formwork | 5d | 2025-08-30 | 2025-09-05 | PG-11005 |  | 208.83d |
| PG-11007 |  | Reinforcement | 5d | 2025-09-05 | 2025-09-11 | PG-11006 FF+5d |  | 208.83d |
| PG-11008 |  | Concrete | 2d | 2025-09-11 | 2025-09-13 | PG-11007 |  | 208.83d |
|  | 1.3.1.2.3 | **MEP Internal works** |  | 2024-10-21 | 2026-02-23 |  |  |  |
|  | 1.3.1.2.3.1 | **LBF** |  | 2024-10-21 | 2025-01-04 |  |  |  |
| PG-11010 |  | Surface Drainage System (Chambers and Pipeline for Sump) | 15d | 2024-10-21 A | 2024-11-08 A | PG-10897 | 100% |  |
| PG-11011 |  | Pump fixing for collection sump | 1.67d | 2024-12-03 A | 2024-12-04 A | PG-11261 | 100% |  |
| PG-11012 |  | FPS Piping and Sprinkler Fixing works | 9.67d | 2024-12-21 A | 2025-01-02 A | PG-11011, PG-11264 FF+5d | 100% |  |
| PG-11013 |  | Electrical Conducting and Light Fixing works | 9.5d | 2024-12-25 A | 2025-01-04 A | PG-11264 FF+7d | 100% |  |
|  | 1.3.1.2.3.2 | **UBF** |  | 2024-12-16 | 2025-01-11 |  |  |  |
| PG-11014 |  | Piping for Rainwater and Soil lines in Ceiling | 20d | 2024-12-16 A | 2025-01-08 A | PG-11264 FF+10d | 100% |  |
| PG-11015 |  | FPS Piping and Sprinkler Fixing works | 9.67d | 2024-12-27 A | 2025-01-08 A | PG-11012 FF+5d | 100% |  |
| PG-11016 |  | Electrical Conducting and Light Fixing works | 8.5d | 2025-01-01 A | 2025-01-11 A | PG-11013 FF+5d | 100% |  |
|  | 1.3.1.2.3.3 | **Ground Floor** |  | 2024-10-21 | 2025-01-11 |  |  |  |
|  | 1.3.1.2.3.3.1 | **PHE Works** |  | 2024-10-21 | 2025-01-11 |  |  |  |
| PG-11017 |  | 1st Fix - Piping works | 12d | 2024-10-21 A | 2024-11-05 A | PG-10897 | 100% |  |
| PG-11018 |  | 2nd Fix - diverter fixing & Pressure testing | 10d | 2024-10-30 A | 2024-11-12 A | PG-11017 FF+6d | 100% |  |
| PG-11019 |  | Final Fix - CP & Sanitary fixtures | 9.5d | 2025-01-01 A | 2025-01-11 A | PG-11274, PG-11280 FF+6d | 100% |  |
|  | 1.3.1.2.3.3.2 | **Fire Fighting Works** |  | 2024-10-30 | 2025-01-11 |  |  |  |
| PG-11020 |  | 1st Fix - Piping and Shaft hydrant works | 11.67d | 2024-10-30 A | 2024-11-14 A | PG-11271 FF+6d | 100% |  |
| PG-11021 |  | 2nd Fix - Sprinkler fixing & Pressure testing | 9.67d | 2024-12-09 A | 2024-12-20 A | PG-11279 FF+6d | 100% |  |
| PG-11022 |  | Final Fix - Smoke & heat detectors, FHC , FAS Etc. | 9.5d | 2025-01-01 A | 2025-01-11 A | PG-11021, PG-11280 FF+6d | 100% |  |
|  | 1.3.1.2.3.3.3 | **Electrical Works** |  | 2024-10-21 | 2025-01-11 |  |  |  |
| PG-11023 |  | 1st Fix - GI wire pulling | 8d | 2024-10-21 A | 2024-10-30 A | PG-10897 | 100% |  |
| PG-11024 |  | 2nd Fix - Wiring works | 14.67d | 2024-12-02 A | 2024-12-19 A | PG-11279 FF+5d | 100% |  |
| PG-11025 |  | Final Fix - Electrical Fixtures | 5.67d | 2025-01-04 A | 2025-01-11 A | PG-11024, PG-11280 FF+6d | 100% |  |
|  | 1.3.1.2.3.4 | **Floor 1** |  | 2024-11-06 | 2025-01-29 |  |  |  |
|  | 1.3.1.2.3.4.1 | **PHE Works** |  | 2024-11-06 | 2025-01-29 |  |  |  |
| PG-11026 |  | 1st Fix - Piping works | 12d | 2024-11-06 A | 2024-11-21 A | PG-10902 | 100% |  |
| PG-11027 |  | 2nd Fix - diverter fixing & Pressure testing | 10d | 2024-11-16 A | 2024-11-28 A | PG-11026 FF+6d | 100% |  |
| PG-11028 |  | Final Fix - CP & Sanitary fixtures | 10.5d | 2025-01-16 A | 2025-01-29 A | PG-11288, PG-11294 FF+6d | 100% |  |
|  | 1.3.1.2.3.4.2 | **Fire Fighting Works** |  | 2024-11-15 | 2025-01-29 |  |  |  |
| PG-11029 |  | 1st Fix - Piping and Shaft hydrant works | 11.67d | 2024-11-15 A | 2024-11-29 A | PG-11285 FF+6d | 100% |  |
| PG-11030 |  | 2nd Fix - Sprinkler fixing & Pressure testing | 9.67d | 2024-12-25 A | 2025-01-06 A | PG-11293 FF+6d | 100% |  |
| PG-11031 |  | Final Fix - Smoke & heat detectors, FHC , FAS Etc. | 10.5d | 2025-01-16 A | 2025-01-29 A | PG-11030, PG-11294 FF+6d | 100% |  |
|  | 1.3.1.2.3.4.3 | **Electrical Works** |  | 2024-11-06 | 2025-01-28 |  |  |  |
| PG-11032 |  | 1st Fix - GI wire pulling | 8d | 2024-11-06 A | 2024-11-15 A | PG-10902 | 100% |  |
| PG-11033 |  | 2nd Fix - Wiring works | 14.67d | 2024-12-18 A | 2025-01-04 A | PG-11293 FF+5d | 100% |  |
| PG-11034 |  | Final Fix - Electrical Fixtures | 5.5d | 2025-01-22 A | 2025-01-28 A | PG-11033, PG-11294 FF+6d | 100% |  |
|  | 1.3.1.2.3.5 | **Floor 2** |  | 2024-11-22 | 2025-02-12 |  |  |  |
|  | 1.3.1.2.3.5.1 | **PHE Works** |  | 2024-11-22 | 2025-02-11 |  |  |  |
| PG-11035 |  | 1st Fix - Piping works | 12d | 2024-11-22 A | 2024-12-06 A | PG-10907 | 100% |  |
| PG-11036 |  | 2nd Fix - diverter fixing & Pressure testing | 10d | 2024-12-02 A | 2024-12-13 A | PG-11035 FF+6d | 100% |  |
| PG-11037 |  | Final Fix - CP & Sanitary fixtures | 9.5d | 2025-01-31 A | 2025-02-11 A | PG-11302, PG-11308 FF+6d | 100% |  |
|  | 1.3.1.2.3.5.2 | **Fire Fighting Works** |  | 2024-12-02 | 2025-02-12 |  |  |  |
| PG-11038 |  | 1st Fix - Piping and Shaft hydrant works | 11.67d | 2024-12-02 A | 2024-12-16 A | PG-11299 FF+6d | 100% |  |
| PG-11039 |  | 2nd Fix - Sprinkler fixing & Pressure testing | 9.67d | 2025-01-09 A | 2025-01-20 A | PG-11307 FF+6d | 100% |  |
| PG-11040 |  | Final Fix - Smoke & heat detectors, FHC , FAS Etc. | 9.5d | 2025-01-31 A | 2025-02-12 A | PG-11039, PG-11308 FF+6d | 100% |  |
|  | 1.3.1.2.3.5.3 | **Electrical Works** |  | 2024-11-22 | 2025-02-12 |  |  |  |
| PG-11041 |  | 1st Fix - GI wire pulling | 8d | 2024-11-22 A | 2024-12-02 A | PG-10907 | 100% |  |
| PG-11042 |  | 2nd Fix - Wiring works | 14.67d | 2025-01-02 A | 2025-01-20 A | PG-11307 FF+5d | 100% |  |
| PG-11043 |  | Final Fix - Electrical Fixtures | 5.5d | 2025-02-05 A | 2025-02-12 A | PG-11042, PG-11308 FF+6d | 100% |  |
|  | 1.3.1.2.3.6 | **Floor 3** |  | 2024-12-07 | 2025-03-01 |  |  |  |
|  | 1.3.1.2.3.6.1 | **PHE Works** |  | 2024-12-07 | 2025-02-28 |  |  |  |
| PG-11044 |  | 1st Fix - Piping works | 12d | 2024-12-07 A | 2024-12-21 A | PG-10912 | 100% |  |
| PG-11045 |  | 2nd Fix - diverter fixing & Pressure testing | 10d | 2024-12-17 A | 2024-12-30 A | PG-11044 FF+6d | 100% |  |
| PG-11046 |  | Final Fix - CP & Sanitary fixtures | 11.5d | 2025-02-15 A | 2025-02-28 A | PG-11316, PG-11322 FF+6d | 100% |  |
|  | 1.3.1.2.3.6.2 | **Fire Fighting Works** |  | 2024-12-17 | 2025-03-01 |  |  |  |

| ID | WBS | Task | Duration | Start | Finish | Predecessors | Complete | Total float |
| --- | --- | --- | --- | --- | --- | --- | --- | --- |
| PG-11047 |  | 1st Fix - Piping and Shaft hydrant works | 11.67d | 2024-12-17 A | 2024-12-31 A | PG-11313 FF+6d | 100% |  |
| PG-11048 |  | 2nd Fix - Sprinkler fixing & Pressure testing | 9.67d | 2025-01-24 A | 2025-02-05 A | PG-11321 FF+6d | 100% |  |
| PG-11049 |  | Final Fix - Smoke & heat detectors, FHC , FAS Etc. | 11.5d | 2025-02-15 A | 2025-03-01 A | PG-11048, PG-11322 FF+6d | 100% |  |
|  | 1.3.1.2.3.6.3 | **Electrical Works** |  | 2024-12-07 | 2025-03-01 |  |  |  |
| PG-11050 |  | 1st Fix - GI wire pulling | 8d | 2024-12-07 A | 2024-12-17 A | PG-10912 | 100% |  |
| PG-11051 |  | 2nd Fix - Wiring works | 14.67d | 2025-01-17 A | 2025-02-03 A | PG-11321 FF+5d | 100% |  |
| PG-11052 |  | Final Fix - Electrical Fixtures | 6.5d | 2025-02-21 A | 2025-03-01 A | PG-11051, PG-11322 FF+6d | 100% |  |
|  | 1.3.1.2.3.7 | **Floor 4** |  | 2024-12-23 | 2025-03-19 |  |  |  |
|  | 1.3.1.2.3.7.1 | **PHE Works** |  | 2024-12-23 | 2025-03-19 |  |  |  |
| PG-11053 |  | 1st Fix - Piping works | 12d | 2024-12-23 A | 2025-01-06 A | PG-10917 | 100% |  |
| PG-11054 |  | 2nd Fix - diverter fixing & Pressure testing | 10d | 2025-01-01 A | 2025-01-13 A | PG-11053 FF+6d | 100% |  |
| PG-11055 |  | Final Fix - CP & Sanitary fixtures | 10.5d | 2025-03-06 A | 2025-03-19 A | PG-11330, PG-11336 FF+6d | 100% |  |
|  | 1.3.1.2.3.7.2 | **Fire Fighting Works** |  | 2025-01-02 | 2025-03-19 |  |  |  |
| PG-11056 |  | 1st Fix - Piping and Shaft hydrant works | 11.67d | 2025-01-02 A | 2025-01-16 A | PG-11327 FF+6d | 100% |  |
| PG-11057 |  | 2nd Fix - Sprinkler fixing & Pressure testing | 9.67d | 2025-02-08 A | 2025-02-21 A | PG-11335 FF+6d | 100% |  |
| PG-11058 |  | Final Fix - Smoke & heat detectors, FHC , FAS Etc. | 9.5d | 2025-03-07 A | 2025-03-19 A | PG-11057, PG-11336 FF+6d | 100% |  |
|  | 1.3.1.2.3.7.3 | **Electrical Works** |  | 2024-12-23 | 2025-03-19 |  |  |  |
| PG-11059 |  | 1st Fix - GI wire pulling | 8d | 2024-12-23 A | 2025-01-01 A | PG-10917 | 100% |  |
| PG-11060 |  | 2nd Fix - Wiring works | 14.67d | 2025-02-01 A | 2025-02-20 A | PG-11335 FF+5d | 100% |  |
| PG-11061 |  | Final Fix - Electrical Fixtures | 5.5d | 2025-03-12 A | 2025-03-19 A | PG-11060, PG-11336 FF+6d | 100% |  |
|  | 1.3.1.2.3.8 | **Floor 5** |  | 2025-01-07 | 2025-03-31 |  |  |  |
|  | 1.3.1.2.3.8.1 | **PHE Works** |  | 2025-01-07 | 2025-03-31 |  |  |  |
| PG-11062 |  | 1st Fix - Piping works | 12d | 2025-01-07 A | 2025-01-22 A | PG-10922 | 100% |  |
| PG-11063 |  | 2nd Fix - diverter fixing & Pressure testing | 10d | 2025-01-17 A | 2025-01-29 A | PG-11062 FF+6d | 100% |  |
| PG-11064 |  | Final Fix - CP & Sanitary fixtures | 10.5d | 2025-03-18 A | 2025-03-31 A | PG-11344, PG-11350 FF+6d | 100% |  |
|  | 1.3.1.2.3.8.2 | **Fire Fighting Works** |  | 2025-01-16 | 2025-03-31 |  |  |  |
| PG-11065 |  | 1st Fix - Piping and Shaft hydrant works | 11.67d | 2025-01-16 A | 2025-01-30 A | PG-11341 FF+6d | 100% |  |
| PG-11066 |  | 2nd Fix - Sprinkler fixing & Pressure testing | 9.67d | 2025-02-25 A | 2025-03-08 A | PG-11349 FF+6d | 100% |  |
| PG-11067 |  | Final Fix - Smoke & heat detectors, FHC , FAS Etc. | 10.5d | 2025-03-18 A | 2025-03-31 A | PG-11066, PG-11350 FF+6d | 100% |  |
|  | 1.3.1.2.3.8.3 | **Electrical Works** |  | 2025-01-07 | 2025-03-31 |  |  |  |
| PG-11068 |  | 1st Fix - GI wire pulling | 8d | 2025-01-07 A | 2025-01-17 A | PG-10922 | 100% |  |
| PG-11069 |  | 2nd Fix - Wiring works | 14.67d | 2025-02-18 A | 2025-03-08 A | PG-11349 FF+5d | 100% |  |
| PG-11070 |  | Final Fix - Electrical Fixtures | 5.5d | 2025-03-24 A | 2025-03-31 A | PG-11069, PG-11350 FF+6d | 100% |  |
|  | 1.3.1.2.3.9 | **Floor 6** |  | 2025-01-23 | 2025-04-16 |  |  |  |
|  | 1.3.1.2.3.9.1 | **PHE Works** |  | 2025-01-23 | 2025-04-16 |  |  |  |
| PG-11071 |  | 1st Fix - Piping works | 12d | 2025-01-23 A | 2025-02-06 A | PG-10927 | 100% |  |
| PG-11072 |  | 2nd Fix - diverter fixing & Pressure testing | 10d | 2025-02-01 A | 2025-02-14 A | PG-11071 FF+6d | 100% |  |
| PG-11073 |  | Final Fix - CP & Sanitary fixtures | 11.5d | 2025-04-03 A | 2025-04-16 | PG-11358, PG-11364 FF+6d | 9% | 414.69d |
|  | 1.3.1.2.3.9.2 | **Fire Fighting Works** |  | 2025-02-01 | 2025-04-16 |  |  |  |
| PG-11074 |  | 1st Fix - Piping and Shaft hydrant works | 12d | 2025-02-01 A | 2025-02-17 A | PG-11355 FF+6d | 100% |  |
| PG-11075 |  | 2nd Fix - Sprinkler fixing & Pressure testing | 9.67d | 2025-03-13 A | 2025-03-25 A | PG-11363 FF+6d | 100% |  |
| PG-11076 |  | Final Fix - Smoke & heat detectors, FHC , FAS Etc. | 10.5d | 2025-04-04 A | 2025-04-16 | PG-11075, PG-11364 FF+6d | 3% | 414.91d |
|  | 1.3.1.2.3.9.3 | **Electrical Works** |  | 2025-01-23 | 2025-04-16 |  |  |  |
| PG-11077 |  | 1st Fix - GI wire pulling | 7.67d | 2025-01-23 A | 2025-01-31 A | PG-10927 | 100% |  |
| PG-11078 |  | 2nd Fix - Wiring works | 12.67d | 2025-03-08 A | 2025-03-24 A | PG-11363 FF+5d | 100% |  |
| PG-11079 |  | Final Fix - Electrical Fixtures | 5.5d | 2025-04-09 | 2025-04-16 | PG-11078, PG-11364 FF+6d |  | 414.91d |
|  | 1.3.1.2.3.10 | **Floor 7** |  | 2025-02-07 | 2025-04-30 |  |  |  |
|  | 1.3.1.2.3.10.1 | **PHE Works** |  | 2025-02-07 | 2025-04-30 |  |  |  |
| PG-11080 |  | 1st Fix - Piping works | 12d | 2025-02-07 A | 2025-02-21 A | PG-10932 | 100% |  |
| PG-11081 |  | 2nd Fix - diverter fixing & Pressure testing | 10d | 2025-02-17 A | 2025-02-28 A | PG-11080 FF+6d | 100% |  |
| PG-11082 |  | Final Fix - CP & Sanitary fixtures | 9.67d | 2025-04-18 | 2025-04-30 | PG-11372, PG-11378 FF+6d |  | 402.67d |
|  | 1.3.1.2.3.10.2 | **Fire Fighting Works** |  | 2025-02-18 | 2025-04-30 |  |  |  |
| PG-11083 |  | 1st Fix - Piping and Shaft hydrant works | 11.83d | 2025-02-18 A | 2025-03-04 A | PG-11369 FF+6d | 100% |  |
| PG-11084 |  | 2nd Fix - Sprinkler fixing & Pressure testing | 9.67d | 2025-03-27 A | 2025-04-08 | PG-11377 FF+6d | 67% | 411.83d |
| PG-11085 |  | Final Fix - Smoke & heat detectors, FHC , FAS Etc. | 9.67d | 2025-04-18 | 2025-04-30 | PG-11084, PG-11378 FF+6d |  | 402.67d |
|  | 1.3.1.2.3.10.3 | **Electrical Works** |  | 2025-02-07 | 2025-04-30 |  |  |  |
| PG-11086 |  | 1st Fix - GI wire pulling | 7.83d | 2025-02-07 A | 2025-02-17 A | PG-10932 | 100% |  |
| PG-11087 |  | 2nd Fix - Wiring works | 14.5d | 2025-03-21 A | 2025-04-07 | PG-11377 FF+5d | 82% | 416.82d |
| PG-11088 |  | Final Fix - Electrical Fixtures | 5.67d | 2025-04-23 | 2025-04-30 | PG-11087, PG-11378 FF+6d |  | 402.67d |
|  | 1.3.1.2.3.11 | **Floor 8** |  | 2025-02-22 | 2025-05-16 |  |  |  |
|  | 1.3.1.2.3.11.1 | **PHE Works** |  | 2025-02-22 | 2025-05-16 |  |  |  |
| PG-11089 |  | 1st Fix - Piping works | 12d | 2025-02-22 A | 2025-03-10 A | PG-10937 | 100% |  |
| PG-11090 |  | 2nd Fix - diverter fixing & Pressure testing | 10d | 2025-03-05 A | 2025-03-18 A | PG-11089 FF+6d | 100% |  |
| PG-11091 |  | Final Fix - CP & Sanitary fixtures | 10.5d | 2025-05-05 | 2025-05-16 | PG-11386, PG-11392 FF+6d |  | 388.83d |
|  | 1.3.1.2.3.11.2 | **Fire Fighting Works** |  | 2025-03-04 | 2025-05-16 |  |  |  |
| PG-11092 |  | 1st Fix - Piping and Shaft hydrant works | 12d | 2025-03-04 A | 2025-03-19 A | PG-11383 FF+6d | 100% |  |
| PG-11093 |  | 2nd Fix - Sprinkler fixing & Pressure testing | 9.67d | 2025-04-12 | 2025-04-23 | PG-11391 FF+6d |  | 398.83d |
| PG-11094 |  | Final Fix - Smoke & heat detectors, FHC , FAS Etc. | 9.5d | 2025-05-06 | 2025-05-16 | PG-11093, PG-11392 FF+6d |  | 388.83d |
|  | 1.3.1.2.3.11.3 | **Electrical Works** |  | 2025-02-22 | 2025-05-16 |  |  |  |
| PG-11095 |  | 1st Fix - GI wire pulling | 7.67d | 2025-02-22 A | 2025-03-04 A | PG-10937 | 100% |  |

| ID | WBS | Task | Duration | Start | Finish | Predecessors | Complete | Total float |
| --- | --- | --- | --- | --- | --- | --- | --- | --- |
| PG-11096 |  | 2nd Fix - Wiring works | 12.67d | 2025-04-08 | 2025-04-22 | PG-11391 FF+5d |  | 403.83d |
| PG-11097 |  | Final Fix - Electrical Fixtures | 5.5d | 2025-05-10 | 2025-05-16 | PG-11096, PG-11392 FF+6d |  | 388.83d |
|  | 1.3.1.2.3.12 | **Floor 9** |  | 2025-03-11 | 2025-05-28 |  |  |  |
|  | 1.3.1.2.3.12.1 | **PHE Works** |  | 2025-03-11 | 2025-05-28 |  |  |  |
| PG-11098 |  | 1st Fix - Piping works | 12d | 2025-03-11 A | 2025-03-24 A | PG-10942 | 100% |  |
| PG-11099 |  | 2nd Fix - diverter fixing & Pressure testing | 10d | 2025-03-19 A | 2025-03-31 A | PG-11098 FF+6d | 100% |  |
| PG-11100 |  | Final Fix - CP & Sanitary fixtures | 9.33d | 2025-05-17 | 2025-05-28 | PG-11400, PG-11406 FF+6d |  | 378.67d |
|  | 1.3.1.2.3.12.2 | **Fire Fighting Works** |  | 2025-03-21 | 2025-05-28 |  |  |  |
| PG-11101 |  | 1st Fix - Piping and Shaft hydrant works | 12d | 2025-03-21 A | 2025-04-04 A | PG-11397 FF+6d | 100% |  |
| PG-11102 |  | 2nd Fix - Sprinkler fixing & Pressure testing | 9.67d | 2025-04-25 | 2025-05-06 | PG-11405 FF+6d |  | 387.83d |
| PG-11103 |  | Final Fix - Smoke & heat detectors, FHC , FAS Etc. | 9.33d | 2025-05-17 | 2025-05-28 | PG-11102, PG-11406 FF+6d |  | 378.67d |
|  | 1.3.1.2.3.12.3 | **Electrical Works** |  | 2025-03-11 | 2025-05-28 |  |  |  |
| PG-11104 |  | 1st Fix - GI wire pulling | 8.67d | 2025-03-11 A | 2025-03-21 A | PG-10942 | 100% |  |
| PG-11105 |  | 2nd Fix - Wiring works | 14.5d | 2025-04-18 | 2025-05-05 | PG-11405 FF+5d |  | 392.67d |
| PG-11106 |  | Final Fix - Electrical Fixtures | 5.5d | 2025-05-22 | 2025-05-28 | PG-11105, PG-11406 FF+6d |  | 378.67d |
|  | 1.3.1.2.3.13 | **Floor 10** |  | 2025-03-27 | 2025-06-13 |  |  |  |
|  | 1.3.1.2.3.13.1 | **PHE Works** |  | 2025-03-27 | 2025-06-13 |  |  |  |
| PG-11107 |  | 1st Fix - Piping works | 12d | 2025-03-27 A | 2025-04-09 | PG-10947 | 64% | 364.56d |
| PG-11108 |  | 2nd Fix - diverter fixing & Pressure testing | 10d | 2025-04-04 | 2025-04-16 | PG-11107 FF+6d |  | 364.56d |
| PG-11109 |  | Final Fix - CP & Sanitary fixtures | 10.5d | 2025-06-02 | 2025-06-13 | PG-11414, PG-11420 FF+6d |  | 364.56d |
|  | 1.3.1.2.3.13.2 | **Fire Fighting Works** |  | 2025-04-04 | 2025-06-13 |  |  |  |
| PG-11110 |  | 1st Fix - Piping and Shaft hydrant works | 12d | 2025-04-04 | 2025-04-18 | PG-11411 FF+6d |  | 411.97d |
| PG-11111 |  | 2nd Fix - Sprinkler fixing & Pressure testing | 9.83d | 2025-05-12 | 2025-05-23 | PG-11419 FF+6d |  | 372.4d |
| PG-11112 |  | Final Fix - Smoke & heat detectors, FHC , FAS Etc. | 10.5d | 2025-06-02 | 2025-06-13 | PG-11111, PG-11420 FF+6d |  | 364.56d |
|  | 1.3.1.2.3.13.3 | **Electrical Works** |  | 2025-03-27 | 2025-06-13 |  |  |  |
| PG-11113 |  | 1st Fix - GI wire pulling | 7.67d | 2025-03-27 A | 2025-04-04 | PG-10947 | 97% | 411.97d |
| PG-11114 |  | 2nd Fix - Wiring works | 12.67d | 2025-05-07 | 2025-05-22 | PG-11419 FF+5d |  | 378.23d |
| PG-11115 |  | Final Fix - Electrical Fixtures | 5.67d | 2025-06-06 | 2025-06-13 | PG-11114, PG-11420 FF+6d |  | 364.56d |
|  | 1.3.1.2.3.14 | **Floor 11** |  | 2025-04-09 | 2025-06-27 |  |  |  |
|  | 1.3.1.2.3.14.1 | **PHE Works** |  | 2025-04-09 | 2025-06-27 |  |  |  |
| PG-11116 |  | 1st Fix - Piping works | 12d | 2025-04-09 | 2025-04-23 | PG-10952 |  | 352.33d |
| PG-11117 |  | 2nd Fix - diverter fixing & Pressure testing | 10d | 2025-04-18 | 2025-04-30 | PG-11116 FF+6d |  | 352.33d |
| PG-11118 |  | Final Fix - CP & Sanitary fixtures | 10.5d | 2025-06-16 | 2025-06-27 | PG-11428, PG-11434 FF+6d |  | 352.33d |
|  | 1.3.1.2.3.14.2 | **Fire Fighting Works** |  | 2025-04-18 | 2025-06-27 |  |  |  |
| PG-11119 |  | 1st Fix - Piping and Shaft hydrant works | 11.83d | 2025-04-18 | 2025-05-02 | PG-11425 FF+6d |  | 400d |
| PG-11120 |  | 2nd Fix - Sprinkler fixing & Pressure testing | 10d | 2025-05-26 | 2025-06-06 | PG-11433 FF+6d |  | 360.17d |
| PG-11121 |  | Final Fix - Smoke & heat detectors, FHC , FAS Etc. | 10.5d | 2025-06-16 | 2025-06-27 | PG-11120, PG-11434 FF+6d |  | 352.33d |
|  | 1.3.1.2.3.14.3 | **Electrical Works** |  | 2025-04-09 | 2025-06-27 |  |  |  |
| PG-11122 |  | 1st Fix - GI wire pulling | 7.67d | 2025-04-09 | 2025-04-18 | PG-10952 |  | 400d |
| PG-11123 |  | 2nd Fix - Wiring works | 12.67d | 2025-05-21 | 2025-06-05 | PG-11433 FF+5d |  | 366d |
| PG-11124 |  | Final Fix - Electrical Fixtures | 5.67d | 2025-06-21 | 2025-06-27 | PG-11123, PG-11434 FF+6d |  | 352.33d |
|  | 1.3.1.2.3.15 | **Floor 12** |  | 2025-04-22 | 2025-07-10 |  |  |  |
|  | 1.3.1.2.3.15.1 | **PHE Works** |  | 2025-04-22 | 2025-07-10 |  |  |  |
| PG-11125 |  | 1st Fix - Piping works | 12d | 2025-04-22 | 2025-05-06 | PG-10957 |  | 341.33d |
| PG-11126 |  | 2nd Fix - diverter fixing & Pressure testing | 10d | 2025-05-01 | 2025-05-13 | PG-11125 FF+6d |  | 341.33d |
| PG-11127 |  | Final Fix - CP & Sanitary fixtures | 9.5d | 2025-06-30 | 2025-07-10 | PG-11442, PG-11448 FF+6d |  | 341.33d |
|  | 1.3.1.2.3.15.2 | **Fire Fighting Works** |  | 2025-05-02 | 2025-07-10 |  |  |  |
| PG-11128 |  | 1st Fix - Piping and Shaft hydrant works | 11.33d | 2025-05-02 | 2025-05-15 | PG-11439 FF+6d |  | 389d |
| PG-11129 |  | 2nd Fix - Sprinkler fixing & Pressure testing | 10d | 2025-06-07 | 2025-06-19 | PG-11447 FF+6d |  | 350.33d |
| PG-11130 |  | Final Fix - Smoke & heat detectors, FHC , FAS Etc. | 9.5d | 2025-06-30 | 2025-07-10 | PG-11129, PG-11448 FF+6d |  | 341.33d |
|  | 1.3.1.2.3.15.3 | **Electrical Works** |  | 2025-04-22 | 2025-07-10 |  |  |  |
| PG-11131 |  | 1st Fix - GI wire pulling | 7.83d | 2025-04-22 | 2025-05-01 | PG-10957 |  | 389d |
| PG-11132 |  | 2nd Fix - Wiring works | 12.83d | 2025-06-03 | 2025-06-18 | PG-11447 FF+5d |  | 355.33d |
| PG-11133 |  | Final Fix - Electrical Fixtures | 5.5d | 2025-07-04 | 2025-07-10 | PG-11132, PG-11448 FF+6d |  | 341.33d |
|  | 1.3.1.2.3.16 | **Floor 13** |  | 2025-05-05 | 2025-07-24 |  |  |  |
|  | 1.3.1.2.3.16.1 | **PHE Works** |  | 2025-05-05 | 2025-07-24 |  |  |  |
| PG-11134 |  | 1st Fix - Piping works | 12d | 2025-05-05 | 2025-05-19 | PG-10962 |  | 330.33d |
| PG-11135 |  | 2nd Fix - diverter fixing & Pressure testing | 10d | 2025-05-14 | 2025-05-26 | PG-11134 FF+6d |  | 330.33d |
| PG-11136 |  | Final Fix - CP & Sanitary fixtures | 10.5d | 2025-07-12 | 2025-07-24 | PG-11456, PG-11462 FF+6d |  | 330.33d |
|  | 1.3.1.2.3.16.2 | **Fire Fighting Works** |  | 2025-05-14 | 2025-07-24 |  |  |  |
| PG-11137 |  | 1st Fix - Piping and Shaft hydrant works | 11.67d | 2025-05-14 | 2025-05-28 | PG-11453 FF+6d |  | 377.33d |
| PG-11138 |  | 2nd Fix - Sprinkler fixing & Pressure testing | 10d | 2025-06-20 | 2025-07-02 | PG-11461 FF+6d |  | 339.33d |
| PG-11139 |  | Final Fix - Smoke & heat detectors, FHC , FAS Etc. | 10.5d | 2025-07-12 | 2025-07-24 | PG-11138, PG-11462 FF+6d |  | 330.33d |
|  | 1.3.1.2.3.16.3 | **Electrical Works** |  | 2025-05-05 | 2025-07-24 |  |  |  |
| PG-11140 |  | 1st Fix - GI wire pulling | 7.67d | 2025-05-05 | 2025-05-14 | PG-10962 |  | 377.33d |
| PG-11141 |  | 2nd Fix - Wiring works | 12.83d | 2025-06-16 | 2025-07-01 | PG-11461 FF+5d |  | 345.33d |
| PG-11142 |  | Final Fix - Electrical Fixtures | 5.5d | 2025-07-18 | 2025-07-24 | PG-11141, PG-11462 FF+6d |  | 330.33d |
|  | 1.3.1.2.3.17 | **Floor 14** |  | 2025-05-17 | 2025-08-06 |  |  |  |
|  | 1.3.1.2.3.17.1 | **PHE Works** |  | 2025-05-17 | 2025-08-06 |  |  |  |
| PG-11143 |  | 1st Fix - Piping works | 12d | 2025-05-17 | 2025-05-31 | PG-10967 |  | 319.33d |

| ID | WBS | Task | Duration | Start | Finish | Predecessors | Total float |
| --- | --- | --- | --- | --- | --- | --- | --- |
| PG-11144 |  | 2nd Fix - diverter fixing & Pressure testing | 10d | 2025-05-27 | 2025-06-07 | PG-11143 FF+6d | 319.33d |
| PG-11145 |  | Final Fix - CP & Sanitary fixtures | 9.5d | 2025-07-26 | 2025-08-06 | PG-11470, PG-11476 FF+6d | 319.33d |
|  | 1.3.1.2.3.17.2 | **Fire Fighting Works** |  | 2025-05-28 | 2025-08-06 |  |  |
| PG-11146 |  | 1st Fix - Piping and Shaft hydrant works | 11.67d | 2025-05-28 | 2025-06-11 | PG-11467 FF+6d | 365.33d |
| PG-11147 |  | 2nd Fix - Sprinkler fixing & Pressure testing | 10d | 2025-07-03 | 2025-07-15 | PG-11475 FF+6d | 329.33d |
| PG-11148 |  | Final Fix - Smoke & heat detectors, FHC , FAS Etc. | 9.5d | 2025-07-26 | 2025-08-06 | PG-11147, PG-11476 FF+6d | 319.33d |
|  | 1.3.1.2.3.17.3 | **Electrical Works** |  | 2025-05-17 | 2025-08-06 |  |  |
| PG-11149 |  | 1st Fix - GI wire pulling | 8.67d | 2025-05-17 | 2025-05-28 | PG-10967 | 365.33d |
| PG-11150 |  | 2nd Fix - Wiring works | 12.83d | 2025-06-28 | 2025-07-14 | PG-11475 FF+5d | 334.33d |
| PG-11151 |  | Final Fix - Electrical Fixtures | 5.5d | 2025-07-31 | 2025-08-06 | PG-11150, PG-11476 FF+6d | 319.33d |
|  | 1.3.1.2.3.18 | **Floor 15** |  | 2025-05-30 | 2025-08-19 |  |  |
|  | 1.3.1.2.3.18.1 | **PHE Works** |  | 2025-05-30 | 2025-08-19 |  |  |
| PG-11152 |  | 1st Fix - Piping works | 12d | 2025-05-30 | 2025-06-13 | PG-10972 | 158.33d |
| PG-11153 |  | 2nd Fix - diverter fixing & Pressure testing | 10d | 2025-06-09 | 2025-06-20 | PG-11152 FF+6d | 158.33d |
| PG-11154 |  | Final Fix - CP & Sanitary fixtures | 9.5d | 2025-08-07 | 2025-08-19 | PG-11484, PG-11490 FF+6d | 309.33d |
|  | 1.3.1.2.3.18.2 | **Fire Fighting Works** |  | 2025-06-09 | 2025-08-19 |  |  |
| PG-11155 |  | 1st Fix - Piping and Shaft hydrant works | 11.67d | 2025-06-09 | 2025-06-23 | PG-11481 FF+6d | 356d |
| PG-11156 |  | 2nd Fix - Sprinkler fixing & Pressure testing | 10d | 2025-07-16 | 2025-07-28 | PG-11489 FF+6d | 318.33d |
| PG-11157 |  | Final Fix - Smoke & heat detectors, FHC , FAS Etc. | 9.5d | 2025-08-07 | 2025-08-19 | PG-11156, PG-11490 FF+6d | 309.33d |
|  | 1.3.1.2.3.18.3 | **Electrical Works** |  | 2025-05-30 | 2025-08-19 |  |  |
| PG-11158 |  | 1st Fix - GI wire pulling | 7.83d | 2025-05-30 | 2025-06-09 | PG-10972 | 356d |
| PG-11159 |  | 2nd Fix - Wiring works | 14.67d | 2025-07-09 | 2025-07-26 | PG-11489 FF+5d | 323.33d |
| PG-11160 |  | Final Fix - Electrical Fixtures | 5.5d | 2025-08-12 | 2025-08-19 | PG-11159, PG-11490 FF+6d | 309.33d |
|  | 1.3.1.2.3.19 | **Floor 16** |  | 2025-06-12 | 2025-08-30 |  |  |
|  | 1.3.1.2.3.19.1 | **PHE Works** |  | 2025-06-12 | 2025-08-30 |  |  |
| PG-11161 |  | 1st Fix - Piping works | 12d | 2025-06-12 | 2025-06-26 | PG-10977 | 299d |
| PG-11162 |  | 2nd Fix - diverter fixing & Pressure testing | 10d | 2025-06-21 | 2025-07-03 | PG-11161 FF+6d | 299d |
| PG-11163 |  | Final Fix - CP & Sanitary fixtures | 10.33d | 2025-08-19 | 2025-08-30 | PG-11498, PG-11504 FF+6d | 299d |
|  | 1.3.1.2.3.19.2 | **Fire Fighting Works** |  | 2025-06-21 | 2025-08-30 |  |  |
| PG-11164 |  | 1st Fix - Piping and Shaft hydrant works | 11.67d | 2025-06-21 | 2025-07-05 | PG-11495 FF+6d | 344.83d |
| PG-11165 |  | 2nd Fix - Sprinkler fixing & Pressure testing | 10d | 2025-07-29 | 2025-08-09 | PG-11503 FF+6d | 306.17d |
| PG-11166 |  | Final Fix - Smoke & heat detectors, FHC , FAS Etc. | 10.33d | 2025-08-19 | 2025-08-30 | PG-11165, PG-11504 FF+6d | 299d |
|  | 1.3.1.2.3.19.3 | **Electrical Works** |  | 2025-06-12 | 2025-08-30 |  |  |
| PG-11167 |  | 1st Fix - GI wire pulling | 7.83d | 2025-06-12 | 2025-06-21 | PG-10977 | 344.83d |
| PG-11168 |  | 2nd Fix - Wiring works | 13.67d | 2025-07-23 | 2025-08-08 | PG-11503 FF+5d | 312d |
| PG-11169 |  | Final Fix - Electrical Fixtures | 5.5d | 2025-08-25 | 2025-08-30 | PG-11168, PG-11504 FF+6d | 299d |
|  | 1.3.1.2.3.20 | **Floor 17** |  | 2025-06-25 | 2025-09-12 |  |  |
|  | 1.3.1.2.3.20.1 | **PHE Works** |  | 2025-06-25 | 2025-09-12 |  |  |
| PG-11170 |  | 1st Fix - Piping works | 12d | 2025-06-25 | 2025-07-09 | PG-10982 | 288d |
| PG-11171 |  | 2nd Fix - diverter fixing & Pressure testing | 10d | 2025-07-04 | 2025-07-16 | PG-11170 FF+6d | 288d |
| PG-11172 |  | Final Fix - CP & Sanitary fixtures | 10.33d | 2025-09-01 | 2025-09-12 | PG-11512, PG-11518 FF+6d | 288d |
|  | 1.3.1.2.3.20.2 | **Fire Fighting Works** |  | 2025-07-04 | 2025-09-12 |  |  |
| PG-11173 |  | 1st Fix - Piping and Shaft hydrant works | 11.67d | 2025-07-04 | 2025-07-18 | PG-11509 FF+6d | 333.83d |
| PG-11174 |  | 2nd Fix - Sprinkler fixing & Pressure testing | 10d | 2025-08-11 | 2025-08-23 | PG-11517 FF+6d | 295.17d |
| PG-11175 |  | Final Fix - Smoke & heat detectors, FHC , FAS Etc. | 10.33d | 2025-09-01 | 2025-09-12 | PG-11174, PG-11518 FF+6d | 288d |
|  | 1.3.1.2.3.20.3 | **Electrical Works** |  | 2025-06-25 | 2025-09-12 |  |  |
| PG-11176 |  | 1st Fix - GI wire pulling | 7.83d | 2025-06-25 | 2025-07-04 | PG-10982 | 333.83d |
| PG-11177 |  | 2nd Fix - Wiring works | 13.67d | 2025-08-05 | 2025-08-22 | PG-11517 FF+5d | 301d |
| PG-11178 |  | Final Fix - Electrical Fixtures | 5.5d | 2025-09-06 | 2025-09-12 | PG-11177, PG-11518 FF+6d | 288d |
|  | 1.3.1.2.3.21 | **Floor 18** |  | 2025-07-08 | 2025-09-26 |  |  |
|  | 1.3.1.2.3.21.1 | **PHE Works** |  | 2025-07-08 | 2025-09-26 |  |  |
| PG-11179 |  | 1st Fix - Piping works | 11.67d | 2025-07-08 | 2025-07-22 | PG-10987 | 276.17d |
| PG-11180 |  | 2nd Fix - diverter fixing & Pressure testing | 8.67d | 2025-07-18 | 2025-07-29 | PG-11179 FF+6d | 276.17d |
| PG-11181 |  | Final Fix - CP & Sanitary fixtures | 10.67d | 2025-09-15 | 2025-09-26 | PG-11526, PG-11532 FF+6d | 276.17d |
|  | 1.3.1.2.3.21.2 | **Fire Fighting Works** |  | 2025-07-17 | 2025-09-26 |  |  |
| PG-11182 |  | 1st Fix - Piping and Shaft hydrant works | 11.67d | 2025-07-17 | 2025-07-31 | PG-11523 FF+6d | 323.83d |
| PG-11183 |  | 2nd Fix - Sprinkler fixing & Pressure testing | 10.5d | 2025-08-23 | 2025-09-05 | PG-11531 FF+6d | 284.17d |
| PG-11184 |  | Final Fix - Smoke & heat detectors, FHC , FAS Etc. | 10.67d | 2025-09-15 | 2025-09-26 | PG-11183, PG-11532 FF+6d | 276.17d |
|  | 1.3.1.2.3.21.3 | **Electrical Works** |  | 2025-07-08 | 2025-09-26 |  |  |
| PG-11185 |  | 1st Fix - GI wire pulling | 7.83d | 2025-07-08 | 2025-07-17 | PG-10987 | 323.83d |
| PG-11186 |  | 2nd Fix - Wiring works | 15.5d | 2025-08-16 | 2025-09-04 | PG-11531 FF+5d | 290.17d |
| PG-11187 |  | Final Fix - Electrical Fixtures | 5.67d | 2025-09-20 | 2025-09-26 | PG-11186, PG-11532 FF+6d | 276.17d |
|  | 1.3.1.2.3.22 | **Floor 19** |  | 2025-07-21 | 2025-10-10 |  |  |
|  | 1.3.1.2.3.22.1 | **PHE Works** |  | 2025-07-21 | 2025-10-10 |  |  |
| PG-11188 |  | 1st Fix - Piping works | 11.67d | 2025-07-21 | 2025-08-04 | PG-10992 | 265.17d |
| PG-11189 |  | 2nd Fix - diverter fixing & Pressure testing | 8.67d | 2025-07-31 | 2025-08-11 | PG-11188 FF+6d | 265.17d |
| PG-11190 |  | Final Fix - CP & Sanitary fixtures | 10.67d | 2025-09-27 | 2025-10-10 | PG-11540, PG-11546 FF+6d | 265.17d |
|  | 1.3.1.2.3.22.2 | **Fire Fighting Works** |  | 2025-07-29 | 2025-10-10 |  |  |
| PG-11191 |  | 1st Fix - Piping and Shaft hydrant works | 12.67d | 2025-07-29 | 2025-08-13 | PG-11537 FF+6d | 312.83d |
| PG-11192 |  | 2nd Fix - Sprinkler fixing & Pressure testing | 10.5d | 2025-09-05 | 2025-09-18 | PG-11545 FF+6d | 273.17d |

| ID | WBS | Task | Duration | Start | Finish | Predecessors | Total float |
| --- | --- | --- | --- | --- | --- | --- | --- |
| PG-11193 |  | Final Fix - Smoke & heat detectors, FHC , FAS Etc. | 10.67d | 2025-09-27 | 2025-10-10 | PG-11192, PG-11546 FF+6d | 265.17d |
|  | 1.3.1.2.3.22.3 | **Electrical Works** |  | 2025-07-21 | 2025-10-10 |  |  |
| PG-11194 |  | 1st Fix - GI wire pulling | 7.83d | 2025-07-21 | 2025-07-30 | PG-10992 | 312.83d |
| PG-11195 |  | 2nd Fix - Wiring works | 15.5d | 2025-08-29 | 2025-09-17 | PG-11545 FF+5d | 279.17d |
| PG-11196 |  | Final Fix - Electrical Fixtures | 5.67d | 2025-10-04 | 2025-10-10 | PG-11195, PG-11546 FF+6d | 265.17d |
|  | 1.3.1.2.3.23 | **Floor 20** |  | 2025-08-02 | 2025-10-24 |  |  |
|  | 1.3.1.2.3.23.1 | **PHE Works** |  | 2025-08-02 | 2025-10-24 |  |  |
| PG-11197 |  | 1st Fix - Piping works | 12.67d | 2025-08-02 | 2025-08-19 | PG-10997 | 253.17d |
| PG-11198 |  | 2nd Fix - diverter fixing & Pressure testing | 8.67d | 2025-08-14 | 2025-08-26 | PG-11197 FF+6d | 253.17d |
| PG-11199 |  | Final Fix - CP & Sanitary fixtures | 10.67d | 2025-10-13 | 2025-10-24 | PG-11554, PG-11560 FF+6d | 253.17d |
|  | 1.3.1.2.3.23.2 | **Fire Fighting Works** |  | 2025-08-13 | 2025-10-24 |  |  |
| PG-11200 |  | 1st Fix - Piping and Shaft hydrant works | 11.5d | 2025-08-13 | 2025-08-28 | PG-11551 FF+6d | 301d |
| PG-11201 |  | 2nd Fix - Sprinkler fixing & Pressure testing | 10.5d | 2025-09-19 | 2025-10-03 | PG-11559 FF+6d | 261.17d |
| PG-11202 |  | Final Fix - Smoke & heat detectors, FHC , FAS Etc. | 10.67d | 2025-10-13 | 2025-10-24 | PG-11201, PG-11560 FF+6d | 253.17d |
|  | 1.3.1.2.3.23.3 | **Electrical Works** |  | 2025-08-02 | 2025-10-24 |  |  |
| PG-11203 |  | 1st Fix - GI wire pulling | 8.67d | 2025-08-02 | 2025-08-13 | PG-10997 | 301d |
| PG-11204 |  | 2nd Fix - Wiring works | 15.5d | 2025-09-12 | 2025-10-01 | PG-11559 FF+5d | 267.17d |
| PG-11205 |  | Final Fix - Electrical Fixtures | 5.67d | 2025-10-18 | 2025-10-24 | PG-11204, PG-11560 FF+6d | 253.17d |
|  | 1.3.1.2.3.24 | **Floor 21** |  | 2025-08-16 | 2025-11-06 |  |  |
|  | 1.3.1.2.3.24.1 | **PHE Works** |  | 2025-08-16 | 2025-11-06 |  |  |
| PG-11206 |  | 1st Fix - Piping works | 10.67d | 2025-08-16 | 2025-08-29 | PG-11002 | 10.67d |
| PG-11207 |  | 2nd Fix - diverter fixing & Pressure testing | 9.67d | 2025-08-25 | 2025-09-05 | PG-11206 FF+6d | 243.5d |
| PG-11208 |  | Final Fix - CP & Sanitary fixtures | 10.67d | 2025-10-24 | 2025-11-06 | PG-11568, PG-11574 FF+6d | 243.5d |
|  | 1.3.1.2.3.24.2 | **Fire Fighting Works** |  | 2025-08-25 | 2025-11-06 |  |  |
| PG-11209 |  | 1st Fix - Piping and Shaft hydrant works | 11.67d | 2025-08-25 | 2025-09-08 | PG-11565 FF+6d | 291.17d |
| PG-11210 |  | 2nd Fix - Sprinkler fixing & Pressure testing | 9.5d | 2025-10-01 | 2025-10-14 | PG-11573 FF+6d | 252.5d |
| PG-11211 |  | Final Fix - Smoke & heat detectors, FHC , FAS Etc. | 10.67d | 2025-10-24 | 2025-11-06 | PG-11210, PG-11574 FF+6d | 243.5d |
|  | 1.3.1.2.3.24.3 | **Electrical Works** |  | 2025-08-16 | 2025-10-24 |  |  |
| PG-11212 |  | 1st Fix - GI wire pulling | 6.67d | 2025-08-16 | 2025-08-25 | PG-11002 | 291.17d |
| PG-11213 |  | 2nd Fix - Wiring works | 15.5d | 2025-09-12 | 2025-10-01 | PG-11559 FF+5d | 267.5d |
| PG-11214 |  | Final Fix - Electrical Fixtures | 5.67d | 2025-10-18 | 2025-10-24 | PG-11213, PG-11560 FF+6d | 253.5d |
|  | 1.3.1.2.3.25 | **Floor 22** |  | 2025-09-06 | 2025-11-28 |  |  |
|  | 1.3.1.2.3.25.1 | **PHE Works** |  | 2025-09-06 | 2025-11-28 |  |  |
| PG-11215 |  | 1st Fix - Piping works | 11.83d | 2025-09-06 | 2025-09-19 | PG-11206 FS+7d | 119.5d |
| PG-11216 |  | 2nd Fix - diverter fixing & Pressure testing | 10.67d | 2025-09-15 | 2025-09-26 | PG-11215 FF+6d | 129d |
| PG-11217 |  | Final Fix - CP & Sanitary fixtures | 9.67d | 2025-11-18 | 2025-11-28 | PG-11582, PG-11588 FF+6d | 223.67d |
|  | 1.3.1.2.3.25.2 | **Fire Fighting Works** |  | 2025-09-16 | 2025-11-28 |  |  |
| PG-11218 |  | 1st Fix - Piping and Shaft hydrant works | 11.5d | 2025-09-16 | 2025-09-29 | PG-11579 FF+6d | 141.17d |
| PG-11219 |  | 2nd Fix - Sprinkler fixing & Pressure testing | 10.5d | 2025-10-23 | 2025-11-05 | PG-11587 FF+6d | 233.67d |
| PG-11220 |  | Final Fix - Smoke & heat detectors, FHC , FAS Etc. | 9.67d | 2025-11-18 | 2025-11-28 | PG-11219, PG-11588 FF+6d | 223.67d |
|  | 1.3.1.2.3.25.3 | **Electrical Works** |  | 2025-09-06 | 2025-11-28 |  |  |
| PG-11221 |  | 1st Fix - GI wire pulling | 7.67d | 2025-09-06 | 2025-09-15 | PG-11206 FS+7d | 10.67d |
| PG-11222 |  | 2nd Fix - Wiring works | 15.5d | 2025-10-16 | 2025-11-04 | PG-11587 FF+5d | 238.67d |
| PG-11223 |  | Final Fix - Electrical Fixtures | 5.67d | 2025-11-22 | 2025-11-28 | PG-11222, PG-11588 FF+6d | 223.67d |
|  | 1.3.1.2.3.26 | **Floor 23** |  | 2025-09-29 | 2025-12-19 |  |  |
|  | 1.3.1.2.3.26.1 | **PHE Works** |  | 2025-09-29 | 2025-12-19 |  |  |
| PG-11224 |  | 1st Fix - Piping works | 10.67d | 2025-09-29 | 2025-10-11 | PG-11215 FS+7d | 119.5d |
| PG-11225 |  | 2nd Fix - diverter fixing & Pressure testing | 8.67d | 2025-10-09 | 2025-10-18 | PG-11224 FF+6d | 205.67d |
| PG-11226 |  | Final Fix - CP & Sanitary fixtures | 9.67d | 2025-12-08 | 2025-12-19 | PG-11596, PG-11602 FF+6d | 205.67d |
|  | 1.3.1.2.3.26.2 | **Fire Fighting Works** |  | 2025-10-09 | 2025-12-19 |  |  |
| PG-11227 |  | 1st Fix - Piping and Shaft hydrant works | 11.67d | 2025-10-09 | 2025-10-22 | PG-11593 FF+6d | 252.5d |
| PG-11228 |  | 2nd Fix - Sprinkler fixing & Pressure testing | 9.33d | 2025-11-15 | 2025-11-26 | PG-11601 FF+6d | 215.67d |
| PG-11229 |  | Final Fix - Smoke & heat detectors, FHC , FAS Etc. | 9.67d | 2025-12-08 | 2025-12-19 | PG-11228, PG-11602 FF+6d | 205.67d |
|  | 1.3.1.2.3.26.3 | **Electrical Works** |  | 2025-09-29 | 2025-12-19 |  |  |
| PG-11230 |  | 1st Fix - GI wire pulling | 7.67d | 2025-09-29 | 2025-10-08 | PG-11215 FS+7d | 252.5d |
| PG-11231 |  | 2nd Fix - Wiring works | 14.33d | 2025-11-08 | 2025-11-25 | PG-11601 FF+5d | 220.67d |
| PG-11232 |  | Final Fix - Electrical Fixtures | 5.67d | 2025-12-12 | 2025-12-19 | PG-11231, PG-11602 FF+6d | 205.67d |
|  | 1.3.1.2.3.27 | **Floor 24** |  | 2025-10-20 | 2026-01-08 |  |  |
|  | 1.3.1.2.3.27.1 | **PHE Works** |  | 2025-10-20 | 2026-01-08 |  |  |
| PG-11233 |  | 1st Fix - Piping works | 11.67d | 2025-10-20 | 2025-11-04 | PG-11224 FS+7d | 119.5d |
| PG-11234 |  | 2nd Fix - diverter fixing & Pressure testing | 9.67d | 2025-10-29 | 2025-11-11 | PG-11233 FF+6d | 186.5d |
| PG-11235 |  | Final Fix - CP & Sanitary fixtures | 9.67d | 2025-12-27 | 2026-01-08 | PG-11610, PG-11616 FF+6d | 186.5d |
|  | 1.3.1.2.3.27.2 | **Fire Fighting Works** |  | 2025-10-30 | 2026-01-08 |  |  |
| PG-11236 |  | 1st Fix - Piping and Shaft hydrant works | 11.33d | 2025-10-30 | 2025-11-13 | PG-11607 FF+6d | 235.17d |
| PG-11237 |  | 2nd Fix - Sprinkler fixing & Pressure testing | 9.67d | 2025-12-06 | 2025-12-18 | PG-11615 FF+6d | 195d |
| PG-11238 |  | Final Fix - Smoke & heat detectors, FHC , FAS Etc. | 9.67d | 2025-12-27 | 2026-01-08 | PG-11237, PG-11616 FF+6d | 186.5d |
|  | 1.3.1.2.3.27.3 | **Electrical Works** |  | 2025-10-20 | 2026-01-08 |  |  |
| PG-11239 |  | 1st Fix - GI wire pulling | 7.67d | 2025-10-20 | 2025-10-29 | PG-11224 FS+7d | 235.17d |
| PG-11240 |  | 2nd Fix - Wiring works | 14.67d | 2025-11-29 | 2025-12-17 | PG-11615 FF+5d | 200.5d |
| PG-11241 |  | Final Fix - Electrical Fixtures | 5.5d | 2026-01-02 | 2026-01-08 | PG-11240, PG-11616 FF+6d | 186.5d |

| ID | WBS | Task | Duration | Start | Finish | Predecessors | Complete | Total float |
| --- | --- | --- | --- | --- | --- | --- | --- | --- |
|  | 1.3.1.2.3.28 | **Floor 25** |  | 2025-11-12 | 2026-02-03 |  |  |  |
|  | 1.3.1.2.3.28.1 | **PHE Works** |  | 2025-11-12 | 2026-02-03 |  |  |  |
| PG-11242 |  | 1st Fix - Piping works | 11.67d | 2025-11-12 | 2025-11-25 | PG-11233 FS+7d |  | 119.5d |
| PG-11243 |  | 2nd Fix - diverter fixing & Pressure testing | 9.67d | 2025-11-21 | 2025-12-02 | PG-11242 FF+6d |  | 167d |
| PG-11244 |  | Final Fix - CP & Sanitary fixtures | 10.33d | 2026-01-21 | 2026-02-03 | PG-11624, PG-11630 FF+6d |  | 167d |
|  | 1.3.1.2.3.28.2 | **Fire Fighting Works** |  | 2025-11-21 | 2026-02-03 |  |  |  |
| PG-11245 |  | 1st Fix - Piping and Shaft hydrant works | 11.33d | 2025-11-21 | 2025-12-04 | PG-11621 FF+6d |  | 214.67d |
| PG-11246 |  | 2nd Fix - Sprinkler fixing & Pressure testing | 9.33d | 2025-12-29 | 2026-01-08 | PG-11629 FF+6d |  | 177d |
| PG-11247 |  | Final Fix - Smoke & heat detectors, FHC , FAS Etc. | 10.33d | 2026-01-21 | 2026-02-03 | PG-11246, PG-11630 FF+6d |  | 167d |
|  | 1.3.1.2.3.28.3 | **Electrical Works** |  | 2025-11-12 | 2026-02-03 |  |  |  |
| PG-11248 |  | 1st Fix - GI wire pulling | 7.67d | 2025-11-12 | 2025-11-20 | PG-11233 FS+7d |  | 214.67d |
| PG-11249 |  | 2nd Fix - Wiring works | 13.5d | 2025-12-22 | 2026-01-07 | PG-11629 FF+5d |  | 183d |
| PG-11250 |  | Final Fix - Electrical Fixtures | 5.33d | 2026-01-28 | 2026-02-03 | PG-11249, PG-11630 FF+6d |  | 167d |
|  | 1.3.1.2.3.29 | **Floor 26** |  | 2025-12-04 | 2026-02-23 |  |  |  |
|  | 1.3.1.2.3.29.1 | **PHE Works** |  | 2025-12-04 | 2026-02-23 |  |  |  |
| PG-11251 |  | 1st Fix - Piping works | 11.67d | 2025-12-04 | 2025-12-17 | PG-11242 FS+7d |  | 119.5d |
| PG-11252 |  | 2nd Fix - diverter fixing & Pressure testing | 9.67d | 2025-12-13 | 2025-12-24 | PG-11251 FF+6d |  | 119.5d |
| PG-11253 |  | Final Fix - CP & Sanitary fixtures | 10.33d | 2026-02-11 | 2026-02-23 | PG-11638, PG-11644 FF+6d |  | 119.5d |
|  | 1.3.1.2.3.29.2 | **Fire Fighting Works** |  | 2025-12-13 | 2026-02-23 |  |  |  |
| PG-11254 |  | 1st Fix - Piping and Shaft hydrant works | 11.5d | 2025-12-13 | 2025-12-26 | PG-11635 FF+6d |  | 197.67d |
| PG-11255 |  | 2nd Fix - Sprinkler fixing & Pressure testing | 10.33d | 2026-01-19 | 2026-01-31 | PG-11643 FF+6d |  | 128.5d |
| PG-11256 |  | Final Fix - Smoke & heat detectors, FHC , FAS Etc. | 10.33d | 2026-02-11 | 2026-02-23 | PG-11255, PG-11644 FF+6d |  | 119.5d |
|  | 1.3.1.2.3.29.3 | **Electrical Works** |  | 2025-12-04 | 2026-02-23 |  |  |  |
| PG-11257 |  | 1st Fix - GI wire pulling | 7.83d | 2025-12-04 | 2025-12-12 | PG-11242 FS+7d |  | 197.67d |
| PG-11258 |  | 2nd Fix - Wiring works | 15.33d | 2026-01-12 | 2026-01-30 | PG-11643 FF+5d |  | 134.5d |
| PG-11259 |  | Final Fix - Electrical Fixtures | 5.33d | 2026-02-17 | 2026-02-23 | PG-11258, PG-11644 FF+6d |  | 119.5d |
|  | 1.3.1.2.4 | **Civil Finishes - Units** |  | 2024-10-21 | 2026-02-16 |  |  |  |
|  | 1.3.1.2.4.1 | **LBF** |  | 2024-10-21 | 2025-01-29 |  |  |  |
| PG-11260 |  | Backfilling Above Raft | 30d | 2024-10-21 A | 2024-11-26 A | PG-10897 | 100% |  |
| PG-11261 |  | Car wash water collection sump with cap | 15d | 2024-11-14 A | 2024-12-03 A | PG-11260 FF+5d, PG-11010 FF+5d | 100% |  |
| PG-11262 |  | Surface Drain to slope | 10d | 2024-11-27 A | 2024-12-09 A | PG-11261 FF+5d | 100% |  |
| PG-11263 |  | Grade Slab | 10d | 2024-12-03 A | 2024-12-14 A | PG-11262 FF+5d | 100% |  |
| PG-11264 |  | First Coat Painting works | 14.67d | 2024-12-09 A | 2024-12-27 A | PG-11263 FF+10d | 100% |  |
| PG-11265 |  | Final coat painting | 9.67d | 2025-01-11 A | 2025-01-23 A | PG-11016, PG-11013 | 100% |  |
| PG-11266 |  | Car park marking and column corner beading fixing | 9.67d | 2025-01-18 A | 2025-01-29 A | PG-11265 FF+5d | 100% |  |
|  | 1.3.1.2.4.2 | **UBF** |  | 2024-12-07 | 2025-02-15 |  |  |  |
| PG-11267 |  | Surface Drain with Grade Slab to slope | 15d | 2024-12-07 A | 2024-12-26 A | PG-11260 FS+10d | 100% |  |
| PG-11268 |  | First Coat Paint works | 11.67d | 2025-01-08 A | 2025-01-24 A | PG-11267, PG-11015, PG-11014 | 100% |  |
| PG-11269 |  | Final Coat Paint Works | 7.5d | 2025-01-24 A | 2025-02-01 A | PG-11268, PG-11016 FF+5d | 100% |  |
| PG-11270 |  | Car park marking and column corner beading fixing | 10.67d | 2025-02-01 A | 2025-02-15 A | PG-11269 | 100% |  |
|  | 1.3.1.2.4.3 | **Ground Floor** |  | 2024-10-21 | 2025-01-06 |  |  |  |
|  | 1.3.1.2.4.3.1 | **Ceiling Finishing works - Civil** |  | 2024-10-30 | 2025-01-06 |  |  |  |
| PG-11271 |  | Gypsum Plastering | 6d | 2024-10-30 A | 2024-11-07 A | PG-11023 | 100% |  |
| PG-11272 |  | Cornice fixing | 4d | 2024-11-16 A | 2024-11-22 A | PG-11020 FF+6d | 100% |  |
| PG-11274 |  | Toilet False ceiling | 4d | 2024-11-26 A | 2024-11-30 A | PG-11282 FF+5d | 100% |  |
| PG-11273 |  | Painting Works - Putty, Primer and 1st | 6d | 2024-12-06 A | 2024-12-13 A | PG-11272, PG-11277 | 100% |  |
| PG-11275 |  | Final Coat Painting | 18.5d | 2024-12-13 A | 2025-01-06 A | PG-11273, PG-11284 | 100% |  |
|  | 1.3.1.2.4.3.2 | **Wall Finishing works - Civil** |  | 2024-10-21 | 2025-01-04 |  |  |  |
| PG-11276 |  | Balcony Railing Fixing works | 4d | 2024-10-21 A | 2024-10-25 A | PG-10897 | 100% |  |
| PG-11278 |  | Dadoing - Wet area | 5d | 2024-11-12 A | 2024-11-19 A | PG-11018 | 100% |  |
| PG-11277 |  | UPVC Windows & Sliding doors | 5d | 2024-11-29 A | 2024-12-06 A | PG-11276, PG-11283 FF+5d | 100% |  |
| PG-11279 |  | Painting Works - Putty, Primer and 1st | 6d | 2024-12-06 A | 2024-12-13 A | PG-11277 | 100% |  |
| PG-11280 |  | Final Coat Painting | 18.5d | 2024-12-13 A | 2025-01-04 A | PG-11284 | 100% |  |
|  | 1.3.1.2.4.3.3 | **Floor Finishing Works - Civil** |  | 2024-10-21 | 2024-12-13 |  |  |  |
| PG-11281 |  | Waterproofing for sunken areas | 3d | 2024-10-21 A | 2024-10-24 A | PG-10897 | 100% |  |
| PG-11282 |  | Floor Tiling - Wet area | 5d | 2024-11-19 A | 2024-11-25 A | PG-11281, PG-11278 | 100% |  |
| PG-11283 |  | Floor Tiling - Dry area | 5d | 2024-11-25 A | 2024-11-29 A | PG-11282 FF+5d | 100% |  |
| PG-11284 |  | Wooden doors | 5d | 2024-12-07 A | 2024-12-13 A | PG-11279 FF | 100% |  |
|  | 1.3.1.2.4.4 | **Floor 1** |  | 2024-11-06 | 2025-01-22 |  |  |  |
|  | 1.3.1.2.4.4.1 | **Ceiling Finishing works - Civil** |  | 2024-11-15 | 2025-01-22 |  |  |  |
| PG-11285 |  | Gypsum Plastering | 6d | 2024-11-15 A | 2024-11-22 A | PG-11032 | 100% |  |
| PG-11286 |  | Cornice fixing | 4d | 2024-12-02 A | 2024-12-07 A | PG-11029 FF+6d | 100% |  |
| PG-11288 |  | Toilet False ceiling | 4d | 2024-12-11 A | 2024-12-16 A | PG-11296 FF+5d | 100% |  |
| PG-11287 |  | Painting Works - Putty, Primer and 1st | 6d | 2024-12-23 A | 2024-12-30 A | PG-11286, PG-11291 | 100% |  |
| PG-11289 |  | Final Coat Painting | 18.5d | 2024-12-30 A | 2025-01-22 A | PG-11287, PG-11298 | 100% |  |
|  | 1.3.1.2.4.4.2 | **Wall Finishing works - Civil** |  | 2024-11-06 | 2025-01-21 |  |  |  |
| PG-11290 |  | Balcony Railing Fixing works | 4d | 2024-11-06 A | 2024-11-12 A | PG-10902 | 100% |  |
| PG-11292 |  | Dadoing - Wet area | 5d | 2024-11-28 A | 2024-12-04 A | PG-11027 | 100% |  |
| PG-11291 |  | UPVC Windows & Sliding doors | 5d | 2024-12-16 A | 2024-12-23 A | PG-11290, PG-11297 FF+5d | 100% |  |
| PG-11293 |  | Painting Works - Putty, Primer and 1st | 6d | 2024-12-23 A | 2024-12-30 A | PG-11291 | 100% |  |

| ID | WBS | Task | Duration | Start | Finish | Predecessors | Complete |
| --- | --- | --- | --- | --- | --- | --- | --- |
| PG-11294 |  | Final Coat Painting | 18.5d | 2024-12-30 A | 2025-01-21 A | PG-11298 | 100% |
|  | 1.3.1.2.4.4.3 | **Floor Finishing Works - Civil** |  | 2024-11-06 | 2024-12-30 |  |  |
| PG-11295 |  | Waterproofing for sunken areas | 3d | 2024-11-06 A | 2024-11-09 A | PG-10902 | 100% |
| PG-11296 |  | Floor Tiling - Wet area | 5d | 2024-12-04 A | 2024-12-10 A | PG-11295, PG-11292 | 100% |
| PG-11297 |  | Floor Tiling - Dry area | 5d | 2024-12-10 A | 2024-12-16 A | PG-11296 FF+5d | 100% |
| PG-11298 |  | Wooden doors | 5d | 2024-12-24 A | 2024-12-30 A | PG-11293 FF | 100% |
|  | 1.3.1.2.4.5 | **Floor 2** |  | 2024-11-22 | 2025-02-06 |  |  |
|  | 1.3.1.2.4.5.1 | **Ceiling Finishing works - Civil** |  | 2024-12-02 | 2025-02-06 |  |  |
| PG-11299 |  | Gypsum Plastering | 6d | 2024-12-02 A | 2024-12-09 A | PG-11041 | 100% |
| PG-11300 |  | Cornice fixing | 4d | 2024-12-18 A | 2024-12-23 A | PG-11038 FF+6d | 100% |
| PG-11302 |  | Toilet False ceiling | 4d | 2024-12-26 A | 2024-12-31 A | PG-11310 FF+5d | 100% |
| PG-11301 |  | Painting Works - Putty, Primer and 1st | 6d | 2025-01-06 A | 2025-01-13 A | PG-11300, PG-11305 | 100% |
| PG-11303 |  | Final Coat Painting | 18.5d | 2025-01-14 A | 2025-02-06 A | PG-11301, PG-11312 | 100% |
|  | 1.3.1.2.4.5.2 | **Wall Finishing works - Civil** |  | 2024-11-22 | 2025-02-04 |  |  |
| PG-11304 |  | Balcony Railing Fixing works | 4d | 2024-11-22 A | 2024-11-27 A | PG-10907 | 100% |
| PG-11306 |  | Dadoing - Wet area | 5d | 2024-12-13 A | 2024-12-19 A | PG-11036 | 100% |
| PG-11305 |  | UPVC Windows & Sliding doors | 5d | 2024-12-31 A | 2025-01-06 A | PG-11304, PG-11311 FF+5d | 100% |
| PG-11307 |  | Painting Works - Putty, Primer and 1st | 6d | 2025-01-06 A | 2025-01-14 A | PG-11305 | 100% |
| PG-11308 |  | Final Coat Painting | 18.5d | 2025-01-14 A | 2025-02-04 A | PG-11312 | 100% |
|  | 1.3.1.2.4.5.3 | **Floor Finishing Works - Civil** |  | 2024-11-22 | 2025-01-14 |  |  |
| PG-11309 |  | Waterproofing for sunken areas | 3d | 2024-11-22 A | 2024-11-26 A | PG-10907 | 100% |
| PG-11310 |  | Floor Tiling - Wet area | 5d | 2024-12-19 A | 2024-12-25 A | PG-11309, PG-11306 | 100% |
| PG-11311 |  | Floor Tiling - Dry area | 5d | 2024-12-25 A | 2024-12-31 A | PG-11310 FF+5d | 100% |
| PG-11312 |  | Wooden doors | 5d | 2025-01-08 A | 2025-01-14 A | PG-11307 FF | 100% |
|  | 1.3.1.2.4.6 | **Floor 3** |  | 2024-12-07 | 2025-02-21 |  |  |
|  | 1.3.1.2.4.6.1 | **Ceiling Finishing works - Civil** |  | 2024-12-17 | 2025-02-20 |  |  |
| PG-11313 |  | Gypsum Plastering | 6d | 2024-12-17 A | 2024-12-24 A | PG-11050 | 100% |
| PG-11314 |  | Cornice fixing | 4d | 2025-01-02 A | 2025-01-07 A | PG-11047 FF+6d | 100% |
| PG-11316 |  | Toilet False ceiling | 4d | 2025-01-11 A | 2025-01-16 A | PG-11324 FF+5d | 100% |
| PG-11315 |  | Painting Works - Putty, Primer and 1st | 6d | 2025-01-22 A | 2025-01-29 A | PG-11314, PG-11319 | 100% |
| PG-11317 |  | Final Coat Painting | 18.5d | 2025-01-29 A | 2025-02-20 A | PG-11315, PG-11326 | 100% |
|  | 1.3.1.2.4.6.2 | **Wall Finishing works - Civil** |  | 2024-12-07 | 2025-02-21 |  |  |
| PG-11318 |  | Balcony Railing Fixing works | 4d | 2024-12-07 A | 2024-12-12 A | PG-10912 | 100% |
| PG-11320 |  | Dadoing - Wet area | 5d | 2024-12-30 A | 2025-01-04 A | PG-11045 | 100% |
| PG-11319 |  | UPVC Windows & Sliding doors | 5d | 2025-01-16 A | 2025-01-22 A | PG-11318, PG-11325 FF+5d | 100% |
| PG-11321 |  | Painting Works - Putty, Primer and 1st | 6d | 2025-01-22 A | 2025-01-29 A | PG-11319 | 100% |
| PG-11322 |  | Final Coat Painting | 18.5d | 2025-01-29 A | 2025-02-21 A | PG-11326 | 100% |
|  | 1.3.1.2.4.6.3 | **Floor Finishing Works - Civil** |  | 2024-12-07 | 2025-01-29 |  |  |
| PG-11323 |  | Waterproofing for sunken areas | 3d | 2024-12-07 A | 2024-12-11 A | PG-10912 | 100% |
| PG-11324 |  | Floor Tiling - Wet area | 5d | 2025-01-04 A | 2025-01-10 A | PG-11323, PG-11320 | 100% |
| PG-11325 |  | Floor Tiling - Dry area | 5d | 2025-01-10 A | 2025-01-16 A | PG-11324 FF+5d | 100% |
| PG-11326 |  | Wooden doors | 5d | 2025-01-23 A | 2025-01-29 A | PG-11321 FF | 100% |
|  | 1.3.1.2.4.7 | **Floor 4** |  | 2024-12-23 | 2025-03-12 |  |  |
|  | 1.3.1.2.4.7.1 | **Ceiling Finishing works - Civil** |  | 2025-01-01 | 2025-03-12 |  |  |
| PG-11327 |  | Gypsum Plastering | 6d | 2025-01-01 A | 2025-01-09 A | PG-11059 | 100% |
| PG-11328 |  | Cornice fixing | 4d | 2025-01-18 A | 2025-01-23 A | PG-11056 FF+6d | 100% |
| PG-11330 |  | Toilet False ceiling | 4d | 2025-01-27 A | 2025-01-31 A | PG-11338 FF+5d | 100% |
| PG-11329 |  | Painting Works - Putty, Primer and 1st | 6d | 2025-02-06 A | 2025-02-13 A | PG-11328, PG-11333 | 100% |
| PG-11331 |  | Final Coat Painting | 19.5d | 2025-02-14 A | 2025-03-12 A | PG-11329, PG-11340 | 100% |
|  | 1.3.1.2.4.7.2 | **Wall Finishing works - Civil** |  | 2024-12-23 | 2025-03-12 |  |  |
| PG-11332 |  | Balcony Railing Fixing works | 4d | 2024-12-23 A | 2024-12-27 A | PG-10917 | 100% |
| PG-11334 |  | Dadoing - Wet area | 5d | 2025-01-13 A | 2025-01-20 A | PG-11054 | 100% |
| PG-11333 |  | UPVC Windows & Sliding doors | 5d | 2025-01-31 A | 2025-02-06 A | PG-11332, PG-11339 FF+5d | 100% |
| PG-11335 |  | Painting Works - Putty, Primer and 1st | 6d | 2025-02-06 A | 2025-02-13 A | PG-11333 | 100% |
| PG-11336 |  | Final Coat Painting | 19.5d | 2025-02-14 A | 2025-03-12 A | PG-11340 | 100% |
|  | 1.3.1.2.4.7.3 | **Floor Finishing Works - Civil** |  | 2024-12-23 | 2025-02-14 |  |  |
| PG-11337 |  | Waterproofing for sunken areas | 3d | 2024-12-23 A | 2024-12-26 A | PG-10917 | 100% |
| PG-11338 |  | Floor Tiling - Wet area | 5d | 2025-01-20 A | 2025-01-25 A | PG-11337, PG-11334 | 100% |
| PG-11339 |  | Floor Tiling - Dry area | 5d | 2025-01-25 A | 2025-01-31 A | PG-11338 FF+5d | 100% |
| PG-11340 |  | Wooden doors | 5d | 2025-02-07 A | 2025-02-14 A | PG-11335 FF | 100% |
|  | 1.3.1.2.4.8 | **Floor 5** |  | 2025-01-07 | 2025-03-25 |  |  |
|  | 1.3.1.2.4.8.1 | **Ceiling Finishing works - Civil** |  | 2025-01-17 | 2025-03-25 |  |  |
| PG-11341 |  | Gypsum Plastering | 6d | 2025-01-17 A | 2025-01-23 A | PG-11068 | 100% |
| PG-11342 |  | Cornice fixing | 4d | 2025-02-01 A | 2025-02-06 A | PG-11065 FF+6d | 100% |
| PG-11344 |  | Toilet False ceiling | 4d | 2025-02-12 A | 2025-02-17 A | PG-11352 FF+5d | 100% |
| PG-11343 |  | Painting Works - Putty, Primer and 1st | 6d | 2025-02-22 A | 2025-03-01 A | PG-11342, PG-11347 | 100% |
| PG-11345 |  | Final Coat Painting | 18.5d | 2025-03-01 A | 2025-03-25 A | PG-11343, PG-11354 | 100% |
|  | 1.3.1.2.4.8.2 | **Wall Finishing works - Civil** |  | 2025-01-07 | 2025-03-22 |  |  |
| PG-11346 |  | Balcony Railing Fixing works | 4d | 2025-01-07 A | 2025-01-11 A | PG-10922 | 100% |
| PG-11348 |  | Dadoing - Wet area | 5d | 2025-01-29 A | 2025-02-04 A | PG-11063 | 100% |

| ID | WBS | Task | Duration | Start | Finish | Predecessors | Complete | Total float |
| --- | --- | --- | --- | --- | --- | --- | --- | --- |
| PG-11347 |  | UPVC Windows & Sliding doors | 5d | 2025-02-17 A | 2025-02-22 A | PG-11346, PG-11353 FF+5d | 100% |  |
| PG-11349 |  | Painting Works - Putty, Primer and 1st | 6d | 2025-02-22 A | 2025-03-01 A | PG-11347 | 100% |  |
| PG-11350 |  | Final Coat Painting | 18.5d | 2025-03-01 A | 2025-03-22 A | PG-11354 | 100% |  |
|  | 1.3.1.2.4.8.3 | **Floor Finishing Works - Civil** |  | 2025-01-07 | 2025-03-01 |  |  |  |
| PG-11351 |  | Waterproofing for sunken areas | 3d | 2025-01-07 A | 2025-01-10 A | PG-10922 | 100% |  |
| PG-11352 |  | Floor Tiling - Wet area | 5d | 2025-02-04 A | 2025-02-11 A | PG-11351, PG-11348 | 100% |  |
| PG-11353 |  | Floor Tiling - Dry area | 5d | 2025-02-11 A | 2025-02-17 A | PG-11352 FF+5d | 100% |  |
| PG-11354 |  | Wooden doors | 5d | 2025-02-24 A | 2025-03-01 A | PG-11349 FF | 100% |  |
|  | 1.3.1.2.4.9 | **Floor 6** |  | 2025-01-23 | 2025-04-12 |  |  |  |
|  | 1.3.1.2.4.9.1 | **Ceiling Finishing works - Civil** |  | 2025-01-31 | 2025-04-12 |  |  |  |
| PG-11355 |  | Gypsum Plastering | 6d | 2025-01-31 A | 2025-02-08 A | PG-11077 | 100% |  |
| PG-11356 |  | Cornice fixing | 4d | 2025-02-19 A | 2025-02-24 A | PG-11074 FF+6d | 100% |  |
| PG-11358 |  | Toilet False ceiling | 4d | 2025-02-27 A | 2025-03-04 A | PG-11366 FF+5d | 100% |  |
| PG-11357 |  | Painting Works - Putty, Primer and 1st | 6d | 2025-03-10 A | 2025-03-17 A | PG-11356, PG-11361 | 100% |  |
| PG-11359 |  | Final Coat Painting | 20.67d | 2025-03-18 A | 2025-04-12 | PG-11357, PG-11368 | 63% | 447.18d |
|  | 1.3.1.2.4.9.2 | **Wall Finishing works - Civil** |  | 2025-01-23 | 2025-04-09 |  |  |  |
| PG-11360 |  | Balcony Railing Fixing works | 4d | 2025-01-23 A | 2025-01-28 A | PG-10927 | 100% |  |
| PG-11362 |  | Dadoing - Wet area | 5d | 2025-02-14 A | 2025-02-20 A | PG-11072 | 100% |  |
| PG-11361 |  | UPVC Windows & Sliding doors | 5d | 2025-03-04 A | 2025-03-10 A | PG-11360, PG-11367 FF+5d | 100% |  |
| PG-11363 |  | Painting Works - Putty, Primer and 1st | 6d | 2025-03-10 A | 2025-03-18 A | PG-11361 | 100% |  |
| PG-11364 |  | Final Coat Painting | 19.5d | 2025-03-18 A | 2025-04-09 | PG-11368 | 78% | 414.91d |
|  | 1.3.1.2.4.9.3 | **Floor Finishing Works - Civil** |  | 2025-01-23 | 2025-03-18 |  |  |  |
| PG-11365 |  | Waterproofing for sunken areas | 3d | 2025-01-23 A | 2025-01-27 A | PG-10927 | 100% |  |
| PG-11366 |  | Floor Tiling - Wet area | 5d | 2025-02-20 A | 2025-02-26 A | PG-11365, PG-11362 | 100% |  |
| PG-11367 |  | Floor Tiling - Dry area | 5d | 2025-02-26 A | 2025-03-04 A | PG-11366 FF+5d | 100% |  |
| PG-11368 |  | Wooden doors | 5d | 2025-03-12 A | 2025-03-18 A | PG-11363 FF | 100% |  |
|  | 1.3.1.2.4.10 | **Floor 7** |  | 2025-02-07 | 2025-04-24 |  |  |  |
|  | 1.3.1.2.4.10.1 | **Ceiling Finishing works - Civil** |  | 2025-02-17 | 2025-04-24 |  |  |  |
| PG-11369 |  | Gypsum Plastering | 6d | 2025-02-17 A | 2025-02-25 A | PG-11086 | 100% |  |
| PG-11370 |  | Cornice fixing | 4d | 2025-03-06 A | 2025-03-11 A | PG-11083 FF+6d | 100% |  |
| PG-11372 |  | Toilet False ceiling | 4d | 2025-03-13 A | 2025-03-19 A | PG-11380 FF+5d | 100% |  |
| PG-11371 |  | Painting Works - Putty, Primer and 1st | 6d | 2025-03-24 A | 2025-04-01 A | PG-11370, PG-11375 | 100% |  |
| PG-11373 |  | Final Coat Painting | 19.5d | 2025-04-01 A | 2025-04-24 | PG-11371, PG-11382 | 8% | 436.9d |
|  | 1.3.1.2.4.10.2 | **Wall Finishing works - Civil** |  | 2025-02-07 | 2025-04-23 |  |  |  |
| PG-11374 |  | Balcony Railing Fixing works | 4d | 2025-02-07 A | 2025-02-13 A | PG-10932 | 100% |  |
| PG-11376 |  | Dadoing - Wet area | 5d | 2025-02-28 A | 2025-03-06 A | PG-11081 | 100% |  |
| PG-11375 |  | UPVC Windows & Sliding doors | 5d | 2025-03-19 A | 2025-03-24 A | PG-11374, PG-11381 FF+5d | 100% |  |
| PG-11377 |  | Painting Works - Putty, Primer and 1st | 6d | 2025-03-24 A | 2025-04-01 A | PG-11375 | 100% |  |
| PG-11378 |  | Final Coat Painting | 18.67d | 2025-04-01 A | 2025-04-23 | PG-11382 | 12% | 402.67d |
|  | 1.3.1.2.4.10.3 | **Floor Finishing Works - Civil** |  | 2025-02-07 | 2025-04-01 |  |  |  |
| PG-11379 |  | Waterproofing for sunken areas | 3d | 2025-02-07 A | 2025-02-11 A | PG-10932 | 100% |  |
| PG-11380 |  | Floor Tiling - Wet area | 5d | 2025-03-06 A | 2025-03-12 A | PG-11379, PG-11376 | 100% |  |
| PG-11381 |  | Floor Tiling - Dry area | 5d | 2025-03-12 A | 2025-03-19 A | PG-11380 FF+5d | 100% |  |
| PG-11382 |  | Wooden doors | 5d | 2025-03-26 A | 2025-04-01 A | PG-11377 FF | 100% |  |
|  | 1.3.1.2.4.11 | **Floor 8** |  | 2025-02-22 | 2025-05-10 |  |  |  |
|  | 1.3.1.2.4.11.1 | **Ceiling Finishing works - Civil** |  | 2025-03-04 | 2025-05-10 |  |  |  |
| PG-11383 |  | Gypsum Plastering | 6d | 2025-03-04 A | 2025-03-11 A | PG-11095 | 100% |  |
| PG-11384 |  | Cornice fixing | 4d | 2025-03-21 A | 2025-03-26 A | PG-11092 FF+6d | 100% |  |
| PG-11386 |  | Toilet False ceiling | 4d | 2025-04-01 A | 2025-04-04 A | PG-11394 FF+5d | 100% |  |
| PG-11385 |  | Painting Works - Putty, Primer and 1st | 6d | 2025-04-10 | 2025-04-16 | PG-11384, PG-11389 |  | 422.33d |
| PG-11387 |  | Final Coat Painting | 20.67d | 2025-04-17 | 2025-05-10 | PG-11385, PG-11396 |  | 422.33d |
|  | 1.3.1.2.4.11.2 | **Wall Finishing works - Civil** |  | 2025-02-22 | 2025-05-09 |  |  |  |
| PG-11388 |  | Balcony Railing Fixing works | 4d | 2025-02-22 A | 2025-02-28 A | PG-10937 | 100% |  |
| PG-11390 |  | Dadoing - Wet area | 5d | 2025-03-18 A | 2025-03-24 A | PG-11090 | 100% |  |
| PG-11389 |  | UPVC Windows & Sliding doors | 5d | 2025-04-04 A | 2025-04-09 | PG-11388, PG-11395 FF+5d | 3% | 388.83d |
| PG-11391 |  | Painting Works - Putty, Primer and 1st | 6d | 2025-04-10 | 2025-04-16 | PG-11389 |  | 388.83d |
| PG-11392 |  | Final Coat Painting | 19.5d | 2025-04-17 | 2025-05-09 | PG-11396 |  | 388.83d |
|  | 1.3.1.2.4.11.3 | **Floor Finishing Works - Civil** |  | 2025-02-22 | 2025-04-16 |  |  |  |
| PG-11393 |  | Waterproofing for sunken areas | 3d | 2025-02-22 A | 2025-02-26 A | PG-10937 | 100% |  |
| PG-11394 |  | Floor Tiling - Wet area | 5d | 2025-03-24 A | 2025-03-31 A | PG-11393, PG-11390 | 100% |  |
| PG-11395 |  | Floor Tiling - Dry area | 5d | 2025-03-31 A | 2025-04-04 A | PG-11394 FF+5d | 100% |  |
| PG-11396 |  | Wooden doors | 5d | 2025-04-11 | 2025-04-16 | PG-11391 FF |  | 388.83d |
|  | 1.3.1.2.4.12 | **Floor 9** |  | 2025-03-11 | 2025-05-21 |  |  |  |
|  | 1.3.1.2.4.12.1 | **Ceiling Finishing works - Civil** |  | 2025-03-21 | 2025-05-21 |  |  |  |
| PG-11397 |  | Gypsum Plastering | 6d | 2025-03-21 A | 2025-03-28 A | PG-11104 | 100% |  |
| PG-11398 |  | Cornice fixing | 4d | 2025-04-07 | 2025-04-10 | PG-11101 FF+6d |  | 423.17d |
| PG-11400 |  | Toilet False ceiling | 4d | 2025-04-12 | 2025-04-16 | PG-11408 FF+5d |  | 404.83d |
| PG-11399 |  | Painting Works - Putty, Primer and 1st | 6d | 2025-04-23 | 2025-04-29 | PG-11398, PG-11403 |  | 413.17d |
| PG-11401 |  | Final Coat Painting | 18.67d | 2025-04-30 | 2025-05-21 | PG-11399, PG-11410 |  | 413.17d |
|  | 1.3.1.2.4.12.2 | **Wall Finishing works - Civil** |  | 2025-03-11 | 2025-05-21 |  |  |  |

| ID | WBS | Task | Duration | Start | Finish | Predecessors | Complete | Total float |
| --- | --- | --- | --- | --- | --- | --- | --- | --- |
| PG-11402 |  | Balcony Railing Fixing works | 4d | 2025-03-11 A | 2025-03-15 A | PG-10942 | 100% |  |
| PG-11404 |  | Dadoing - Wet area | 5d | 2025-03-31 A | 2025-04-04 | PG-11099 | 80% | 378.67d |
| PG-11403 |  | UPVC Windows & Sliding doors | 5d | 2025-04-17 | 2025-04-22 | PG-11402, PG-11409 FF+5d |  | 378.67d |
| PG-11405 |  | Painting Works - Putty, Primer and 1st | 6d | 2025-04-23 | 2025-04-29 | PG-11403 |  | 378.67d |
| PG-11406 |  | Final Coat Painting | 18.5d | 2025-04-30 | 2025-05-21 | PG-11410 |  | 378.67d |
|  | 1.3.1.2.4.12.3 | **Floor Finishing Works - Civil** |  | 2025-03-11 | 2025-04-29 |  |  |  |
| PG-11407 |  | Waterproofing for sunken areas | 3d | 2025-03-11 A | 2025-03-14 A | PG-10942 | 100% |  |
| PG-11408 |  | Floor Tiling - Wet area | 5d | 2025-04-05 | 2025-04-10 | PG-11407, PG-11404 |  | 378.67d |
| PG-11409 |  | Floor Tiling - Dry area | 5d | 2025-04-11 | 2025-04-16 | PG-11408 FF+5d |  | 378.67d |
| PG-11410 |  | Wooden doors | 5d | 2025-04-24 | 2025-04-29 | PG-11405 FF |  | 378.67d |
|  | 1.3.1.2.4.13 | **Floor 10** |  | 2025-03-27 | 2025-06-06 |  |  |  |
|  | 1.3.1.2.4.13.1 | **Ceiling Finishing works - Civil** |  | 2025-04-04 | 2025-06-06 |  |  |  |
| PG-11411 |  | Gypsum Plastering | 6d | 2025-04-04 | 2025-04-11 | PG-11113 |  | 411.97d |
| PG-11412 |  | Cornice fixing | 4d | 2025-04-21 | 2025-04-25 | PG-11110 FF+6d |  | 411.97d |
| PG-11414 |  | Toilet False ceiling | 4d | 2025-04-29 | 2025-05-03 | PG-11422 FF+5d |  | 389.4d |
| PG-11413 |  | Painting Works - Putty, Primer and 1st | 6d | 2025-05-09 | 2025-05-16 | PG-11412, PG-11417 |  | 399.9d |
| PG-11415 |  | Final Coat Painting | 18.67d | 2025-05-16 | 2025-06-06 | PG-11413, PG-11424 |  | 399.9d |
|  | 1.3.1.2.4.13.2 | **Wall Finishing works - Civil** |  | 2025-03-27 | 2025-06-06 |  |  |  |
| PG-11416 |  | Balcony Railing Fixing works | 4d | 2025-03-27 A | 2025-04-01 A | PG-10947 | 100% |  |
| PG-11418 |  | Dadoing - Wet area | 5d | 2025-04-16 | 2025-04-22 | PG-11108 |  | 364.56d |
| PG-11417 |  | UPVC Windows & Sliding doors | 5d | 2025-05-03 | 2025-05-09 | PG-11416, PG-11423 FF+5d |  | 364.56d |
| PG-11419 |  | Painting Works - Putty, Primer and 1st | 6d | 2025-05-09 | 2025-05-16 | PG-11417 |  | 364.56d |
| PG-11420 |  | Final Coat Painting | 18.33d | 2025-05-16 | 2025-06-06 | PG-11424 |  | 364.56d |
|  | 1.3.1.2.4.13.3 | **Floor Finishing Works - Civil** |  | 2025-03-27 | 2025-05-16 |  |  |  |
| PG-11421 |  | Waterproofing for sunken areas | 3d | 2025-03-27 A | 2025-03-31 A | PG-10947 | 100% |  |
| PG-11422 |  | Floor Tiling - Wet area | 5d | 2025-04-22 | 2025-04-28 | PG-11421, PG-11418 |  | 364.56d |
| PG-11423 |  | Floor Tiling - Dry area | 5d | 2025-04-28 | 2025-05-03 | PG-11422 FF+5d |  | 364.56d |
| PG-11424 |  | Wooden doors | 5d | 2025-05-10 | 2025-05-16 | PG-11419 FF |  | 364.56d |
|  | 1.3.1.2.4.14 | **Floor 11** |  | 2025-04-09 | 2025-06-21 |  |  |  |
|  | 1.3.1.2.4.14.1 | **Ceiling Finishing works - Civil** |  | 2025-04-18 | 2025-06-21 |  |  |  |
| PG-11425 |  | Gypsum Plastering | 6d | 2025-04-18 | 2025-04-25 | PG-11122 |  | 400d |
| PG-11426 |  | Cornice fixing | 4d | 2025-05-05 | 2025-05-09 | PG-11119 FF+6d |  | 400d |
| PG-11428 |  | Toilet False ceiling | 4d | 2025-05-13 | 2025-05-17 | PG-11436 FF+5d |  | 377.17d |
| PG-11427 |  | Painting Works - Putty, Primer and 1st | 6d | 2025-05-23 | 2025-05-30 | PG-11426, PG-11431 |  | 387.67d |
| PG-11429 |  | Final Coat Painting | 18.67d | 2025-05-30 | 2025-06-21 | PG-11427, PG-11438 |  | 387.67d |
|  | 1.3.1.2.4.14.2 | **Wall Finishing works - Civil** |  | 2025-04-09 | 2025-06-20 |  |  |  |
| PG-11430 |  | Balcony Railing Fixing works | 4d | 2025-04-09 | 2025-04-14 | PG-10952 |  | 381.33d |
| PG-11432 |  | Dadoing - Wet area | 5d | 2025-04-30 | 2025-05-06 | PG-11117 |  | 352.33d |
| PG-11431 |  | UPVC Windows & Sliding doors | 5d | 2025-05-17 | 2025-05-23 | PG-11430, PG-11437 FF+5d |  | 352.33d |
| PG-11433 |  | Painting Works - Putty, Primer and 1st | 6d | 2025-05-23 | 2025-05-30 | PG-11431 |  | 352.33d |
| PG-11434 |  | Final Coat Painting | 18.33d | 2025-05-30 | 2025-06-20 | PG-11438 |  | 352.33d |
|  | 1.3.1.2.4.14.3 | **Floor Finishing Works - Civil** |  | 2025-04-09 | 2025-05-30 |  |  |  |
| PG-11435 |  | Waterproofing for sunken areas | 3d | 2025-04-09 | 2025-04-12 | PG-10952 |  | 372.33d |
| PG-11436 |  | Floor Tiling - Wet area | 5d | 2025-05-06 | 2025-05-12 | PG-11435, PG-11432 |  | 352.33d |
| PG-11437 |  | Floor Tiling - Dry area | 5d | 2025-05-12 | 2025-05-17 | PG-11436 FF+5d |  | 352.33d |
| PG-11438 |  | Wooden doors | 5d | 2025-05-24 | 2025-05-30 | PG-11433 FF |  | 352.33d |
|  | 1.3.1.2.4.15 | **Floor 12** |  | 2025-04-22 | 2025-07-04 |  |  |  |
|  | 1.3.1.2.4.15.1 | **Ceiling Finishing works - Civil** |  | 2025-05-01 | 2025-07-04 |  |  |  |
| PG-11439 |  | Gypsum Plastering | 6d | 2025-05-01 | 2025-05-08 | PG-11131 |  | 389d |
| PG-11440 |  | Cornice fixing | 4d | 2025-05-17 | 2025-05-22 | PG-11128 FF+6d |  | 389d |
| PG-11442 |  | Toilet False ceiling | 4d | 2025-05-26 | 2025-05-30 | PG-11450 FF+5d |  | 367.33d |
| PG-11441 |  | Painting Works - Putty, Primer and 1st | 6d | 2025-06-05 | 2025-06-12 | PG-11440, PG-11445 |  | 376.83d |
| PG-11443 |  | Final Coat Painting | 18.67d | 2025-06-12 | 2025-07-04 | PG-11441, PG-11452 |  | 376.83d |
|  | 1.3.1.2.4.15.2 | **Wall Finishing works - Civil** |  | 2025-04-22 | 2025-07-03 |  |  |  |
| PG-11444 |  | Balcony Railing Fixing works | 4d | 2025-04-22 | 2025-04-26 | PG-10957 |  | 370.33d |
| PG-11446 |  | Dadoing - Wet area | 5d | 2025-05-13 | 2025-05-19 | PG-11126 |  | 341.33d |
| PG-11445 |  | UPVC Windows & Sliding doors | 5d | 2025-05-30 | 2025-06-05 | PG-11444, PG-11451 FF+5d |  | 341.33d |
| PG-11447 |  | Painting Works - Putty, Primer and 1st | 6d | 2025-06-05 | 2025-06-12 | PG-11445 |  | 341.33d |
| PG-11448 |  | Final Coat Painting | 18.5d | 2025-06-12 | 2025-07-03 | PG-11452 |  | 341.33d |
|  | 1.3.1.2.4.15.3 | **Floor Finishing Works - Civil** |  | 2025-04-22 | 2025-06-12 |  |  |  |
| PG-11449 |  | Waterproofing for sunken areas | 3d | 2025-04-22 | 2025-04-25 | PG-10957 |  | 361.33d |
| PG-11450 |  | Floor Tiling - Wet area | 5d | 2025-05-19 | 2025-05-24 | PG-11449, PG-11446 |  | 341.33d |
| PG-11451 |  | Floor Tiling - Dry area | 5d | 2025-05-24 | 2025-05-30 | PG-11450 FF+5d |  | 341.33d |
| PG-11452 |  | Wooden doors | 5d | 2025-06-06 | 2025-06-12 | PG-11447 FF |  | 341.33d |
|  | 1.3.1.2.4.16 | **Floor 13** |  | 2025-05-05 | 2025-07-17 |  |  |  |
|  | 1.3.1.2.4.16.1 | **Ceiling Finishing works - Civil** |  | 2025-05-14 | 2025-07-17 |  |  |  |
| PG-11453 |  | Gypsum Plastering | 6d | 2025-05-14 | 2025-05-21 | PG-11140 |  | 377.33d |
| PG-11454 |  | Cornice fixing | 4d | 2025-05-30 | 2025-06-04 | PG-11137 FF+6d |  | 377.33d |
| PG-11456 |  | Toilet False ceiling | 4d | 2025-06-07 | 2025-06-12 | PG-11464 FF+5d |  | 356.33d |
| PG-11455 |  | Painting Works - Putty, Primer and 1st | 6d | 2025-06-18 | 2025-06-25 | PG-11454, PG-11459 |  | 365d |

| ID | WBS | Task | Duration | Start | Finish | Predecessors | Total float |
| --- | --- | --- | --- | --- | --- | --- | --- |
| PG-11457 |  | Final Coat Painting | 19.5d | 2025-06-25 | 2025-07-17 | PG-11455, PG-11466 | 365d |
|  | 1.3.1.2.4.16.2 | **Wall Finishing works - Civil** |  | 2025-05-05 | 2025-07-17 |  |  |
| PG-11458 |  | Balcony Railing Fixing works | 4d | 2025-05-05 | 2025-05-09 | PG-10962 | 359.33d |
| PG-11460 |  | Dadoing - Wet area | 5d | 2025-05-26 | 2025-05-31 | PG-11135 | 330.33d |
| PG-11459 |  | UPVC Windows & Sliding doors | 5d | 2025-06-12 | 2025-06-18 | PG-11458, PG-11465 FF+5d | 330.33d |
| PG-11461 |  | Painting Works - Putty, Primer and 1st | 6d | 2025-06-18 | 2025-06-25 | PG-11459 | 330.33d |
| PG-11462 |  | Final Coat Painting | 19.5d | 2025-06-25 | 2025-07-17 | PG-11466 | 330.33d |
|  | 1.3.1.2.4.16.3 | **Floor Finishing Works - Civil** |  | 2025-05-05 | 2025-06-25 |  |  |
| PG-11463 |  | Waterproofing for sunken areas | 3d | 2025-05-05 | 2025-05-08 | PG-10962 | 350.33d |
| PG-11464 |  | Floor Tiling - Wet area | 5d | 2025-05-31 | 2025-06-06 | PG-11463, PG-11460 | 330.33d |
| PG-11465 |  | Floor Tiling - Dry area | 5d | 2025-06-06 | 2025-06-12 | PG-11464 FF+5d | 330.33d |
| PG-11466 |  | Wooden doors | 5d | 2025-06-19 | 2025-06-25 | PG-11461 FF | 330.33d |
|  | 1.3.1.2.4.17 | **Floor 14** |  | 2025-05-17 | 2025-07-30 |  |  |
|  | 1.3.1.2.4.17.1 | **Ceiling Finishing works - Civil** |  | 2025-05-28 | 2025-07-30 |  |  |
| PG-11467 |  | Gypsum Plastering | 6d | 2025-05-28 | 2025-06-04 | PG-11149 | 365.33d |
| PG-11468 |  | Cornice fixing | 4d | 2025-06-13 | 2025-06-18 | PG-11146 FF+6d | 365.33d |
| PG-11470 |  | Toilet False ceiling | 4d | 2025-06-20 | 2025-06-25 | PG-11478 FF+5d | 346.33d |
| PG-11469 |  | Painting Works - Putty, Primer and 1st | 6d | 2025-07-01 | 2025-07-08 | PG-11468, PG-11473 | 354d |
| PG-11471 |  | Final Coat Painting | 19.5d | 2025-07-08 | 2025-07-30 | PG-11469, PG-11480 | 354d |
|  | 1.3.1.2.4.17.2 | **Wall Finishing works - Civil** |  | 2025-05-17 | 2025-07-30 |  |  |
| PG-11472 |  | Balcony Railing Fixing works | 4d | 2025-05-17 | 2025-05-22 | PG-10967 | 348.33d |
| PG-11474 |  | Dadoing - Wet area | 5d | 2025-06-07 | 2025-06-13 | PG-11144 | 319.33d |
| PG-11473 |  | UPVC Windows & Sliding doors | 5d | 2025-06-25 | 2025-07-01 | PG-11472, PG-11479 FF+5d | 319.33d |
| PG-11475 |  | Painting Works - Putty, Primer and 1st | 6d | 2025-07-01 | 2025-07-08 | PG-11473 | 319.33d |
| PG-11476 |  | Final Coat Painting | 19.5d | 2025-07-08 | 2025-07-30 | PG-11480 | 319.33d |
|  | 1.3.1.2.4.17.3 | **Floor Finishing Works - Civil** |  | 2025-05-17 | 2025-07-08 |  |  |
| PG-11477 |  | Waterproofing for sunken areas | 3d | 2025-05-17 | 2025-05-21 | PG-10967 | 339.33d |
| PG-11478 |  | Floor Tiling - Wet area | 5d | 2025-06-13 | 2025-06-19 | PG-11477, PG-11474 | 319.33d |
| PG-11479 |  | Floor Tiling - Dry area | 5d | 2025-06-19 | 2025-06-25 | PG-11478 FF+5d | 319.33d |
| PG-11480 |  | Wooden doors | 5d | 2025-07-02 | 2025-07-08 | PG-11475 FF | 319.33d |
|  | 1.3.1.2.4.18 | **Floor 15** |  | 2025-05-30 | 2025-08-12 |  |  |
|  | 1.3.1.2.4.18.1 | **Ceiling Finishing works - Civil** |  | 2025-06-09 | 2025-08-12 |  |  |
| PG-11481 |  | Gypsum Plastering | 6d | 2025-06-09 | 2025-06-16 | PG-11158 | 356d |
| PG-11482 |  | Cornice fixing | 4d | 2025-06-25 | 2025-06-30 | PG-11155 FF+6d | 356d |
| PG-11484 |  | Toilet False ceiling | 4d | 2025-07-03 | 2025-07-08 | PG-11492 FF+5d | 335.33d |
| PG-11483 |  | Painting Works - Putty, Primer and 1st | 6d | 2025-07-14 | 2025-07-21 | PG-11482, PG-11487 | 343.83d |
| PG-11485 |  | Final Coat Painting | 18.67d | 2025-07-21 | 2025-08-12 | PG-11483, PG-11494 | 343.83d |
|  | 1.3.1.2.4.18.2 | **Wall Finishing works - Civil** |  | 2025-05-30 | 2025-08-11 |  |  |
| PG-11486 |  | Balcony Railing Fixing works | 4d | 2025-05-30 | 2025-06-04 | PG-10972 | 187.33d |
| PG-11488 |  | Dadoing - Wet area | 5d | 2025-06-20 | 2025-06-26 | PG-11153 | 158.33d |
| PG-11487 |  | UPVC Windows & Sliding doors | 5d | 2025-07-08 | 2025-07-14 | PG-11486, PG-11493 FF+5d | 158.33d |
| PG-11489 |  | Painting Works - Putty, Primer and 1st | 6d | 2025-07-14 | 2025-07-21 | PG-11487 | 158.33d |
| PG-11490 |  | Final Coat Painting | 18.5d | 2025-07-21 | 2025-08-11 | PG-11494 | 309.33d |
|  | 1.3.1.2.4.18.3 | **Floor Finishing Works - Civil** |  | 2025-05-30 | 2025-07-21 |  |  |
| PG-11491 |  | Waterproofing for sunken areas | 3d | 2025-05-30 | 2025-06-03 | PG-10972 | 178.33d |
| PG-11492 |  | Floor Tiling - Wet area | 5d | 2025-06-26 | 2025-07-02 | PG-11491, PG-11488 | 158.33d |
| PG-11493 |  | Floor Tiling - Dry area | 5d | 2025-07-02 | 2025-07-08 | PG-11492 FF+5d | 158.33d |
| PG-11494 |  | Wooden doors | 5d | 2025-07-15 | 2025-07-21 | PG-11489 FF | 158.33d |
|  | 1.3.1.2.4.19 | **Floor 16** |  | 2025-06-12 | 2025-08-26 |  |  |
|  | 1.3.1.2.4.19.1 | **Ceiling Finishing works - Civil** |  | 2025-06-21 | 2025-08-26 |  |  |
| PG-11495 |  | Gypsum Plastering | 6d | 2025-06-21 | 2025-06-28 | PG-11167 | 344.83d |
| PG-11496 |  | Cornice fixing | 4d | 2025-07-08 | 2025-07-12 | PG-11164 FF+6d | 344.83d |
| PG-11498 |  | Toilet False ceiling | 4d | 2025-07-16 | 2025-07-21 | PG-11506 FF+5d | 323.17d |
| PG-11497 |  | Painting Works - Putty, Primer and 1st | 6d | 2025-07-26 | 2025-08-02 | PG-11496, PG-11501 | 332.67d |
| PG-11499 |  | Final Coat Painting | 18.67d | 2025-08-02 | 2025-08-26 | PG-11497, PG-11508 | 332.67d |
|  | 1.3.1.2.4.19.2 | **Wall Finishing works - Civil** |  | 2025-06-12 | 2025-08-23 |  |  |
| PG-11500 |  | Balcony Railing Fixing works | 4d | 2025-06-12 | 2025-06-17 | PG-10977 | 328d |
| PG-11502 |  | Dadoing - Wet area | 5d | 2025-07-03 | 2025-07-09 | PG-11162 | 299d |
| PG-11501 |  | UPVC Windows & Sliding doors | 5d | 2025-07-21 | 2025-07-26 | PG-11500, PG-11507 FF+5d | 299d |
| PG-11503 |  | Painting Works - Putty, Primer and 1st | 6d | 2025-07-26 | 2025-08-02 | PG-11501 | 299d |
| PG-11504 |  | Final Coat Painting | 17.5d | 2025-08-02 | 2025-08-23 | PG-11508 | 299d |
|  | 1.3.1.2.4.19.3 | **Floor Finishing Works - Civil** |  | 2025-06-12 | 2025-08-02 |  |  |
| PG-11505 |  | Waterproofing for sunken areas | 3d | 2025-06-12 | 2025-06-16 | PG-10977 | 319d |
| PG-11506 |  | Floor Tiling - Wet area | 5d | 2025-07-09 | 2025-07-15 | PG-11505, PG-11502 | 299d |
| PG-11507 |  | Floor Tiling - Dry area | 5d | 2025-07-15 | 2025-07-21 | PG-11506 FF+5d | 299d |
| PG-11508 |  | Wooden doors | 5d | 2025-07-28 | 2025-08-02 | PG-11503 FF | 299d |
|  | 1.3.1.2.4.20 | **Floor 17** |  | 2025-06-25 | 2025-09-08 |  |  |
|  | 1.3.1.2.4.20.1 | **Ceiling Finishing works - Civil** |  | 2025-07-04 | 2025-09-08 |  |  |
| PG-11509 |  | Gypsum Plastering | 6d | 2025-07-04 | 2025-07-11 | PG-11176 | 333.83d |
| PG-11510 |  | Cornice fixing | 4d | 2025-07-21 | 2025-07-25 | PG-11173 FF+6d | 333.83d |

| ID | WBS | Task | Duration | Start | Finish | Predecessors | Total float |
| --- | --- | --- | --- | --- | --- | --- | --- |
| PG-11512 |  | Toilet False ceiling | 4d | 2025-07-29 | 2025-08-02 | PG-11520 FF+5d | 312.17d |
| PG-11511 |  | Painting Works - Putty, Primer and 1st | 6d | 2025-08-08 | 2025-08-16 | PG-11510, PG-11515 | 321.67d |
| PG-11513 |  | Final Coat Painting | 18.67d | 2025-08-16 | 2025-09-08 | PG-11511, PG-11522 | 321.67d |
|  | 1.3.1.2.4.20.2 | **Wall Finishing works - Civil** |  | 2025-06-25 | 2025-09-05 |  |  |
| PG-11514 |  | Balcony Railing Fixing works | 4d | 2025-06-25 | 2025-06-30 | PG-10982 | 317d |
| PG-11516 |  | Dadoing - Wet area | 5d | 2025-07-16 | 2025-07-22 | PG-11171 | 288d |
| PG-11515 |  | UPVC Windows & Sliding doors | 5d | 2025-08-02 | 2025-08-08 | PG-11514, PG-11521 FF+5d | 288d |
| PG-11517 |  | Painting Works - Putty, Primer and 1st | 6d | 2025-08-08 | 2025-08-16 | PG-11515 | 288d |
| PG-11518 |  | Final Coat Painting | 17.5d | 2025-08-16 | 2025-09-05 | PG-11522 | 288d |
|  | 1.3.1.2.4.20.3 | **Floor Finishing Works - Civil** |  | 2025-06-25 | 2025-08-16 |  |  |
| PG-11519 |  | Waterproofing for sunken areas | 3d | 2025-06-25 | 2025-06-28 | PG-10982 | 308d |
| PG-11520 |  | Floor Tiling - Wet area | 5d | 2025-07-22 | 2025-07-28 | PG-11519, PG-11516 | 288d |
| PG-11521 |  | Floor Tiling - Dry area | 5d | 2025-07-28 | 2025-08-02 | PG-11520 FF+5d | 288d |
| PG-11522 |  | Wooden doors | 5d | 2025-08-09 | 2025-08-16 | PG-11517 FF | 288d |
|  | 1.3.1.2.4.21 | **Floor 18** |  | 2025-07-08 | 2025-09-19 |  |  |
|  | 1.3.1.2.4.21.1 | **Ceiling Finishing works - Civil** |  | 2025-07-17 | 2025-09-19 |  |  |
| PG-11523 |  | Gypsum Plastering | 6d | 2025-07-17 | 2025-07-24 | PG-11185 | 323.83d |
| PG-11524 |  | Cornice fixing | 4d | 2025-08-02 | 2025-08-07 | PG-11182 FF+6d | 323.83d |
| PG-11526 |  | Toilet False ceiling | 4d | 2025-08-11 | 2025-08-16 | PG-11534 FF+5d | 301.17d |
| PG-11525 |  | Painting Works - Putty, Primer and 1st | 6d | 2025-08-22 | 2025-08-29 | PG-11524, PG-11529 | 312d |
| PG-11527 |  | Final Coat Painting | 18.67d | 2025-08-29 | 2025-09-19 | PG-11525, PG-11536 | 312d |
|  | 1.3.1.2.4.21.2 | **Wall Finishing works - Civil** |  | 2025-07-08 | 2025-09-19 |  |  |
| PG-11528 |  | Balcony Railing Fixing works | 4d | 2025-07-08 | 2025-07-12 | PG-10987 | 304.83d |
| PG-11530 |  | Dadoing - Wet area | 5d | 2025-07-29 | 2025-08-04 | PG-11180 | 276.17d |
| PG-11529 |  | UPVC Windows & Sliding doors | 5d | 2025-08-16 | 2025-08-22 | PG-11528, PG-11535 FF+5d | 276.17d |
| PG-11531 |  | Painting Works - Putty, Primer and 1st | 6d | 2025-08-22 | 2025-08-29 | PG-11529 | 276.17d |
| PG-11532 |  | Final Coat Painting | 18.67d | 2025-08-29 | 2025-09-19 | PG-11536 | 276.17d |
|  | 1.3.1.2.4.21.3 | **Floor Finishing Works - Civil** |  | 2025-07-08 | 2025-08-29 |  |  |
| PG-11533 |  | Waterproofing for sunken areas | 3d | 2025-07-08 | 2025-07-11 | PG-10987 | 295.83d |
| PG-11534 |  | Floor Tiling - Wet area | 5d | 2025-08-04 | 2025-08-09 | PG-11533, PG-11530 | 276.17d |
| PG-11535 |  | Floor Tiling - Dry area | 5d | 2025-08-09 | 2025-08-16 | PG-11534 FF+5d | 276.17d |
| PG-11536 |  | Wooden doors | 5d | 2025-08-23 | 2025-08-29 | PG-11531 FF | 276.17d |
|  | 1.3.1.2.4.22 | **Floor 19** |  | 2025-07-21 | 2025-10-03 |  |  |
|  | 1.3.1.2.4.22.1 | **Ceiling Finishing works - Civil** |  | 2025-07-30 | 2025-10-03 |  |  |
| PG-11537 |  | Gypsum Plastering | 6d | 2025-07-30 | 2025-08-06 | PG-11194 | 312.83d |
| PG-11538 |  | Cornice fixing | 3.67d | 2025-08-16 | 2025-08-21 | PG-11191 FF+6d | 312.83d |
| PG-11540 |  | Toilet False ceiling | 4d | 2025-08-25 | 2025-08-29 | PG-11548 FF+5d | 290.17d |
| PG-11539 |  | Painting Works - Putty, Primer and 1st | 6d | 2025-09-04 | 2025-09-11 | PG-11538, PG-11543 | 301d |
| PG-11541 |  | Final Coat Painting | 18.67d | 2025-09-11 | 2025-10-03 | PG-11539, PG-11550 | 301d |
|  | 1.3.1.2.4.22.2 | **Wall Finishing works - Civil** |  | 2025-07-21 | 2025-10-03 |  |  |
| PG-11542 |  | Balcony Railing Fixing works | 4d | 2025-07-21 | 2025-07-25 | PG-10992 | 293.83d |
| PG-11544 |  | Dadoing - Wet area | 5d | 2025-08-11 | 2025-08-18 | PG-11189 | 265.17d |
| PG-11543 |  | UPVC Windows & Sliding doors | 5d | 2025-08-29 | 2025-09-04 | PG-11542, PG-11549 FF+5d | 265.17d |
| PG-11545 |  | Painting Works - Putty, Primer and 1st | 6d | 2025-09-04 | 2025-09-11 | PG-11543 | 265.17d |
| PG-11546 |  | Final Coat Painting | 18.67d | 2025-09-11 | 2025-10-03 | PG-11550 | 265.17d |
|  | 1.3.1.2.4.22.3 | **Floor Finishing Works - Civil** |  | 2025-07-21 | 2025-09-11 |  |  |
| PG-11547 |  | Waterproofing for sunken areas | 3d | 2025-07-21 | 2025-07-24 | PG-10992 | 284.83d |
| PG-11548 |  | Floor Tiling - Wet area | 5d | 2025-08-18 | 2025-08-23 | PG-11547, PG-11544 | 265.17d |
| PG-11549 |  | Floor Tiling - Dry area | 5d | 2025-08-23 | 2025-08-29 | PG-11548 FF+5d | 265.17d |
| PG-11550 |  | Wooden doors | 5d | 2025-09-05 | 2025-09-11 | PG-11545 FF | 265.17d |
|  | 1.3.1.2.4.23 | **Floor 20** |  | 2025-08-02 | 2025-10-17 |  |  |
|  | 1.3.1.2.4.23.1 | **Ceiling Finishing works - Civil** |  | 2025-08-13 | 2025-10-17 |  |  |
| PG-11551 |  | Gypsum Plastering | 6d | 2025-08-13 | 2025-08-21 | PG-11203 | 301d |
| PG-11552 |  | Cornice fixing | 3.67d | 2025-08-30 | 2025-09-04 | PG-11200 FF+6d | 301d |
| PG-11554 |  | Toilet False ceiling | 4d | 2025-09-08 | 2025-09-12 | PG-11562 FF+5d | 278.17d |
| PG-11553 |  | Painting Works - Putty, Primer and 1st | 6d | 2025-09-18 | 2025-09-25 | PG-11552, PG-11557 | 289d |
| PG-11555 |  | Final Coat Painting | 18.67d | 2025-09-25 | 2025-10-17 | PG-11553, PG-11564 | 289d |
|  | 1.3.1.2.4.23.2 | **Wall Finishing works - Civil** |  | 2025-08-02 | 2025-10-17 |  |  |
| PG-11556 |  | Balcony Railing Fixing works | 4d | 2025-08-02 | 2025-08-07 | PG-10997 | 282.83d |
| PG-11558 |  | Dadoing - Wet area | 5d | 2025-08-26 | 2025-09-01 | PG-11198 | 253.17d |
| PG-11557 |  | UPVC Windows & Sliding doors | 5d | 2025-09-12 | 2025-09-18 | PG-11556, PG-11563 FF+5d | 253.17d |
| PG-11559 |  | Painting Works - Putty, Primer and 1st | 6d | 2025-09-18 | 2025-09-25 | PG-11557 | 253.17d |
| PG-11560 |  | Final Coat Painting | 18.67d | 2025-09-25 | 2025-10-17 | PG-11564 | 253.17d |
|  | 1.3.1.2.4.23.3 | **Floor Finishing Works - Civil** |  | 2025-08-02 | 2025-09-25 |  |  |
| PG-11561 |  | Waterproofing for sunken areas | 3d | 2025-08-02 | 2025-08-06 | PG-10997 | 273.83d |
| PG-11562 |  | Floor Tiling - Wet area | 5d | 2025-09-01 | 2025-09-06 | PG-11561, PG-11558 | 253.17d |
| PG-11563 |  | Floor Tiling - Dry area | 5d | 2025-09-06 | 2025-09-12 | PG-11562 FF+5d | 253.17d |
| PG-11564 |  | Wooden doors | 5d | 2025-09-19 | 2025-09-25 | PG-11559 FF | 253.17d |
|  | 1.3.1.2.4.24 | **Floor 21** |  | 2025-08-16 | 2025-10-29 |  |  |
|  | 1.3.1.2.4.24.1 | **Ceiling Finishing works - Civil** |  | 2025-08-25 | 2025-10-29 |  |  |

| ID | WBS | Task | Duration | Start | Finish | Predecessors | Total float |
| --- | --- | --- | --- | --- | --- | --- | --- |
| PG-11565 |  | Gypsum Plastering | 6d | 2025-08-25 | 2025-09-01 | PG-11212 | 291.17d |
| PG-11566 |  | Cornice fixing | 3.67d | 2025-09-10 | 2025-09-15 | PG-11209 FF+6d | 291.17d |
| PG-11568 |  | Toilet False ceiling | 4d | 2025-09-18 | 2025-09-23 | PG-11576 FF+5d | 269.5d |
| PG-11567 |  | Painting Works - Putty, Primer and 1st | 6d | 2025-09-29 | 2025-10-07 | PG-11566, PG-11571 | 279.17d |
| PG-11569 |  | Final Coat Painting | 19.67d | 2025-10-07 | 2025-10-29 | PG-11567, PG-11578 | 279.17d |
|  | 1.3.1.2.4.24.2 | **Wall Finishing works - Civil** |  | 2025-08-16 | 2025-10-29 |  |  |
| PG-11570 |  | Balcony Railing Fixing works | 4d | 2025-08-16 | 2025-08-21 | PG-11002 | 271.17d |
| PG-11572 |  | Dadoing - Wet area | 5d | 2025-09-05 | 2025-09-11 | PG-11207 | 243.5d |
| PG-11571 |  | UPVC Windows & Sliding doors | 5d | 2025-09-23 | 2025-09-29 | PG-11570, PG-11577 FF+5d | 243.5d |
| PG-11573 |  | Painting Works - Putty, Primer and 1st | 6d | 2025-09-29 | 2025-10-07 | PG-11571 | 243.5d |
| PG-11574 |  | Final Coat Painting | 19.67d | 2025-10-07 | 2025-10-29 | PG-11578 | 243.5d |
|  | 1.3.1.2.4.24.3 | **Floor Finishing Works - Civil** |  | 2025-08-16 | 2025-10-07 |  |  |
| PG-11575 |  | Waterproofing for sunken areas | 3d | 2025-08-16 | 2025-08-20 | PG-11002 | 262.17d |
| PG-11576 |  | Floor Tiling - Wet area | 5d | 2025-09-11 | 2025-09-17 | PG-11575, PG-11572 | 243.5d |
| PG-11577 |  | Floor Tiling - Dry area | 5d | 2025-09-17 | 2025-09-23 | PG-11576 FF+5d | 243.5d |
| PG-11578 |  | Wooden doors | 5d | 2025-09-30 | 2025-10-07 | PG-11573 FF | 243.5d |
|  | 1.3.1.2.4.25 | **Floor 22** |  | 2025-09-06 | 2025-11-21 |  |  |
|  | 1.3.1.2.4.25.1 | **Ceiling Finishing works - Civil** |  | 2025-09-15 | 2025-11-21 |  |  |
| PG-11579 |  | Gypsum Plastering | 6d | 2025-09-15 | 2025-09-22 | PG-11221 | 141.17d |
| PG-11580 |  | Cornice fixing | 3.67d | 2025-10-03 | 2025-10-07 | PG-11218 FF+6d | 141.17d |
| PG-11582 |  | Toilet False ceiling | 4d | 2025-10-11 | 2025-10-15 | PG-11590 FF+5d | 250.67d |
| PG-11581 |  | Painting Works - Putty, Primer and 1st | 6d | 2025-10-22 | 2025-10-28 | PG-11580, PG-11585 | 129d |
| PG-11583 |  | Final Coat Painting | 19.67d | 2025-10-29 | 2025-11-21 | PG-11581, PG-11592 | 258.33d |
|  | 1.3.1.2.4.25.2 | **Wall Finishing works - Civil** |  | 2025-09-06 | 2025-11-21 |  |  |
| PG-11584 |  | Balcony Railing Fixing works | 4d | 2025-09-06 | 2025-09-11 | PG-11206 FS+7d | 157.83d |
| PG-11586 |  | Dadoing - Wet area | 5d | 2025-09-27 | 2025-10-03 | PG-11216 | 129d |
| PG-11585 |  | UPVC Windows & Sliding doors | 5d | 2025-10-16 | 2025-10-21 | PG-11584, PG-11591 FF+5d | 129d |
| PG-11587 |  | Painting Works - Putty, Primer and 1st | 6d | 2025-10-22 | 2025-10-28 | PG-11585 | 223.67d |
| PG-11588 |  | Final Coat Painting | 19.67d | 2025-10-29 | 2025-11-21 | PG-11592 | 223.67d |
|  | 1.3.1.2.4.25.3 | **Floor Finishing Works - Civil** |  | 2025-09-06 | 2025-10-28 |  |  |
| PG-11589 |  | Waterproofing for sunken areas | 3d | 2025-09-06 | 2025-09-10 | PG-11206 FS+7d | 148.83d |
| PG-11590 |  | Floor Tiling - Wet area | 5d | 2025-10-04 | 2025-10-09 | PG-11589, PG-11586 | 129d |
| PG-11591 |  | Floor Tiling - Dry area | 5d | 2025-10-10 | 2025-10-15 | PG-11590 FF+5d | 129d |
| PG-11592 |  | Wooden doors | 5d | 2025-10-23 | 2025-10-28 | PG-11587 FF | 223.67d |
|  | 1.3.1.2.4.26 | **Floor 23** |  | 2025-09-29 | 2025-12-12 |  |  |
|  | 1.3.1.2.4.26.1 | **Ceiling Finishing works - Civil** |  | 2025-10-08 | 2025-12-12 |  |  |
| PG-11593 |  | Gypsum Plastering | 6d | 2025-10-08 | 2025-10-15 | PG-11230 | 252.5d |
| PG-11594 |  | Cornice fixing | 4d | 2025-10-24 | 2025-10-29 | PG-11227 FF+6d | 252.5d |
| PG-11596 |  | Toilet False ceiling | 4d | 2025-10-31 | 2025-11-06 | PG-11604 FF+5d | 232.67d |
| PG-11595 |  | Painting Works - Putty, Primer and 1st | 6d | 2025-11-12 | 2025-11-19 | PG-11594, PG-11599 | 241.5d |
| PG-11597 |  | Final Coat Painting | 19.67d | 2025-11-19 | 2025-12-12 | PG-11595, PG-11606 | 241.5d |
|  | 1.3.1.2.4.26.2 | **Wall Finishing works - Civil** |  | 2025-09-29 | 2025-12-12 |  |  |
| PG-11598 |  | Balcony Railing Fixing works | 4d | 2025-09-29 | 2025-10-03 | PG-11215 FS+7d | 233.33d |
| PG-11600 |  | Dadoing - Wet area | 5d | 2025-10-18 | 2025-10-24 | PG-11225 | 205.67d |
| PG-11599 |  | UPVC Windows & Sliding doors | 5d | 2025-11-06 | 2025-11-12 | PG-11598, PG-11605 FF+5d | 205.67d |
| PG-11601 |  | Painting Works - Putty, Primer and 1st | 6d | 2025-11-12 | 2025-11-19 | PG-11599 | 205.67d |
| PG-11602 |  | Final Coat Painting | 19.67d | 2025-11-19 | 2025-12-12 | PG-11606 | 205.67d |
|  | 1.3.1.2.4.26.3 | **Floor Finishing Works - Civil** |  | 2025-09-29 | 2025-11-19 |  |  |
| PG-11603 |  | Waterproofing for sunken areas | 3d | 2025-09-29 | 2025-10-01 | PG-11215 FS+7d | 224.33d |
| PG-11604 |  | Floor Tiling - Wet area | 5d | 2025-10-24 | 2025-10-30 | PG-11603, PG-11600 | 205.67d |
| PG-11605 |  | Floor Tiling - Dry area | 5d | 2025-10-30 | 2025-11-06 | PG-11604 FF+5d | 205.67d |
| PG-11606 |  | Wooden doors | 5d | 2025-11-13 | 2025-11-19 | PG-11601 FF | 205.67d |
|  | 1.3.1.2.4.27 | **Floor 24** |  | 2025-10-20 | 2026-01-01 |  |  |
|  | 1.3.1.2.4.27.1 | **Ceiling Finishing works - Civil** |  | 2025-10-29 | 2026-01-01 |  |  |
| PG-11607 |  | Gypsum Plastering | 6d | 2025-10-29 | 2025-11-06 | PG-11239 | 235.17d |
| PG-11608 |  | Cornice fixing | 3.67d | 2025-11-15 | 2025-11-20 | PG-11236 FF+6d | 235.17d |
| PG-11610 |  | Toilet False ceiling | 4d | 2025-11-24 | 2025-11-28 | PG-11618 FF+5d | 212d |
| PG-11609 |  | Painting Works - Putty, Primer and 1st | 6d | 2025-12-04 | 2025-12-11 | PG-11608, PG-11613 | 223.17d |
| PG-11611 |  | Final Coat Painting | 18.5d | 2025-12-11 | 2026-01-01 | PG-11609, PG-11620 | 223.17d |
|  | 1.3.1.2.4.27.2 | **Wall Finishing works - Civil** |  | 2025-10-20 | 2026-01-01 |  |  |
| PG-11612 |  | Balcony Railing Fixing works | 4d | 2025-10-20 | 2025-10-24 | PG-11224 FS+7d | 215.17d |
| PG-11614 |  | Dadoing - Wet area | 5d | 2025-11-11 | 2025-11-17 | PG-11234 | 186.5d |
| PG-11613 |  | UPVC Windows & Sliding doors | 5d | 2025-11-28 | 2025-12-04 | PG-11612, PG-11619 FF+5d | 186.5d |
| PG-11615 |  | Painting Works - Putty, Primer and 1st | 6d | 2025-12-04 | 2025-12-11 | PG-11613 | 186.5d |
| PG-11616 |  | Final Coat Painting | 18.5d | 2025-12-11 | 2026-01-01 | PG-11620 | 186.5d |
|  | 1.3.1.2.4.27.3 | **Floor Finishing Works - Civil** |  | 2025-10-20 | 2025-12-11 |  |  |
| PG-11617 |  | Waterproofing for sunken areas | 3d | 2025-10-20 | 2025-10-23 | PG-11224 FS+7d | 206.17d |
| PG-11618 |  | Floor Tiling - Wet area | 5d | 2025-11-17 | 2025-11-22 | PG-11617, PG-11614 | 186.5d |
| PG-11619 |  | Floor Tiling - Dry area | 5d | 2025-11-22 | 2025-11-28 | PG-11618 FF+5d | 186.5d |
| PG-11620 |  | Wooden doors | 5d | 2025-12-05 | 2025-12-11 | PG-11615 FF | 186.5d |

| ID | WBS | Task | Duration | Start | Finish | Predecessors | Total float |
| --- | --- | --- | --- | --- | --- | --- | --- |
|  | 1.3.1.2.4.28 | **Floor 25** |  | 2025-11-12 | 2026-01-27 |  |  |
|  | 1.3.1.2.4.28.1 | **Ceiling Finishing works - Civil** |  | 2025-11-21 | 2026-01-27 |  |  |
| PG-11621 |  | Gypsum Plastering | 6d | 2025-11-21 | 2025-11-27 | PG-11248 | 214.67d |
| PG-11622 |  | Cornice fixing | 3.67d | 2025-12-08 | 2025-12-11 | PG-11245 FF+6d | 214.67d |
| PG-11624 |  | Toilet False ceiling | 4d | 2025-12-16 | 2025-12-19 | PG-11632 FF+5d | 194d |
| PG-11623 |  | Painting Works - Putty, Primer and 1st | 6d | 2025-12-26 | 2026-01-01 | PG-11622, PG-11627 | 202.67d |
| PG-11625 |  | Final Coat Painting | 20.33d | 2026-01-02 | 2026-01-27 | PG-11623, PG-11634 | 202.67d |
|  | 1.3.1.2.4.28.2 | **Wall Finishing works - Civil** |  | 2025-11-12 | 2026-01-27 |  |  |
| PG-11626 |  | Balcony Railing Fixing works | 4d | 2025-11-12 | 2025-11-17 | PG-11233 FS+7d | 195.67d |
| PG-11628 |  | Dadoing - Wet area | 5d | 2025-12-03 | 2025-12-08 | PG-11243 | 167d |
| PG-11627 |  | UPVC Windows & Sliding doors | 5d | 2025-12-20 | 2025-12-25 | PG-11626, PG-11633 FF+5d | 167d |
| PG-11629 |  | Painting Works - Putty, Primer and 1st | 6d | 2025-12-26 | 2026-01-01 | PG-11627 | 167d |
| PG-11630 |  | Final Coat Painting | 20.33d | 2026-01-02 | 2026-01-27 | PG-11634 | 167d |
|  | 1.3.1.2.4.28.3 | **Floor Finishing Works - Civil** |  | 2025-11-12 | 2026-01-01 |  |  |
| PG-11631 |  | Waterproofing for sunken areas | 3d | 2025-11-12 | 2025-11-15 | PG-11233 FS+7d | 186.67d |
| PG-11632 |  | Floor Tiling - Wet area | 5d | 2025-12-09 | 2025-12-13 | PG-11631, PG-11628 | 167d |
| PG-11633 |  | Floor Tiling - Dry area | 5d | 2025-12-15 | 2025-12-19 | PG-11632 FF+5d | 167d |
| PG-11634 |  | Wooden doors | 5d | 2025-12-27 | 2026-01-01 | PG-11629 FF | 167d |
|  | 1.3.1.2.4.29 | **Floor 26** |  | 2025-12-04 | 2026-02-16 |  |  |
|  | 1.3.1.2.4.29.1 | **Ceiling Finishing works - Civil** |  | 2025-12-12 | 2026-02-16 |  |  |
| PG-11635 |  | Gypsum Plastering | 6d | 2025-12-12 | 2025-12-19 | PG-11257 | 197.67d |
| PG-11636 |  | Cornice fixing | 3.67d | 2025-12-30 | 2026-01-02 | PG-11254 FF+6d | 197.67d |
| PG-11638 |  | Toilet False ceiling | 4d | 2026-01-06 | 2026-01-10 | PG-11646 FF+5d | 145.5d |
| PG-11637 |  | Painting Works - Putty, Primer and 1st | 6d | 2026-01-16 | 2026-01-23 | PG-11636, PG-11641 | 185.83d |
| PG-11639 |  | Final Coat Painting | 19.33d | 2026-01-23 | 2026-02-16 | PG-11637, PG-11648 | 185.83d |
|  | 1.3.1.2.4.29.2 | **Wall Finishing works - Civil** |  | 2025-12-04 | 2026-02-16 |  |  |
| PG-11640 |  | Balcony Railing Fixing works | 4d | 2025-12-04 | 2025-12-08 | PG-11242 FS+7d | 148.17d |
| PG-11642 |  | Dadoing - Wet area | 5d | 2025-12-24 | 2025-12-30 | PG-11252 | 119.5d |
| PG-11641 |  | UPVC Windows & Sliding doors | 5d | 2026-01-10 | 2026-01-16 | PG-11640, PG-11647 FF+5d | 119.5d |
| PG-11643 |  | Painting Works - Putty, Primer and 1st | 6d | 2026-01-16 | 2026-01-23 | PG-11641 | 119.5d |
| PG-11644 |  | Final Coat Painting | 19.33d | 2026-01-23 | 2026-02-16 | PG-11648 | 119.5d |
|  | 1.3.1.2.4.29.3 | **Floor Finishing Works - Civil** |  | 2025-12-04 | 2026-01-23 |  |  |
| PG-11645 |  | Waterproofing for sunken areas | 3d | 2025-12-04 | 2025-12-06 | PG-11242 FS+7d | 139.17d |
| PG-11646 |  | Floor Tiling - Wet area | 5d | 2025-12-30 | 2026-01-05 | PG-11645, PG-11642 | 119.5d |
| PG-11647 |  | Floor Tiling - Dry area | 5d | 2026-01-05 | 2026-01-10 | PG-11646 FF+5d | 119.5d |
| PG-11648 |  | Wooden doors | 5d | 2026-01-17 | 2026-01-23 | PG-11643 FF | 119.5d |
|  | 1.3.1.2.4.30 | **External Finishing works** |  | 2025-09-13 | 2026-01-10 |  |  |
| PG-11649 |  | External walls tie rod hole plugging with GP2 | 30d | 2025-09-13 | 2025-10-20 | PG-11008 | 215.67d |
| PG-11650 |  | External walls grinding works | 40d | 2025-10-08 | 2025-11-25 | PG-11649 FF+30d | 215.67d |
| PG-11651 |  | Texture and painting works | 45d | 2025-11-19 | 2026-01-10 | PG-11650 FF+40d | 215.67d |
|  | 1.3.1.2.5 | **Corridor & Fire Staircase Finishing works** |  | 2025-11-19 | 2026-03-19 |  |  |
|  | 1.3.1.2.5.1 | **Ceiling Finishing works - Civil** |  | 2025-11-19 | 2026-02-12 |  |  |
| PG-11652 |  | Gypsum Plastering | 6d | 2025-11-19 | 2025-11-26 | PG-11221 FF+60d | 10.67d |
| PG-11653 |  | Cornice fixing | 4d | 2025-11-25 | 2025-11-29 | PG-11580 FF+45d | 141.17d |
| PG-11654 |  | Painting Works - Putty, Primer and 1st | 6d | 2025-12-15 | 2025-12-20 | PG-11581 FF+45d, PG-11653 | 129d |
| PG-11655 |  | False ceiling | 30d | 2025-12-22 | 2026-01-24 | PG-11654 | 129d |
| PG-11656 |  | Final Coat Painting | 30.67d | 2026-01-07 | 2026-02-12 | PG-11655 FF+15d | 159d |
|  | 1.3.1.2.5.2 | **Wall Finishing works - Civil** |  | 2025-12-26 | 2026-03-19 |  |  |
| PG-11657 |  | UPVC Windows & Sliding doors | 5d | 2025-12-26 | 2025-12-31 | PG-11585 FF+60d | 135d |
| PG-11658 |  | Wall Cladding Upto 1.2 Mts | 20d | 2026-01-13 | 2026-02-05 | PG-11657 FF+30d | 135d |
| PG-11659 |  | Painting Works - Texture & one coat Painting works | 15d | 2026-02-13 | 2026-03-02 | PG-11658, PG-11655 FF+30d | 129d |
| PG-11660 |  | Final Coat Painting | 20.67d | 2026-02-24 | 2026-03-19 | PG-11659 FF+15d, PG-11662 | 129d |
|  | 1.3.1.2.5.3 | **Floor Finishing Works - Civil** |  | 2025-11-26 | 2025-12-25 |  |  |
| PG-11661 |  | Fire Doors installation | 10d | 2025-11-26 | 2025-12-08 | PG-11652 | 179.5d |
| PG-11662 |  | Vitrified tile flooring works | 15d | 2025-12-08 | 2025-12-25 | PG-11661 | 179.5d |
|  | 1.3.1.2.5.4 | **Fire Staircase Finishing Works - Civil** |  | 2025-11-26 | 2026-03-18 |  |  |
| PG-11663 |  | Staircase Railing Fixing works | 20d | 2025-11-26 | 2025-12-19 | PG-11652 | 10.67d |
| PG-11664 |  | Wall and ceiling Gypsum plastering | 29.67d | 2025-12-09 | 2026-01-12 | PG-11663 FF+20d | 10.67d |
| PG-11665 |  | Staircase Flooring and Skirting Works | 40d | 2025-12-25 | 2026-02-11 | PG-11664 FF+25d | 10.67d |
| PG-11666 |  | UPVC Window fixing works | 14d | 2026-02-12 | 2026-02-28 | PG-11665 FF+15d | 10.67d |
| PG-11667 |  | Staircase Painting works | 20d | 2026-02-23 | 2026-03-18 | PG-11666 FF+15d | 10.67d |
|  | 1.3.1.2.6 | **MEP Civil Works (Shaft, Lift Shaft & OHT )** |  | 2025-08-30 | 2026-01-29 |  |  |
|  | 1.3.1.2.6.1 | **Lift Shaft Works** |  | 2025-08-30 | 2026-01-29 |  |  |
| PG-11668 |  | Tie rod hole packing | 8d | 2025-08-30 | 2025-09-09 | PG-11005 | 116.17d |
| PG-11669 |  | Grinding works | 5d | 2025-09-09 | 2025-09-15 | PG-11668 | 116.17d |
| PG-11670 |  | Lift pit water proofing works | 20.33d | 2025-09-15 | 2025-10-09 | PG-11669 | 116.17d |
| PG-11671 |  | Shaft door opening finishing | 6.67d | 2025-10-09 | 2025-10-17 | PG-11670 | 116.17d |
| PG-11672 |  | Painting works | 8d | 2025-10-17 | 2025-10-27 | PG-11671 | 116.17d |
| PG-11673 |  | Lift Wall Cladding Works | 14.5d | 2026-01-10 | 2026-01-29 | PG-11708 | 151.83d |
|  | 1.3.1.2.6.2 | **Electrical Shaft works** |  | 2025-08-30 | 2025-10-01 |  |  |

| ID | WBS | Task | Duration | Start | Finish | Predecessors | Complete | Total float |
| --- | --- | --- | --- | --- | --- | --- | --- | --- |
| PG-11674 |  | Tie rod hole packing | 8d | 2025-08-30 | 2025-09-09 | PG-11005 |  | 222.83d |
| PG-11675 |  | Grinding works | 5d | 2025-09-09 | 2025-09-15 | PG-11674 |  | 222.83d |
| PG-11676 |  | Shaft door opening finishing | 7d | 2025-09-15 | 2025-09-22 | PG-11675 |  | 222.83d |
| PG-11677 |  | Painting works | 8d | 2025-09-23 | 2025-10-01 | PG-11676 |  | 222.83d |
|  | 1.3.1.2.6.3 | **FPS Shaft works** |  | 2025-08-30 | 2025-10-01 |  |  |  |
| PG-11678 |  | Tie rod hole packing | 8d | 2025-08-30 | 2025-09-09 | PG-11005 |  | 222.67d |
| PG-11679 |  | Grinding works | 5d | 2025-09-09 | 2025-09-15 | PG-11678 |  | 222.67d |
| PG-11680 |  | Shaft door opening finishing | 7d | 2025-09-15 | 2025-09-22 | PG-11679 |  | 222.67d |
| PG-11681 |  | Painting works | 8d | 2025-09-23 | 2025-10-01 | PG-11680 |  | 222.67d |
|  | 1.3.1.2.6.4 | **PHE Shaft works** |  | 2025-08-30 | 2025-10-01 |  |  |  |
| PG-11682 |  | Tie rod hole packing | 8d | 2025-08-30 | 2025-09-09 | PG-11005 |  | 181.5d |
| PG-11683 |  | Grinding works | 5d | 2025-09-09 | 2025-09-15 | PG-11682 |  | 181.5d |
| PG-11684 |  | Shaft door opening finishing | 7d | 2025-09-15 | 2025-09-22 | PG-11683 |  | 181.5d |
| PG-11685 |  | Painting works | 8d | 2025-09-23 | 2025-10-01 | PG-11684 |  | 181.5d |
|  | 1.3.1.2.6.5 | **Data & Communication Shaft** |  | 2025-08-30 | 2025-09-30 |  |  |  |
| PG-11686 |  | Tie rod hole packing | 8d | 2025-08-30 | 2025-09-09 | PG-11005 |  | 217.33d |
| PG-11687 |  | Grinding works | 5d | 2025-09-09 | 2025-09-15 | PG-11686 |  | 217.33d |
| PG-11688 |  | Shaft door opening finishing | 5d | 2025-09-15 | 2025-09-20 | PG-11687 |  | 217.33d |
| PG-11689 |  | Painting works | 8d | 2025-09-20 | 2025-09-30 | PG-11688 |  | 217.33d |
|  | 1.3.1.2.6.6 | **OHT Works** |  | 2025-08-30 | 2025-10-20 |  |  |  |
| PG-11690 |  | Tank materials Supply & Shifting | 10d | 2025-08-30 | 2025-09-11 | PG-11005 |  | 188.83d |
| PG-11691 |  | Assembling OHT FRP Tank | 10d | 2025-09-11 | 2025-09-23 | PG-11690 |  | 188.83d |
| PG-11692 |  | Installation of OHT Tank | 15d | 2025-09-23 | 2025-10-11 | PG-11691 |  | 188.83d |
| PG-11693 |  | Water tightness works and checking | 7d | 2025-10-11 | 2025-10-20 | PG-11692 |  | 188.83d |
|  | 1.3.1.2.7 | **MEP Shaft works** |  | 2025-09-30 | 2025-12-23 |  |  |  |
|  | 1.3.1.2.7.1 | **Electrical** |  | 2025-10-03 | 2025-11-12 |  |  |  |
| PG-11694 |  | Tray Works | 9.67d | 2025-10-03 | 2025-10-14 | PG-11677 |  | 222.83d |
| PG-11695 |  | Cable & Conducting works | 9.5d | 2025-10-14 | 2025-10-25 | PG-11694 |  | 222.83d |
| PG-11696 |  | Wiring/DB/connector box installation and termination works | 14.67d | 2025-10-25 | 2025-11-12 | PG-11695 |  | 222.83d |
|  | 1.3.1.2.7.2 | **FPS** |  | 2025-10-03 | 2025-11-12 |  |  |  |
| PG-11697 |  | Shaft MS Piping & fixtures installation | 19.67d | 2025-10-03 | 2025-10-25 | PG-11681 |  | 222.67d |
| PG-11698 |  | Tray / cabling / conducting & wiring works | 14d | 2025-10-25 | 2025-11-12 | PG-11697 |  | 222.67d |
|  | 1.3.1.2.7.3 | **Data & Communication** |  | 2025-09-30 | 2025-11-18 |  |  |  |
| PG-11699 |  | Tray Works | 11.67d | 2025-09-30 | 2025-10-14 | PG-11689 |  | 217.33d |
| PG-11700 |  | Tray / cabling / conducting & wiring works | 14.5d | 2025-10-14 | 2025-10-31 | PG-11699 |  | 217.33d |
| PG-11701 |  | Wiring/DB/connector box installation and termination works | 14.67d | 2025-10-31 | 2025-11-18 | PG-11700 |  | 217.33d |
|  | 1.3.1.2.7.4 | **PHE** |  | 2025-10-03 | 2025-12-23 |  |  |  |
| PG-11702 |  | Bracket fixing works | 6.83d | 2025-10-03 | 2025-10-10 | PG-11685 |  | 181.5d |
| PG-11703 |  | Piping Works | 15d | 2025-10-10 | 2025-10-28 | PG-11702 |  | 181.5d |
| PG-11704 |  | Terrace Ring main & OHT Connection works | 40d | 2025-10-28 | 2025-12-15 | PG-11009, PG-11703, PG-11693 |  | 181.5d |
| PG-11705 |  | Commissioning | 6.67d | 2025-12-15 | 2025-12-23 | PG-11704 |  | 181.5d |
|  | 1.3.1.2.8 | **Lift Installation and Testing works** |  | 2025-09-15 | 2026-04-16 |  |  |  |
| PG-11706 |  | Lift Shaft Survey works | 9.33d | 2025-09-15 | 2025-09-25 | PG-11669 |  | 141.83d |
| PG-11707 |  | Guide Rails fixing works | 39.83d | 2025-10-27 | 2025-12-12 | PG-11706, PG-11672 |  | 116.17d |
| PG-11708 |  | Lift Frame fixing works | 24.67d | 2025-12-13 | 2026-01-10 | PG-11707 |  | 116.17d |
| PG-11709 |  | CAR Assembly works | 19.67d | 2026-01-10 | 2026-02-04 | PG-11708 |  | 116.17d |
| PG-11710 |  | Lift Machine Room Works | 30.5d | 2026-02-04 | 2026-03-11 | PG-11709 |  | 116.17d |
| PG-11711 |  | Slow Speed & High Speed Testing works | 30.67d | 2026-03-11 | 2026-04-16 | PG-11673, PG-11710 |  | 116.17d |
|  | 1.3.1.2.9 | **Electrical Panel Works** |  | 2025-07-21 | 2026-02-25 |  |  |  |
|  | 1.3.1.2.9.1 | **Civil Finishing Works** |  | 2025-07-21 | 2025-09-02 |  |  |  |
| PG-11712 |  | Wall Tie rod hole packing & Grinding works. | 13.67d | 2025-07-21 | 2025-08-06 | PG-11494 |  | 158.33d |
| PG-11713 |  | Window, Louver and Door fixing works | 7d | 2025-08-06 | 2025-08-13 | PG-11712 |  | 158.33d |
| PG-11714 |  | Pedestal works | 10d | 2025-08-13 | 2025-08-26 | PG-11713 |  | 158.33d |
| PG-11715 |  | Painting works | 6.5d | 2025-08-26 | 2025-09-02 | PG-11714 |  | 158.33d |
|  | 1.3.1.2.9.2 | **Electrical Panel works** |  | 2025-09-03 | 2026-02-25 |  |  |  |
| PG-11716 |  | Electrical Panel assembly works | 58.5d | 2025-09-03 | 2025-11-12 | PG-11715 |  | 158.33d |
| PG-11717 |  | Electrical Panel installation and cable termination. | 58.67d | 2025-11-12 | 2026-01-20 | PG-11716 |  | 158.33d |
| PG-11718 |  | Electrical Panel Testing and commissioning works | 30d | 2026-01-20 | 2026-02-25 | PG-11717 |  | 158.33d |
|  | 1.3.1.2.10 | **Entrance Lobby works** |  | 2026-03-18 | 2026-08-05 |  |  |  |
| PG-11719 |  | Flooring Works | 30.5d | 2026-03-18 | 2026-04-23 | PG-11667 |  | 10.67d |
| PG-11720 |  | Glass Door and installation Works | 30d | 2026-04-23 | 2026-05-27 | PG-11719 |  | 10.67d |
| PG-11722 |  | Canopy Works | 25d | 2026-04-23 | 2026-05-21 | PG-11719 |  | 30.33d |
| PG-11721 |  | Painting Works | 15d | 2026-05-28 | 2026-06-13 | PG-11720 |  | 10.67d |
| PG-11723 |  | Interior Works | 44.67d | 2026-06-13 | 2026-08-05 | PG-11722, PG-11721 |  | 10.67d |
|  | 1.3.1.2.11 | **Lightening Arrester works** |  | 2026-01-10 | 2026-01-22 |  |  |  |
| PG-11724 |  | Conductor will be lifted with RCC Works, But Terrace works will be done once Parapet Painting done | 10.33d | 2026-01-10 | 2026-01-22 | PG-11651 |  | 215.67d |
|  | 1.3.1.3 | **Tower 3 ( 2B+G+29 ) TYP 4 Units - 118 Units** |  | 2023-10-04 | 2026-10-10 |  |  |  |
|  | 1.3.1.3.1 | **Foundation works** |  | 2023-10-04 | 2024-04-11 |  |  |  |
| PG-11725 |  | Setting out - Marking | 3d | 2023-10-04 A | 2023-10-07 A | PG-0998 SS | 100% |  |
| PG-11726 |  | Excavation Works | 45d | 2023-10-07 A | 2023-11-30 A | PG-11725 | 100% |  |

| ID | WBS | Task | Duration | Start | Finish | Predecessors | Complete |
| --- | --- | --- | --- | --- | --- | --- | --- |
| PG-11727 |  | Piling Works - 177 Nos | 45d | 2023-12-06 A | 2024-01-30 A | PG-11726 FF+50d | 100% |
| PG-11728 |  | Backfilling and Consolidation | 19.67d | 2024-01-19 A | 2024-02-13 A | PG-0999, PG-11727 FF+12d | 100% |
| PG-11729 |  | Waterproofing & PCC works | 15d | 2024-02-09 A | 2024-02-27 A | PG-11728 FF+12d | 100% |
| PG-11730 |  | Raft Reinforcement | 15d | 2024-02-27 A | 2024-03-15 A | PG-11729 FF+15d | 100% |
| PG-11731 |  | Raft Formwork | 8d | 2024-03-23 A | 2024-04-02 A | PG-11730 FF+15d | 100% |
| PG-11732 |  | Raft Concreting | 3d | 2024-04-08 A | 2024-04-11 A | PG-11731 FF+8d | 100% |
|  | 1.3.1.3.2 | **Structure works** |  | 2024-04-11 | 2026-01-03 |  |  |
|  | 1.3.1.3.2.1 | **LBF** |  | 2024-04-11 | 2024-05-10 |  |  |
|  | 1.3.1.3.2.1.1 | **Columns / shear walls** |  | 2024-04-11 | 2024-04-29 |  |  |
| PG-11733 |  | Reinforcement | 4d | 2024-04-11 A | 2024-04-16 A | PG-11732 | 100% |
| PG-11735 |  | Concrete | 9.5d | 2024-04-17 A | 2024-04-29 A | PG-11734 FF+5d | 100% |
| PG-11734 |  | Formwork | 4d | 2024-04-17 A | 2024-04-23 A | PG-11733 FF+5d | 100% |
|  | 1.3.1.3.2.1.2 | **Slab, Beams & Staircase** |  | 2024-04-29 | 2024-05-10 |  |  |
| PG-11736 |  | Formwork | 3d | 2024-04-29 A | 2024-05-02 A | PG-11735 | 100% |
| PG-11737 |  | Reinforcement | 3d | 2024-05-04 A | 2024-05-08 A | PG-11736 FF+5d | 100% |
| PG-11738 |  | Concrete | 1d | 2024-05-09 A | 2024-05-10 A | PG-11737 FS+1d | 100% |
|  | 1.3.1.3.2.2 | **UBF** |  | 2024-05-10 | 2024-06-07 |  |  |
|  | 1.3.1.3.2.2.1 | **Columns / shear walls** |  | 2024-05-10 | 2024-05-27 |  |  |
| PG-11739 |  | Reinforcement | 4d | 2024-05-10 A | 2024-05-15 A | PG-11738 | 100% |
| PG-11741 |  | Concrete | 9.5d | 2024-05-15 A | 2024-05-27 A | PG-11740 FF+5d | 100% |
| PG-11740 |  | Formwork | 4d | 2024-05-16 A | 2024-05-21 A | PG-11739 FF+5d | 100% |
|  | 1.3.1.3.2.2.2 | **Slab, Beams & Staircase** |  | 2024-05-27 | 2024-06-07 |  |  |
| PG-11742 |  | Formwork | 3d | 2024-05-27 A | 2024-05-30 A | PG-11741 | 100% |
| PG-11743 |  | Reinforcement | 3d | 2024-06-01 A | 2024-06-05 A | PG-11742 FF+5d | 100% |
| PG-11744 |  | Concrete | 1d | 2024-06-06 A | 2024-06-07 A | PG-11743 FS+1d | 100% |
|  | 1.3.1.3.2.3 | **Ground Floor** |  | 2024-06-07 | 2024-08-29 |  |  |
|  | 1.3.1.3.2.3.1 | **Columns / shear walls** |  | 2024-06-07 | 2024-08-19 |  |  |
| PG-11745 |  | Reinforcement | 4d | 2024-06-07 A | 2024-06-12 A | PG-11744 | 100% |
| PG-11747 |  | Concrete | 7.5d | 2024-08-08 A | 2024-08-19 A | PG-11746 FF+3d | 100% |
| PG-11746 |  | Formwork | 4d | 2024-08-09 A | 2024-08-14 A | PG-10003, PG-11745 FF+4d | 100% |
|  | 1.3.1.3.2.3.2 | **Slab, Beams & Staircase** |  | 2024-08-19 | 2024-08-29 |  |  |
| PG-11748 |  | Formwork | 3d | 2024-08-19 A | 2024-08-22 A | PG-11747 | 100% |
| PG-11749 |  | Reinforcement | 3d | 2024-08-23 A | 2024-08-27 A | PG-11748 FF+4d | 100% |
| PG-11750 |  | Concrete | 1d | 2024-08-28 A | 2024-08-29 A | PG-11749 FS+1d | 100% |
|  | 1.3.1.3.2.4 | **Floor 01** |  | 2024-08-29 | 2024-09-23 |  |  |
|  | 1.3.1.3.2.4.1 | **Columns / shear walls** |  | 2024-08-29 | 2024-09-11 |  |  |
| PG-11751 |  | Reinforcement | 4d | 2024-08-29 A | 2024-09-03 A | PG-11750 | 100% |
| PG-11753 |  | Concrete | 7.5d | 2024-09-02 A | 2024-09-11 A | PG-11752 FF+3d | 100% |
| PG-11752 |  | Formwork | 4d | 2024-09-03 A | 2024-09-07 A | PG-11751 FF+4d | 100% |
|  | 1.3.1.3.2.4.2 | **Slab, Beams & Staircase** |  | 2024-09-11 | 2024-09-23 |  |  |
| PG-11754 |  | Formwork | 3d | 2024-09-11 A | 2024-09-16 A | PG-11753 | 100% |
| PG-11755 |  | Reinforcement | 3d | 2024-09-17 A | 2024-09-20 A | PG-11754 FF+4d | 100% |
| PG-11756 |  | Concrete | 1d | 2024-09-21 A | 2024-09-23 A | PG-11755 FS+1d | 100% |
|  | 1.3.1.3.2.5 | **Floor 02** |  | 2024-09-23 | 2024-10-17 |  |  |
|  | 1.3.1.3.2.5.1 | **Columns / shear walls** |  | 2024-09-23 | 2024-10-07 |  |  |
| PG-11757 |  | Reinforcement | 4d | 2024-09-23 A | 2024-09-27 A | PG-11756 | 100% |
| PG-11758 |  | Formwork | 4d | 2024-09-27 A | 2024-10-03 A | PG-11757 FF+4d | 100% |
| PG-11759 |  | Concrete | 3.67d | 2024-10-01 A | 2024-10-07 A | PG-11758 FF+3d | 100% |
|  | 1.3.1.3.2.5.2 | **Slab, Beams & Staircase** |  | 2024-10-07 | 2024-10-17 |  |  |
| PG-11760 |  | Formwork | 3d | 2024-10-07 A | 2024-10-10 A | PG-11759 | 100% |
| PG-11761 |  | Reinforcement | 3d | 2024-10-11 A | 2024-10-15 A | PG-11760 FF+4d | 100% |
| PG-11762 |  | Concrete | 1d | 2024-10-16 A | 2024-10-17 A | PG-11761 FS+1d | 100% |
|  | 1.3.1.3.2.6 | **Floor 03** |  | 2024-10-17 | 2024-11-12 |  |  |
|  | 1.3.1.3.2.6.1 | **Columns / shear walls** |  | 2024-10-17 | 2024-10-30 |  |  |
| PG-11763 |  | Reinforcement | 4d | 2024-10-17 A | 2024-10-22 A | PG-11762 | 100% |
| PG-11764 |  | Formwork | 4d | 2024-10-22 A | 2024-10-26 A | PG-11763 FF+4d | 100% |
| PG-11765 |  | Concrete | 3.67d | 2024-10-25 A | 2024-10-30 A | PG-11764 FF+3d | 100% |
|  | 1.3.1.3.2.6.2 | **Slab, Beams & Staircase** |  | 2024-10-30 | 2024-11-12 |  |  |
| PG-11766 |  | Formwork | 3d | 2024-10-30 A | 2024-11-04 A | PG-11765 | 100% |
| PG-11767 |  | Reinforcement | 3d | 2024-11-05 A | 2024-11-08 A | PG-11766 FF+4d | 100% |
| PG-11768 |  | Concrete | 1d | 2024-11-09 A | 2024-11-12 A | PG-11767 FS+1d | 100% |
|  | 1.3.1.3.2.7 | **Floor 04** |  | 2024-11-12 | 2024-12-02 |  |  |
|  | 1.3.1.3.2.7.1 | **Columns / shear walls** |  | 2024-11-12 | 2024-11-21 |  |  |
| PG-11769 |  | Reinforcement | 4d | 2024-11-12 A | 2024-11-16 A | PG-11768 | 100% |
| PG-11770 |  | Formwork | 4d | 2024-11-16 A | 2024-11-21 A | PG-11769 FF+4d | 100% |
|  | 1.3.1.3.2.7.2 | **Slab, Beams & Staircase** |  | 2024-11-22 | 2024-12-02 |  |  |
| PG-11771 |  | Formwork | 3d | 2024-11-22 A | 2024-11-26 A | PG-11770 FF+4d | 100% |
| PG-11772 |  | Reinforcement | 3d | 2024-11-27 A | 2024-11-30 A | PG-11771 FF+4d | 100% |
| PG-11773 |  | Concrete | 1d | 2024-11-30 A | 2024-12-02 A | PG-11772 | 100% |
|  | 1.3.1.3.2.8 | **Floor 05** |  | 2024-12-02 | 2024-12-23 |  |  |

| ID | WBS | Task | Duration | Start | Finish | Predecessors | Complete | Total float |
| --- | --- | --- | --- | --- | --- | --- | --- | --- |
|  | 1.3.1.3.2.8.1 | **Columns / shear walls** |  | 2024-12-02 | 2024-12-11 |  |  |  |
| PG-11774 |  | Reinforcement | 4d | 2024-12-02 A | 2024-12-06 A | PG-11773 | 100% |  |
| PG-11775 |  | Formwork | 4d | 2024-12-06 A | 2024-12-11 A | PG-11774 FF+4d | 100% |  |
|  | 1.3.1.3.2.8.2 | **Slab, Beams & Staircase** |  | 2024-12-12 | 2024-12-23 |  |  |  |
| PG-11776 |  | Formwork | 3d | 2024-12-12 A | 2024-12-16 A | PG-11775 FF+4d | 100% |  |
| PG-11777 |  | Reinforcement | 3d | 2024-12-17 A | 2024-12-20 A | PG-11776 FF+4d | 100% |  |
| PG-11778 |  | Concrete | 1d | 2024-12-20 A | 2024-12-23 A | PG-11777 | 100% |  |
|  | 1.3.1.3.2.9 | **Floor 06** |  | 2024-12-23 | 2025-01-07 |  |  |  |
|  | 1.3.1.3.2.9.1 | **Columns / shear walls** |  | 2024-12-23 | 2025-01-01 |  |  |  |
| PG-11779 |  | Reinforcement | 4d | 2024-12-23 A | 2024-12-27 A | PG-11778 | 100% |  |
| PG-11780 |  | Formwork | 4d | 2024-12-27 A | 2025-01-01 A | PG-11779 FF+4d | 100% |  |
|  | 1.3.1.3.2.9.2 | **Slab, Beams & Staircase** |  | 2024-12-31 | 2025-01-07 |  |  |  |
| PG-11781 |  | Formwork | 3d | 2024-12-31 A | 2025-01-03 A | PG-11780 FF+2d | 100% |  |
| PG-11782 |  | Reinforcement | 3d | 2025-01-02 A | 2025-01-06 A | PG-11781 FF+2d | 100% |  |
| PG-11783 |  | Concrete | 1d | 2025-01-06 A | 2025-01-07 A | PG-11782 | 100% |  |
|  | 1.3.1.3.2.10 | **Floor 07** |  | 2025-01-07 | 2025-01-22 |  |  |  |
|  | 1.3.1.3.2.10.1 | **Columns / shear walls** |  | 2025-01-07 | 2025-01-16 |  |  |  |
| PG-11784 |  | Reinforcement | 4d | 2025-01-07 A | 2025-01-11 A | PG-11783 | 100% |  |
| PG-11785 |  | Formwork | 4d | 2025-01-11 A | 2025-01-16 A | PG-11784 FF+4d | 100% |  |
|  | 1.3.1.3.2.10.2 | **Slab, Beams & Staircase** |  | 2025-01-15 | 2025-01-22 |  |  |  |
| PG-11786 |  | Formwork | 3d | 2025-01-15 A | 2025-01-18 A | PG-11785 FF+2d | 100% |  |
| PG-11787 |  | Reinforcement | 3d | 2025-01-17 A | 2025-01-21 A | PG-11786 FF+2d | 100% |  |
| PG-11788 |  | Concrete | 1d | 2025-01-21 A | 2025-01-22 A | PG-11787 | 100% |  |
|  | 1.3.1.3.2.11 | **Floor 08** |  | 2025-01-22 | 2025-02-07 |  |  |  |
|  | 1.3.1.3.2.11.1 | **Columns / shear walls** |  | 2025-01-22 | 2025-01-31 |  |  |  |
| PG-11789 |  | Reinforcement | 4d | 2025-01-22 A | 2025-01-27 A | PG-11788 | 100% |  |
| PG-11790 |  | Formwork | 4d | 2025-01-27 A | 2025-01-31 A | PG-11789 FF+4d | 100% |  |
|  | 1.3.1.3.2.11.2 | **Slab, Beams & Staircase** |  | 2025-01-30 | 2025-02-07 |  |  |  |
| PG-11791 |  | Formwork | 3d | 2025-01-30 A | 2025-02-04 A | PG-11790 FF+2d | 100% |  |
| PG-11792 |  | Reinforcement | 3d | 2025-02-03 A | 2025-02-06 A | PG-11791 FF+2d | 100% |  |
| PG-11793 |  | Concrete | 1d | 2025-02-06 A | 2025-02-07 A | PG-11792 | 100% |  |
|  | 1.3.1.3.2.12 | **Floor 09** |  | 2025-02-07 | 2025-02-24 |  |  |  |
|  | 1.3.1.3.2.12.1 | **Columns / shear walls** |  | 2025-02-07 | 2025-02-17 |  |  |  |
| PG-11794 |  | Reinforcement | 4d | 2025-02-07 A | 2025-02-12 A | PG-11793 | 100% |  |
| PG-11795 |  | Formwork | 4d | 2025-02-12 A | 2025-02-17 A | PG-11794 FF+4d | 100% |  |
|  | 1.3.1.3.2.12.2 | **Slab, Beams & Staircase** |  | 2025-02-15 | 2025-02-24 |  |  |  |
| PG-11796 |  | Formwork | 3d | 2025-02-15 A | 2025-02-19 A | PG-11795 FF+2d | 100% |  |
| PG-11797 |  | Reinforcement | 3d | 2025-02-18 A | 2025-02-22 A | PG-11796 FF+2d | 100% |  |
| PG-11798 |  | Concrete | 1d | 2025-02-22 A | 2025-02-24 A | PG-11797 | 100% |  |
|  | 1.3.1.3.2.13 | **Floor 10** |  | 2025-02-24 | 2025-03-11 |  |  |  |
|  | 1.3.1.3.2.13.1 | **Columns / shear walls** |  | 2025-02-24 | 2025-03-05 |  |  |  |
| PG-11799 |  | Reinforcement | 4d | 2025-02-24 A | 2025-02-28 A | PG-11798 | 100% |  |
| PG-11800 |  | Formwork | 4d | 2025-02-28 A | 2025-03-05 A | PG-11799 FF+4d | 100% |  |
|  | 1.3.1.3.2.13.2 | **Slab, Beams & Staircase** |  | 2025-03-04 | 2025-03-11 |  |  |  |
| PG-11801 |  | Formwork | 3d | 2025-03-04 A | 2025-03-07 A | PG-11800 FF+2d | 100% |  |
| PG-11802 |  | Reinforcement | 3d | 2025-03-06 A | 2025-03-10 A | PG-11801 FF+2d | 100% |  |
| PG-11803 |  | Concrete | 1d | 2025-03-10 A | 2025-03-11 A | PG-11802 | 100% |  |
|  | 1.3.1.3.2.14 | **Floor 11** |  | 2025-03-11 | 2025-03-27 |  |  |  |
|  | 1.3.1.3.2.14.1 | **Columns / shear walls** |  | 2025-03-11 | 2025-03-21 |  |  |  |
| PG-11804 |  | Reinforcement | 4d | 2025-03-11 A | 2025-03-15 A | PG-11803 | 100% |  |
| PG-11805 |  | Formwork | 4d | 2025-03-15 A | 2025-03-21 A | PG-11804 FF+4d | 100% |  |
|  | 1.3.1.3.2.14.2 | **Slab, Beams & Staircase** |  | 2025-03-20 | 2025-03-27 |  |  |  |
| PG-11806 |  | Formwork | 3d | 2025-03-20 A | 2025-03-24 A | PG-11805 FF+2d | 100% |  |
| PG-11807 |  | Reinforcement | 3d | 2025-03-22 A | 2025-03-26 A | PG-11806 FF+2d | 100% |  |
| PG-11808 |  | Concrete | 1d | 2025-03-26 A | 2025-03-27 A | PG-11807 | 100% |  |
|  | 1.3.1.3.2.15 | **Floor 12** |  | 2025-03-27 | 2025-04-11 |  |  |  |
|  | 1.3.1.3.2.15.1 | **Columns / shear walls** |  | 2025-03-27 | 2025-04-05 |  |  |  |
| PG-11809 |  | Reinforcement | 4d | 2025-03-27 A | 2025-04-01 A | PG-11808 | 100% |  |
| PG-11810 |  | Formwork | 4d | 2025-04-01 A | 2025-04-05 | PG-11809 FF+4d | 85% | 0d |
|  | 1.3.1.3.2.15.2 | **Slab, Beams & Staircase** |  | 2025-04-04 | 2025-04-11 |  |  |  |
| PG-11811 |  | Formwork | 3d | 2025-04-04 A | 2025-04-08 | PG-11810 FF+2d | 3% | 0d |
| PG-11812 |  | Reinforcement | 3d | 2025-04-07 | 2025-04-10 | PG-11811 FF+2d |  | 0d |
| PG-11813 |  | Concrete | 1d | 2025-04-10 | 2025-04-11 | PG-11812 |  | 0d |
|  | 1.3.1.3.2.16 | **Floor 13** |  | 2025-04-11 | 2025-04-26 |  |  |  |
|  | 1.3.1.3.2.16.1 | **Columns / shear walls** |  | 2025-04-11 | 2025-04-21 |  |  |  |
| PG-11814 |  | Reinforcement | 4d | 2025-04-11 | 2025-04-16 | PG-11813 |  | 0d |
| PG-11815 |  | Formwork | 4d | 2025-04-16 | 2025-04-21 | PG-11814 FF+4d |  | 0d |
|  | 1.3.1.3.2.16.2 | **Slab, Beams & Staircase** |  | 2025-04-19 | 2025-04-26 |  |  |  |
| PG-11816 |  | Formwork | 3d | 2025-04-19 | 2025-04-23 | PG-11815 FF+2d |  | 0d |
| PG-11817 |  | Reinforcement | 3d | 2025-04-22 | 2025-04-25 | PG-11816 FF+2d |  | 0d |

| ID | WBS | Task | Duration | Start | Finish | Predecessors | Total float |
| --- | --- | --- | --- | --- | --- | --- | --- |
| PG-11818 |  | Concrete | 1d | 2025-04-25 | 2025-04-26 | PG-11817 | 0d |
|  | 1.3.1.3.2.17 | **Floor 14** |  | 2025-04-26 | 2025-05-12 |  |  |
|  | 1.3.1.3.2.17.1 | **Columns / shear walls** |  | 2025-04-26 | 2025-05-06 |  |  |
| PG-11819 |  | Reinforcement | 4d | 2025-04-26 | 2025-05-01 | PG-11818 | 0d |
| PG-11820 |  | Formwork | 4d | 2025-05-01 | 2025-05-06 | PG-11819 FF+4d | 0d |
|  | 1.3.1.3.2.17.2 | **Slab, Beams & Staircase** |  | 2025-05-05 | 2025-05-12 |  |  |
| PG-11821 |  | Formwork | 3d | 2025-05-05 | 2025-05-08 | PG-11820 FF+2d | 0d |
| PG-11822 |  | Reinforcement | 3d | 2025-05-07 | 2025-05-10 | PG-11821 FF+2d | 0d |
| PG-11823 |  | Concrete | 1d | 2025-05-10 | 2025-05-12 | PG-11822 | 0d |
|  | 1.3.1.3.2.18 | **Floor 15** |  | 2025-05-12 | 2025-05-27 |  |  |
|  | 1.3.1.3.2.18.1 | **Columns / shear walls** |  | 2025-05-12 | 2025-05-21 |  |  |
| PG-11824 |  | Reinforcement | 4d | 2025-05-12 | 2025-05-16 | PG-11823 | 0d |
| PG-11825 |  | Formwork | 4d | 2025-05-16 | 2025-05-21 | PG-11824 FF+4d | 0d |
|  | 1.3.1.3.2.18.2 | **Slab, Beams & Staircase** |  | 2025-05-20 | 2025-05-27 |  |  |
| PG-11826 |  | Formwork | 3d | 2025-05-20 | 2025-05-23 | PG-11825 FF+2d | 0d |
| PG-11827 |  | Reinforcement | 3d | 2025-05-22 | 2025-05-26 | PG-11826 FF+2d | 0d |
| PG-11828 |  | Concrete | 1d | 2025-05-26 | 2025-05-27 | PG-11827 | 0d |
|  | 1.3.1.3.2.19 | **Floor 16** |  | 2025-05-27 | 2025-06-09 |  |  |
|  | 1.3.1.3.2.19.1 | **Columns / shear walls** |  | 2025-05-27 | 2025-06-03 |  |  |
| PG-11829 |  | Reinforcement | 4d | 2025-05-27 | 2025-05-31 | PG-11828 | 0d |
| PG-11830 |  | Formwork | 4d | 2025-05-29 | 2025-06-03 | PG-11829 FF+2d | 0d |
|  | 1.3.1.3.2.19.2 | **Slab, Beams & Staircase** |  | 2025-06-02 | 2025-06-09 |  |  |
| PG-11831 |  | Formwork | 3d | 2025-06-02 | 2025-06-05 | PG-11830 FF+2d | 0d |
| PG-11832 |  | Reinforcement | 3d | 2025-06-04 | 2025-06-07 | PG-11831 FF+2d | 0d |
| PG-11833 |  | Concrete | 1d | 2025-06-07 | 2025-06-09 | PG-11832 | 0d |
|  | 1.3.1.3.2.20 | **Floor 17** |  | 2025-06-09 | 2025-06-21 |  |  |
|  | 1.3.1.3.2.20.1 | **Columns / shear walls** |  | 2025-06-09 | 2025-06-16 |  |  |
| PG-11834 |  | Reinforcement | 4d | 2025-06-09 | 2025-06-13 | PG-11833 | 0d |
| PG-11835 |  | Formwork | 4d | 2025-06-11 | 2025-06-16 | PG-11834 FF+2d | 0d |
|  | 1.3.1.3.2.20.2 | **Slab, Beams & Staircase** |  | 2025-06-14 | 2025-06-21 |  |  |
| PG-11836 |  | Formwork | 3d | 2025-06-14 | 2025-06-18 | PG-11835 FF+2d | 0d |
| PG-11837 |  | Reinforcement | 3d | 2025-06-17 | 2025-06-20 | PG-11836 FF+2d | 0d |
| PG-11838 |  | Concrete | 1d | 2025-06-20 | 2025-06-21 | PG-11837 | 0d |
|  | 1.3.1.3.2.21 | **Floor 18** |  | 2025-06-21 | 2025-07-04 |  |  |
|  | 1.3.1.3.2.21.1 | **Columns / shear walls** |  | 2025-06-21 | 2025-06-28 |  |  |
| PG-11839 |  | Reinforcement | 4d | 2025-06-21 | 2025-06-26 | PG-11838 | 0d |
| PG-11840 |  | Formwork | 4d | 2025-06-24 | 2025-06-28 | PG-11839 FF+2d | 0d |
|  | 1.3.1.3.2.21.2 | **Slab, Beams & Staircase** |  | 2025-06-27 | 2025-07-04 |  |  |
| PG-11841 |  | Formwork | 3d | 2025-06-27 | 2025-07-01 | PG-11840 FF+2d | 0d |
| PG-11842 |  | Reinforcement | 3d | 2025-06-30 | 2025-07-03 | PG-11841 FF+2d | 0d |
| PG-11843 |  | Concrete | 1d | 2025-07-03 | 2025-07-04 | PG-11842 | 0d |
|  | 1.3.1.3.2.22 | **Floor 19** |  | 2025-07-04 | 2025-07-17 |  |  |
|  | 1.3.1.3.2.22.1 | **Columns / shear walls** |  | 2025-07-04 | 2025-07-11 |  |  |
| PG-11844 |  | Reinforcement | 4d | 2025-07-04 | 2025-07-09 | PG-11843 | 0d |
| PG-11845 |  | Formwork | 4d | 2025-07-07 | 2025-07-11 | PG-11844 FF+2d | 0d |
|  | 1.3.1.3.2.22.2 | **Slab, Beams & Staircase** |  | 2025-07-10 | 2025-07-17 |  |  |
| PG-11846 |  | Formwork | 3d | 2025-07-10 | 2025-07-14 | PG-11845 FF+2d | 0d |
| PG-11847 |  | Reinforcement | 3d | 2025-07-12 | 2025-07-16 | PG-11846 FF+2d | 0d |
| PG-11848 |  | Concrete | 1d | 2025-07-16 | 2025-07-17 | PG-11847 | 0d |
|  | 1.3.1.3.2.23 | **Floor 20** |  | 2025-07-17 | 2025-07-30 |  |  |
|  | 1.3.1.3.2.23.1 | **Columns / shear walls** |  | 2025-07-17 | 2025-07-24 |  |  |
| PG-11849 |  | Reinforcement | 4d | 2025-07-17 | 2025-07-22 | PG-11848 | 0d |
| PG-11850 |  | Formwork | 4d | 2025-07-19 | 2025-07-24 | PG-11849 FF+2d | 0d |
|  | 1.3.1.3.2.23.2 | **Slab, Beams & Staircase** |  | 2025-07-23 | 2025-07-30 |  |  |
| PG-11851 |  | Formwork | 3d | 2025-07-23 | 2025-07-26 | PG-11850 FF+2d | 0d |
| PG-11852 |  | Reinforcement | 3d | 2025-07-25 | 2025-07-29 | PG-11851 FF+2d | 0d |
| PG-11853 |  | Concrete | 1d | 2025-07-29 | 2025-07-30 | PG-11852 | 0d |
|  | 1.3.1.3.2.24 | **Floor 21** |  | 2025-07-30 | 2025-08-12 |  |  |
|  | 1.3.1.3.2.24.1 | **Columns / shear walls** |  | 2025-07-30 | 2025-08-06 |  |  |
| PG-11854 |  | Reinforcement | 4d | 2025-07-30 | 2025-08-04 | PG-11853 | 0d |
| PG-11855 |  | Formwork | 4d | 2025-08-01 | 2025-08-06 | PG-11854 FF+2d | 0d |
|  | 1.3.1.3.2.24.2 | **Slab, Beams & Staircase** |  | 2025-08-05 | 2025-08-12 |  |  |
| PG-11856 |  | Formwork | 3d | 2025-08-05 | 2025-08-08 | PG-11855 FF+2d | 0d |
| PG-11857 |  | Reinforcement | 3d | 2025-08-07 | 2025-08-11 | PG-11856 FF+2d | 0d |
| PG-11858 |  | Concrete | 1d | 2025-08-11 | 2025-08-12 | PG-11857 | 0d |
|  | 1.3.1.3.2.25 | **Floor 22** |  | 2025-08-12 | 2025-08-26 |  |  |
|  | 1.3.1.3.2.25.1 | **Columns / shear walls** |  | 2025-08-12 | 2025-08-20 |  |  |
| PG-11859 |  | Reinforcement | 4d | 2025-08-12 | 2025-08-18 | PG-11858 | 0d |
| PG-11860 |  | Formwork | 4d | 2025-08-14 | 2025-08-20 | PG-11859 FF+2d | 0d |
|  | 1.3.1.3.2.25.2 | **Slab, Beams & Staircase** |  | 2025-08-19 | 2025-08-26 |  |  |

| ID | WBS | Task | Duration | Start | Finish | Predecessors | Total float |
| --- | --- | --- | --- | --- | --- | --- | --- |
| PG-11861 |  | Formwork | 3d | 2025-08-19 | 2025-08-22 | PG-11860 FF+2d | 0d |
| PG-11862 |  | Reinforcement | 3d | 2025-08-21 | 2025-08-25 | PG-11861 FF+2d | 0d |
| PG-11863 |  | Concrete | 1d | 2025-08-25 | 2025-08-26 | PG-11862 | 0d |
|  | 1.3.1.3.2.26 | **Floor 23** |  | 2025-08-26 | 2025-09-08 |  |  |
|  | 1.3.1.3.2.26.1 | **Columns / shear walls** |  | 2025-08-26 | 2025-09-02 |  |  |
| PG-11864 |  | Reinforcement | 4d | 2025-08-26 | 2025-08-30 | PG-11863 | 0d |
| PG-11865 |  | Formwork | 4d | 2025-08-28 | 2025-09-02 | PG-11864 FF+2d | 0d |
|  | 1.3.1.3.2.26.2 | **Slab, Beams & Staircase** |  | 2025-09-01 | 2025-09-08 |  |  |
| PG-11866 |  | Formwork | 3d | 2025-09-01 | 2025-09-04 | PG-11865 FF+2d | 0d |
| PG-11867 |  | Reinforcement | 3d | 2025-09-03 | 2025-09-06 | PG-11866 FF+2d | 0d |
| PG-11868 |  | Concrete | 1d | 2025-09-06 | 2025-09-08 | PG-11867 | 0d |
|  | 1.3.1.3.2.27 | **Floor 24** |  | 2025-09-08 | 2025-09-20 |  |  |
|  | 1.3.1.3.2.27.1 | **Columns / shear walls** |  | 2025-09-08 | 2025-09-15 |  |  |
| PG-11869 |  | Reinforcement | 4d | 2025-09-08 | 2025-09-12 | PG-11868 | 0d |
| PG-11870 |  | Formwork | 4d | 2025-09-10 | 2025-09-15 | PG-11869 FF+2d | 0d |
|  | 1.3.1.3.2.27.2 | **Slab, Beams & Staircase** |  | 2025-09-13 | 2025-09-20 |  |  |
| PG-11871 |  | Formwork | 3d | 2025-09-13 | 2025-09-17 | PG-11870 FF+2d | 0d |
| PG-11872 |  | Reinforcement | 3d | 2025-09-16 | 2025-09-19 | PG-11871 FF+2d | 0d |
| PG-11873 |  | Concrete | 1d | 2025-09-19 | 2025-09-20 | PG-11872 | 0d |
|  | 1.3.1.3.2.28 | **Floor 25** |  | 2025-09-20 | 2025-10-04 |  |  |
|  | 1.3.1.3.2.28.1 | **Columns / shear walls** |  | 2025-09-20 | 2025-09-27 |  |  |
| PG-11874 |  | Reinforcement | 4d | 2025-09-20 | 2025-09-25 | PG-11873 | 0d |
| PG-11875 |  | Formwork | 4d | 2025-09-23 | 2025-09-27 | PG-11874 FF+2d | 0d |
|  | 1.3.1.3.2.28.2 | **Slab, Beams & Staircase** |  | 2025-09-26 | 2025-10-04 |  |  |
| PG-11876 |  | Formwork | 3d | 2025-09-26 | 2025-09-30 | PG-11875 FF+2d | 0d |
| PG-11877 |  | Reinforcement | 3d | 2025-09-29 | 2025-10-03 | PG-11876 FF+2d | 0d |
| PG-11878 |  | Concrete | 1d | 2025-10-03 | 2025-10-04 | PG-11877 | 0d |
|  | 1.3.1.3.2.29 | **Floor 26** |  | 2025-10-04 | 2025-10-17 |  |  |
|  | 1.3.1.3.2.29.1 | **Columns / shear walls** |  | 2025-10-04 | 2025-10-11 |  |  |
| PG-11879 |  | Reinforcement | 4d | 2025-10-04 | 2025-10-09 | PG-11878 | 0d |
| PG-11880 |  | Formwork | 4d | 2025-10-07 | 2025-10-11 | PG-11879 FF+2d | 0d |
|  | 1.3.1.3.2.29.2 | **Slab, Beams & Staircase** |  | 2025-10-10 | 2025-10-17 |  |  |
| PG-11881 |  | Formwork | 3d | 2025-10-10 | 2025-10-14 | PG-11880 FF+2d | 0d |
| PG-11882 |  | Reinforcement | 3d | 2025-10-13 | 2025-10-16 | PG-11881 FF+2d | 0d |
| PG-11883 |  | Concrete | 1d | 2025-10-16 | 2025-10-17 | PG-11882 | 0d |
|  | 1.3.1.3.2.30 | **Floor 27** |  | 2025-10-17 | 2025-10-30 |  |  |
|  | 1.3.1.3.2.30.1 | **Columns / shear walls** |  | 2025-10-17 | 2025-10-24 |  |  |
| PG-11884 |  | Reinforcement | 4d | 2025-10-17 | 2025-10-22 | PG-11883 | 0d |
| PG-11885 |  | Formwork | 4d | 2025-10-20 | 2025-10-24 | PG-11884 FF+2d | 0d |
|  | 1.3.1.3.2.30.2 | **Slab, Beams & Staircase** |  | 2025-10-23 | 2025-10-30 |  |  |
| PG-11886 |  | Formwork | 3d | 2025-10-23 | 2025-10-27 | PG-11885 FF+2d | 0d |
| PG-11887 |  | Reinforcement | 3d | 2025-10-25 | 2025-10-29 | PG-11886 FF+2d | 0d |
| PG-11888 |  | Concrete | 1d | 2025-10-29 | 2025-10-30 | PG-11887 | 0d |
|  | 1.3.1.3.2.31 | **Floor 28** |  | 2025-10-30 | 2025-11-13 |  |  |
|  | 1.3.1.3.2.31.1 | **Columns / shear walls** |  | 2025-10-30 | 2025-11-07 |  |  |
| PG-11889 |  | Reinforcement | 4d | 2025-10-30 | 2025-11-05 | PG-11888 | 0d |
| PG-11890 |  | Formwork | 4d | 2025-11-03 | 2025-11-07 | PG-11889 FF+2d | 0d |
|  | 1.3.1.3.2.31.2 | **Slab, Beams & Staircase** |  | 2025-11-06 | 2025-11-13 |  |  |
| PG-11891 |  | Formwork | 3d | 2025-11-06 | 2025-11-10 | PG-11890 FF+2d | 0d |
| PG-11892 |  | Reinforcement | 3d | 2025-11-08 | 2025-11-12 | PG-11891 FF+2d | 0d |
| PG-11893 |  | Concrete | 1d | 2025-11-12 | 2025-11-13 | PG-11892 | 0d |
|  | 1.3.1.3.2.32 | **Floor 29** |  | 2025-11-13 | 2025-11-26 |  |  |
|  | 1.3.1.3.2.32.1 | **Columns / shear walls** |  | 2025-11-13 | 2025-11-20 |  |  |
| PG-11894 |  | Reinforcement | 4d | 2025-11-13 | 2025-11-18 | PG-11893 | 0d |
| PG-11895 |  | Formwork | 4d | 2025-11-15 | 2025-11-20 | PG-11894 FF+2d | 0d |
|  | 1.3.1.3.2.32.2 | **Slab, Beams & Staircase** |  | 2025-11-19 | 2025-11-26 |  |  |
| PG-11896 |  | Formwork | 3d | 2025-11-19 | 2025-11-22 | PG-11895 FF+2d | 0d |
| PG-11897 |  | Reinforcement | 3d | 2025-11-21 | 2025-11-25 | PG-11896 FF+2d | 0d |
| PG-11898 |  | Concrete | 1d | 2025-11-25 | 2025-11-26 | PG-11897 | 0d |
|  | 1.3.1.3.2.33 | **Above Terrace Floor** |  | 2025-11-26 | 2026-01-03 |  |  |
|  | 1.3.1.3.2.33.1 | **Columns / shear walls/Parapet Walls** |  | 2025-11-26 | 2025-12-09 |  |  |
| PG-11899 |  | Reinforcement | 4d | 2025-11-26 | 2025-12-01 | PG-11898, PG-11893, PG-11888, PG-11883, PG-11878, PG-11873, PG-11868 | 51.67d |
| PG-11900 |  | Formwork | 5d | 2025-11-28 | 2025-12-04 | PG-11899 FF+3d | 51.67d |
| PG-11901 |  | Concrete | 4.67d | 2025-12-04 | 2025-12-09 | PG-11900 | 51.67d |
|  | 1.3.1.3.2.33.2 | **Slab, Beams & Staircase Head rooms, Lift headroom** |  | 2025-12-01 | 2026-01-03 |  |  |
| PG-11905 |  | Terrace Waterproofing and Protective finishing. | 29.67d | 2025-12-01 | 2026-01-03 | PG-11904 FF+10d | 165.5d |
| PG-11902 |  | Formwork | 5d | 2025-12-09 | 2025-12-15 | PG-11901 | 58.83d |
| PG-11903 |  | Reinforcement | 5d | 2025-12-15 | 2025-12-20 | PG-11902 FF+5d | 58.83d |
| PG-11904 |  | Concrete | 2d | 2025-12-20 | 2025-12-23 | PG-11903 | 58.83d |
|  | 1.3.1.3.3 | **MEP Internal works** |  | 2024-12-23 | 2026-06-04 |  |  |

| ID | WBS | Task | Duration | Start | Finish | Predecessors | Complete | Total float |
| --- | --- | --- | --- | --- | --- | --- | --- | --- |
|  | 1.3.1.3.3.1 | **LBF** |  | 2024-12-23 | 2025-03-10 |  |  |  |
| PG-11906 |  | Surface Drainage System (Chambers and Pipeline for Sump) | 15d | 2024-12-23 A | 2025-01-09 A | PG-11778 | 100% |  |
| PG-11907 |  | Pump fixing for collection sump | 2.67d | 2025-02-01 A | 2025-02-05 A | PG-12184 | 100% |  |
| PG-11908 |  | FPS Piping and Sprinkler Fixing works | 9.5d | 2025-02-22 A | 2025-03-06 A | PG-11907, PG-12187 FF+5d | 100% |  |
| PG-11909 |  | Electrical Conducting and Light Fixing works | 9.5d | 2025-02-25 A | 2025-03-10 A | PG-12187 FF+7d | 100% |  |
|  | 1.3.1.3.3.2 | **UBF** |  | 2025-02-17 | 2025-03-17 |  |  |  |
| PG-11910 |  | Piping for Rainwater and Soil lines in Ceiling | 20d | 2025-02-17 A | 2025-03-13 A | PG-12187 FF+10d | 100% |  |
| PG-11911 |  | FPS Piping and Sprinkler Fixing works | 9.67d | 2025-02-28 A | 2025-03-13 A | PG-11908 FF+5d | 100% |  |
| PG-11912 |  | Electrical Conducting and Light Fixing works | 9.5d | 2025-03-04 A | 2025-03-17 A | PG-11909 FF+5d | 100% |  |
|  | 1.3.1.3.3.3 | **Ground Floor** |  | 2024-12-23 | 2025-03-17 |  |  |  |
|  | 1.3.1.3.3.3.1 | **PHE Works** |  | 2024-12-23 | 2025-03-17 |  |  |  |
| PG-11913 |  | 1st Fix - Piping works | 12d | 2024-12-23 A | 2025-01-06 A | PG-11778 | 100% |  |
| PG-11914 |  | 2nd Fix - diverter fixing & Pressure testing | 10d | 2025-01-01 A | 2025-01-14 A | PG-11913 FF+6d | 100% |  |
| PG-11915 |  | Final Fix - CP & Sanitary fixtures | 9.67d | 2025-03-04 A | 2025-03-17 A | PG-12197, PG-12203 FF+6d | 100% |  |
|  | 1.3.1.3.3.3.2 | **Fire Fighting Works** |  | 2025-01-01 | 2025-03-15 |  |  |  |
| PG-11916 |  | 1st Fix - Piping and Shaft hydrant works | 11.67d | 2025-01-01 A | 2025-01-16 A | PG-12194 FF+6d | 100% |  |
| PG-11917 |  | 2nd Fix - Sprinkler fixing & Pressure testing | 9.67d | 2025-02-10 A | 2025-02-21 A | PG-12202 FF+6d | 100% |  |
| PG-11918 |  | Final Fix - Smoke & heat detectors, FHC , FAS Etc. | 9.67d | 2025-03-04 A | 2025-03-15 A | PG-11917, PG-12203 FF+6d | 100% |  |
|  | 1.3.1.3.3.3.3 | **Electrical Works** |  | 2024-12-23 | 2025-03-15 |  |  |  |
| PG-11919 |  | 1st Fix - GI wire pulling | 8d | 2024-12-23 A | 2025-01-01 A | PG-11778 | 100% |  |
| PG-11920 |  | 2nd Fix - Wiring works | 14.67d | 2025-02-03 A | 2025-02-20 A | PG-12202 FF+5d | 100% |  |
| PG-11921 |  | Final Fix - Electrical Fixtures | 5.67d | 2025-03-08 A | 2025-03-15 A | PG-11920, PG-12203 FF+6d | 100% |  |
|  | 1.3.1.3.3.4 | **Floor 1** |  | 2025-01-07 | 2025-04-03 |  |  |  |
|  | 1.3.1.3.3.4.1 | **PHE Works** |  | 2025-01-07 | 2025-04-03 |  |  |  |
| PG-11922 |  | 1st Fix - Piping works | 12d | 2025-01-07 A | 2025-01-22 A | PG-11783 | 100% |  |
| PG-11923 |  | 2nd Fix - diverter fixing & Pressure testing | 10d | 2025-01-17 A | 2025-01-30 A | PG-11922 FF+6d | 100% |  |
| PG-11924 |  | Final Fix - CP & Sanitary fixtures | 9.5d | 2025-03-21 A | 2025-04-03 A | PG-12211, PG-12217 FF+6d | 100% |  |
|  | 1.3.1.3.3.4.2 | **Fire Fighting Works** |  | 2025-01-17 | 2025-04-02 |  |  |  |
| PG-11925 |  | 1st Fix - Piping and Shaft hydrant works | 11.67d | 2025-01-17 A | 2025-01-31 A | PG-12208 FF+6d | 100% |  |
| PG-11926 |  | 2nd Fix - Sprinkler fixing & Pressure testing | 9.67d | 2025-02-26 A | 2025-03-10 A | PG-12216 FF+6d | 100% |  |
| PG-11927 |  | Final Fix - Smoke & heat detectors, FHC , FAS Etc. | 9.5d | 2025-03-21 A | 2025-04-02 A | PG-11926, PG-12217 FF+6d | 100% |  |
|  | 1.3.1.3.3.4.3 | **Electrical Works** |  | 2025-01-07 | 2025-04-02 |  |  |  |
| PG-11928 |  | 1st Fix - GI wire pulling | 8d | 2025-01-07 A | 2025-01-16 A | PG-11783 | 100% |  |
| PG-11929 |  | 2nd Fix - Wiring works | 14.67d | 2025-02-19 A | 2025-03-10 A | PG-12216 FF+5d | 100% |  |
| PG-11930 |  | Final Fix - Electrical Fixtures | 5.5d | 2025-03-26 A | 2025-04-02 A | PG-11929, PG-12217 FF+6d | 100% |  |
|  | 1.3.1.3.3.5 | **Floor 2** |  | 2025-01-22 | 2025-04-15 |  |  |  |
|  | 1.3.1.3.3.5.1 | **PHE Works** |  | 2025-01-22 | 2025-04-15 |  |  |  |
| PG-11931 |  | 1st Fix - Piping works | 12d | 2025-01-22 A | 2025-02-06 A | PG-11788 | 100% |  |
| PG-11932 |  | 2nd Fix - diverter fixing & Pressure testing | 10d | 2025-02-01 A | 2025-02-14 A | PG-11931 FF+6d | 100% |  |
| PG-11933 |  | Final Fix - CP & Sanitary fixtures | 10.5d | 2025-04-03 A | 2025-04-15 | PG-12225, PG-12231 FF+6d | 13% | 415.08d |
|  | 1.3.1.3.3.5.2 | **Fire Fighting Works** |  | 2025-02-01 | 2025-04-15 |  |  |  |
| PG-11934 |  | 1st Fix - Piping and Shaft hydrant works | 11.67d | 2025-02-01 A | 2025-02-17 A | PG-12222 FF+6d | 100% |  |
| PG-11935 |  | 2nd Fix - Sprinkler fixing & Pressure testing | 9.67d | 2025-03-13 A | 2025-03-26 A | PG-12230 FF+6d | 100% |  |
| PG-11936 |  | Final Fix - Smoke & heat detectors, FHC , FAS Etc. | 10.5d | 2025-04-03 A | 2025-04-15 | PG-11935, PG-12231 FF+6d | 12% | 414.95d |
|  | 1.3.1.3.3.5.3 | **Electrical Works** |  | 2025-01-22 | 2025-04-14 |  |  |  |
| PG-11937 |  | 1st Fix - GI wire pulling | 8d | 2025-01-22 A | 2025-02-01 A | PG-11788 | 100% |  |
| PG-11938 |  | 2nd Fix - Wiring works | 14.67d | 2025-03-06 A | 2025-03-24 A | PG-12230 FF+5d | 100% |  |
| PG-11939 |  | Final Fix - Electrical Fixtures | 6.5d | 2025-04-07 | 2025-04-14 | PG-11938, PG-12231 FF+6d |  | 415.24d |
|  | 1.3.1.3.3.6 | **Floor 3** |  | 2025-02-07 | 2025-05-02 |  |  |  |
|  | 1.3.1.3.3.6.1 | **PHE Works** |  | 2025-02-07 | 2025-05-02 |  |  |  |
| PG-11940 |  | 1st Fix - Piping works | 12d | 2025-02-07 A | 2025-02-22 A | PG-11793 | 100% |  |
| PG-11941 |  | 2nd Fix - diverter fixing & Pressure testing | 10d | 2025-02-18 A | 2025-03-04 A | PG-11940 FF+6d | 100% |  |
| PG-11942 |  | Final Fix - CP & Sanitary fixtures | 9.5d | 2025-04-22 | 2025-05-02 | PG-12239, PG-12245 FF+6d |  | 399.58d |
|  | 1.3.1.3.3.6.2 | **Fire Fighting Works** |  | 2025-02-18 | 2025-05-02 |  |  |  |
| PG-11943 |  | 1st Fix - Piping and Shaft hydrant works | 11.67d | 2025-02-18 A | 2025-03-04 A | PG-12236 FF+6d | 100% |  |
| PG-11944 |  | 2nd Fix - Sprinkler fixing & Pressure testing | 9.83d | 2025-03-31 A | 2025-04-10 | PG-12244 FF+6d | 47% | 408.83d |
| PG-11945 |  | Final Fix - Smoke & heat detectors, FHC , FAS Etc. | 9.5d | 2025-04-22 | 2025-05-02 | PG-11944, PG-12245 FF+6d |  | 399.58d |
|  | 1.3.1.3.3.6.3 | **Electrical Works** |  | 2025-02-07 | 2025-05-02 |  |  |  |
| PG-11946 |  | 1st Fix - GI wire pulling | 8d | 2025-02-07 A | 2025-02-17 A | PG-11793 | 100% |  |
| PG-11947 |  | 2nd Fix - Wiring works | 14.83d | 2025-03-24 A | 2025-04-09 | PG-12244 FF+5d | 69% | 413.83d |
| PG-11948 |  | Final Fix - Electrical Fixtures | 5.5d | 2025-04-26 | 2025-05-02 | PG-11947, PG-12245 FF+6d |  | 399.58d |
|  | 1.3.1.3.3.7 | **Floor 4** |  | 2025-02-24 | 2025-05-16 |  |  |  |
|  | 1.3.1.3.3.7.1 | **PHE Works** |  | 2025-02-24 | 2025-05-16 |  |  |  |
| PG-11949 |  | 1st Fix - Piping works | 12d | 2025-02-24 A | 2025-03-10 A | PG-11798 | 100% |  |
| PG-11950 |  | 2nd Fix - diverter fixing & Pressure testing | 10d | 2025-03-05 A | 2025-03-18 A | PG-11949 FF+6d | 100% |  |
| PG-11951 |  | Final Fix - CP & Sanitary fixtures | 8.5d | 2025-05-07 | 2025-05-16 | PG-12253, PG-12259 FF+6d |  | 386.83d |
|  | 1.3.1.3.3.7.2 | **Fire Fighting Works** |  | 2025-03-05 | 2025-05-16 |  |  |  |
| PG-11952 |  | 1st Fix - Piping and Shaft hydrant works | 11.67d | 2025-03-05 A | 2025-03-20 A | PG-12250 FF+6d | 100% |  |
| PG-11953 |  | 2nd Fix - Sprinkler fixing & Pressure testing | 10d | 2025-04-14 | 2025-04-25 | PG-12258 FF+6d |  | 396.67d |
| PG-11954 |  | Final Fix - Smoke & heat detectors, FHC , FAS Etc. | 8.5d | 2025-05-07 | 2025-05-16 | PG-11953, PG-12259 FF+6d |  | 386.83d |

| ID | WBS | Task | Duration | Start | Finish | Predecessors | Complete | Total float |
| --- | --- | --- | --- | --- | --- | --- | --- | --- |
|  | 1.3.1.3.3.7.3 | **Electrical Works** |  | 2025-02-24 | 2025-05-16 |  |  |  |
| PG-11955 |  | 1st Fix - GI wire pulling | 8d | 2025-02-24 A | 2025-03-04 A | PG-11798 | 100% |  |
| PG-11956 |  | 2nd Fix - Wiring works | 15d | 2025-04-07 | 2025-04-24 | PG-12258 FF+5d |  | 400.67d |
| PG-11957 |  | Final Fix - Electrical Fixtures | 5.5d | 2025-05-10 | 2025-05-16 | PG-11956, PG-12259 FF+6d |  | 386.83d |
|  | 1.3.1.3.3.8 | **Floor 5** |  | 2025-03-11 | 2025-08-12 |  |  |  |
|  | 1.3.1.3.3.8.1 | **PHE Works** |  | 2025-03-11 | 2025-08-12 |  |  |  |
| PG-11958 |  | 1st Fix - Piping works | 12d | 2025-03-11 A | 2025-03-26 A | PG-11803 | 100% |  |
| PG-11959 |  | 2nd Fix - diverter fixing & Pressure testing | 10d | 2025-03-21 A | 2025-04-02 A | PG-11958 FF+6d | 100% |  |
| PG-11960 |  | Final Fix - CP & Sanitary fixtures | 10.5d | 2025-07-30 | 2025-08-12 | PG-12267, PG-12273 FF+6d |  | 314.17d |
|  | 1.3.1.3.3.8.2 | **Fire Fighting Works** |  | 2025-03-20 | 2025-08-12 |  |  |  |
| PG-11961 |  | 1st Fix - Piping and Shaft hydrant works | 11.67d | 2025-03-20 A | 2025-04-03 A | PG-12264 FF+6d | 100% |  |
| PG-11962 |  | 2nd Fix - Sprinkler fixing & Pressure testing | 10d | 2025-07-09 | 2025-07-21 | PG-12272 FF+6d |  | 322.17d |
| PG-11963 |  | Final Fix - Smoke & heat detectors, FHC , FAS Etc. | 10.5d | 2025-07-30 | 2025-08-12 | PG-11962, PG-12273 FF+6d |  | 314.17d |
|  | 1.3.1.3.3.8.3 | **Electrical Works** |  | 2025-03-11 | 2025-08-12 |  |  |  |
| PG-11964 |  | 1st Fix - GI wire pulling | 7.67d | 2025-03-11 A | 2025-03-19 A | PG-11803 | 100% |  |
| PG-11965 |  | 2nd Fix - Wiring works | 12.83d | 2025-07-04 | 2025-07-19 | PG-12272 FF+5d |  | 327.17d |
| PG-11966 |  | Final Fix - Electrical Fixtures | 6.5d | 2025-08-04 | 2025-08-12 | PG-11965, PG-12273 FF+6d |  | 314.17d |
|  | 1.3.1.3.3.9 | **Floor 6** |  | 2025-03-27 | 2025-06-16 |  |  |  |
|  | 1.3.1.3.3.9.1 | **PHE Works** |  | 2025-03-27 | 2025-06-16 |  |  |  |
| PG-11967 |  | 1st Fix - Piping works | 12d | 2025-03-27 A | 2025-04-09 | PG-11808 | 59% | 362.93d |
| PG-11968 |  | 2nd Fix - diverter fixing & Pressure testing | 10d | 2025-04-04 | 2025-04-16 | PG-11967 FF+6d |  | 362.93d |
| PG-11969 |  | Final Fix - CP & Sanitary fixtures | 9.5d | 2025-06-04 | 2025-06-16 | PG-12281, PG-12287 FF+6d |  | 362.93d |
|  | 1.3.1.3.3.9.2 | **Fire Fighting Works** |  | 2025-04-04 | 2025-06-16 |  |  |  |
| PG-11970 |  | 1st Fix - Piping and Shaft hydrant works | 11.67d | 2025-04-04 | 2025-04-18 | PG-12278 FF+6d |  | 409.64d |
| PG-11971 |  | 2nd Fix - Sprinkler fixing & Pressure testing | 10d | 2025-05-12 | 2025-05-23 | PG-12286 FF+6d |  | 372.93d |
| PG-11972 |  | Final Fix - Smoke & heat detectors, FHC , FAS Etc. | 9.5d | 2025-06-04 | 2025-06-16 | PG-11971, PG-12287 FF+6d |  | 362.93d |
|  | 1.3.1.3.3.9.3 | **Electrical Works** |  | 2025-03-27 | 2025-06-16 |  |  |  |
| PG-11973 |  | 1st Fix - GI wire pulling | 7.67d | 2025-03-27 A | 2025-04-04 | PG-11808 | 89% | 409.64d |
| PG-11974 |  | 2nd Fix - Wiring works | 13.67d | 2025-05-07 | 2025-05-22 | PG-12286 FF+5d |  | 377.93d |
| PG-11975 |  | Final Fix - Electrical Fixtures | 5.5d | 2025-06-09 | 2025-06-16 | PG-11974, PG-12287 FF+6d |  | 362.93d |
|  | 1.3.1.3.3.10 | **Floor 7** |  | 2025-04-11 | 2025-06-30 |  |  |  |
|  | 1.3.1.3.3.10.1 | **PHE Works** |  | 2025-04-11 | 2025-06-30 |  |  |  |
| PG-11976 |  | 1st Fix - Piping works | 12d | 2025-04-11 | 2025-04-25 | PG-11813 |  | 351.5d |
| PG-11977 |  | 2nd Fix - diverter fixing & Pressure testing | 10d | 2025-04-21 | 2025-05-02 | PG-11976 FF+6d |  | 351.5d |
| PG-11978 |  | Final Fix - CP & Sanitary fixtures | 8.5d | 2025-06-20 | 2025-06-30 | PG-12295, PG-12301 FF+6d |  | 351.5d |
|  | 1.3.1.3.3.10.2 | **Fire Fighting Works** |  | 2025-04-21 | 2025-06-30 |  |  |  |
| PG-11979 |  | 1st Fix - Piping and Shaft hydrant works | 11.67d | 2025-04-21 | 2025-05-03 | PG-12292 FF+6d |  | 397.5d |
| PG-11980 |  | 2nd Fix - Sprinkler fixing & Pressure testing | 10d | 2025-05-28 | 2025-06-09 | PG-12300 FF+6d |  | 361.5d |
| PG-11981 |  | Final Fix - Smoke & heat detectors, FHC , FAS Etc. | 8.5d | 2025-06-20 | 2025-06-30 | PG-11980, PG-12301 FF+6d |  | 351.5d |
|  | 1.3.1.3.3.10.3 | **Electrical Works** |  | 2025-04-11 | 2025-06-30 |  |  |  |
| PG-11982 |  | 1st Fix - GI wire pulling | 7.67d | 2025-04-11 | 2025-04-19 | PG-11813 |  | 397.5d |
| PG-11983 |  | 2nd Fix - Wiring works | 14.67d | 2025-05-21 | 2025-06-07 | PG-12300 FF+5d |  | 365.5d |
| PG-11984 |  | Final Fix - Electrical Fixtures | 5.5d | 2025-06-24 | 2025-06-30 | PG-11983, PG-12301 FF+6d |  | 351.5d |
|  | 1.3.1.3.3.11 | **Floor 8** |  | 2025-04-26 | 2025-07-16 |  |  |  |
|  | 1.3.1.3.3.11.1 | **PHE Works** |  | 2025-04-26 | 2025-07-16 |  |  |  |
| PG-11985 |  | 1st Fix - Piping works | 12d | 2025-04-26 | 2025-05-10 | PG-11818 |  | 336.5d |
| PG-11986 |  | 2nd Fix - diverter fixing & Pressure testing | 10d | 2025-05-06 | 2025-05-17 | PG-11985 FF+6d |  | 336.5d |
| PG-11987 |  | Final Fix - CP & Sanitary fixtures | 9.5d | 2025-07-05 | 2025-07-16 | PG-12309, PG-12315 FF+6d |  | 336.5d |
|  | 1.3.1.3.3.11.2 | **Fire Fighting Works** |  | 2025-05-06 | 2025-07-16 |  |  |  |
| PG-11988 |  | 1st Fix - Piping and Shaft hydrant works | 11.67d | 2025-05-06 | 2025-05-19 | PG-12306 FF+6d |  | 382.5d |
| PG-11989 |  | 2nd Fix - Sprinkler fixing & Pressure testing | 10d | 2025-06-12 | 2025-06-24 | PG-12314 FF+6d |  | 346.5d |
| PG-11990 |  | Final Fix - Smoke & heat detectors, FHC , FAS Etc. | 9.5d | 2025-07-05 | 2025-07-16 | PG-11989, PG-12315 FF+6d |  | 336.5d |
|  | 1.3.1.3.3.11.3 | **Electrical Works** |  | 2025-04-26 | 2025-07-16 |  |  |  |
| PG-11991 |  | 1st Fix - GI wire pulling | 7.67d | 2025-04-26 | 2025-05-05 | PG-11818 |  | 382.5d |
| PG-11992 |  | 2nd Fix - Wiring works | 13.67d | 2025-06-06 | 2025-06-23 | PG-12314 FF+5d |  | 351.5d |
| PG-11993 |  | Final Fix - Electrical Fixtures | 5.5d | 2025-07-10 | 2025-07-16 | PG-11992, PG-12315 FF+6d |  | 336.5d |
|  | 1.3.1.3.3.12 | **Floor 9** |  | 2025-05-12 | 2025-07-29 |  |  |  |
|  | 1.3.1.3.3.12.1 | **PHE Works** |  | 2025-05-12 | 2025-07-29 |  |  |  |
| PG-11994 |  | 1st Fix - Piping works | 12d | 2025-05-12 | 2025-05-26 | PG-11823 |  | 325.33d |
| PG-11995 |  | 2nd Fix - diverter fixing & Pressure testing | 10d | 2025-05-21 | 2025-06-02 | PG-11994 FF+6d |  | 325.33d |
| PG-11996 |  | Final Fix - CP & Sanitary fixtures | 9.33d | 2025-07-18 | 2025-07-29 | PG-12323, PG-12329 FF+6d |  | 325.33d |
|  | 1.3.1.3.3.12.2 | **Fire Fighting Works** |  | 2025-05-21 | 2025-07-29 |  |  |  |
| PG-11997 |  | 1st Fix - Piping and Shaft hydrant works | 11.67d | 2025-05-21 | 2025-06-04 | PG-12320 FF+6d |  | 371.17d |
| PG-11998 |  | 2nd Fix - Sprinkler fixing & Pressure testing | 10d | 2025-06-27 | 2025-07-09 | PG-12328 FF+6d |  | 333.5d |
| PG-11999 |  | Final Fix - Smoke & heat detectors, FHC , FAS Etc. | 9.33d | 2025-07-18 | 2025-07-29 | PG-11998, PG-12329 FF+6d |  | 325.33d |
|  | 1.3.1.3.3.12.3 | **Electrical Works** |  | 2025-05-12 | 2025-07-29 |  |  |  |
| PG-12000 |  | 1st Fix - GI wire pulling | 7.83d | 2025-05-12 | 2025-05-21 | PG-11823 |  | 371.17d |
| PG-12001 |  | 2nd Fix - Wiring works | 13.67d | 2025-06-21 | 2025-07-08 | PG-12328 FF+5d |  | 338.33d |
| PG-12002 |  | Final Fix - Electrical Fixtures | 5.5d | 2025-07-23 | 2025-07-29 | PG-12001, PG-12329 FF+6d |  | 325.33d |
|  | 1.3.1.3.3.13 | **Floor 10** |  | 2025-05-27 | 2025-08-14 |  |  |  |

| ID | WBS | Task | Duration | Start | Finish | Predecessors | Total float |
| --- | --- | --- | --- | --- | --- | --- | --- |
|  | 1.3.1.3.3.13.1 | **PHE Works** |  | 2025-05-27 | 2025-08-14 |  |  |
| PG-12003 |  | 1st Fix - Piping works | 12d | 2025-05-27 | 2025-06-10 | PG-11828 | 311.17d |
| PG-12004 |  | 2nd Fix - diverter fixing & Pressure testing | 10d | 2025-06-05 | 2025-06-17 | PG-12003 FF+6d | 311.17d |
| PG-12005 |  | Final Fix - CP & Sanitary fixtures | 9.5d | 2025-08-04 | 2025-08-14 | PG-12337, PG-12343 FF+6d | 311.17d |
|  | 1.3.1.3.3.13.2 | **Fire Fighting Works** |  | 2025-06-05 | 2025-08-14 |  |  |
| PG-12006 |  | 1st Fix - Piping and Shaft hydrant works | 11.67d | 2025-06-05 | 2025-06-18 | PG-12334 FF+6d | 358.17d |
| PG-12007 |  | 2nd Fix - Sprinkler fixing & Pressure testing | 10d | 2025-07-12 | 2025-07-24 | PG-12342 FF+6d | 320.17d |
| PG-12008 |  | Final Fix - Smoke & heat detectors, FHC , FAS Etc. | 9.5d | 2025-08-04 | 2025-08-14 | PG-12007, PG-12343 FF+6d | 311.17d |
|  | 1.3.1.3.3.13.3 | **Electrical Works** |  | 2025-05-27 | 2025-08-14 |  |  |
| PG-12009 |  | 1st Fix - GI wire pulling | 7.67d | 2025-05-27 | 2025-06-04 | PG-11828 | 358.17d |
| PG-12010 |  | 2nd Fix - Wiring works | 12.83d | 2025-07-08 | 2025-07-23 | PG-12342 FF+5d | 325.17d |
| PG-12011 |  | Final Fix - Electrical Fixtures | 5.5d | 2025-08-08 | 2025-08-14 | PG-12010, PG-12343 FF+6d | 311.17d |
|  | 1.3.1.3.3.14 | **Floor 11** |  | 2025-06-09 | 2025-08-28 |  |  |
|  | 1.3.1.3.3.14.1 | **PHE Works** |  | 2025-06-09 | 2025-08-28 |  |  |
| PG-12012 |  | 1st Fix - Piping works | 12d | 2025-06-09 | 2025-06-23 | PG-11833 | 300.5d |
| PG-12013 |  | 2nd Fix - diverter fixing & Pressure testing | 10d | 2025-06-18 | 2025-06-30 | PG-12012 FF+6d | 300.5d |
| PG-12014 |  | Final Fix - CP & Sanitary fixtures | 9.5d | 2025-08-18 | 2025-08-28 | PG-12351, PG-12357 FF+6d | 300.5d |
|  | 1.3.1.3.3.14.2 | **Fire Fighting Works** |  | 2025-06-18 | 2025-08-28 |  |  |
| PG-12015 |  | 1st Fix - Piping and Shaft hydrant works | 11.67d | 2025-06-18 | 2025-07-02 | PG-12348 FF+6d | 347.17d |
| PG-12016 |  | 2nd Fix - Sprinkler fixing & Pressure testing | 10d | 2025-07-25 | 2025-08-06 | PG-12356 FF+6d | 309.5d |
| PG-12017 |  | Final Fix - Smoke & heat detectors, FHC , FAS Etc. | 9.5d | 2025-08-18 | 2025-08-28 | PG-12016, PG-12357 FF+6d | 300.5d |
|  | 1.3.1.3.3.14.3 | **Electrical Works** |  | 2025-06-09 | 2025-08-28 |  |  |
| PG-12018 |  | 1st Fix - GI wire pulling | 7.83d | 2025-06-09 | 2025-06-18 | PG-11833 | 347.17d |
| PG-12019 |  | 2nd Fix - Wiring works | 12.83d | 2025-07-21 | 2025-08-05 | PG-12356 FF+5d | 314.5d |
| PG-12020 |  | Final Fix - Electrical Fixtures | 5.5d | 2025-08-22 | 2025-08-28 | PG-12019, PG-12357 FF+6d | 300.5d |
|  | 1.3.1.3.3.15 | **Floor 12** |  | 2025-06-21 | 2025-09-13 |  |  |
|  | 1.3.1.3.3.15.1 | **PHE Works** |  | 2025-06-21 | 2025-09-13 |  |  |
| PG-12021 |  | 1st Fix - Piping works | 12d | 2025-06-21 | 2025-07-05 | PG-11838 | 287.17d |
| PG-12022 |  | 2nd Fix - diverter fixing & Pressure testing | 10d | 2025-07-01 | 2025-07-12 | PG-12021 FF+6d | 287.17d |
| PG-12023 |  | Final Fix - CP & Sanitary fixtures | 11.5d | 2025-09-01 | 2025-09-13 | PG-12365, PG-12371 FF+6d | 287.17d |
|  | 1.3.1.3.3.15.2 | **Fire Fighting Works** |  | 2025-07-01 | 2025-09-13 |  |  |
| PG-12024 |  | 1st Fix - Piping and Shaft hydrant works | 11.67d | 2025-07-01 | 2025-07-14 | PG-12362 FF+6d | 334.33d |
| PG-12025 |  | 2nd Fix - Sprinkler fixing & Pressure testing | 9.67d | 2025-08-07 | 2025-08-20 | PG-12370 FF+6d | 297.17d |
| PG-12026 |  | Final Fix - Smoke & heat detectors, FHC , FAS Etc. | 11.5d | 2025-09-01 | 2025-09-13 | PG-12025, PG-12371 FF+6d | 287.17d |
|  | 1.3.1.3.3.15.3 | **Electrical Works** |  | 2025-06-21 | 2025-09-13 |  |  |
| PG-12027 |  | 1st Fix - GI wire pulling | 7.67d | 2025-06-21 | 2025-06-30 | PG-11838 | 334.33d |
| PG-12028 |  | 2nd Fix - Wiring works | 13.5d | 2025-08-01 | 2025-08-19 | PG-12370 FF+5d | 304.17d |
| PG-12029 |  | Final Fix - Electrical Fixtures | 5.5d | 2025-09-08 | 2025-09-13 | PG-12028, PG-12371 FF+6d | 287.17d |
|  | 1.3.1.3.3.16 | **Floor 13** |  | 2025-07-04 | 2025-09-26 |  |  |
|  | 1.3.1.3.3.16.1 | **PHE Works** |  | 2025-07-04 | 2025-09-26 |  |  |
| PG-12030 |  | 1st Fix - Piping works | 12d | 2025-07-04 | 2025-07-18 | PG-11843 | 276.5d |
| PG-12031 |  | 2nd Fix - diverter fixing & Pressure testing | 10d | 2025-07-14 | 2025-07-25 | PG-12030 FF+6d | 276.5d |
| PG-12032 |  | Final Fix - CP & Sanitary fixtures | 10.5d | 2025-09-15 | 2025-09-26 | PG-12379, PG-12385 FF+6d | 276.5d |
|  | 1.3.1.3.3.16.2 | **Fire Fighting Works** |  | 2025-07-14 | 2025-09-26 |  |  |
| PG-12033 |  | 1st Fix - Piping and Shaft hydrant works | 11.67d | 2025-07-14 | 2025-07-26 | PG-12376 FF+6d | 323.5d |
| PG-12034 |  | 2nd Fix - Sprinkler fixing & Pressure testing | 9.67d | 2025-08-21 | 2025-09-02 | PG-12384 FF+6d | 287.5d |
| PG-12035 |  | Final Fix - Smoke & heat detectors, FHC , FAS Etc. | 10.5d | 2025-09-15 | 2025-09-26 | PG-12034, PG-12385 FF+6d | 276.5d |
|  | 1.3.1.3.3.16.3 | **Electrical Works** |  | 2025-07-04 | 2025-09-26 |  |  |
| PG-12036 |  | 1st Fix - GI wire pulling | 7.67d | 2025-07-04 | 2025-07-12 | PG-11843 | 323.5d |
| PG-12037 |  | 2nd Fix - Wiring works | 13.5d | 2025-08-14 | 2025-09-01 | PG-12384 FF+5d | 293.5d |
| PG-12038 |  | Final Fix - Electrical Fixtures | 5.5d | 2025-09-20 | 2025-09-26 | PG-12037, PG-12385 FF+6d | 276.5d |
|  | 1.3.1.3.3.17 | **Floor 14** |  | 2025-07-17 | 2025-10-08 |  |  |
|  | 1.3.1.3.3.17.1 | **PHE Works** |  | 2025-07-17 | 2025-10-08 |  |  |
| PG-12039 |  | 1st Fix - Piping works | 12d | 2025-07-17 | 2025-07-31 | PG-11848 | 267.5d |
| PG-12040 |  | 2nd Fix - diverter fixing & Pressure testing | 10d | 2025-07-26 | 2025-08-07 | PG-12039 FF+6d | 267.5d |
| PG-12041 |  | Final Fix - CP & Sanitary fixtures | 9.5d | 2025-09-26 | 2025-10-08 | PG-12393, PG-12399 FF+6d | 267.5d |
|  | 1.3.1.3.3.17.2 | **Fire Fighting Works** |  | 2025-07-26 | 2025-10-08 |  |  |
| PG-12042 |  | 1st Fix - Piping and Shaft hydrant works | 11.67d | 2025-07-26 | 2025-08-08 | PG-12390 FF+6d | 314.5d |
| PG-12043 |  | 2nd Fix - Sprinkler fixing & Pressure testing | 9.67d | 2025-09-03 | 2025-09-15 | PG-12398 FF+6d | 277.5d |
| PG-12044 |  | Final Fix - Smoke & heat detectors, FHC , FAS Etc. | 9.5d | 2025-09-26 | 2025-10-08 | PG-12043, PG-12399 FF+6d | 267.5d |
|  | 1.3.1.3.3.17.3 | **Electrical Works** |  | 2025-07-17 | 2025-10-08 |  |  |
| PG-12045 |  | 1st Fix - GI wire pulling | 7.67d | 2025-07-17 | 2025-07-25 | PG-11848 | 314.5d |
| PG-12046 |  | 2nd Fix - Wiring works | 14.5d | 2025-08-27 | 2025-09-13 | PG-12398 FF+5d | 282.5d |
| PG-12047 |  | Final Fix - Electrical Fixtures | 5.5d | 2025-10-01 | 2025-10-08 | PG-12046, PG-12399 FF+6d | 267.5d |
|  | 1.3.1.3.3.18 | **Floor 15** |  | 2025-07-30 | 2026-01-14 |  |  |
|  | 1.3.1.3.3.18.1 | **PHE Works** |  | 2025-07-30 | 2026-01-14 |  |  |
| PG-12048 |  | 1st Fix - Piping works | 12d | 2025-07-30 | 2025-08-13 | PG-11853 | 113.5d |
| PG-12049 |  | 2nd Fix - diverter fixing & Pressure testing | 10d | 2025-08-08 | 2025-08-21 | PG-12048 FF+6d | 113.5d |
| PG-12050 |  | Final Fix - CP & Sanitary fixtures | 10.5d | 2026-01-02 | 2026-01-14 | PG-12407, PG-12413 FF+6d | 183.17d |
|  | 1.3.1.3.3.18.2 | **Fire Fighting Works** |  | 2025-08-08 | 2026-01-14 |  |  |

| ID | WBS | Task | Duration | Start | Finish | Predecessors | Total float |
| --- | --- | --- | --- | --- | --- | --- | --- |
| PG-12051 |  | 1st Fix - Piping and Shaft hydrant works | 11.67d | 2025-08-08 | 2025-08-22 | PG-12404 FF+6d | 303.33d |
| PG-12052 |  | 2nd Fix - Sprinkler fixing & Pressure testing | 9.67d | 2025-12-11 | 2025-12-23 | PG-12412 FF+6d | 192.17d |
| PG-12053 |  | Final Fix - Smoke & heat detectors, FHC , FAS Etc. | 10.5d | 2026-01-02 | 2026-01-14 | PG-12052, PG-12413 FF+6d | 183.17d |
|  | 1.3.1.3.3.18.3 | **Electrical Works** |  | 2025-07-30 | 2026-01-14 |  |  |
| PG-12054 |  | 1st Fix - GI wire pulling | 7.67d | 2025-07-30 | 2025-08-07 | PG-11853 | 303.33d |
| PG-12055 |  | 2nd Fix - Wiring works | 13.5d | 2025-12-05 | 2025-12-22 | PG-12412 FF+5d | 198.17d |
| PG-12056 |  | Final Fix - Electrical Fixtures | 5.5d | 2026-01-08 | 2026-01-14 | PG-12055, PG-12413 FF+6d | 183.17d |
|  | 1.3.1.3.3.19 | **Floor 16** |  | 2025-08-12 | 2025-11-04 |  |  |
|  | 1.3.1.3.3.19.1 | **PHE Works** |  | 2025-08-12 | 2025-11-04 |  |  |
| PG-12057 |  | 1st Fix - Piping works | 12d | 2025-08-12 | 2025-08-27 | PG-11858 | 245.33d |
| PG-12058 |  | 2nd Fix - diverter fixing & Pressure testing | 10d | 2025-08-22 | 2025-09-03 | PG-12057 FF+6d | 245.33d |
| PG-12059 |  | Final Fix - CP & Sanitary fixtures | 10.67d | 2025-10-22 | 2025-11-04 | PG-12421, PG-12427 FF+6d | 245.33d |
|  | 1.3.1.3.3.19.2 | **Fire Fighting Works** |  | 2025-08-22 | 2025-11-04 |  |  |
| PG-12060 |  | 1st Fix - Piping and Shaft hydrant works | 11.67d | 2025-08-22 | 2025-09-04 | PG-12418 FF+6d | 292.5d |
| PG-12061 |  | 2nd Fix - Sprinkler fixing & Pressure testing | 9.83d | 2025-09-29 | 2025-10-11 | PG-12426 FF+6d | 254.33d |
| PG-12062 |  | Final Fix - Smoke & heat detectors, FHC , FAS Etc. | 10.67d | 2025-10-22 | 2025-11-04 | PG-12061, PG-12427 FF+6d | 245.33d |
|  | 1.3.1.3.3.19.3 | **Electrical Works** |  | 2025-08-12 | 2025-11-04 |  |  |
| PG-12063 |  | 1st Fix - GI wire pulling | 7.67d | 2025-08-12 | 2025-08-21 | PG-11858 | 292.5d |
| PG-12064 |  | 2nd Fix - Wiring works | 12.5d | 2025-09-24 | 2025-10-10 | PG-12426 FF+5d | 260.33d |
| PG-12065 |  | Final Fix - Electrical Fixtures | 5.67d | 2025-10-28 | 2025-11-04 | PG-12064, PG-12427 FF+6d | 245.33d |
|  | 1.3.1.3.3.20 | **Floor 17** |  | 2025-08-26 | 2025-11-15 |  |  |
|  | 1.3.1.3.3.20.1 | **PHE Works** |  | 2025-08-26 | 2025-11-15 |  |  |
| PG-12066 |  | 1st Fix - Piping works | 12d | 2025-08-26 | 2025-09-09 | PG-11863 | 234.33d |
| PG-12067 |  | 2nd Fix - diverter fixing & Pressure testing | 10d | 2025-09-04 | 2025-09-16 | PG-12066 FF+6d | 234.33d |
| PG-12068 |  | Final Fix - CP & Sanitary fixtures | 10.67d | 2025-11-04 | 2025-11-15 | PG-12435, PG-12441 FF+6d | 234.33d |
|  | 1.3.1.3.3.20.2 | **Fire Fighting Works** |  | 2025-09-04 | 2025-11-15 |  |  |
| PG-12069 |  | 1st Fix - Piping and Shaft hydrant works | 11.67d | 2025-09-04 | 2025-09-17 | PG-12432 FF+6d | 282.33d |
| PG-12070 |  | 2nd Fix - Sprinkler fixing & Pressure testing | 10d | 2025-10-13 | 2025-10-24 | PG-12440 FF+6d | 242.33d |
| PG-12071 |  | Final Fix - Smoke & heat detectors, FHC , FAS Etc. | 10.67d | 2025-11-04 | 2025-11-15 | PG-12070, PG-12441 FF+6d | 234.33d |
|  | 1.3.1.3.3.20.3 | **Electrical Works** |  | 2025-08-26 | 2025-11-15 |  |  |
| PG-12072 |  | 1st Fix - GI wire pulling | 7.67d | 2025-08-26 | 2025-09-03 | PG-11863 | 282.33d |
| PG-12073 |  | 2nd Fix - Wiring works | 13.5d | 2025-10-07 | 2025-10-23 | PG-12440 FF+5d | 248.33d |
| PG-12074 |  | Final Fix - Electrical Fixtures | 5.67d | 2025-11-10 | 2025-11-15 | PG-12073, PG-12441 FF+6d | 234.33d |
|  | 1.3.1.3.3.21 | **Floor 18** |  | 2025-09-08 | 2025-11-28 |  |  |
|  | 1.3.1.3.3.21.1 | **PHE Works** |  | 2025-09-08 | 2025-11-28 |  |  |
| PG-12075 |  | 1st Fix - Piping works | 12d | 2025-09-08 | 2025-09-22 | PG-11868 | 223.33d |
| PG-12076 |  | 2nd Fix - diverter fixing & Pressure testing | 10d | 2025-09-17 | 2025-09-29 | PG-12075 FF+6d | 223.33d |
| PG-12077 |  | Final Fix - CP & Sanitary fixtures | 10.67d | 2025-11-17 | 2025-11-28 | PG-12449, PG-12455 FF+6d | 223.33d |
|  | 1.3.1.3.3.21.2 | **Fire Fighting Works** |  | 2025-09-17 | 2025-11-28 |  |  |
| PG-12078 |  | 1st Fix - Piping and Shaft hydrant works | 11.67d | 2025-09-17 | 2025-09-30 | PG-12446 FF+6d | 271.33d |
| PG-12079 |  | 2nd Fix - Sprinkler fixing & Pressure testing | 10d | 2025-10-25 | 2025-11-07 | PG-12454 FF+6d | 231.33d |
| PG-12080 |  | Final Fix - Smoke & heat detectors, FHC , FAS Etc. | 10.67d | 2025-11-17 | 2025-11-28 | PG-12079, PG-12455 FF+6d | 223.33d |
|  | 1.3.1.3.3.21.3 | **Electrical Works** |  | 2025-09-08 | 2025-11-28 |  |  |
| PG-12081 |  | 1st Fix - GI wire pulling | 7.67d | 2025-09-08 | 2025-09-16 | PG-11868 | 271.33d |
| PG-12082 |  | 2nd Fix - Wiring works | 13.5d | 2025-10-20 | 2025-11-06 | PG-12454 FF+5d | 237.33d |
| PG-12083 |  | Final Fix - Electrical Fixtures | 5.67d | 2025-11-22 | 2025-11-28 | PG-12082, PG-12455 FF+6d | 223.33d |
|  | 1.3.1.3.3.22 | **Floor 19** |  | 2025-09-20 | 2025-12-11 |  |  |
|  | 1.3.1.3.3.22.1 | **PHE Works** |  | 2025-09-20 | 2025-12-11 |  |  |
| PG-12084 |  | 1st Fix - Piping works | 12d | 2025-09-20 | 2025-10-06 | PG-11873 | 212.33d |
| PG-12085 |  | 2nd Fix - diverter fixing & Pressure testing | 10d | 2025-09-30 | 2025-10-13 | PG-12084 FF+6d | 212.33d |
| PG-12086 |  | Final Fix - CP & Sanitary fixtures | 10.67d | 2025-11-29 | 2025-12-11 | PG-12463, PG-12469 FF+6d | 212.33d |
|  | 1.3.1.3.3.22.2 | **Fire Fighting Works** |  | 2025-09-30 | 2025-12-11 |  |  |
| PG-12087 |  | 1st Fix - Piping and Shaft hydrant works | 11.67d | 2025-09-30 | 2025-10-14 | PG-12460 FF+6d | 260.33d |
| PG-12088 |  | 2nd Fix - Sprinkler fixing & Pressure testing | 10d | 2025-11-08 | 2025-11-20 | PG-12468 FF+6d | 220.33d |
| PG-12089 |  | Final Fix - Smoke & heat detectors, FHC , FAS Etc. | 10.67d | 2025-11-29 | 2025-12-11 | PG-12088, PG-12469 FF+6d | 212.33d |
|  | 1.3.1.3.3.22.3 | **Electrical Works** |  | 2025-09-20 | 2025-12-11 |  |  |
| PG-12090 |  | 1st Fix - GI wire pulling | 7.67d | 2025-09-20 | 2025-09-29 | PG-11873 | 260.33d |
| PG-12091 |  | 2nd Fix - Wiring works | 13.5d | 2025-11-03 | 2025-11-19 | PG-12468 FF+5d | 226.33d |
| PG-12092 |  | Final Fix - Electrical Fixtures | 5.67d | 2025-12-05 | 2025-12-11 | PG-12091, PG-12469 FF+6d | 212.33d |
|  | 1.3.1.3.3.23 | **Floor 20** |  | 2025-10-04 | 2025-12-25 |  |  |
|  | 1.3.1.3.3.23.1 | **PHE Works** |  | 2025-10-04 | 2025-12-25 |  |  |
| PG-12093 |  | 1st Fix - Piping works | 12d | 2025-10-04 | 2025-10-18 | PG-11878 | 200.67d |
| PG-12094 |  | 2nd Fix - diverter fixing & Pressure testing | 10d | 2025-10-14 | 2025-10-25 | PG-12093 FF+6d | 200.67d |
| PG-12095 |  | Final Fix - CP & Sanitary fixtures | 9.33d | 2025-12-15 | 2025-12-25 | PG-12477, PG-12483 FF+6d | 200.67d |
|  | 1.3.1.3.3.23.2 | **Fire Fighting Works** |  | 2025-10-14 | 2025-12-25 |  |  |
| PG-12096 |  | 1st Fix - Piping and Shaft hydrant works | 11.67d | 2025-10-14 | 2025-10-28 | PG-12474 FF+6d | 248.5d |
| PG-12097 |  | 2nd Fix - Sprinkler fixing & Pressure testing | 9.67d | 2025-11-21 | 2025-12-03 | PG-12482 FF+6d | 210.67d |
| PG-12098 |  | Final Fix - Smoke & heat detectors, FHC , FAS Etc. | 9.33d | 2025-12-15 | 2025-12-25 | PG-12097, PG-12483 FF+6d | 200.67d |
|  | 1.3.1.3.3.23.3 | **Electrical Works** |  | 2025-10-04 | 2025-12-25 |  |  |
| PG-12099 |  | 1st Fix - GI wire pulling | 7.83d | 2025-10-04 | 2025-10-14 | PG-11878 | 248.5d |

| ID | WBS | Task | Duration | Start | Finish | Predecessors | Total float |
| --- | --- | --- | --- | --- | --- | --- | --- |
| PG-12100 |  | 2nd Fix - Wiring works | 13.67d | 2025-11-15 | 2025-12-02 | PG-12482 FF+5d | 215.67d |
| PG-12101 |  | Final Fix - Electrical Fixtures | 5.33d | 2025-12-19 | 2025-12-25 | PG-12100, PG-12483 FF+6d | 200.67d |
|  | 1.3.1.3.3.24 | **Floor 21** |  | 2025-10-17 | 2026-01-07 |  |  |
|  | 1.3.1.3.3.24.1 | **PHE Works** |  | 2025-10-17 | 2026-01-07 |  |  |
| PG-12102 |  | 1st Fix - Piping works | 11.67d | 2025-10-17 | 2025-10-30 | PG-11883 | 189.83d |
| PG-12103 |  | 2nd Fix - diverter fixing & Pressure testing | 8.67d | 2025-10-28 | 2025-11-07 | PG-12102 FF+6d | 189.83d |
| PG-12104 |  | Final Fix - CP & Sanitary fixtures | 10.5d | 2025-12-26 | 2026-01-07 | PG-12491, PG-12497 FF+6d | 189.83d |
|  | 1.3.1.3.3.24.2 | **Fire Fighting Works** |  | 2025-10-27 | 2026-01-07 |  |  |
| PG-12105 |  | 1st Fix - Piping and Shaft hydrant works | 11.67d | 2025-10-27 | 2025-11-11 | PG-12488 FF+6d | 237.33d |
| PG-12106 |  | 2nd Fix - Sprinkler fixing & Pressure testing | 9.5d | 2025-12-04 | 2025-12-15 | PG-12496 FF+6d | 198.83d |
| PG-12107 |  | Final Fix - Smoke & heat detectors, FHC , FAS Etc. | 10.5d | 2025-12-26 | 2026-01-07 | PG-12497 FF+6d, PG-12106 | 189.83d |
|  | 1.3.1.3.3.24.3 | **Electrical Works** |  | 2025-10-17 | 2025-12-25 |  |  |
| PG-12108 |  | 1st Fix - GI wire pulling | 7.83d | 2025-10-17 | 2025-10-27 | PG-11883 | 237.33d |
| PG-12109 |  | 2nd Fix - Wiring works | 13.67d | 2025-11-15 | 2025-12-02 | PG-12482 FF+5d | 215.67d |
| PG-12110 |  | Final Fix - Electrical Fixtures | 5.33d | 2025-12-19 | 2025-12-25 | PG-12109, PG-12483 FF+6d | 200.67d |
|  | 1.3.1.3.3.25 | **Floor 22** |  | 2025-10-30 | 2026-01-20 |  |  |
|  | 1.3.1.3.3.25.1 | **PHE Works** |  | 2025-10-30 | 2026-01-20 |  |  |
| PG-12111 |  | 1st Fix - Piping works | 11.67d | 2025-10-30 | 2025-11-13 | PG-11888 | 178.83d |
| PG-12112 |  | 2nd Fix - diverter fixing & Pressure testing | 8.67d | 2025-11-11 | 2025-11-20 | PG-12111 FF+6d | 178.83d |
| PG-12113 |  | Final Fix - CP & Sanitary fixtures | 10.5d | 2026-01-08 | 2026-01-20 | PG-12505, PG-12511 FF+6d | 178.83d |
|  | 1.3.1.3.3.25.2 | **Fire Fighting Works** |  | 2025-11-10 | 2026-01-20 |  |  |
| PG-12114 |  | 1st Fix - Piping and Shaft hydrant works | 11.67d | 2025-11-10 | 2025-11-24 | PG-12502 FF+6d | 226.33d |
| PG-12115 |  | 2nd Fix - Sprinkler fixing & Pressure testing | 9.5d | 2025-12-17 | 2025-12-27 | PG-12510 FF+6d | 187.83d |
| PG-12116 |  | Final Fix - Smoke & heat detectors, FHC , FAS Etc. | 10.5d | 2026-01-08 | 2026-01-20 | PG-12115, PG-12511 FF+6d | 178.83d |
|  | 1.3.1.3.3.25.3 | **Electrical Works** |  | 2025-10-30 | 2026-01-20 |  |  |
| PG-12117 |  | 1st Fix - GI wire pulling | 7.83d | 2025-10-30 | 2025-11-10 | PG-11888 | 226.33d |
| PG-12118 |  | 2nd Fix - Wiring works | 13.5d | 2025-12-11 | 2025-12-26 | PG-12510 FF+5d | 193.83d |
| PG-12119 |  | Final Fix - Electrical Fixtures | 5.5d | 2026-01-14 | 2026-01-20 | PG-12118, PG-12511 FF+6d | 178.83d |
|  | 1.3.1.3.3.26 | **Floor 23** |  | 2025-11-13 | 2026-02-03 |  |  |
|  | 1.3.1.3.3.26.1 | **PHE Works** |  | 2025-11-13 | 2026-02-03 |  |  |
| PG-12120 |  | 1st Fix - Piping works | 10.67d | 2025-11-13 | 2025-11-25 | PG-11893 | 168.17d |
| PG-12121 |  | 2nd Fix - diverter fixing & Pressure testing | 9.67d | 2025-11-21 | 2025-12-02 | PG-12120 FF+6d | 168.17d |
| PG-12122 |  | Final Fix - CP & Sanitary fixtures | 9.33d | 2026-01-21 | 2026-02-03 | PG-12519, PG-12525 FF+6d | 168.17d |
|  | 1.3.1.3.3.26.2 | **Fire Fighting Works** |  | 2025-11-21 | 2026-02-03 |  |  |
| PG-12123 |  | 1st Fix - Piping and Shaft hydrant works | 11.83d | 2025-11-21 | 2025-12-04 | PG-12516 FF+6d | 215.67d |
| PG-12124 |  | 2nd Fix - Sprinkler fixing & Pressure testing | 10.67d | 2025-12-27 | 2026-01-08 | PG-12524 FF+6d | 179.17d |
| PG-12125 |  | Final Fix - Smoke & heat detectors, FHC , FAS Etc. | 9.33d | 2026-01-21 | 2026-02-03 | PG-12124, PG-12525 FF+6d | 168.17d |
|  | 1.3.1.3.3.26.3 | **Electrical Works** |  | 2025-11-13 | 2026-02-03 |  |  |
| PG-12126 |  | 1st Fix - GI wire pulling | 6.83d | 2025-11-13 | 2025-11-20 | PG-11893 | 215.67d |
| PG-12127 |  | 2nd Fix - Wiring works | 14.67d | 2025-12-22 | 2026-01-07 | PG-12524 FF+5d | 184.17d |
| PG-12128 |  | Final Fix - Electrical Fixtures | 5.33d | 2026-01-27 | 2026-02-03 | PG-12127, PG-12525 FF+6d | 168.17d |
|  | 1.3.1.3.3.27 | **Floor 24** |  | 2025-11-26 | 2026-02-16 |  |  |
|  | 1.3.1.3.3.27.1 | **PHE Works** |  | 2025-11-26 | 2026-02-16 |  |  |
| PG-12129 |  | 1st Fix - Piping works | 11.67d | 2025-11-26 | 2025-12-09 | PG-11898 | 0d |
| PG-12130 |  | 2nd Fix - diverter fixing & Pressure testing | 9.67d | 2025-12-05 | 2025-12-16 | PG-12129 FF+6d | 156.83d |
| PG-12131 |  | Final Fix - CP & Sanitary fixtures | 9.67d | 2026-02-04 | 2026-02-16 | PG-12533, PG-12539 FF+6d | 156.83d |
|  | 1.3.1.3.3.27.2 | **Fire Fighting Works** |  | 2025-12-05 | 2026-02-16 |  |  |
| PG-12132 |  | 1st Fix - Piping and Shaft hydrant works | 11.33d | 2025-12-05 | 2025-12-18 | PG-12530 FF+6d | 204.33d |
| PG-12133 |  | 2nd Fix - Sprinkler fixing & Pressure testing | 10.33d | 2026-01-10 | 2026-01-22 | PG-12538 FF+6d | 166.83d |
| PG-12134 |  | Final Fix - Smoke & heat detectors, FHC , FAS Etc. | 9.67d | 2026-02-04 | 2026-02-16 | PG-12133, PG-12539 FF+6d | 156.83d |
|  | 1.3.1.3.3.27.3 | **Electrical Works** |  | 2025-11-26 | 2026-02-16 |  |  |
| PG-12135 |  | 1st Fix - GI wire pulling | 7.83d | 2025-11-26 | 2025-12-04 | PG-11898 | 204.33d |
| PG-12136 |  | 2nd Fix - Wiring works | 14.33d | 2026-01-05 | 2026-01-21 | PG-12538 FF+5d | 171.83d |
| PG-12137 |  | Final Fix - Electrical Fixtures | 5.67d | 2026-02-09 | 2026-02-16 | PG-12136, PG-12539 FF+6d | 156.83d |
|  | 1.3.1.3.3.28 | **Floor 25** |  | 2025-12-17 | 2026-03-09 |  |  |
|  | 1.3.1.3.3.28.1 | **PHE Works** |  | 2025-12-17 | 2026-03-09 |  |  |
| PG-12138 |  | 1st Fix - Piping works | 10.83d | 2025-12-17 | 2025-12-30 | PG-12129 FS+7d | 64.17d |
| PG-12139 |  | 2nd Fix - diverter fixing & Pressure testing | 8.67d | 2025-12-27 | 2026-01-06 | PG-12138 FF+6d | 89.17d |
| PG-12140 |  | Final Fix - CP & Sanitary fixtures | 9.33d | 2026-02-26 | 2026-03-09 | PG-12547, PG-12553 FF+6d | 137.67d |
|  | 1.3.1.3.3.28.2 | **Fire Fighting Works** |  | 2025-12-27 | 2026-03-09 |  |  |
| PG-12141 |  | 1st Fix - Piping and Shaft hydrant works | 11.5d | 2025-12-27 | 2026-01-09 | PG-12544 FF+6d | 100.33d |
| PG-12142 |  | 2nd Fix - Sprinkler fixing & Pressure testing | 9.33d | 2026-02-03 | 2026-02-13 | PG-12552 FF+6d | 148.33d |
| PG-12143 |  | Final Fix - Smoke & heat detectors, FHC , FAS Etc. | 9.33d | 2026-02-26 | 2026-03-09 | PG-12142, PG-12553 FF+6d | 137.67d |
|  | 1.3.1.3.3.28.3 | **Electrical Works** |  | 2025-12-17 | 2026-03-09 |  |  |
| PG-12144 |  | 1st Fix - GI wire pulling | 7.67d | 2025-12-17 | 2025-12-26 | PG-12129 FS+7d | 0d |
| PG-12145 |  | 2nd Fix - Wiring works | 15.33d | 2026-01-24 | 2026-02-12 | PG-12552 FF+5d | 153.33d |
| PG-12146 |  | Final Fix - Electrical Fixtures | 5.33d | 2026-03-03 | 2026-03-09 | PG-12145, PG-12553 FF+6d | 137.67d |
|  | 1.3.1.3.3.29 | **Floor 26** |  | 2026-01-07 | 2026-03-30 |  |  |
|  | 1.3.1.3.3.29.1 | **PHE Works** |  | 2026-01-07 | 2026-03-30 |  |  |
| PG-12147 |  | 1st Fix - Piping works | 11.83d | 2026-01-07 | 2026-01-21 | PG-12138 FS+7d | 64.17d |

| ID | WBS | Task | Duration | Start | Finish | Predecessors | Complete | Total float | Constraint |
| --- | --- | --- | --- | --- | --- | --- | --- | --- | --- |
| PG-12148 |  | 2nd Fix - diverter fixing & Pressure testing | 10.67d | 2026-01-15 | 2026-01-29 | PG-12147 FF+6d |  | 118.33d |  |
| PG-12149 |  | Final Fix - CP & Sanitary fixtures | 8.33d | 2026-03-20 | 2026-03-30 | PG-12561, PG-12567 FF+6d |  | 118.33d |  |
|  | 1.3.1.3.3.29.2 | **Fire Fighting Works** |  | 2026-01-16 | 2026-03-30 |  |  |  |  |
| PG-12150 |  | 1st Fix - Piping and Shaft hydrant works | 11.67d | 2026-01-16 | 2026-01-31 | PG-12558 FF+6d |  | 167.5d |  |
| PG-12151 |  | 2nd Fix - Sprinkler fixing & Pressure testing | 10.33d | 2026-02-24 | 2026-03-07 | PG-12566 FF+6d |  | 129.33d |  |
| PG-12152 |  | Final Fix - Smoke & heat detectors, FHC , FAS Etc. | 8.33d | 2026-03-20 | 2026-03-30 | PG-12151, PG-12567 FF+6d |  | 118.33d |  |
|  | 1.3.1.3.3.29.3 | **Electrical Works** |  | 2026-01-07 | 2026-03-30 |  |  |  |  |
| PG-12153 |  | 1st Fix - GI wire pulling | 7.67d | 2026-01-07 | 2026-01-16 | PG-12138 FS+7d |  | 167.5d |  |
| PG-12154 |  | 2nd Fix - Wiring works | 15.33d | 2026-02-17 | 2026-03-06 | PG-12566 FF+5d |  | 133.33d |  |
| PG-12155 |  | Final Fix - Electrical Fixtures | 5.33d | 2026-03-24 | 2026-03-30 | PG-12154, PG-12567 FF+6d |  | 118.33d |  |
|  | 1.3.1.3.3.30 | **Floor 27** |  | 2026-01-30 | 2026-04-21 |  |  |  |  |
|  | 1.3.1.3.3.30.1 | **PHE Works** |  | 2026-01-30 | 2026-04-21 |  |  |  |  |
| PG-12156 |  | 1st Fix - Piping works | 11.67d | 2026-01-30 | 2026-02-13 | PG-12147 FS+7d |  | 64.17d |  |
| PG-12157 |  | 2nd Fix - diverter fixing & Pressure testing | 9.67d | 2026-02-09 | 2026-02-20 | PG-12156 FF+6d |  | 100.5d |  |
| PG-12158 |  | Final Fix - CP & Sanitary fixtures | 10.67d | 2026-04-09 | 2026-04-21 | PG-12575, PG-12581 FF+6d |  | 100.5d |  |
|  | 1.3.1.3.3.30.2 | **Fire Fighting Works** |  | 2026-02-09 | 2026-04-21 |  |  |  |  |
| PG-12159 |  | 1st Fix - Piping and Shaft hydrant works | 11.67d | 2026-02-09 | 2026-02-23 | PG-12572 FF+6d |  | 149.17d |  |
| PG-12160 |  | 2nd Fix - Sprinkler fixing & Pressure testing | 8.5d | 2026-03-19 | 2026-03-30 | PG-12580 FF+6d |  | 109.5d |  |
| PG-12161 |  | Final Fix - Smoke & heat detectors, FHC , FAS Etc. | 10.67d | 2026-04-09 | 2026-04-21 | PG-12160, PG-12581 FF+6d |  | 100.5d |  |
|  | 1.3.1.3.3.30.3 | **Electrical Works** |  | 2026-01-30 | 2026-04-21 |  |  |  |  |
| PG-12162 |  | 1st Fix - GI wire pulling | 7.67d | 2026-01-30 | 2026-02-09 | PG-12147 FS+7d |  | 149.17d |  |
| PG-12163 |  | 2nd Fix - Wiring works | 13.5d | 2026-03-12 | 2026-03-28 | PG-12580 FF+5d |  | 115.5d |  |
| PG-12164 |  | Final Fix - Electrical Fixtures | 5.67d | 2026-04-15 | 2026-04-21 | PG-12163, PG-12581 FF+6d |  | 100.5d |  |
|  | 1.3.1.3.3.31 | **Floor 28** |  | 2026-02-21 | 2026-05-13 |  |  |  |  |
|  | 1.3.1.3.3.31.1 | **PHE Works** |  | 2026-02-21 | 2026-05-13 |  |  |  |  |
| PG-12165 |  | 1st Fix - Piping works | 11.67d | 2026-02-21 | 2026-03-06 | PG-12156 FS+7d |  | 64.17d |  |
| PG-12166 |  | 2nd Fix - diverter fixing & Pressure testing | 9.67d | 2026-03-03 | 2026-03-13 | PG-12165 FF+6d |  | 82.5d |  |
| PG-12167 |  | Final Fix - CP & Sanitary fixtures | 9.67d | 2026-05-02 | 2026-05-13 | PG-12589, PG-12595 FF+6d |  | 82.5d |  |
|  | 1.3.1.3.3.31.2 | **Fire Fighting Works** |  | 2026-03-03 | 2026-05-13 |  |  |  |  |
| PG-12168 |  | 1st Fix - Piping and Shaft hydrant works | 11.67d | 2026-03-03 | 2026-03-16 | PG-12586 FF+6d |  | 130.17d |  |
| PG-12169 |  | 2nd Fix - Sprinkler fixing & Pressure testing | 9.5d | 2026-04-09 | 2026-04-20 | PG-12594 FF+6d |  | 92.83d |  |
| PG-12170 |  | Final Fix - Smoke & heat detectors, FHC , FAS Etc. | 9.67d | 2026-05-02 | 2026-05-13 | PG-12169, PG-12595 FF+6d |  | 82.5d |  |
|  | 1.3.1.3.3.31.3 | **Electrical Works** |  | 2026-02-21 | 2026-05-13 |  |  |  |  |
| PG-12171 |  | 1st Fix - GI wire pulling | 7.67d | 2026-02-21 | 2026-03-02 | PG-12156 FS+7d |  | 130.17d |  |
| PG-12172 |  | 2nd Fix - Wiring works | 14.5d | 2026-04-02 | 2026-04-18 | PG-12594 FF+5d |  | 97.83d |  |
| PG-12173 |  | Final Fix - Electrical Fixtures | 5.67d | 2026-05-07 | 2026-05-13 | PG-12172, PG-12595 FF+6d |  | 82.5d |  |
|  | 1.3.1.3.3.32 | **Floor 29** |  | 2026-03-14 | 2026-06-04 |  |  |  |  |
|  | 1.3.1.3.3.32.1 | **PHE Works** |  | 2026-03-14 | 2026-06-04 |  |  |  |  |
| PG-12174 |  | 1st Fix - Piping works | 11.67d | 2026-03-14 | 2026-03-28 | PG-12165 FS+7d |  | 64.17d |  |
| PG-12175 |  | 2nd Fix - diverter fixing & Pressure testing | 9.67d | 2026-03-24 | 2026-04-04 | PG-12174 FF+6d |  | 64.17d |  |
| PG-12176 |  | Final Fix - CP & Sanitary fixtures | 9.67d | 2026-05-23 | 2026-06-04 | PG-12603, PG-12609 FF+6d |  | 64.17d |  |
|  | 1.3.1.3.3.32.2 | **Fire Fighting Works** |  | 2026-03-24 | 2026-06-04 |  |  |  |  |
| PG-12177 |  | 1st Fix - Piping and Shaft hydrant works | 12.5d | 2026-03-24 | 2026-04-07 | PG-12600 FF+6d |  | 105.83d |  |
| PG-12178 |  | 2nd Fix - Sprinkler fixing & Pressure testing | 9.5d | 2026-05-01 | 2026-05-12 | PG-12608 FF+6d |  | 74.17d |  |
| PG-12179 |  | Final Fix - Smoke & heat detectors, FHC , FAS Etc. | 9.67d | 2026-05-23 | 2026-06-04 | PG-12178, PG-12609 FF+6d |  | 64.17d |  |
|  | 1.3.1.3.3.32.3 | **Electrical Works** |  | 2026-03-14 | 2026-06-04 |  |  |  |  |
| PG-12180 |  | 1st Fix - GI wire pulling | 7.67d | 2026-03-14 | 2026-03-24 | PG-12165 FS+7d |  | 105.83d |  |
| PG-12181 |  | 2nd Fix - Wiring works | 16.5d | 2026-04-22 | 2026-05-11 | PG-12608 FF+5d |  | 79.17d |  |
| PG-12182 |  | Final Fix - Electrical Fixtures | 5.67d | 2026-05-28 | 2026-06-04 | PG-12181, PG-12609 FF+6d |  | 64.17d |  |
|  | 1.3.1.3.4 | **Civil Finishes - Units** |  | 2024-12-23 | 2026-05-28 |  |  |  |  |
|  | 1.3.1.3.4.1 | **LBF** |  | 2024-12-23 | 2025-04-03 |  |  |  |  |
| PG-12183 |  | Backfilling Above Raft | 30d | 2024-12-23 A | 2025-01-27 A | PG-11778 | 100% |  |  |
| PG-12184 |  | Car wash water collection sump with cap | 12.83d | 2025-01-17 A | 2025-02-01 A | PG-11906 FF+5d, PG-12183 FF+5d | 100% |  | finish on or after 2023-10-20 |
| PG-12185 |  | Surface Drain to slope | 8.67d | 2025-01-28 A | 2025-02-08 A | PG-12184 FF+5d | 100% |  |  |
| PG-12186 |  | Grade Slab | 10.67d | 2025-02-01 A | 2025-02-15 A | PG-12185 FF+5d | 100% |  |  |
| PG-12187 |  | First Coat Painting works | 14.67d | 2025-02-10 A | 2025-02-28 A | PG-12186 FF+10d | 100% |  |  |
| PG-12188 |  | Final coat painting | 9.5d | 2025-03-17 A | 2025-03-28 A | PG-11912, PG-11909 | 100% |  |  |
| PG-12189 |  | Car park marking and column corner beading fixing | 8.67d | 2025-03-24 A | 2025-04-03 A | PG-12188 FF+5d | 100% |  |  |
|  | 1.3.1.3.4.2 | **UBF** |  | 2025-02-07 | 2025-04-11 |  |  |  |  |
| PG-12190 |  | Surface Drain with Grade Slab to slope | 15d | 2025-02-07 A | 2025-02-25 A | PG-12183 FS+10d | 100% |  |  |
| PG-12191 |  | First Coat Paint works | 11.67d | 2025-03-13 A | 2025-03-28 A | PG-12190, PG-11911, PG-11910 | 100% |  |  |
| PG-12192 |  | Final Coat Paint Works | 9.67d | 2025-03-18 A | 2025-03-31 A | PG-12191, PG-11912 FF+5d | 100% |  |  |
| PG-12193 |  | Car park marking and column corner beading fixing | 9.67d | 2025-03-31 A | 2025-04-11 | PG-12192 | 38% | 463.98d |  |
|  | 1.3.1.3.4.3 | **Ground Floor** |  | 2024-12-23 | 2025-03-08 |  |  |  |  |
|  | 1.3.1.3.4.3.1 | **Ceiling Finishing works - Civil** |  | 2025-01-01 | 2025-03-08 |  |  |  |  |
| PG-12194 |  | Gypsum Plastering | 6d | 2025-01-01 A | 2025-01-08 A | PG-11919 | 100% |  |  |
| PG-12195 |  | Cornice fixing | 4d | 2025-01-18 A | 2025-01-24 A | PG-11916 FF+6d | 100% |  |  |
| PG-12197 |  | Toilet False ceiling | 4d | 2025-01-27 A | 2025-01-31 A | PG-12205 FF+5d | 100% |  |  |
| PG-12196 |  | Painting Works - Putty, Primer and 1st | 6d | 2025-02-06 A | 2025-02-14 A | PG-12195, PG-12200 | 100% |  |  |
| PG-12198 |  | Final Coat Painting | 17.67d | 2025-02-14 A | 2025-03-08 A | PG-12196, PG-12207 | 100% |  |  |

| ID | WBS | Task | Duration | Start | Finish | Predecessors | Complete | Total float |
| --- | --- | --- | --- | --- | --- | --- | --- | --- |
|  | 1.3.1.3.4.3.2 | **Wall Finishing works - Civil** |  | 2024-12-23 | 2025-03-08 |  |  |  |
| PG-12199 |  | Balcony Railing Fixing works | 4d | 2024-12-23 A | 2024-12-27 A | PG-11778 | 100% |  |
| PG-12201 |  | Dadoing - Wet area | 5d | 2025-01-14 A | 2025-01-20 A | PG-11914 | 100% |  |
| PG-12200 |  | UPVC Windows & Sliding doors | 5d | 2025-01-31 A | 2025-02-06 A | PG-12199, PG-12206 FF+5d | 100% |  |
| PG-12202 |  | Painting Works - Putty, Primer and 1st | 6d | 2025-02-06 A | 2025-02-14 A | PG-12200 | 100% |  |
| PG-12203 |  | Final Coat Painting | 17.67d | 2025-02-14 A | 2025-03-08 A | PG-12207 | 100% |  |
|  | 1.3.1.3.4.3.3 | **Floor Finishing Works - Civil** |  | 2024-12-23 | 2025-02-14 |  |  |  |
| PG-12204 |  | Waterproofing for sunken areas | 3d | 2024-12-23 A | 2024-12-26 A | PG-11778 | 100% |  |
| PG-12205 |  | Floor Tiling - Wet area | 5d | 2025-01-20 A | 2025-01-25 A | PG-12204, PG-12201 | 100% |  |
| PG-12206 |  | Floor Tiling - Dry area | 5d | 2025-01-25 A | 2025-01-31 A | PG-12205 FF+5d | 100% |  |
| PG-12207 |  | Wooden doors | 5d | 2025-02-08 A | 2025-02-14 A | PG-12202 FF | 100% |  |
|  | 1.3.1.3.4.4 | **Floor 1** |  | 2025-01-07 | 2025-03-26 |  |  |  |
|  | 1.3.1.3.4.4.1 | **Ceiling Finishing works - Civil** |  | 2025-01-16 | 2025-03-26 |  |  |  |
| PG-12208 |  | Gypsum Plastering | 6d | 2025-01-16 A | 2025-01-24 A | PG-11928 | 100% |  |
| PG-12209 |  | Cornice fixing | 4d | 2025-02-03 A | 2025-02-07 A | PG-11925 FF+6d | 100% |  |
| PG-12211 |  | Toilet False ceiling | 4d | 2025-02-13 A | 2025-02-18 A | PG-12219 FF+5d | 100% |  |
| PG-12210 |  | Painting Works - Putty, Primer and 1st | 6d | 2025-02-24 A | 2025-03-04 A | PG-12209, PG-12214 | 100% |  |
| PG-12212 |  | Final Coat Painting | 18.5d | 2025-03-04 A | 2025-03-26 A | PG-12210, PG-12221 | 100% |  |
|  | 1.3.1.3.4.4.2 | **Wall Finishing works - Civil** |  | 2025-01-07 | 2025-03-25 |  |  |  |
| PG-12213 |  | Balcony Railing Fixing works | 4d | 2025-01-07 A | 2025-01-11 A | PG-11783 | 100% |  |
| PG-12215 |  | Dadoing - Wet area | 5d | 2025-01-30 A | 2025-02-05 A | PG-11923 | 100% |  |
| PG-12214 |  | UPVC Windows & Sliding doors | 5d | 2025-02-18 A | 2025-02-24 A | PG-12213, PG-12220 FF+5d | 100% |  |
| PG-12216 |  | Painting Works - Putty, Primer and 1st | 6d | 2025-02-24 A | 2025-03-03 A | PG-12214 | 100% |  |
| PG-12217 |  | Final Coat Painting | 18.5d | 2025-03-04 A | 2025-03-25 A | PG-12221 | 100% |  |
|  | 1.3.1.3.4.4.3 | **Floor Finishing Works - Civil** |  | 2025-01-07 | 2025-03-04 |  |  |  |
| PG-12218 |  | Waterproofing for sunken areas | 3d | 2025-01-07 A | 2025-01-10 A | PG-11783 | 100% |  |
| PG-12219 |  | Floor Tiling - Wet area | 5d | 2025-02-05 A | 2025-02-12 A | PG-12218, PG-12215 | 100% |  |
| PG-12220 |  | Floor Tiling - Dry area | 5d | 2025-02-12 A | 2025-02-18 A | PG-12219 FF+5d | 100% |  |
| PG-12221 |  | Wooden doors | 5d | 2025-02-25 A | 2025-03-04 A | PG-12216 FF | 100% |  |
|  | 1.3.1.3.4.5 | **Floor 2** |  | 2025-01-22 | 2025-04-09 |  |  |  |
|  | 1.3.1.3.4.5.1 | **Ceiling Finishing works - Civil** |  | 2025-02-01 | 2025-04-09 |  |  |  |
| PG-12222 |  | Gypsum Plastering | 6d | 2025-02-01 A | 2025-02-08 A | PG-11937 | 100% |  |
| PG-12223 |  | Cornice fixing | 4d | 2025-02-19 A | 2025-02-24 A | PG-11934 FF+6d | 100% |  |
| PG-12225 |  | Toilet False ceiling | 4d | 2025-02-27 A | 2025-03-04 A | PG-12233 FF+5d | 100% |  |
| PG-12224 |  | Painting Works - Putty, Primer and 1st | 6d | 2025-03-11 A | 2025-03-18 A | PG-12223, PG-12228 | 100% |  |
| PG-12226 |  | Final Coat Painting | 17.67d | 2025-03-18 A | 2025-04-09 | PG-12224, PG-12235 | 74% | 448.43d |
|  | 1.3.1.3.4.5.2 | **Wall Finishing works - Civil** |  | 2025-01-22 | 2025-04-07 |  |  |  |
| PG-12227 |  | Balcony Railing Fixing works | 4d | 2025-01-22 A | 2025-01-28 A | PG-11788 | 100% |  |
| PG-12229 |  | Dadoing - Wet area | 5d | 2025-02-14 A | 2025-02-20 A | PG-11932 | 100% |  |
| PG-12228 |  | UPVC Windows & Sliding doors | 5d | 2025-03-04 A | 2025-03-11 A | PG-12227, PG-12234 FF+5d | 100% |  |
| PG-12230 |  | Painting Works - Putty, Primer and 1st | 6d | 2025-03-11 A | 2025-03-18 A | PG-12228 | 100% |  |
| PG-12231 |  | Final Coat Painting | 17.67d | 2025-03-18 A | 2025-04-07 | PG-12235 | 83% | 415.24d |
|  | 1.3.1.3.4.5.3 | **Floor Finishing Works - Civil** |  | 2025-01-22 | 2025-03-18 |  |  |  |
| PG-12232 |  | Waterproofing for sunken areas | 3d | 2025-01-22 A | 2025-01-27 A | PG-11788 | 100% |  |
| PG-12233 |  | Floor Tiling - Wet area | 5d | 2025-02-20 A | 2025-02-26 A | PG-12232, PG-12229 | 100% |  |
| PG-12234 |  | Floor Tiling - Dry area | 5d | 2025-02-26 A | 2025-03-04 A | PG-12233 FF+5d | 100% |  |
| PG-12235 |  | Wooden doors | 5d | 2025-03-12 A | 2025-03-18 A | PG-12230 FF | 100% |  |
|  | 1.3.1.3.4.6 | **Floor 3** |  | 2025-02-07 | 2025-04-25 |  |  |  |
|  | 1.3.1.3.4.6.1 | **Ceiling Finishing works - Civil** |  | 2025-02-17 | 2025-04-25 |  |  |  |
| PG-12236 |  | Gypsum Plastering | 6d | 2025-02-17 A | 2025-02-25 A | PG-11946 | 100% |  |
| PG-12237 |  | Cornice fixing | 4d | 2025-03-06 A | 2025-03-11 A | PG-11943 FF+6d | 100% |  |
| PG-12239 |  | Toilet False ceiling | 4d | 2025-03-17 A | 2025-03-21 A | PG-12247 FF+5d | 100% |  |
| PG-12238 |  | Painting Works - Putty, Primer and 1st | 6d | 2025-03-27 A | 2025-04-03 A | PG-12237, PG-12242 | 100% |  |
| PG-12240 |  | Final Coat Painting | 19.33d | 2025-04-04 A | 2025-04-25 | PG-12238, PG-12249 | 3% | 435.25d |
|  | 1.3.1.3.4.6.2 | **Wall Finishing works - Civil** |  | 2025-02-07 | 2025-04-25 |  |  |  |
| PG-12241 |  | Balcony Railing Fixing works | 4d | 2025-02-07 A | 2025-02-12 A | PG-11793 | 100% |  |
| PG-12243 |  | Dadoing - Wet area | 5d | 2025-03-04 A | 2025-03-10 A | PG-11941 | 100% |  |
| PG-12242 |  | UPVC Windows & Sliding doors | 5d | 2025-03-21 A | 2025-03-27 A | PG-12241, PG-12248 FF+5d | 100% |  |
| PG-12244 |  | Painting Works - Putty, Primer and 1st | 6d | 2025-03-27 A | 2025-04-04 A | PG-12242 | 100% |  |
| PG-12245 |  | Final Coat Painting | 19.33d | 2025-04-04 A | 2025-04-25 | PG-12249 | 3% | 399.58d |
|  | 1.3.1.3.4.6.3 | **Floor Finishing Works - Civil** |  | 2025-02-07 | 2025-04-04 |  |  |  |
| PG-12246 |  | Waterproofing for sunken areas | 3d | 2025-02-07 A | 2025-02-11 A | PG-11793 | 100% |  |
| PG-12247 |  | Floor Tiling - Wet area | 5d | 2025-03-10 A | 2025-03-15 A | PG-12246, PG-12243 | 100% |  |
| PG-12248 |  | Floor Tiling - Dry area | 5d | 2025-03-15 A | 2025-03-21 A | PG-12247 FF+5d | 100% |  |
| PG-12249 |  | Wooden doors | 5d | 2025-03-29 A | 2025-04-04 A | PG-12244 FF | 100% |  |
|  | 1.3.1.3.4.7 | **Floor 4** |  | 2025-02-24 | 2025-05-09 |  |  |  |
|  | 1.3.1.3.4.7.1 | **Ceiling Finishing works - Civil** |  | 2025-03-04 | 2025-05-09 |  |  |  |
| PG-12250 |  | Gypsum Plastering | 6d | 2025-03-04 A | 2025-03-12 A | PG-11955 | 100% |  |
| PG-12251 |  | Cornice fixing | 4d | 2025-03-22 A | 2025-03-27 A | PG-11952 FF+6d | 100% |  |
| PG-12253 |  | Toilet False ceiling | 4d | 2025-04-01 A | 2025-04-05 | PG-12261 FF+5d | 85% | 413.67d |

| ID | WBS | Task | Duration | Start | Finish | Predecessors | Complete | Total float |
| --- | --- | --- | --- | --- | --- | --- | --- | --- |
| PG-12252 |  | Painting Works - Putty, Primer and 1st | 6d | 2025-04-11 | 2025-04-18 | PG-12251, PG-12256 |  | 423.5d |
| PG-12254 |  | Final Coat Painting | 18.33d | 2025-04-18 | 2025-05-09 | PG-12252, PG-12263 |  | 423.5d |
|  | 1.3.1.3.4.7.2 | **Wall Finishing works - Civil** |  | 2025-02-24 | 2025-05-09 |  |  |  |
| PG-12255 |  | Balcony Railing Fixing works | 4d | 2025-02-24 A | 2025-02-28 A | PG-11798 | 100% |  |
| PG-12257 |  | Dadoing - Wet area | 5d | 2025-03-18 A | 2025-03-24 A | PG-11950 | 100% |  |
| PG-12256 |  | UPVC Windows & Sliding doors | 5d | 2025-04-05 | 2025-04-11 | PG-12255, PG-12262 FF+5d |  | 386.83d |
| PG-12258 |  | Painting Works - Putty, Primer and 1st | 6d | 2025-04-11 | 2025-04-18 | PG-12256 |  | 386.83d |
| PG-12259 |  | Final Coat Painting | 18.33d | 2025-04-18 | 2025-05-09 | PG-12263 |  | 386.83d |
|  | 1.3.1.3.4.7.3 | **Floor Finishing Works - Civil** |  | 2025-02-24 | 2025-04-18 |  |  |  |
| PG-12260 |  | Waterproofing for sunken areas | 3d | 2025-02-24 A | 2025-02-27 A | PG-11798 | 100% |  |
| PG-12261 |  | Floor Tiling - Wet area | 5d | 2025-03-24 A | 2025-03-31 A | PG-12260, PG-12257 | 100% |  |
| PG-12262 |  | Floor Tiling - Dry area | 5d | 2025-03-31 A | 2025-04-05 | PG-12261 FF+5d | 83% | 386.83d |
| PG-12263 |  | Wooden doors | 5d | 2025-04-12 | 2025-04-18 | PG-12258 FF |  | 386.83d |
|  | 1.3.1.3.4.8 | **Floor 5** |  | 2025-03-11 | 2025-08-05 |  |  |  |
|  | 1.3.1.3.4.8.1 | **Ceiling Finishing works - Civil** |  | 2025-03-19 | 2025-08-05 |  |  |  |
| PG-12264 |  | Gypsum Plastering | 6d | 2025-03-19 A | 2025-03-27 A | PG-11964 | 100% |  |
| PG-12265 |  | Cornice fixing | 4d | 2025-04-05 | 2025-04-10 | PG-11961 FF+6d |  | 424.67d |
| PG-12267 |  | Toilet False ceiling | 4d | 2025-06-26 | 2025-07-01 | PG-12275 FF+5d |  | 339.17d |
| PG-12266 |  | Painting Works - Putty, Primer and 1st | 6d | 2025-07-07 | 2025-07-14 | PG-12265, PG-12270 |  | 349.83d |
| PG-12268 |  | Final Coat Painting | 18.5d | 2025-07-14 | 2025-08-05 | PG-12266, PG-12277 |  | 349.83d |
|  | 1.3.1.3.4.8.2 | **Wall Finishing works - Civil** |  | 2025-03-11 | 2025-08-05 |  |  |  |
| PG-12269 |  | Balcony Railing Fixing works | 4d | 2025-03-11 A | 2025-03-15 A | PG-11803 | 100% |  |
| PG-12271 |  | Dadoing - Wet area | 5d | 2025-06-13 | 2025-06-19 | PG-10006, PG-11959 |  | 314.17d |
| PG-12270 |  | UPVC Windows & Sliding doors | 5d | 2025-07-01 | 2025-07-07 | PG-12269, PG-12276 FF+5d |  | 314.17d |
| PG-12272 |  | Painting Works - Putty, Primer and 1st | 6d | 2025-07-07 | 2025-07-14 | PG-12270 |  | 314.17d |
| PG-12273 |  | Final Coat Painting | 18.5d | 2025-07-14 | 2025-08-05 | PG-12277 |  | 314.17d |
|  | 1.3.1.3.4.8.3 | **Floor Finishing Works - Civil** |  | 2025-03-11 | 2025-07-14 |  |  |  |
| PG-12274 |  | Waterproofing for sunken areas | 3d | 2025-03-11 A | 2025-03-14 A | PG-11803 | 100% |  |
| PG-12275 |  | Floor Tiling - Wet area | 5d | 2025-06-19 | 2025-06-25 | PG-12274, PG-12271 |  | 314.17d |
| PG-12276 |  | Floor Tiling - Dry area | 5d | 2025-06-25 | 2025-07-01 | PG-12275 FF+5d |  | 314.17d |
| PG-12277 |  | Wooden doors | 5d | 2025-07-08 | 2025-07-14 | PG-12272 FF |  | 314.17d |
|  | 1.3.1.3.4.9 | **Floor 6** |  | 2025-03-27 | 2025-06-10 |  |  |  |
|  | 1.3.1.3.4.9.1 | **Ceiling Finishing works - Civil** |  | 2025-04-04 | 2025-06-10 |  |  |  |
| PG-12278 |  | Gypsum Plastering | 6d | 2025-04-04 | 2025-04-11 | PG-11973 |  | 409.64d |
| PG-12279 |  | Cornice fixing | 4d | 2025-04-21 | 2025-04-25 | PG-11970 FF+6d |  | 409.64d |
| PG-12281 |  | Toilet False ceiling | 4d | 2025-04-29 | 2025-05-03 | PG-12289 FF+5d |  | 389.93d |
| PG-12280 |  | Painting Works - Putty, Primer and 1st | 6d | 2025-05-09 | 2025-05-16 | PG-12279, PG-12284 |  | 397.6d |
| PG-12282 |  | Final Coat Painting | 20.5d | 2025-05-16 | 2025-06-10 | PG-12280, PG-12291 |  | 397.6d |
|  | 1.3.1.3.4.9.2 | **Wall Finishing works - Civil** |  | 2025-03-27 | 2025-06-09 |  |  |  |
| PG-12283 |  | Balcony Railing Fixing works | 4d | 2025-03-27 A | 2025-04-01 A | PG-11808 | 100% |  |
| PG-12285 |  | Dadoing - Wet area | 5d | 2025-04-16 | 2025-04-22 | PG-11968 |  | 362.93d |
| PG-12284 |  | UPVC Windows & Sliding doors | 5d | 2025-05-03 | 2025-05-09 | PG-12283, PG-12290 FF+5d |  | 362.93d |
| PG-12286 |  | Painting Works - Putty, Primer and 1st | 6d | 2025-05-09 | 2025-05-16 | PG-12284 |  | 362.93d |
| PG-12287 |  | Final Coat Painting | 19.5d | 2025-05-16 | 2025-06-09 | PG-12291 |  | 362.93d |
|  | 1.3.1.3.4.9.3 | **Floor Finishing Works - Civil** |  | 2025-03-27 | 2025-05-16 |  |  |  |
| PG-12288 |  | Waterproofing for sunken areas | 3d | 2025-03-27 A | 2025-03-31 A | PG-11808 | 100% |  |
| PG-12289 |  | Floor Tiling - Wet area | 5d | 2025-04-22 | 2025-04-28 | PG-12288, PG-12285 |  | 362.93d |
| PG-12290 |  | Floor Tiling - Dry area | 5d | 2025-04-28 | 2025-05-03 | PG-12289 FF+5d |  | 362.93d |
| PG-12291 |  | Wooden doors | 5d | 2025-05-10 | 2025-05-16 | PG-12286 FF |  | 362.93d |
|  | 1.3.1.3.4.10 | **Floor 7** |  | 2025-04-11 | 2025-06-24 |  |  |  |
|  | 1.3.1.3.4.10.1 | **Ceiling Finishing works - Civil** |  | 2025-04-21 | 2025-06-24 |  |  |  |
| PG-12292 |  | Gypsum Plastering | 6d | 2025-04-21 | 2025-04-26 | PG-11982 |  | 397.5d |
| PG-12293 |  | Cornice fixing | 4d | 2025-05-07 | 2025-05-10 | PG-11979 FF+6d |  | 397.5d |
| PG-12295 |  | Toilet False ceiling | 4d | 2025-05-15 | 2025-05-20 | PG-12303 FF+5d |  | 378.5d |
| PG-12294 |  | Painting Works - Putty, Primer and 1st | 6d | 2025-05-26 | 2025-06-02 | PG-12293, PG-12298 |  | 385.17d |
| PG-12296 |  | Final Coat Painting | 19.5d | 2025-06-02 | 2025-06-24 | PG-12294, PG-12305 |  | 385.17d |
|  | 1.3.1.3.4.10.2 | **Wall Finishing works - Civil** |  | 2025-04-11 | 2025-06-23 |  |  |  |
| PG-12297 |  | Balcony Railing Fixing works | 4d | 2025-04-11 | 2025-04-16 | PG-11813 |  | 380.5d |
| PG-12299 |  | Dadoing - Wet area | 5d | 2025-05-02 | 2025-05-08 | PG-11977 |  | 351.5d |
| PG-12298 |  | UPVC Windows & Sliding doors | 5d | 2025-05-20 | 2025-05-26 | PG-12297, PG-12304 FF+5d |  | 351.5d |
| PG-12300 |  | Painting Works - Putty, Primer and 1st | 6d | 2025-05-26 | 2025-06-02 | PG-12298 |  | 351.5d |
| PG-12301 |  | Final Coat Painting | 18.5d | 2025-06-02 | 2025-06-23 | PG-12305 |  | 351.5d |
|  | 1.3.1.3.4.10.3 | **Floor Finishing Works - Civil** |  | 2025-04-11 | 2025-06-02 |  |  |  |
| PG-12302 |  | Waterproofing for sunken areas | 3d | 2025-04-11 | 2025-04-15 | PG-11813 |  | 371.5d |
| PG-12303 |  | Floor Tiling - Wet area | 5d | 2025-05-08 | 2025-05-14 | PG-12302, PG-12299 |  | 351.5d |
| PG-12304 |  | Floor Tiling - Dry area | 5d | 2025-05-14 | 2025-05-20 | PG-12303 FF+5d |  | 351.5d |
| PG-12305 |  | Wooden doors | 5d | 2025-05-27 | 2025-06-02 | PG-12300 FF |  | 351.5d |
|  | 1.3.1.3.4.11 | **Floor 8** |  | 2025-04-26 | 2025-07-10 |  |  |  |
|  | 1.3.1.3.4.11.1 | **Ceiling Finishing works - Civil** |  | 2025-05-06 | 2025-07-10 |  |  |  |
| PG-12306 |  | Gypsum Plastering | 6d | 2025-05-06 | 2025-05-12 | PG-11991 |  | 382.5d |

| ID | WBS | Task | Duration | Start | Finish | Predecessors | Total float |
| --- | --- | --- | --- | --- | --- | --- | --- |
| PG-12307 |  | Cornice fixing | 4d | 2025-05-22 | 2025-05-26 | PG-11988 FF+6d | 382.5d |
| PG-12309 |  | Toilet False ceiling | 4d | 2025-05-30 | 2025-06-04 | PG-12317 FF+5d | 363.5d |
| PG-12308 |  | Painting Works - Putty, Primer and 1st | 6d | 2025-06-10 | 2025-06-17 | PG-12307, PG-12312 | 370.17d |
| PG-12310 |  | Final Coat Painting | 20.5d | 2025-06-17 | 2025-07-10 | PG-12308, PG-12319 | 370.17d |
|  | 1.3.1.3.4.11.2 | **Wall Finishing works - Civil** |  | 2025-04-26 | 2025-07-09 |  |  |
| PG-12311 |  | Balcony Railing Fixing works | 4d | 2025-04-26 | 2025-05-01 | PG-11818 | 365.5d |
| PG-12313 |  | Dadoing - Wet area | 5d | 2025-05-17 | 2025-05-23 | PG-11986 | 336.5d |
| PG-12312 |  | UPVC Windows & Sliding doors | 5d | 2025-06-04 | 2025-06-10 | PG-12311, PG-12318 FF+5d | 336.5d |
| PG-12314 |  | Painting Works - Putty, Primer and 1st | 6d | 2025-06-10 | 2025-06-17 | PG-12312 | 336.5d |
| PG-12315 |  | Final Coat Painting | 19.5d | 2025-06-17 | 2025-07-09 | PG-12319 | 336.5d |
|  | 1.3.1.3.4.11.3 | **Floor Finishing Works - Civil** |  | 2025-04-26 | 2025-06-17 |  |  |
| PG-12316 |  | Waterproofing for sunken areas | 3d | 2025-04-26 | 2025-04-30 | PG-11818 | 356.5d |
| PG-12317 |  | Floor Tiling - Wet area | 5d | 2025-05-23 | 2025-05-29 | PG-12316, PG-12313 | 336.5d |
| PG-12318 |  | Floor Tiling - Dry area | 5d | 2025-05-29 | 2025-06-04 | PG-12317 FF+5d | 336.5d |
| PG-12319 |  | Wooden doors | 5d | 2025-06-11 | 2025-06-17 | PG-12314 FF | 336.5d |
|  | 1.3.1.3.4.12 | **Floor 9** |  | 2025-05-12 | 2025-07-23 |  |  |
|  | 1.3.1.3.4.12.1 | **Ceiling Finishing works - Civil** |  | 2025-05-21 | 2025-07-23 |  |  |
| PG-12320 |  | Gypsum Plastering | 6d | 2025-05-21 | 2025-05-28 | PG-12000 | 371.17d |
| PG-12321 |  | Cornice fixing | 4d | 2025-06-06 | 2025-06-11 | PG-11997 FF+6d | 371.17d |
| PG-12323 |  | Toilet False ceiling | 4d | 2025-06-14 | 2025-06-19 | PG-12331 FF+5d | 350.5d |
| PG-12322 |  | Painting Works - Putty, Primer and 1st | 6d | 2025-06-25 | 2025-07-02 | PG-12321, PG-12326 | 359d |
| PG-12324 |  | Final Coat Painting | 18.67d | 2025-07-02 | 2025-07-23 | PG-12322, PG-12333 | 359d |
|  | 1.3.1.3.4.12.2 | **Wall Finishing works - Civil** |  | 2025-05-12 | 2025-07-22 |  |  |
| PG-12325 |  | Balcony Railing Fixing works | 4d | 2025-05-12 | 2025-05-16 | PG-11823 | 354.33d |
| PG-12327 |  | Dadoing - Wet area | 5d | 2025-06-02 | 2025-06-07 | PG-11995 | 325.33d |
| PG-12326 |  | UPVC Windows & Sliding doors | 5d | 2025-06-19 | 2025-06-25 | PG-12325, PG-12332 FF+5d | 325.33d |
| PG-12328 |  | Painting Works - Putty, Primer and 1st | 6d | 2025-06-25 | 2025-07-02 | PG-12326 | 325.33d |
| PG-12329 |  | Final Coat Painting | 17.5d | 2025-07-02 | 2025-07-22 | PG-12333 | 325.33d |
|  | 1.3.1.3.4.12.3 | **Floor Finishing Works - Civil** |  | 2025-05-12 | 2025-07-02 |  |  |
| PG-12330 |  | Waterproofing for sunken areas | 3d | 2025-05-12 | 2025-05-15 | PG-11823 | 345.33d |
| PG-12331 |  | Floor Tiling - Wet area | 5d | 2025-06-07 | 2025-06-13 | PG-12330, PG-12327 | 325.33d |
| PG-12332 |  | Floor Tiling - Dry area | 5d | 2025-06-13 | 2025-06-19 | PG-12331 FF+5d | 325.33d |
| PG-12333 |  | Wooden doors | 5d | 2025-06-26 | 2025-07-02 | PG-12328 FF | 325.33d |
|  | 1.3.1.3.4.13 | **Floor 10** |  | 2025-05-27 | 2025-08-08 |  |  |
|  | 1.3.1.3.4.13.1 | **Ceiling Finishing works - Civil** |  | 2025-06-05 | 2025-08-08 |  |  |
| PG-12334 |  | Gypsum Plastering | 6d | 2025-06-05 | 2025-06-11 | PG-12009 | 358.17d |
| PG-12335 |  | Cornice fixing | 4d | 2025-06-21 | 2025-06-25 | PG-12006 FF+6d | 358.17d |
| PG-12337 |  | Toilet False ceiling | 4d | 2025-06-30 | 2025-07-04 | PG-12345 FF+5d | 337.17d |
| PG-12336 |  | Painting Works - Putty, Primer and 1st | 6d | 2025-07-10 | 2025-07-17 | PG-12335, PG-12340 | 345.83d |
| PG-12338 |  | Final Coat Painting | 19.5d | 2025-07-17 | 2025-08-08 | PG-12336, PG-12347 | 345.83d |
|  | 1.3.1.3.4.13.2 | **Wall Finishing works - Civil** |  | 2025-05-27 | 2025-08-07 |  |  |
| PG-12339 |  | Balcony Railing Fixing works | 4d | 2025-05-27 | 2025-05-31 | PG-11828 | 340.17d |
| PG-12341 |  | Dadoing - Wet area | 5d | 2025-06-17 | 2025-06-23 | PG-12004 | 311.17d |
| PG-12340 |  | UPVC Windows & Sliding doors | 5d | 2025-07-04 | 2025-07-10 | PG-12339, PG-12346 FF+5d | 311.17d |
| PG-12342 |  | Painting Works - Putty, Primer and 1st | 6d | 2025-07-10 | 2025-07-17 | PG-12340 | 311.17d |
| PG-12343 |  | Final Coat Painting | 18.5d | 2025-07-17 | 2025-08-07 | PG-12347 | 311.17d |
|  | 1.3.1.3.4.13.3 | **Floor Finishing Works - Civil** |  | 2025-05-27 | 2025-07-17 |  |  |
| PG-12344 |  | Waterproofing for sunken areas | 3d | 2025-05-27 | 2025-05-30 | PG-11828 | 331.17d |
| PG-12345 |  | Floor Tiling - Wet area | 5d | 2025-06-23 | 2025-06-28 | PG-12344, PG-12341 | 311.17d |
| PG-12346 |  | Floor Tiling - Dry area | 5d | 2025-06-28 | 2025-07-04 | PG-12345 FF+5d | 311.17d |
| PG-12347 |  | Wooden doors | 5d | 2025-07-11 | 2025-07-17 | PG-12342 FF | 311.17d |
|  | 1.3.1.3.4.14 | **Floor 11** |  | 2025-06-09 | 2025-08-22 |  |  |
|  | 1.3.1.3.4.14.1 | **Ceiling Finishing works - Civil** |  | 2025-06-18 | 2025-08-22 |  |  |
| PG-12348 |  | Gypsum Plastering | 6d | 2025-06-18 | 2025-06-25 | PG-12018 | 347.17d |
| PG-12349 |  | Cornice fixing | 4d | 2025-07-04 | 2025-07-09 | PG-12015 FF+6d | 347.17d |
| PG-12351 |  | Toilet False ceiling | 4d | 2025-07-12 | 2025-07-17 | PG-12359 FF+5d | 326.5d |
| PG-12350 |  | Painting Works - Putty, Primer and 1st | 6d | 2025-07-23 | 2025-07-30 | PG-12349, PG-12354 | 335d |
| PG-12352 |  | Final Coat Painting | 19.67d | 2025-07-30 | 2025-08-22 | PG-12350, PG-12361 | 335d |
|  | 1.3.1.3.4.14.2 | **Wall Finishing works - Civil** |  | 2025-06-09 | 2025-08-21 |  |  |
| PG-12353 |  | Balcony Railing Fixing works | 4d | 2025-06-09 | 2025-06-13 | PG-11833 | 329.5d |
| PG-12355 |  | Dadoing - Wet area | 5d | 2025-06-30 | 2025-07-05 | PG-12013 | 300.5d |
| PG-12354 |  | UPVC Windows & Sliding doors | 5d | 2025-07-17 | 2025-07-23 | PG-12353, PG-12360 FF+5d | 300.5d |
| PG-12356 |  | Painting Works - Putty, Primer and 1st | 6d | 2025-07-23 | 2025-07-30 | PG-12354 | 300.5d |
| PG-12357 |  | Final Coat Painting | 18.5d | 2025-07-30 | 2025-08-21 | PG-12361 | 300.5d |
|  | 1.3.1.3.4.14.3 | **Floor Finishing Works - Civil** |  | 2025-06-09 | 2025-07-30 |  |  |
| PG-12358 |  | Waterproofing for sunken areas | 3d | 2025-06-09 | 2025-06-12 | PG-11833 | 320.5d |
| PG-12359 |  | Floor Tiling - Wet area | 5d | 2025-07-05 | 2025-07-11 | PG-12358, PG-12355 | 300.5d |
| PG-12360 |  | Floor Tiling - Dry area | 5d | 2025-07-11 | 2025-07-17 | PG-12359 FF+5d | 300.5d |
| PG-12361 |  | Wooden doors | 5d | 2025-07-24 | 2025-07-30 | PG-12356 FF | 300.5d |
|  | 1.3.1.3.4.15 | **Floor 12** |  | 2025-06-21 | 2025-09-06 |  |  |

| ID | WBS | Task | Duration | Start | Finish | Predecessors | Total float |
| --- | --- | --- | --- | --- | --- | --- | --- |
|  | 1.3.1.3.4.15.1 | **Ceiling Finishing works - Civil** |  | 2025-07-01 | 2025-09-06 |  |  |
| PG-12362 |  | Gypsum Plastering | 6d | 2025-07-01 | 2025-07-07 | PG-12027 | 334.33d |
| PG-12363 |  | Cornice fixing | 4d | 2025-07-17 | 2025-07-21 | PG-12024 FF+6d | 334.33d |
| PG-12365 |  | Toilet False ceiling | 4d | 2025-07-25 | 2025-07-30 | PG-12373 FF+5d | 314.17d |
| PG-12364 |  | Painting Works - Putty, Primer and 1st | 6d | 2025-08-05 | 2025-08-12 | PG-12363, PG-12368 | 322d |
| PG-12366 |  | Final Coat Painting | 21.5d | 2025-08-12 | 2025-09-06 | PG-12364, PG-12375 | 322d |
|  | 1.3.1.3.4.15.2 | **Wall Finishing works - Civil** |  | 2025-06-21 | 2025-09-06 |  |  |
| PG-12367 |  | Balcony Railing Fixing works | 4d | 2025-06-21 | 2025-06-26 | PG-11838 | 316.17d |
| PG-12369 |  | Dadoing - Wet area | 5d | 2025-07-12 | 2025-07-18 | PG-12022 | 287.17d |
| PG-12368 |  | UPVC Windows & Sliding doors | 5d | 2025-07-30 | 2025-08-05 | PG-12367, PG-12374 FF+5d | 287.17d |
| PG-12370 |  | Painting Works - Putty, Primer and 1st | 6d | 2025-08-05 | 2025-08-12 | PG-12368 | 287.17d |
| PG-12371 |  | Final Coat Painting | 21.5d | 2025-08-12 | 2025-09-06 | PG-12375 | 287.17d |
|  | 1.3.1.3.4.15.3 | **Floor Finishing Works - Civil** |  | 2025-06-21 | 2025-08-12 |  |  |
| PG-12372 |  | Waterproofing for sunken areas | 3d | 2025-06-21 | 2025-06-25 | PG-11838 | 307.17d |
| PG-12373 |  | Floor Tiling - Wet area | 5d | 2025-07-18 | 2025-07-24 | PG-12372, PG-12369 | 287.17d |
| PG-12374 |  | Floor Tiling - Dry area | 5d | 2025-07-24 | 2025-07-30 | PG-12373 FF+5d | 287.17d |
| PG-12375 |  | Wooden doors | 5d | 2025-08-06 | 2025-08-12 | PG-12370 FF | 287.17d |
|  | 1.3.1.3.4.16 | **Floor 13** |  | 2025-07-04 | 2025-09-19 |  |  |
|  | 1.3.1.3.4.16.1 | **Ceiling Finishing works - Civil** |  | 2025-07-14 | 2025-09-19 |  |  |
| PG-12376 |  | Gypsum Plastering | 6d | 2025-07-14 | 2025-07-19 | PG-12036 | 323.5d |
| PG-12377 |  | Cornice fixing | 4d | 2025-07-30 | 2025-08-02 | PG-12033 FF+6d | 323.5d |
| PG-12379 |  | Toilet False ceiling | 4d | 2025-08-07 | 2025-08-12 | PG-12387 FF+5d | 304.5d |
| PG-12378 |  | Painting Works - Putty, Primer and 1st | 6d | 2025-08-19 | 2025-08-26 | PG-12377, PG-12382 | 311.17d |
| PG-12380 |  | Final Coat Painting | 21.5d | 2025-08-26 | 2025-09-19 | PG-12378, PG-12389 | 311.17d |
|  | 1.3.1.3.4.16.2 | **Wall Finishing works - Civil** |  | 2025-07-04 | 2025-09-19 |  |  |
| PG-12381 |  | Balcony Railing Fixing works | 4d | 2025-07-04 | 2025-07-09 | PG-11843 | 305.5d |
| PG-12383 |  | Dadoing - Wet area | 5d | 2025-07-25 | 2025-07-31 | PG-12031 | 276.5d |
| PG-12382 |  | UPVC Windows & Sliding doors | 5d | 2025-08-12 | 2025-08-19 | PG-12381, PG-12388 FF+5d | 276.5d |
| PG-12384 |  | Painting Works - Putty, Primer and 1st | 6d | 2025-08-19 | 2025-08-26 | PG-12382 | 276.5d |
| PG-12385 |  | Final Coat Painting | 21.5d | 2025-08-26 | 2025-09-19 | PG-12389 | 276.5d |
|  | 1.3.1.3.4.16.3 | **Floor Finishing Works - Civil** |  | 2025-07-04 | 2025-08-26 |  |  |
| PG-12386 |  | Waterproofing for sunken areas | 3d | 2025-07-04 | 2025-07-08 | PG-11843 | 296.5d |
| PG-12387 |  | Floor Tiling - Wet area | 5d | 2025-07-31 | 2025-08-06 | PG-12386, PG-12383 | 276.5d |
| PG-12388 |  | Floor Tiling - Dry area | 5d | 2025-08-06 | 2025-08-12 | PG-12387 FF+5d | 276.5d |
| PG-12389 |  | Wooden doors | 5d | 2025-08-20 | 2025-08-26 | PG-12384 FF | 276.5d |
|  | 1.3.1.3.4.17 | **Floor 14** |  | 2025-07-17 | 2025-09-30 |  |  |
|  | 1.3.1.3.4.17.1 | **Ceiling Finishing works - Civil** |  | 2025-07-26 | 2025-09-30 |  |  |
| PG-12390 |  | Gypsum Plastering | 6d | 2025-07-26 | 2025-08-01 | PG-12045 | 314.5d |
| PG-12391 |  | Cornice fixing | 4d | 2025-08-12 | 2025-08-16 | PG-12042 FF+6d | 314.5d |
| PG-12393 |  | Toilet False ceiling | 4d | 2025-08-21 | 2025-08-26 | PG-12401 FF+5d | 294.5d |
| PG-12392 |  | Painting Works - Putty, Primer and 1st | 6d | 2025-09-01 | 2025-09-08 | PG-12391, PG-12396 | 302.17d |
| PG-12394 |  | Final Coat Painting | 19.5d | 2025-09-08 | 2025-09-30 | PG-12392, PG-12403 | 302.17d |
|  | 1.3.1.3.4.17.2 | **Wall Finishing works - Civil** |  | 2025-07-17 | 2025-09-30 |  |  |
| PG-12395 |  | Balcony Railing Fixing works | 4d | 2025-07-17 | 2025-07-22 | PG-11848 | 296.5d |
| PG-12397 |  | Dadoing - Wet area | 5d | 2025-08-07 | 2025-08-13 | PG-12040 | 267.5d |
| PG-12396 |  | UPVC Windows & Sliding doors | 5d | 2025-08-26 | 2025-09-01 | PG-12395, PG-12402 FF+5d | 267.5d |
| PG-12398 |  | Painting Works - Putty, Primer and 1st | 6d | 2025-09-01 | 2025-09-08 | PG-12396 | 267.5d |
| PG-12399 |  | Final Coat Painting | 19.5d | 2025-09-08 | 2025-09-30 | PG-12403 | 267.5d |
|  | 1.3.1.3.4.17.3 | **Floor Finishing Works - Civil** |  | 2025-07-17 | 2025-09-08 |  |  |
| PG-12400 |  | Waterproofing for sunken areas | 3d | 2025-07-17 | 2025-07-21 | PG-11848 | 287.5d |
| PG-12401 |  | Floor Tiling - Wet area | 5d | 2025-08-13 | 2025-08-20 | PG-12400, PG-12397 | 267.5d |
| PG-12402 |  | Floor Tiling - Dry area | 5d | 2025-08-20 | 2025-08-26 | PG-12401 FF+5d | 267.5d |
| PG-12403 |  | Wooden doors | 5d | 2025-09-02 | 2025-09-08 | PG-12398 FF | 267.5d |
|  | 1.3.1.3.4.18 | **Floor 15** |  | 2025-07-30 | 2026-01-07 |  |  |
|  | 1.3.1.3.4.18.1 | **Ceiling Finishing works - Civil** |  | 2025-08-08 | 2026-01-07 |  |  |
| PG-12404 |  | Gypsum Plastering | 6d | 2025-08-08 | 2025-08-14 | PG-12054 | 303.33d |
| PG-12405 |  | Cornice fixing | 4d | 2025-08-26 | 2025-08-29 | PG-12051 FF+6d | 303.33d |
| PG-12407 |  | Toilet False ceiling | 4d | 2025-11-28 | 2025-12-03 | PG-12415 FF+5d | 209.17d |
| PG-12406 |  | Painting Works - Putty, Primer and 1st | 6d | 2025-12-09 | 2025-12-16 | PG-12405, PG-12410 | 219d |
| PG-12408 |  | Final Coat Painting | 19.5d | 2025-12-16 | 2026-01-07 | PG-12406, PG-12417 | 219d |
|  | 1.3.1.3.4.18.2 | **Wall Finishing works - Civil** |  | 2025-07-30 | 2026-01-07 |  |  |
| PG-12409 |  | Balcony Railing Fixing works | 4d | 2025-07-30 | 2025-08-04 | PG-11853 | 142.5d |
| PG-12411 |  | Dadoing - Wet area | 5d | 2025-11-15 | 2025-11-21 | PG-10007, PG-12049 | 41.5d |
| PG-12410 |  | UPVC Windows & Sliding doors | 5d | 2025-12-03 | 2025-12-09 | PG-12409, PG-12416 FF+5d | 41.5d |
| PG-12412 |  | Painting Works - Putty, Primer and 1st | 6d | 2025-12-09 | 2025-12-16 | PG-12410 | 41.5d |
| PG-12413 |  | Final Coat Painting | 19.5d | 2025-12-16 | 2026-01-07 | PG-12417 | 183.17d |
|  | 1.3.1.3.4.18.3 | **Floor Finishing Works - Civil** |  | 2025-07-30 | 2025-12-16 |  |  |
| PG-12414 |  | Waterproofing for sunken areas | 3d | 2025-07-30 | 2025-08-02 | PG-11853 | 133.5d |
| PG-12415 |  | Floor Tiling - Wet area | 5d | 2025-11-21 | 2025-11-27 | PG-12414, PG-12411 | 41.5d |
| PG-12416 |  | Floor Tiling - Dry area | 5d | 2025-11-27 | 2025-12-03 | PG-12415 FF+5d | 41.5d |

| ID | WBS | Task | Duration | Start | Finish | Predecessors | Total float |
| --- | --- | --- | --- | --- | --- | --- | --- |
| PG-12417 |  | Wooden doors | 5d | 2025-12-10 | 2025-12-16 | PG-12412 FF | 41.5d |
|  | 1.3.1.3.4.19 | **Floor 16** |  | 2025-08-12 | 2025-10-27 |  |  |
|  | 1.3.1.3.4.19.1 | **Ceiling Finishing works - Civil** |  | 2025-08-22 | 2025-10-27 |  |  |
| PG-12418 |  | Gypsum Plastering | 6d | 2025-08-22 | 2025-08-28 | PG-12063 | 292.5d |
| PG-12419 |  | Cornice fixing | 4d | 2025-09-08 | 2025-09-11 | PG-12060 FF+6d | 292.5d |
| PG-12421 |  | Toilet False ceiling | 4d | 2025-09-16 | 2025-09-20 | PG-12429 FF+5d | 271.33d |
| PG-12420 |  | Painting Works - Putty, Primer and 1st | 6d | 2025-09-26 | 2025-10-04 | PG-12419, PG-12424 | 280.17d |
| PG-12422 |  | Final Coat Painting | 19.5d | 2025-10-04 | 2025-10-27 | PG-12420, PG-12431 | 280.17d |
|  | 1.3.1.3.4.19.2 | **Wall Finishing works - Civil** |  | 2025-08-12 | 2025-10-27 |  |  |
| PG-12423 |  | Balcony Railing Fixing works | 4d | 2025-08-12 | 2025-08-18 | PG-11858 | 274.33d |
| PG-12425 |  | Dadoing - Wet area | 5d | 2025-09-03 | 2025-09-09 | PG-12058 | 245.33d |
| PG-12424 |  | UPVC Windows & Sliding doors | 5d | 2025-09-20 | 2025-09-26 | PG-12423, PG-12430 FF+5d | 245.33d |
| PG-12426 |  | Painting Works - Putty, Primer and 1st | 6d | 2025-09-26 | 2025-10-04 | PG-12424 | 245.33d |
| PG-12427 |  | Final Coat Painting | 19.67d | 2025-10-04 | 2025-10-27 | PG-12431 | 245.33d |
|  | 1.3.1.3.4.19.3 | **Floor Finishing Works - Civil** |  | 2025-08-12 | 2025-10-04 |  |  |
| PG-12428 |  | Waterproofing for sunken areas | 3d | 2025-08-12 | 2025-08-16 | PG-11858 | 265.33d |
| PG-12429 |  | Floor Tiling - Wet area | 5d | 2025-09-09 | 2025-09-15 | PG-12428, PG-12425 | 245.33d |
| PG-12430 |  | Floor Tiling - Dry area | 5d | 2025-09-15 | 2025-09-20 | PG-12429 FF+5d | 245.33d |
| PG-12431 |  | Wooden doors | 5d | 2025-09-27 | 2025-10-04 | PG-12426 FF | 245.33d |
|  | 1.3.1.3.4.20 | **Floor 17** |  | 2025-08-26 | 2025-11-08 |  |  |
|  | 1.3.1.3.4.20.1 | **Ceiling Finishing works - Civil** |  | 2025-09-04 | 2025-11-08 |  |  |
| PG-12432 |  | Gypsum Plastering | 6d | 2025-09-04 | 2025-09-10 | PG-12072 | 282.33d |
| PG-12433 |  | Cornice fixing | 4d | 2025-09-20 | 2025-09-24 | PG-12069 FF+6d | 282.33d |
| PG-12435 |  | Toilet False ceiling | 4d | 2025-09-29 | 2025-10-04 | PG-12443 FF+5d | 259.33d |
| PG-12434 |  | Painting Works - Putty, Primer and 1st | 6d | 2025-10-10 | 2025-10-17 | PG-12433, PG-12438 | 270d |
| PG-12436 |  | Final Coat Painting | 18.67d | 2025-10-17 | 2025-11-08 | PG-12434, PG-12445 | 270d |
|  | 1.3.1.3.4.20.2 | **Wall Finishing works - Civil** |  | 2025-08-26 | 2025-11-08 |  |  |
| PG-12437 |  | Balcony Railing Fixing works | 4d | 2025-08-26 | 2025-08-30 | PG-11863 | 263.33d |
| PG-12439 |  | Dadoing - Wet area | 5d | 2025-09-16 | 2025-09-22 | PG-12067 | 234.33d |
| PG-12438 |  | UPVC Windows & Sliding doors | 5d | 2025-10-04 | 2025-10-10 | PG-12437, PG-12444 FF+5d | 234.33d |
| PG-12440 |  | Painting Works - Putty, Primer and 1st | 6d | 2025-10-10 | 2025-10-17 | PG-12438 | 234.33d |
| PG-12441 |  | Final Coat Painting | 18.67d | 2025-10-17 | 2025-11-08 | PG-12445 | 234.33d |
|  | 1.3.1.3.4.20.3 | **Floor Finishing Works - Civil** |  | 2025-08-26 | 2025-10-17 |  |  |
| PG-12442 |  | Waterproofing for sunken areas | 3d | 2025-08-26 | 2025-08-29 | PG-11863 | 254.33d |
| PG-12443 |  | Floor Tiling - Wet area | 5d | 2025-09-22 | 2025-09-27 | PG-12442, PG-12439 | 234.33d |
| PG-12444 |  | Floor Tiling - Dry area | 5d | 2025-09-27 | 2025-10-04 | PG-12443 FF+5d | 234.33d |
| PG-12445 |  | Wooden doors | 5d | 2025-10-11 | 2025-10-17 | PG-12440 FF | 234.33d |
|  | 1.3.1.3.4.21 | **Floor 18** |  | 2025-09-08 | 2025-11-21 |  |  |
|  | 1.3.1.3.4.21.1 | **Ceiling Finishing works - Civil** |  | 2025-09-17 | 2025-11-21 |  |  |
| PG-12446 |  | Gypsum Plastering | 6d | 2025-09-17 | 2025-09-23 | PG-12081 | 271.33d |
| PG-12447 |  | Cornice fixing | 4d | 2025-10-04 | 2025-10-08 | PG-12078 FF+6d | 271.33d |
| PG-12449 |  | Toilet False ceiling | 4d | 2025-10-13 | 2025-10-17 | PG-12457 FF+5d | 248.33d |
| PG-12448 |  | Painting Works - Putty, Primer and 1st | 6d | 2025-10-23 | 2025-10-30 | PG-12447, PG-12452 | 259d |
| PG-12450 |  | Final Coat Painting | 18.67d | 2025-10-30 | 2025-11-21 | PG-12448, PG-12459 | 259d |
|  | 1.3.1.3.4.21.2 | **Wall Finishing works - Civil** |  | 2025-09-08 | 2025-11-21 |  |  |
| PG-12451 |  | Balcony Railing Fixing works | 4d | 2025-09-08 | 2025-09-12 | PG-11868 | 252.33d |
| PG-12453 |  | Dadoing - Wet area | 5d | 2025-09-29 | 2025-10-06 | PG-12076 | 223.33d |
| PG-12452 |  | UPVC Windows & Sliding doors | 5d | 2025-10-17 | 2025-10-23 | PG-12451, PG-12458 FF+5d | 223.33d |
| PG-12454 |  | Painting Works - Putty, Primer and 1st | 6d | 2025-10-23 | 2025-10-30 | PG-12452 | 223.33d |
| PG-12455 |  | Final Coat Painting | 18.67d | 2025-10-30 | 2025-11-21 | PG-12459 | 223.33d |
|  | 1.3.1.3.4.21.3 | **Floor Finishing Works - Civil** |  | 2025-09-08 | 2025-10-30 |  |  |
| PG-12456 |  | Waterproofing for sunken areas | 3d | 2025-09-08 | 2025-09-11 | PG-11868 | 243.33d |
| PG-12457 |  | Floor Tiling - Wet area | 5d | 2025-10-06 | 2025-10-11 | PG-12456, PG-12453 | 223.33d |
| PG-12458 |  | Floor Tiling - Dry area | 5d | 2025-10-11 | 2025-10-17 | PG-12457 FF+5d | 223.33d |
| PG-12459 |  | Wooden doors | 5d | 2025-10-24 | 2025-10-30 | PG-12454 FF | 223.33d |
|  | 1.3.1.3.4.22 | **Floor 19** |  | 2025-09-20 | 2025-12-04 |  |  |
|  | 1.3.1.3.4.22.1 | **Ceiling Finishing works - Civil** |  | 2025-09-30 | 2025-12-04 |  |  |
| PG-12460 |  | Gypsum Plastering | 6d | 2025-09-30 | 2025-10-07 | PG-12090 | 260.33d |
| PG-12461 |  | Cornice fixing | 4d | 2025-10-17 | 2025-10-21 | PG-12087 FF+6d | 260.33d |
| PG-12463 |  | Toilet False ceiling | 4d | 2025-10-25 | 2025-10-30 | PG-12471 FF+5d | 237.33d |
| PG-12462 |  | Painting Works - Putty, Primer and 1st | 6d | 2025-11-06 | 2025-11-13 | PG-12461, PG-12466 | 248d |
| PG-12464 |  | Final Coat Painting | 18.67d | 2025-11-13 | 2025-12-04 | PG-12462, PG-12473 | 248d |
|  | 1.3.1.3.4.22.2 | **Wall Finishing works - Civil** |  | 2025-09-20 | 2025-12-04 |  |  |
| PG-12465 |  | Balcony Railing Fixing works | 4d | 2025-09-20 | 2025-09-25 | PG-11873 | 241.33d |
| PG-12467 |  | Dadoing - Wet area | 5d | 2025-10-13 | 2025-10-18 | PG-12085 | 212.33d |
| PG-12466 |  | UPVC Windows & Sliding doors | 5d | 2025-10-30 | 2025-11-06 | PG-12465, PG-12472 FF+5d | 212.33d |
| PG-12468 |  | Painting Works - Putty, Primer and 1st | 6d | 2025-11-06 | 2025-11-13 | PG-12466 | 212.33d |
| PG-12469 |  | Final Coat Painting | 18.67d | 2025-11-13 | 2025-12-04 | PG-12473 | 212.33d |
|  | 1.3.1.3.4.22.3 | **Floor Finishing Works - Civil** |  | 2025-09-20 | 2025-11-13 |  |  |
| PG-12470 |  | Waterproofing for sunken areas | 3d | 2025-09-20 | 2025-09-24 | PG-11873 | 232.33d |

| ID | WBS | Task | Duration | Start | Finish | Predecessors | Total float |
| --- | --- | --- | --- | --- | --- | --- | --- |
| PG-12471 |  | Floor Tiling - Wet area | 5d | 2025-10-18 | 2025-10-24 | PG-12470, PG-12467 | 212.33d |
| PG-12472 |  | Floor Tiling - Dry area | 5d | 2025-10-24 | 2025-10-30 | PG-12471 FF+5d | 212.33d |
| PG-12473 |  | Wooden doors | 5d | 2025-11-07 | 2025-11-13 | PG-12468 FF | 212.33d |
|  | 1.3.1.3.4.23 | **Floor 20** |  | 2025-10-04 | 2025-12-18 |  |  |
|  | 1.3.1.3.4.23.1 | **Ceiling Finishing works - Civil** |  | 2025-10-14 | 2025-12-18 |  |  |
| PG-12474 |  | Gypsum Plastering | 6d | 2025-10-14 | 2025-10-21 | PG-12099 | 248.5d |
| PG-12475 |  | Cornice fixing | 4d | 2025-10-30 | 2025-11-05 | PG-12096 FF+6d | 248.5d |
| PG-12477 |  | Toilet False ceiling | 4d | 2025-11-08 | 2025-11-13 | PG-12485 FF+5d | 227.67d |
| PG-12476 |  | Painting Works - Putty, Primer and 1st | 6d | 2025-11-19 | 2025-11-26 | PG-12480, PG-12475 | 236.33d |
| PG-12478 |  | Final Coat Painting | 19.33d | 2025-11-26 | 2025-12-18 | PG-12476, PG-12487 | 236.33d |
|  | 1.3.1.3.4.23.2 | **Wall Finishing works - Civil** |  | 2025-10-04 | 2025-12-18 |  |  |
| PG-12479 |  | Balcony Railing Fixing works | 4d | 2025-10-04 | 2025-10-09 | PG-11878 | 229.67d |
| PG-12481 |  | Dadoing - Wet area | 5d | 2025-10-25 | 2025-10-31 | PG-12094 | 200.67d |
| PG-12480 |  | UPVC Windows & Sliding doors | 5d | 2025-11-13 | 2025-11-19 | PG-12507, PG-12479, PG-12486 FF+5d | 200.67d |
| PG-12482 |  | Painting Works - Putty, Primer and 1st | 6d | 2025-11-19 | 2025-11-26 | PG-12480 | 200.67d |
| PG-12483 |  | Final Coat Painting | 19.33d | 2025-11-26 | 2025-12-18 | PG-12487 | 200.67d |
|  | 1.3.1.3.4.23.3 | **Floor Finishing Works - Civil** |  | 2025-10-04 | 2025-11-26 |  |  |
| PG-12484 |  | Waterproofing for sunken areas | 3d | 2025-10-04 | 2025-10-08 | PG-11878 | 220.67d |
| PG-12485 |  | Floor Tiling - Wet area | 5d | 2025-10-31 | 2025-11-07 | PG-12484, PG-12481 | 200.67d |
| PG-12486 |  | Floor Tiling - Dry area | 5d | 2025-11-07 | 2025-11-13 | PG-12485 FF+5d | 200.67d |
| PG-12487 |  | Wooden doors | 5d | 2025-11-20 | 2025-11-26 | PG-12482 FF | 200.67d |
|  | 1.3.1.3.4.24 | **Floor 21** |  | 2025-10-17 | 2025-12-31 |  |  |
|  | 1.3.1.3.4.24.1 | **Ceiling Finishing works - Civil** |  | 2025-10-27 | 2025-12-31 |  |  |
| PG-12488 |  | Gypsum Plastering | 6d | 2025-10-27 | 2025-11-04 | PG-12108 | 237.33d |
| PG-12489 |  | Cornice fixing | 4d | 2025-11-13 | 2025-11-18 | PG-12105 FF+6d | 237.33d |
| PG-12491 |  | Toilet False ceiling | 4d | 2025-11-21 | 2025-11-25 | PG-12499 FF+5d | 215.83d |
| PG-12490 |  | Painting Works - Putty, Primer and 1st | 6d | 2025-12-02 | 2025-12-08 | PG-12489, PG-12494 | 225.5d |
| PG-12492 |  | Final Coat Painting | 19.5d | 2025-12-09 | 2025-12-31 | PG-12490, PG-12501 | 225.5d |
|  | 1.3.1.3.4.24.2 | **Wall Finishing works - Civil** |  | 2025-10-17 | 2025-12-31 |  |  |
| PG-12493 |  | Balcony Railing Fixing works | 4d | 2025-10-17 | 2025-10-22 | PG-11883 | 218.5d |
| PG-12495 |  | Dadoing - Wet area | 5d | 2025-11-08 | 2025-11-13 | PG-12103 | 189.83d |
| PG-12494 |  | UPVC Windows & Sliding doors | 5d | 2025-11-26 | 2025-12-01 | PG-12493, PG-12500 FF+5d | 189.83d |
| PG-12496 |  | Painting Works - Putty, Primer and 1st | 6d | 2025-12-02 | 2025-12-08 | PG-12494 | 189.83d |
| PG-12497 |  | Final Coat Painting | 19.5d | 2025-12-09 | 2025-12-31 | PG-12501 | 189.83d |
|  | 1.3.1.3.4.24.3 | **Floor Finishing Works - Civil** |  | 2025-10-17 | 2025-12-08 |  |  |
| PG-12498 |  | Waterproofing for sunken areas | 3d | 2025-10-17 | 2025-10-21 | PG-11883 | 209.5d |
| PG-12499 |  | Floor Tiling - Wet area | 5d | 2025-11-14 | 2025-11-19 | PG-12495, PG-12498 | 189.83d |
| PG-12500 |  | Floor Tiling - Dry area | 5d | 2025-11-20 | 2025-11-25 | PG-12499 FF+5d | 189.83d |
| PG-12501 |  | Wooden doors | 5d | 2025-12-03 | 2025-12-08 | PG-12496 FF | 189.83d |
|  | 1.3.1.3.4.25 | **Floor 22** |  | 2025-10-30 | 2026-01-13 |  |  |
|  | 1.3.1.3.4.25.1 | **Ceiling Finishing works - Civil** |  | 2025-11-10 | 2026-01-13 |  |  |
| PG-12502 |  | Gypsum Plastering | 6d | 2025-11-10 | 2025-11-17 | PG-12117 | 226.33d |
| PG-12503 |  | Cornice fixing | 4d | 2025-11-26 | 2025-12-01 | PG-12114 FF+6d | 226.33d |
| PG-12505 |  | Toilet False ceiling | 4d | 2025-12-04 | 2025-12-08 | PG-12513 FF+5d | 204.83d |
| PG-12504 |  | Painting Works - Putty, Primer and 1st | 6d | 2025-12-15 | 2025-12-20 | PG-12503, PG-12508 | 214.5d |
| PG-12506 |  | Final Coat Painting | 19.5d | 2025-12-22 | 2026-01-13 | PG-12504, PG-12515 | 214.5d |
|  | 1.3.1.3.4.25.2 | **Wall Finishing works - Civil** |  | 2025-10-30 | 2026-01-13 |  |  |
| PG-12507 |  | Balcony Railing Fixing works | 4d | 2025-10-30 | 2025-11-05 | PG-11888 | 207.67d |
| PG-12509 |  | Dadoing - Wet area | 5d | 2025-11-21 | 2025-11-26 | PG-12112 | 178.83d |
| PG-12508 |  | UPVC Windows & Sliding doors | 5d | 2025-12-09 | 2025-12-13 | PG-12514 FF+5d | 178.83d |
| PG-12510 |  | Painting Works - Putty, Primer and 1st | 6d | 2025-12-15 | 2025-12-20 | PG-12508 | 178.83d |
| PG-12511 |  | Final Coat Painting | 19.5d | 2025-12-22 | 2026-01-13 | PG-12515 | 178.83d |
|  | 1.3.1.3.4.25.3 | **Floor Finishing Works - Civil** |  | 2025-10-30 | 2025-12-20 |  |  |
| PG-12512 |  | Waterproofing for sunken areas | 3d | 2025-10-30 | 2025-11-04 | PG-11888 | 198.5d |
| PG-12513 |  | Floor Tiling - Wet area | 5d | 2025-11-27 | 2025-12-02 | PG-12512, PG-12509 | 178.83d |
| PG-12514 |  | Floor Tiling - Dry area | 5d | 2025-12-03 | 2025-12-08 | PG-12513 FF+5d | 178.83d |
| PG-12515 |  | Wooden doors | 5d | 2025-12-16 | 2025-12-20 | PG-12510 FF | 178.83d |
|  | 1.3.1.3.4.26 | **Floor 23** |  | 2025-11-13 | 2026-01-27 |  |  |
|  | 1.3.1.3.4.26.1 | **Ceiling Finishing works - Civil** |  | 2025-11-21 | 2026-01-27 |  |  |
| PG-12516 |  | Gypsum Plastering | 6d | 2025-11-21 | 2025-11-27 | PG-12126 | 215.67d |
| PG-12517 |  | Cornice fixing | 4d | 2025-12-08 | 2025-12-11 | PG-12123 FF+6d | 215.67d |
| PG-12519 |  | Toilet False ceiling | 4d | 2025-12-15 | 2025-12-19 | PG-12527 FF+5d | 196.17d |
| PG-12518 |  | Painting Works - Putty, Primer and 1st | 6d | 2025-12-25 | 2026-01-01 | PG-12517, PG-12522 | 203.83d |
| PG-12520 |  | Final Coat Painting | 19.5d | 2026-01-01 | 2026-01-27 | PG-12518, PG-12529 | 203.83d |
|  | 1.3.1.3.4.26.2 | **Wall Finishing works - Civil** |  | 2025-11-13 | 2026-01-27 |  |  |
| PG-12521 |  | Balcony Railing Fixing works | 4d | 2025-11-13 | 2025-11-18 | PG-11893 | 195.83d |
| PG-12523 |  | Dadoing - Wet area | 5d | 2025-12-02 | 2025-12-08 | PG-12121 | 168.17d |
| PG-12522 |  | UPVC Windows & Sliding doors | 5d | 2025-12-19 | 2025-12-25 | PG-12521, PG-12528 FF+5d | 168.17d |
| PG-12524 |  | Painting Works - Putty, Primer and 1st | 6d | 2025-12-25 | 2026-01-01 | PG-12522 | 168.17d |
| PG-12525 |  | Final Coat Painting | 19.5d | 2026-01-01 | 2026-01-27 | PG-12529 | 168.17d |

| ID | WBS | Task | Duration | Start | Finish | Predecessors | Total float |
| --- | --- | --- | --- | --- | --- | --- | --- |
|  | 1.3.1.3.4.26.3 | **Floor Finishing Works - Civil** |  | 2025-11-13 | 2026-01-01 |  |  |
| PG-12526 |  | Waterproofing for sunken areas | 3d | 2025-11-13 | 2025-11-17 | PG-11893 | 186.83d |
| PG-12527 |  | Floor Tiling - Wet area | 5d | 2025-12-08 | 2025-12-13 | PG-12526, PG-12523 | 168.17d |
| PG-12528 |  | Floor Tiling - Dry area | 5d | 2025-12-13 | 2025-12-19 | PG-12527 FF+5d | 168.17d |
| PG-12529 |  | Wooden doors | 5d | 2025-12-26 | 2026-01-01 | PG-12524 FF | 168.17d |
|  | 1.3.1.3.4.27 | **Floor 24** |  | 2025-11-26 | 2026-02-09 |  |  |
|  | 1.3.1.3.4.27.1 | **Ceiling Finishing works - Civil** |  | 2025-12-05 | 2026-02-09 |  |  |
| PG-12530 |  | Gypsum Plastering | 6d | 2025-12-05 | 2025-12-11 | PG-12135 | 204.33d |
| PG-12531 |  | Cornice fixing | 4d | 2025-12-22 | 2025-12-25 | PG-12132 FF+6d | 204.33d |
| PG-12533 |  | Toilet False ceiling | 4d | 2025-12-29 | 2026-01-02 | PG-12541 FF+5d | 183.83d |
| PG-12532 |  | Painting Works - Putty, Primer and 1st | 6d | 2026-01-08 | 2026-01-15 | PG-12531, PG-12536 | 192.5d |
| PG-12534 |  | Final Coat Painting | 19.67d | 2026-01-15 | 2026-02-09 | PG-12532, PG-12543 | 192.5d |
|  | 1.3.1.3.4.27.2 | **Wall Finishing works - Civil** |  | 2025-11-26 | 2026-02-09 |  |  |
| PG-12535 |  | Balcony Railing Fixing works | 4d | 2025-11-26 | 2025-12-01 | PG-11898 | 185.5d |
| PG-12537 |  | Dadoing - Wet area | 5d | 2025-12-16 | 2025-12-22 | PG-12130 | 156.83d |
| PG-12536 |  | UPVC Windows & Sliding doors | 5d | 2026-01-02 | 2026-01-08 | PG-12535, PG-12542 FF+5d | 156.83d |
| PG-12538 |  | Painting Works - Putty, Primer and 1st | 6d | 2026-01-08 | 2026-01-15 | PG-12536 | 156.83d |
| PG-12539 |  | Final Coat Painting | 19.67d | 2026-01-15 | 2026-02-09 | PG-12543 | 156.83d |
|  | 1.3.1.3.4.27.3 | **Floor Finishing Works - Civil** |  | 2025-11-26 | 2026-01-15 |  |  |
| PG-12540 |  | Waterproofing for sunken areas | 3d | 2025-11-26 | 2025-11-29 | PG-11898 | 176.5d |
| PG-12541 |  | Floor Tiling - Wet area | 5d | 2025-12-22 | 2025-12-27 | PG-12540, PG-12537 | 156.83d |
| PG-12542 |  | Floor Tiling - Dry area | 5d | 2025-12-27 | 2026-01-02 | PG-12541 FF+5d | 156.83d |
| PG-12543 |  | Wooden doors | 5d | 2026-01-09 | 2026-01-15 | PG-12538 FF | 156.83d |
|  | 1.3.1.3.4.28 | **Floor 25** |  | 2025-12-17 | 2026-03-02 |  |  |
|  | 1.3.1.3.4.28.1 | **Ceiling Finishing works - Civil** |  | 2025-12-26 | 2026-03-02 |  |  |
| PG-12544 |  | Gypsum Plastering | 6d | 2025-12-26 | 2026-01-02 | PG-12144 | 100.33d |
| PG-12545 |  | Cornice fixing | 3.67d | 2026-01-12 | 2026-01-16 | PG-12141 FF+6d | 100.33d |
| PG-12547 |  | Toilet False ceiling | 4d | 2026-01-19 | 2026-01-23 | PG-12555 FF+5d | 165.33d |
| PG-12546 |  | Painting Works - Putty, Primer and 1st | 6d | 2026-01-30 | 2026-02-06 | PG-12545, PG-12550 | 89.17d |
| PG-12548 |  | Final Coat Painting | 20d | 2026-02-06 | 2026-03-02 | PG-12546, PG-12557 | 173.33d |
|  | 1.3.1.3.4.28.2 | **Wall Finishing works - Civil** |  | 2025-12-17 | 2026-03-02 |  |  |
| PG-12549 |  | Balcony Railing Fixing works | 4d | 2025-12-17 | 2025-12-22 | PG-12129 FS+7d | 117d |
| PG-12551 |  | Dadoing - Wet area | 5d | 2026-01-06 | 2026-01-12 | PG-12139 | 89.17d |
| PG-12550 |  | UPVC Windows & Sliding doors | 5d | 2026-01-23 | 2026-01-30 | PG-12549, PG-12556 FF+5d | 89.17d |
| PG-12552 |  | Painting Works - Putty, Primer and 1st | 6d | 2026-01-30 | 2026-02-06 | PG-12550 | 137.67d |
| PG-12553 |  | Final Coat Painting | 20d | 2026-02-06 | 2026-03-02 | PG-12557 | 137.67d |
|  | 1.3.1.3.4.28.3 | **Floor Finishing Works - Civil** |  | 2025-12-17 | 2026-02-06 |  |  |
| PG-12554 |  | Waterproofing for sunken areas | 3d | 2025-12-17 | 2025-12-20 | PG-12129 FS+7d | 108d |
| PG-12555 |  | Floor Tiling - Wet area | 5d | 2026-01-12 | 2026-01-17 | PG-12554, PG-12551 | 89.17d |
| PG-12556 |  | Floor Tiling - Dry area | 5d | 2026-01-17 | 2026-01-23 | PG-12555 FF+5d | 89.17d |
| PG-12557 |  | Wooden doors | 5d | 2026-01-31 | 2026-02-06 | PG-12552 FF | 137.67d |
|  | 1.3.1.3.4.29 | **Floor 26** |  | 2026-01-07 | 2026-03-24 |  |  |
|  | 1.3.1.3.4.29.1 | **Ceiling Finishing works - Civil** |  | 2026-01-16 | 2026-03-24 |  |  |
| PG-12558 |  | Gypsum Plastering | 6d | 2026-01-16 | 2026-01-23 | PG-12153 | 167.5d |
| PG-12559 |  | Cornice fixing | 3.67d | 2026-02-03 | 2026-02-07 | PG-12150 FF+6d | 167.5d |
| PG-12561 |  | Toilet False ceiling | 4d | 2026-02-11 | 2026-02-16 | PG-12569 FF+5d | 146.33d |
| PG-12560 |  | Painting Works - Putty, Primer and 1st | 6d | 2026-02-21 | 2026-02-28 | PG-12559, PG-12564 | 155.33d |
| PG-12562 |  | Final Coat Painting | 20d | 2026-02-28 | 2026-03-24 | PG-12560, PG-12571 | 155.33d |
|  | 1.3.1.3.4.29.2 | **Wall Finishing works - Civil** |  | 2026-01-07 | 2026-03-23 |  |  |
| PG-12563 |  | Balcony Railing Fixing works | 4d | 2026-01-07 | 2026-01-12 | PG-12138 FS+7d | 147.17d |
| PG-12565 |  | Dadoing - Wet area | 5d | 2026-01-29 | 2026-02-04 | PG-12148 | 118.33d |
| PG-12564 |  | UPVC Windows & Sliding doors | 5d | 2026-02-16 | 2026-02-21 | PG-12563, PG-12570 FF+5d | 118.33d |
| PG-12566 |  | Painting Works - Putty, Primer and 1st | 6d | 2026-02-21 | 2026-02-28 | PG-12564 | 118.33d |
| PG-12567 |  | Final Coat Painting | 19.33d | 2026-02-28 | 2026-03-23 | PG-12571 | 118.33d |
|  | 1.3.1.3.4.29.3 | **Floor Finishing Works - Civil** |  | 2026-01-07 | 2026-02-28 |  |  |
| PG-12568 |  | Waterproofing for sunken areas | 3d | 2026-01-07 | 2026-01-10 | PG-12138 FS+7d | 138.17d |
| PG-12569 |  | Floor Tiling - Wet area | 5d | 2026-02-04 | 2026-02-10 | PG-12568, PG-12565 | 118.33d |
| PG-12570 |  | Floor Tiling - Dry area | 5d | 2026-02-10 | 2026-02-16 | PG-12569 FF+5d | 118.33d |
| PG-12571 |  | Wooden doors | 5d | 2026-02-23 | 2026-02-28 | PG-12566 FF | 118.33d |
|  | 1.3.1.3.4.30 | **Floor 27** |  | 2026-01-30 | 2026-04-14 |  |  |
|  | 1.3.1.3.4.30.1 | **Ceiling Finishing works - Civil** |  | 2026-02-09 | 2026-04-14 |  |  |
| PG-12572 |  | Gypsum Plastering | 6d | 2026-02-09 | 2026-02-16 | PG-12162 | 149.17d |
| PG-12573 |  | Cornice fixing | 4d | 2026-02-25 | 2026-03-02 | PG-12159 FF+6d | 149.17d |
| PG-12575 |  | Toilet False ceiling | 4d | 2026-03-05 | 2026-03-10 | PG-12583 FF+5d | 126.5d |
| PG-12574 |  | Painting Works - Putty, Primer and 1st | 6d | 2026-03-16 | 2026-03-23 | PG-12573, PG-12578 | 137.17d |
| PG-12576 |  | Final Coat Painting | 19.67d | 2026-03-23 | 2026-04-14 | PG-12574, PG-12585 | 137.17d |
|  | 1.3.1.3.4.30.2 | **Wall Finishing works - Civil** |  | 2026-01-30 | 2026-04-14 |  |  |
| PG-12577 |  | Balcony Railing Fixing works | 4d | 2026-01-30 | 2026-02-04 | PG-12147 FS+7d | 129.17d |
| PG-12579 |  | Dadoing - Wet area | 5d | 2026-02-20 | 2026-02-26 | PG-12157 | 100.5d |
| PG-12578 |  | UPVC Windows & Sliding doors | 5d | 2026-03-10 | 2026-03-16 | PG-12577, PG-12584 FF+5d | 100.5d |

| ID | WBS | Task | Duration | Start | Finish | Predecessors | Total float |
| --- | --- | --- | --- | --- | --- | --- | --- |
| PG-12580 |  | Painting Works - Putty, Primer and 1st | 6d | 2026-03-16 | 2026-03-23 | PG-12578 | 100.5d |
| PG-12581 |  | Final Coat Painting | 19.67d | 2026-03-23 | 2026-04-14 | PG-12585 | 100.5d |
|  | 1.3.1.3.4.30.3 | **Floor Finishing Works - Civil** |  | 2026-01-30 | 2026-03-23 |  |  |
| PG-12582 |  | Waterproofing for sunken areas | 3d | 2026-01-30 | 2026-02-03 | PG-12147 FS+7d | 120.17d |
| PG-12583 |  | Floor Tiling - Wet area | 5d | 2026-02-26 | 2026-03-04 | PG-12582, PG-12579 | 100.5d |
| PG-12584 |  | Floor Tiling - Dry area | 5d | 2026-03-04 | 2026-03-10 | PG-12583 FF+5d | 100.5d |
| PG-12585 |  | Wooden doors | 5d | 2026-03-17 | 2026-03-23 | PG-12580 FF | 100.5d |
|  | 1.3.1.3.4.31 | **Floor 28** |  | 2026-02-21 | 2026-05-06 |  |  |
|  | 1.3.1.3.4.31.1 | **Ceiling Finishing works - Civil** |  | 2026-03-02 | 2026-05-06 |  |  |
| PG-12586 |  | Gypsum Plastering | 6d | 2026-03-02 | 2026-03-09 | PG-12171 | 130.17d |
| PG-12587 |  | Cornice fixing | 3.67d | 2026-03-19 | 2026-03-23 | PG-12168 FF+6d | 130.17d |
| PG-12589 |  | Toilet False ceiling | 4d | 2026-03-26 | 2026-03-31 | PG-12597 FF+5d | 109.83d |
| PG-12588 |  | Painting Works - Putty, Primer and 1st | 6d | 2026-04-06 | 2026-04-13 | PG-12587, PG-12592 | 118.17d |
| PG-12590 |  | Final Coat Painting | 20d | 2026-04-13 | 2026-05-06 | PG-12588, PG-12599 | 118.17d |
|  | 1.3.1.3.4.31.2 | **Wall Finishing works - Civil** |  | 2026-02-21 | 2026-05-06 |  |  |
| PG-12591 |  | Balcony Railing Fixing works | 4d | 2026-02-21 | 2026-02-26 | PG-12156 FS+7d | 111.17d |
| PG-12593 |  | Dadoing - Wet area | 5d | 2026-03-13 | 2026-03-19 | PG-12166 | 82.5d |
| PG-12592 |  | UPVC Windows & Sliding doors | 5d | 2026-03-31 | 2026-04-06 | PG-12591, PG-12598 FF+5d | 82.5d |
| PG-12594 |  | Painting Works - Putty, Primer and 1st | 6d | 2026-04-06 | 2026-04-13 | PG-12592 | 82.5d |
| PG-12595 |  | Final Coat Painting | 20d | 2026-04-13 | 2026-05-06 | PG-12599 | 82.5d |
|  | 1.3.1.3.4.31.3 | **Floor Finishing Works - Civil** |  | 2026-02-21 | 2026-04-13 |  |  |
| PG-12596 |  | Waterproofing for sunken areas | 3d | 2026-02-21 | 2026-02-25 | PG-12156 FS+7d | 102.17d |
| PG-12597 |  | Floor Tiling - Wet area | 5d | 2026-03-19 | 2026-03-25 | PG-12596, PG-12593 | 82.5d |
| PG-12598 |  | Floor Tiling - Dry area | 5d | 2026-03-25 | 2026-03-31 | PG-12597 FF+5d | 82.5d |
| PG-12599 |  | Wooden doors | 5d | 2026-04-07 | 2026-04-13 | PG-12594 FF | 82.5d |
|  | 1.3.1.3.4.32 | **Floor 29** |  | 2026-03-14 | 2026-05-28 |  |  |
|  | 1.3.1.3.4.32.1 | **Ceiling Finishing works - Civil** |  | 2026-03-24 | 2026-05-28 |  |  |
| PG-12600 |  | Gypsum Plastering | 6d | 2026-03-24 | 2026-03-31 | PG-12180 | 105.83d |
| PG-12601 |  | Cornice fixing | 3.67d | 2026-04-16 | 2026-04-21 | PG-12177 FF+12d | 105.83d |
| PG-12603 |  | Toilet False ceiling | 4d | 2026-04-17 | 2026-04-22 | PG-12611 FF+5d | 91.17d |
| PG-12602 |  | Painting Works - Putty, Primer and 1st | 6d | 2026-04-28 | 2026-05-05 | PG-12601, PG-12606 | 99.83d |
| PG-12604 |  | Final Coat Painting | 19.67d | 2026-05-05 | 2026-05-28 | PG-12602, PG-12613 | 99.83d |
|  | 1.3.1.3.4.32.2 | **Wall Finishing works - Civil** |  | 2026-03-14 | 2026-05-28 |  |  |
| PG-12605 |  | Balcony Railing Fixing works | 4d | 2026-03-14 | 2026-03-19 | PG-12165 FS+7d | 92.83d |
| PG-12607 |  | Dadoing - Wet area | 5d | 2026-04-04 | 2026-04-10 | PG-12175 | 64.17d |
| PG-12606 |  | UPVC Windows & Sliding doors | 5d | 2026-04-22 | 2026-04-28 | PG-12605, PG-12612 FF+5d | 64.17d |
| PG-12608 |  | Painting Works - Putty, Primer and 1st | 6d | 2026-04-28 | 2026-05-05 | PG-12606 | 64.17d |
| PG-12609 |  | Final Coat Painting | 19.67d | 2026-05-05 | 2026-05-28 | PG-12613 | 64.17d |
|  | 1.3.1.3.4.32.3 | **Floor Finishing Works - Civil** |  | 2026-03-14 | 2026-05-05 |  |  |
| PG-12610 |  | Waterproofing for sunken areas | 3d | 2026-03-14 | 2026-03-18 | PG-12165 FS+7d | 83.83d |
| PG-12611 |  | Floor Tiling - Wet area | 5d | 2026-04-10 | 2026-04-16 | PG-12610, PG-12607 | 64.17d |
| PG-12612 |  | Floor Tiling - Dry area | 5d | 2026-04-16 | 2026-04-22 | PG-12611 FF+5d | 64.17d |
| PG-12613 |  | Wooden doors | 5d | 2026-04-29 | 2026-05-05 | PG-12608 FF | 64.17d |
|  | 1.3.1.3.4.33 | **External Finishing works** |  | 2025-12-23 | 2026-04-20 |  |  |
| PG-12614 |  | External walls tie rod hole plugging with GP2 | 30d | 2025-12-23 | 2026-01-28 | PG-11904 | 58.83d |
| PG-12615 |  | External walls grinding works | 40d | 2026-01-15 | 2026-03-04 | PG-12614 FF+30d | 58.83d |
| PG-12616 |  | Texture and painting works | 45d | 2026-02-26 | 2026-04-20 | PG-12615 FF+40d | 58.83d |
|  | 1.3.1.3.5 | **Corridor & Fire Staircase Finishing works** |  | 2026-02-28 | 2026-06-26 |  |  |
|  | 1.3.1.3.5.1 | **Ceiling Finishing works - Civil** |  | 2026-02-28 | 2026-05-22 |  |  |
| PG-12617 |  | Gypsum Plastering | 6d | 2026-02-28 | 2026-03-07 | PG-12144 FF+60d | 0d |
| PG-12618 |  | Cornice fixing | 4d | 2026-03-06 | 2026-03-11 | PG-12545 FF+45d | 100.33d |
| PG-12619 |  | Painting Works - Putty, Primer and 1st | 6d | 2026-03-24 | 2026-03-31 | PG-12546 FF+45d, PG-12618 | 89.17d |
| PG-12620 |  | False ceiling | 30d | 2026-03-31 | 2026-05-05 | PG-12619 | 89.17d |
| PG-12621 |  | Final Coat Painting | 30.67d | 2026-04-17 | 2026-05-22 | PG-12620 FF+15d | 119.17d |
|  | 1.3.1.3.5.2 | **Wall Finishing works - Civil** |  | 2026-04-04 | 2026-06-26 |  |  |
| PG-12622 |  | UPVC Windows & Sliding doors | 5d | 2026-04-04 | 2026-04-10 | PG-12550 FF+60d | 95.17d |
| PG-12623 |  | Wall Cladding Upto 1.2 Mts | 20d | 2026-04-22 | 2026-05-15 | PG-12622 FF+30d | 95.17d |
| PG-12624 |  | Painting Works - Texture & one coat Painting works | 15d | 2026-05-22 | 2026-06-09 | PG-12623, PG-12620 FF+30d | 89.17d |
| PG-12625 |  | Final Coat Painting | 19.67d | 2026-06-04 | 2026-06-26 | PG-12624 FF+15d, PG-12627 | 89.17d |
|  | 1.3.1.3.5.3 | **Floor Finishing Works - Civil** |  | 2026-03-07 | 2026-04-06 |  |  |
| PG-12626 |  | Fire Doors installation | 10d | 2026-03-07 | 2026-03-19 | PG-12617 | 139.67d |
| PG-12627 |  | Vitrified tile flooring works | 15d | 2026-03-19 | 2026-04-06 | PG-12626 | 139.67d |
|  | 1.3.1.3.5.4 | **Fire Staircase Finishing Works - Civil** |  | 2026-03-07 | 2026-06-26 |  |  |
| PG-12628 |  | Staircase Railing Fixing works | 20d | 2026-03-07 | 2026-03-31 | PG-12617 | 0d |
| PG-12629 |  | Wall and ceiling Gypsum plastering | 31.5d | 2026-03-18 | 2026-04-23 | PG-12628 FF+20d | 0d |
| PG-12630 |  | Staircase Flooring and Skirting Works | 39.5d | 2026-04-07 | 2026-05-22 | PG-12629 FF+25d | 0d |
| PG-12631 |  | UPVC Window fixing works | 15.5d | 2026-05-22 | 2026-06-09 | PG-12630 FF+15d | 0d |
| PG-12632 |  | Staircase Painting works | 20d | 2026-06-03 | 2026-06-26 | PG-12631 FF+15d | 0d |
|  | 1.3.1.3.6 | **MEP Civil Works (Shaft, Lift Shaft & OHT )** |  | 2025-12-09 | 2026-05-08 |  |  |
|  | 1.3.1.3.6.1 | **Lift Shaft Works** |  | 2025-12-09 | 2026-05-08 |  |  |

| ID | WBS | Task | Duration | Start | Finish | Predecessors | Total float |
| --- | --- | --- | --- | --- | --- | --- | --- |
| PG-12633 |  | Tie rod hole packing | 8d | 2025-12-09 | 2025-12-18 | PG-11901 | 51.67d |
| PG-12634 |  | Grinding works | 5d | 2025-12-18 | 2025-12-24 | PG-12633 | 51.67d |
| PG-12635 |  | Lift pit water proofing works | 20.67d | 2025-12-24 | 2026-01-17 | PG-12634 | 51.67d |
| PG-12636 |  | Shaft door opening finishing | 6.67d | 2026-01-17 | 2026-01-27 | PG-12635 | 51.67d |
| PG-12637 |  | Painting works | 8d | 2026-01-27 | 2026-02-05 | PG-12636 | 51.67d |
| PG-12638 |  | Lift Wall Cladding Works | 15.67d | 2026-04-21 | 2026-05-08 | PG-12673 | 86d |
|  | 1.3.1.3.6.2 | **Electrical Shaft works** |  | 2025-12-09 | 2026-01-10 |  |  |
| PG-12639 |  | Tie rod hole packing | 8d | 2025-12-09 | 2025-12-18 | PG-11901 | 103.33d |
| PG-12640 |  | Grinding works | 5d | 2025-12-18 | 2025-12-24 | PG-12639 | 103.33d |
| PG-12641 |  | Shaft door opening finishing | 6.67d | 2025-12-24 | 2026-01-01 | PG-12640 | 103.33d |
| PG-12642 |  | Painting works | 8d | 2026-01-01 | 2026-01-10 | PG-12641 | 103.33d |
|  | 1.3.1.3.6.3 | **FPS Shaft works** |  | 2025-12-09 | 2026-01-10 |  |  |
| PG-12643 |  | Tie rod hole packing | 8d | 2025-12-09 | 2025-12-18 | PG-11901 | 181.5d |
| PG-12644 |  | Grinding works | 5d | 2025-12-18 | 2025-12-24 | PG-12643 | 181.5d |
| PG-12645 |  | Shaft door opening finishing | 6.67d | 2025-12-24 | 2026-01-01 | PG-12644 | 181.5d |
| PG-12646 |  | Painting works | 8d | 2026-01-01 | 2026-01-10 | PG-12645 | 181.5d |
|  | 1.3.1.3.6.4 | **PHE Shaft works** |  | 2025-12-09 | 2026-01-10 |  |  |
| PG-12647 |  | Tie rod hole packing | 8d | 2025-12-09 | 2025-12-18 | PG-11901 | 138.5d |
| PG-12648 |  | Grinding works | 5d | 2025-12-18 | 2025-12-24 | PG-12647 | 138.5d |
| PG-12649 |  | Shaft door opening finishing | 6.67d | 2025-12-24 | 2026-01-01 | PG-12648 | 138.5d |
| PG-12650 |  | Painting works | 8d | 2026-01-01 | 2026-01-10 | PG-12649 | 138.5d |
|  | 1.3.1.3.6.5 | **Data & Communication Shaft** |  | 2025-12-09 | 2026-01-08 |  |  |
| PG-12651 |  | Tie rod hole packing | 8d | 2025-12-09 | 2025-12-18 | PG-11901 | 177.67d |
| PG-12652 |  | Grinding works | 5d | 2025-12-18 | 2025-12-24 | PG-12651 | 177.67d |
| PG-12653 |  | Shaft door opening finishing | 5d | 2025-12-24 | 2025-12-30 | PG-12652 | 177.67d |
| PG-12654 |  | Painting works | 8d | 2025-12-30 | 2026-01-08 | PG-12653 | 177.67d |
|  | 1.3.1.3.6.6 | **OHT Works** |  | 2025-12-09 | 2026-01-28 |  |  |
| PG-12655 |  | Tank materials Supply & Shifting | 10d | 2025-12-09 | 2025-12-20 | PG-11901 | 145.5d |
| PG-12656 |  | Assembling OHT FRP Tank | 10d | 2025-12-20 | 2026-01-01 | PG-12655 | 145.5d |
| PG-12657 |  | Installation of OHT Tank | 15d | 2026-01-01 | 2026-01-19 | PG-12656 | 145.5d |
| PG-12658 |  | Water tightness works and checking | 7d | 2026-01-19 | 2026-01-28 | PG-12657 | 145.5d |
|  | 1.3.1.3.7 | **MEP Shaft works** |  | 2026-01-08 | 2026-04-01 |  |  |
|  | 1.3.1.3.7.1 | **Electrical** |  | 2026-01-10 | 2026-02-20 |  |  |
| PG-12659 |  | Tray Works | 9.67d | 2026-01-10 | 2026-01-22 | PG-12642 | 103.33d |
| PG-12660 |  | Cable & Conducting works | 9.83d | 2026-01-22 | 2026-02-03 | PG-12659 | 103.33d |
| PG-12661 |  | Wiring/DB/connector box installation and termination works | 14.5d | 2026-02-04 | 2026-02-20 | PG-12660 | 103.33d |
|  | 1.3.1.3.7.2 | **FPS** |  | 2026-01-10 | 2026-02-20 |  |  |
| PG-12662 |  | Shaft MS Piping & fixtures installation | 19.83d | 2026-01-10 | 2026-02-04 | PG-12646 | 181.5d |
| PG-12663 |  | Tray / cabling / conducting & wiring works | 14.33d | 2026-02-04 | 2026-02-20 | PG-12662 | 181.5d |
|  | 1.3.1.3.7.3 | **Data & Communication** |  | 2026-01-08 | 2026-02-26 |  |  |
| PG-12664 |  | Tray Works | 11.67d | 2026-01-08 | 2026-01-22 | PG-12654 | 177.67d |
| PG-12665 |  | Tray / cabling / conducting & wiring works | 14.67d | 2026-01-22 | 2026-02-10 | PG-12664 | 177.67d |
| PG-12666 |  | Wiring/DB/connector box installation and termination works | 14.5d | 2026-02-10 | 2026-02-26 | PG-12665 | 177.67d |
|  | 1.3.1.3.7.4 | **PHE** |  | 2026-01-10 | 2026-04-01 |  |  |
| PG-12667 |  | Bracket fixing works | 6.67d | 2026-01-10 | 2026-01-19 | PG-12650 | 138.5d |
| PG-12668 |  | Piping Works | 14.67d | 2026-01-19 | 2026-02-05 | PG-12667 | 138.5d |
| PG-12669 |  | Terrace Ring main & OHT Connection works | 39.67d | 2026-02-05 | 2026-03-24 | PG-11905, PG-12668, PG-12658 | 138.5d |
| PG-12670 |  | Commissioning | 6.67d | 2026-03-24 | 2026-04-01 | PG-12669 | 138.5d |
|  | 1.3.1.3.8 | **Lift Installation and Testing works** |  | 2025-12-24 | 2026-07-22 |  |  |
| PG-12671 |  | Lift Shaft Survey works | 9.67d | 2025-12-24 | 2026-01-05 | PG-12634 | 77.33d |
| PG-12672 |  | Guide Rails fixing works | 40.83d | 2026-02-05 | 2026-03-24 | PG-12671, PG-12637 | 51.67d |
| PG-12673 |  | Lift Frame fixing works | 23.33d | 2026-03-25 | 2026-04-21 | PG-12672 | 51.67d |
| PG-12674 |  | CAR Assembly works | 20.67d | 2026-04-21 | 2026-05-14 | PG-12673 | 51.67d |
| PG-12675 |  | Lift Machine Room Works | 29.33d | 2026-05-15 | 2026-06-18 | PG-12674 | 51.67d |
| PG-12676 |  | Slow Speed & High Speed Testing works | 29.67d | 2026-06-18 | 2026-07-22 | PG-12638, PG-12675 | 51.67d |
|  | 1.3.1.3.9 | **Electrical Panel Works** |  | 2025-12-16 | 2026-07-22 |  |  |
|  | 1.3.1.3.9.1 | **Civil Finishing Works** |  | 2025-12-16 | 2026-01-30 |  |  |
| PG-12677 |  | Wall Tie rod hole packing & Grinding works. | 13.83d | 2025-12-16 | 2026-01-01 | PG-12417 | 41.5d |
| PG-12678 |  | Window, Louver and Door fixing works | 6.67d | 2026-01-01 | 2026-01-08 | PG-12677 | 41.5d |
| PG-12679 |  | Pedestal works | 10.67d | 2026-01-08 | 2026-01-21 | PG-12678 | 41.5d |
| PG-12680 |  | Painting works | 6.67d | 2026-01-21 | 2026-01-30 | PG-12679 | 41.5d |
|  | 1.3.1.3.9.2 | **Electrical Panel works** |  | 2026-01-30 | 2026-07-22 |  |  |
| PG-12681 |  | Electrical Panel assembly works | 58.5d | 2026-01-30 | 2026-04-08 | PG-12680 | 41.5d |
| PG-12682 |  | Electrical Panel installation and cable termination. | 60.67d | 2026-04-08 | 2026-06-18 | PG-12681 | 41.5d |
| PG-12683 |  | Electrical Panel Testing and commissioning works | 29.5d | 2026-06-18 | 2026-07-22 | PG-12682 | 41.5d |
|  | 1.3.1.3.10 | **Entrance Lobby works** |  | 2026-06-26 | 2026-10-10 |  |  |
| PG-12684 |  | Flooring Works | 14.5d | 2026-06-26 | 2026-07-13 | PG-12632 | 0d |
| PG-12685 |  | Glass Door and installation Works | 19.67d | 2026-07-14 | 2026-08-05 | PG-12684 | 0d |
| PG-12687 |  | Canopy Works | 24.83d | 2026-07-14 | 2026-08-11 | PG-12684 | 4.33d |
| PG-12686 |  | Painting Works | 9.5d | 2026-08-05 | 2026-08-18 | PG-12685 | 0d |

| ID | WBS | Task | Duration | Start | Finish | Predecessors | Complete | Total float |
| --- | --- | --- | --- | --- | --- | --- | --- | --- |
| PG-12688 |  | Interior Works | 45.67d | 2026-08-18 | 2026-10-10 | PG-12687, PG-12686 |  | 0d |
|  | 1.3.1.3.11 | **Lightening Arrester works** |  | 2026-04-20 | 2026-05-01 |  |  |  |
| PG-12689 |  | Conductor will be lifted with RCC Works, But Terrace works will be done once Parapet Painting done | 9.33d | 2026-04-20 | 2026-05-01 | PG-12616 |  | 139.17d |
|  | 1.3.1.4 | **Podium works Non Tower area** |  | 2024-02-03 | 2025-01-07 |  |  |  |
|  | 1.3.1.4.1 | **Structural works - Podium slab** |  | 2024-02-03 | 2024-09-04 |  |  |  |
|  | 1.3.1.4.1.1 | **LBF to UBF** |  | 2024-02-03 | 2024-07-01 |  |  |  |
| PG-12690 |  | Piling Works | 49.67d | 2024-02-03 A | 2024-04-02 A | PG-10049 | 100% |  |
| PG-12691 |  | Backfilling and Consolidation | 19.67d | 2024-04-02 A | 2024-04-25 A | PG-12690 | 100% |  |
| PG-12692 |  | Columns, Retaining Walls reinforcement work | 9.5d | 2024-04-25 A | 2024-05-07 A | PG-12691 FF+10d | 100% |  |
| PG-12693 |  | Columns, Retaining walls Formwork & Concrete | 14.5d | 2024-05-01 A | 2024-05-18 A | PG-12692 FF+10d | 100% |  |
| PG-12694 |  | Slab Formwork | 29.5d | 2024-05-13 A | 2024-06-17 A | PG-12693 FF+25d | 100% |  |
| PG-12695 |  | Slab reinforcement work | 14.5d | 2024-06-11 A | 2024-06-28 A | PG-12694 FF+10d | 100% |  |
| PG-12696 |  | Slab concrete works | 3.5d | 2024-06-26 A | 2024-07-01 A | PG-12695 FF+2d | 100% |  |
|  | 1.3.1.4.1.2 | **UBF to Podium Level** |  | 2024-06-28 | 2024-09-04 |  |  |  |
| PG-12697 |  | Columns, Retaining Walls reinforcement work | 9.5d | 2024-06-28 A | 2024-07-10 A | PG-12696 FF+8d | 100% |  |
| PG-12698 |  | Columns, Retaining walls Formwork & Concrete | 14.5d | 2024-07-04 A | 2024-07-22 A | PG-12697 FF+10d | 100% |  |
| PG-12699 |  | Slab Formwork | 29.5d | 2024-07-16 A | 2024-08-21 A | PG-12698 FF+25d | 100% |  |
| PG-12700 |  | Slab reinforcement work | 14.5d | 2024-08-14 A | 2024-09-02 A | PG-12699 FF+10d | 100% |  |
| PG-12701 |  | Slab concrete works | 3.5d | 2024-08-30 A | 2024-09-04 A | PG-12700 FF+2d | 100% |  |
|  | 1.3.1.4.2 | **Finishing Works - Podium slab** |  | 2024-07-01 | 2024-12-04 |  |  |  |
| PG-12702 |  | Carwash Collection Sump Works | 29.67d | 2024-07-01 A | 2024-08-05 A | PG-12696 | 100% |  |
| PG-12703 |  | Waterproofing works | 24.67d | 2024-08-05 A | 2024-09-04 A | PG-12702 | 100% |  |
| PG-12704 |  | Screed concrete works | 9.5d | 2024-09-04 A | 2024-09-14 A | PG-12703 | 100% |  |
| PG-12705 |  | Podium Waterproofing works | 34.5d | 2024-09-14 A | 2024-10-25 A | PG-12704, PG-12701 | 100% |  |
| PG-12706 |  | Painting Works | 31.17d | 2024-10-26 A | 2024-12-04 A | PG-12705 | 100% |  |
| PG-12707 |  | Fire Driveway around buildings | 31.17d | 2024-10-26 A | 2024-12-02 A | PG-12705 | 100% |  |
|  | 1.3.1.4.3 | **MEP Works** |  | 2024-04-25 | 2025-01-07 |  |  |  |
|  | 1.3.1.4.3.1 | **LBF to UBF** |  | 2024-04-25 | 2025-01-07 |  |  |  |
| PG-12708 |  | Surface Drainage System (Chambers and Pipeline for Sump) | 29.67d | 2024-04-25 A | 2024-05-30 A | PG-12690 FS+20d | 100% |  |
| PG-12709 |  | Pump fixing for collection sump | 6.67d | 2024-08-05 A | 2024-08-13 A | PG-12702 | 100% |  |
| PG-12710 |  | FPS Piping and Sprinkler Fixing works | 28.67d | 2024-12-04 A | 2025-01-07 A | PG-12709, PG-12706 | 100% |  |
| PG-12711 |  | Electrical Conducting and Light Fixing works | 14.67d | 2024-12-04 A | 2024-12-20 A | PG-12706 FF+15d | 100% |  |
|  | 1.3.1.4.3.2 | **UBF to Podium** |  | 2024-09-27 | 2024-12-27 |  |  |  |
| PG-12712 |  | Piping for Rainwater and Soil lines in Ceiling | 39.83d | 2024-09-27 A | 2024-11-16 A | PG-12701 FF+60d | 100% |  |
| PG-12713 |  | FPS Piping and Sprinkler Fixing works | 29.5d | 2024-11-05 A | 2024-12-10 A | PG-12712 FF+20d | 100% |  |
| PG-12714 |  | Electrical Conducting and Light Fixing works | 14.67d | 2024-12-10 A | 2024-12-27 A | PG-12713, PG-12706 | 100% |  |
|  | 1.3.1.5 | **Landscape and Hardscape works** |  | 2026-04-20 | 2026-08-03 |  |  |  |
| PG-12715 |  | Hardscape ( Granite, Planter, Walkways Etc..) | 44.83d | 2026-04-20 | 2026-06-11 | PG-12616 |  | 58.83d |
| PG-12716 |  | Filter media and soil filling works | 19.67d | 2026-06-06 | 2026-06-29 | PG-12715 FF+15d |  | 58.83d |
| PG-12717 |  | Irrigation piping works | 19.67d | 2026-06-18 | 2026-07-10 | PG-12716 FF+10d |  | 58.83d |
| PG-12718 |  | Planting works | 19.67d | 2026-07-10 | 2026-08-03 | PG-12717 |  | 58.83d |
|  | 1.3.9 | **Project Infrastructure Works ( Services/MEP )** |  | 2023-10-04 | 2026-09-19 |  |  |  |
|  | 1.3.9.1 | **Civil & Services Works ( Transformer, DG,STP )** |  | 2023-10-04 | 2026-09-19 |  |  |  |
|  | 1.3.9.1.1 | **Transformer Yard Civil Works** |  | 2026-03-16 | 2026-05-25 |  |  |  |
|  | 1.3.9.1.1.1 | **Transformer 01** |  | 2026-03-16 | 2026-05-25 |  |  |  |
| PG-30428 |  | Footing and Pedestal Excavation Works | 10.5d | 2026-03-16 | 2026-03-27 | PG-12661 FF+30d |  | 119d |
| PG-30429 |  | Footing and Pedestal Reinforcement works | 3.33d | 2026-03-30 | 2026-04-02 | PG-30428 FF+5d |  | 119d |
| PG-30430 |  | Footing and Pedestal Concrete works | 9.67d | 2026-04-02 | 2026-04-14 | PG-30429 |  | 119d |
| PG-30431 |  | Fencing Retaining wall footing reinforcement works | 6.33d | 2026-04-14 | 2026-04-21 | PG-30430 |  | 119d |
| PG-30432 |  | Fencing Retaining wall footing formwork and concrete works | 6.33d | 2026-04-21 | 2026-04-28 | PG-30431 |  | 119d |
| PG-30434 |  | Fencing works MS/GRC | 20.67d | 2026-04-25 | 2026-05-20 | PG-30433 FF+15d |  | 119d |
| PG-30433 |  | Retaining wall upto low level concrete works | 3.67d | 2026-04-28 | 2026-05-02 | PG-30432 |  | 119d |
| PG-30435 |  | Floor Aggregates spreading works | 3.67d | 2026-05-20 | 2026-05-25 | PG-30434 |  | 119d |
|  | 1.3.9.1.2 | **Transformer Yard Electrical works** |  | 2026-08-03 | 2026-09-19 |  |  |  |
|  | 1.3.9.1.2.1 | **Transformer 01** |  | 2026-08-03 | 2026-09-19 |  |  |  |
| PG-30460 |  | Cable Trench works | 9.5d | 2026-08-03 | 2026-08-13 | PG-30435, PG-12718 |  | 58.83d |
| PG-30461 |  | LTQS Installation Works | 7.67d | 2026-08-13 | 2026-08-24 | PG-30460 |  | 58.83d |
| PG-30462 |  | Cable laying works | 13.5d | 2026-08-24 | 2026-09-08 | PG-30461 |  | 58.83d |
| PG-30463 |  | Cable Termination works | 3.67d | 2026-09-09 | 2026-09-12 | PG-30462 |  | 58.83d |
| PG-30464 |  | Testing and commissioning works | 5.67d | 2026-09-12 | 2026-09-19 | PG-30463, PG-10036 |  | 58.83d |
|  | 1.3.9.1.3 | **DG Room & Installation Works** |  | 2023-10-04 | 2024-06-03 |  |  |  |
|  | 1.3.9.1.3.1 | **Civil Works** |  | 2023-10-04 | 2023-11-13 |  |  |  |
|  | 1.3.9.1.3.1.1 | **DG 01** |  | 2023-10-04 | 2023-11-13 |  |  |  |
| PG-30480 |  | Wall Grinding Works | 8.67d | 2023-10-04 A | 2023-10-13 A |  | 100% |  |
| PG-30481 |  | DG Exhaust works | 14.67d | 2023-10-04 A | 2023-10-20 A | PG-30480 FF+5d | 100% |  |
| PG-30482 |  | Pedestal Concrete works | 4.67d | 2023-10-20 A | 2023-10-26 A | PG-30481 | 100% |  |
| PG-30483 |  | DG Room Flooring Works | 6.5d | 2023-10-26 A | 2023-11-03 A | PG-30482 | 100% |  |
| PG-30484 |  | DG Room Painting works | 7.5d | 2023-11-03 A | 2023-11-13 A | PG-30483 | 100% |  |
|  | 1.3.9.1.3.2 | **Electrical works** |  | 2023-11-13 | 2024-06-03 |  |  |  |
|  | 1.3.9.1.3.2.1 | **DG 01** |  | 2023-11-13 | 2024-06-03 |  |  |  |

| ID | WBS | Task | Duration | Start | Finish | Predecessors | Complete | Total float |
| --- | --- | --- | --- | --- | --- | --- | --- | --- |
| PG-30495 |  | Exhaust Piping and insulation works | 89.67d | 2023-11-13 A | 2024-02-26 A | PG-30484 | 100% |  |
| PG-30496 |  | DG Cabling and conducting works | 29.67d | 2024-02-27 A | 2024-04-01 A | PG-30495 | 100% |  |
| PG-30497 |  | DG installation works | 29.67d | 2024-04-01 A | 2024-05-06 A | PG-30496 | 100% |  |
| PG-30498 |  | Light fixtures and Switch plates fixing works | 8.67d | 2024-05-06 A | 2024-05-16 A | PG-30497 | 100% |  |
| PG-30499 |  | Testing and Snag Works | 15.67d | 2024-05-16 A | 2024-06-03 A | PG-30498, PG-10034 | 100% |  |
|  | 1.3.9.1.4 | **STP Civil Works** |  | 2023-10-04 | 2024-05-28 |  |  |  |
|  | 1.3.9.1.4.1 | **Sewage Treatment Plant 01 ( 1000KLD )** |  | 2023-10-04 | 2024-05-28 |  |  |  |
| PG-30510 |  | Partition Walls RCC for SBR,Equilisation,Sledg Tank Etc. | 49d | 2023-10-04 A | 2023-12-01 A |  | 100% |  |
| PG-30511 |  | All Tank Top Slab and Working Platform RCC works | 25d | 2023-12-01 A | 2023-12-30 A | PG-30510 | 100% |  |
| PG-30512 |  | Grinding works for all RCC Walls and ceiling | 25d | 2023-12-30 A | 2024-01-30 A | PG-30511 | 100% |  |
| PG-30513 |  | Puddle Flange Fixing Works | 10d | 2024-01-30 A | 2024-02-10 A | PG-30512 | 100% |  |
| PG-30514 |  | Waterproofing inside tanks | 24.67d | 2024-02-10 A | 2024-03-11 A | PG-30513 | 100% |  |
| PG-30515 |  | Pond Testing for leakage | 21d | 2024-03-11 A | 2024-04-05 A | PG-30514 | 100% |  |
| PG-30516 |  | Pumps Pedestal works | 10d | 2024-04-05 A | 2024-04-17 A | PG-30515 | 100% |  |
| PG-30517 |  | Railing works for working platform | 14.67d | 2024-04-17 A | 2024-05-04 A | PG-30516 | 100% |  |
| PG-30518 |  | Access Ladder works | 10d | 2024-05-04 A | 2024-05-16 A | PG-30517 | 100% |  |
| PG-30519 |  | Painting Works | 9.67d | 2024-05-16 A | 2024-05-28 A | PG-30518 | 100% |  |
|  | 1.3.9.1.5 | **STP MEP Works** |  | 2024-05-28 | 2026-02-17 |  |  |  |
|  | 1.3.9.1.5.1 | **Sewage Treatment Plant 01 ( 1000KLD )** |  | 2024-05-28 | 2026-02-17 |  |  |  |
| PG-30540 |  | Piping works from Flush tank to STP | 15d | 2024-05-28 A | 2024-06-14 A | PG-10038, PG-30519 | 100% |  |
| PG-30546 |  | STP Exhaust piping and Insulation works | 162d | 2024-05-28 A | 2024-12-09 A | PG-30519 | 100% |  |
| PG-30541 |  | Piping from STP Treated water to Irrigation network | 5.67d | 2024-06-14 A | 2024-06-20 A | PG-30540 | 100% |  |
| PG-30542 |  | piping for Excess Treated water discharge | 5.67d | 2025-12-01 | 2025-12-06 | PG-30541, PG-10027 |  | 211.58d |
| PG-30543 |  | Equipment installation and Pump Fixing Works | 15.67d | 2025-12-06 | 2025-12-25 | PG-30542 |  | 211.58d |
| PG-30544 |  | Electrical Cabling works for Pumps | 9.5d | 2025-12-25 | 2026-01-05 | PG-30543 |  | 211.58d |
| PG-30545 |  | Electrical Conducting/Wiring and fixture installation | 14.67d | 2026-01-05 | 2026-01-22 | PG-30544 |  | 211.58d |
| PG-30547 |  | Testing and internal Snag | 21d | 2026-01-22 | 2026-02-17 | PG-30545, PG-30546 |  | 211.58d |
|  | 1.4 | **External Development Works** |  | 2023-10-04 | 2025-12-23 |  |  |  |
|  | 1.4.3 | **External Development works - Road Works** |  | 2023-10-04 | 2024-01-02 |  |  |  |
|  | 1.4.3.1 | **Spine Road works** |  | 2023-10-04 | 2023-11-27 |  |  |  |
| PG-30612 |  | Civil Works | 44.67d | 2023-10-04 A | 2023-11-27 A | PG-0998 SS | 100% |  |
| PG-30613 |  | Services Works | 30.67d | 2023-10-10 A | 2023-11-15 A | PG-30612 SS+5d | 100% |  |
|  | 1.4.3.2 | **CDP Road works** |  | 2023-10-04 | 2024-01-02 |  |  |  |
| PG-30614 |  | Civil Works | 74.67d | 2023-10-04 A | 2024-01-02 A | PG-30613 FF+30d, PG-0998 SS | 100% |  |
| PG-30615 |  | Services Works | 44.67d | 2023-10-21 A | 2023-12-14 A | PG-30614 SS+15d | 100% |  |
|  | 1.4.4 | **External Development Amenities** |  | 2023-10-04 | 2024-05-18 |  |  |  |
|  | 1.4.4.1 | **Swimming Pool & Lagoon Works** |  | 2023-10-04 | 2024-05-18 |  |  |  |
|  | 1.4.4.1.1 | **Civil Works** |  | 2023-10-04 | 2024-04-15 |  |  |  |
| PG-30616 |  | Excavation Works | 4.5d | 2023-10-04 A | 2023-10-09 A | MS-0000 | 100% |  |
| PG-30617 |  | PCC For Bottom Raft | 4.67d | 2023-10-10 A | 2023-10-16 A | PG-30616 | 100% |  |
| PG-30618 |  | Bottom Raft Reinforcement and Formwork | 9.5d | 2023-10-16 A | 2023-10-27 A | PG-30617 | 100% |  |
| PG-30619 |  | Bottom Raft concrete works | 1.67d | 2023-10-27 A | 2023-10-30 A | PG-30618 | 100% |  |
| PG-30620 |  | Side Retaining wall Reinforcement works | 4.67d | 2023-10-30 A | 2023-11-06 A | PG-30619 | 100% |  |
| PG-30621 |  | Side Wall Formwork | 17.67d | 2023-11-06 A | 2023-11-25 A | PG-30620 | 100% |  |
| PG-30622 |  | Side Wall Concreting works | 3.67d | 2023-11-25 A | 2023-11-30 A | PG-30621 | 100% |  |
| PG-30623 |  | Puddle Flange Fixing Works | 1.67d | 2023-11-30 A | 2023-12-02 A | PG-30622 | 100% |  |
| PG-30624 |  | Waterproofing works | 20.67d | 2023-12-02 A | 2023-12-26 A | PG-30623 | 100% |  |
| PG-30625 |  | Pond Testing works | 13.67d | 2023-12-26 A | 2024-01-11 A | PG-30624 | 100% |  |
| PG-30626 |  | Snag and DE snag works | 4.83d | 2024-01-11 A | 2024-01-17 A | PG-30625 | 100% |  |
| PG-30627 |  | Plant room Civil works | 30.67d | 2024-01-17 A | 2024-02-23 A | PG-30626 | 100% |  |
| PG-30628 |  | Protective Screed Concrete works | 2.5d | 2024-01-17 A | 2024-01-20 A | PG-30626 | 100% |  |
| PG-30629 |  | Screed Concrete above Plumbing Pipes | 2.33d | 2024-02-07 A | 2024-02-10 A | PG-30631 | 100% |  |
| PG-30630 |  | Tiling works for floor and walls including Grouting | 50.33d | 2024-02-15 A | 2024-04-15 A | PG-30629 FF+55d | 100% |  |
|  | 1.4.4.1.2 | **MEP Works** |  | 2024-01-20 | 2024-05-18 |  |  |  |
| PG-30631 |  | Plumbing Pipes installation in Floor | 14.67d | 2024-01-20 A | 2024-02-07 A | PG-30628 | 100% |  |
| PG-30632 |  | Pipe Network for Pump room works | 25.67d | 2024-02-23 A | 2024-03-23 A | PG-30627 | 100% |  |
| PG-30634 |  | Electrical cabling and fixture works | 8.5d | 2024-03-19 A | 2024-03-29 A | PG-30627 FF+30d | 100% |  |
| PG-30633 |  | Fixtures inside Pool | 8.67d | 2024-04-15 A | 2024-04-25 A | PG-30632, PG-30630 | 100% |  |
| PG-30635 |  | Testing and Snaging | 20.67d | 2024-04-25 A | 2024-05-18 A | PG-30634, PG-30633 | 100% |  |
|  | 1.4.6 | **Central Club House** |  | 2023-10-04 | 2025-12-23 |  |  |  |
| PG-30711 |  | Club House Interior works | 152.67d | 2025-06-24 | 2025-12-23 | PG-30700 SS+30d, PG-30710 |  | 299.47d |
|  | 1.4.6.1 | **Civil Structure works** |  | 2023-10-04 | 2024-07-13 |  |  |  |
| PG-30680 |  | Excavation Works | 20.67d | 2023-10-04 A | 2023-10-27 A |  | 100% |  |
| PG-30681 |  | Foundation and Shear wall Reinforcement | 17.67d | 2023-10-28 A | 2023-11-20 A | PG-30680 | 100% |  |
| PG-30682 |  | Foundation and Shear wall Formwork & Concrete | 24.67d | 2023-11-20 A | 2023-12-19 A | PG-30681 | 100% |  |
| PG-30683 |  | Basement Roof Formwork and Reinforcement | 15.67d | 2023-12-19 A | 2024-01-06 A | PG-30682 | 100% |  |
| PG-30684 |  | Basement Roof Works | 5d | 2024-01-06 A | 2024-01-12 A | PG-30683 | 100% |  |
| PG-30685 |  | Shear Wall Reinforcement works from GF to FF | 14d | 2024-01-12 A | 2024-01-29 A | PG-30684 | 100% |  |
| PG-30686 |  | Shear Wall Formwork and Concrete from GF to FF | 20d | 2024-01-29 A | 2024-02-21 A | PG-30685 | 100% |  |
| PG-30687 |  | Ground Floor Roof Slab Formwork and reinforcement | 14.5d | 2024-02-21 A | 2024-03-09 A | PG-30686 | 100% |  |

| ID | WBS | Task | Duration | Start | Finish | Predecessors | Complete | Total float |
| --- | --- | --- | --- | --- | --- | --- | --- | --- |
| PG-30688 |  | Ground Floor Roof Slab Concrete | 1.33d | 2024-03-09 A | 2024-03-09 A | PG-30687 | 100% |  |
| PG-30689 |  | Shear walls Reinforcement from FF to Terrace Level | 15.67d | 2024-03-09 A | 2024-03-28 A | PG-30688 | 100% |  |
| PG-30690 |  | Shear walls Formwork & Concrete from FF to Terrace Level | 19.5d | 2024-03-28 A | 2024-04-19 A | PG-30689 | 100% |  |
| PG-30691 |  | First Floor Roof Slab Formwork and reinforcement | 15.5d | 2024-04-19 A | 2024-05-08 A | PG-30690 | 100% |  |
| PG-30692 |  | First Floor Roof Slab Concrete | 0.83d | 2024-05-08 A | 2024-05-09 A | PG-30691 | 100% |  |
| PG-30693 |  | Terrace Parapet wall works | 10.67d | 2024-05-09 A | 2024-05-22 A | PG-30692 | 100% |  |
| PG-30694 |  | Terrace Lift head room works | 13.5d | 2024-05-22 A | 2024-06-07 A | PG-30693 | 100% |  |
| PG-30695 |  | Terrace Waterproofing and Screed works | 30.67d | 2024-06-07 A | 2024-07-13 A | PG-30694 | 100% |  |
|  | 1.4.6.2 | **MEP Works** |  | 2024-05-09 | 2025-06-18 |  |  |  |
| PG-30701 |  | Electrical Works | 60.5d | 2024-05-09 A | 2024-07-19 A | PG-30692 | 100% |  |
| PG-30702 |  | HVAC Works | 39.67d | 2024-05-09 A | 2024-06-25 A | PG-30692 | 100% |  |
| PG-30703 |  | Data and Communication works | 13.67d | 2024-05-09 A | 2024-05-25 A | PG-30692 | 100% |  |
| PG-30704 |  | Lift Installation Works | 153.5d | 2024-07-13 A | 2025-01-13 A | PG-30695 | 100% |  |
|  | 1.4.6.2.1 | **Plumbing Works** |  | 2024-07-01 | 2025-06-02 |  |  |  |
| PG-30696 |  | Piping works in toilets and Testing | 14.67d | 2024-07-01 A | 2024-07-18 A | PG-30692 FF+60d | 100% |  |
| PG-30698 |  | Terrace Ring main works | 15.67d | 2024-07-13 A | 2024-08-01 A | PG-30695 | 100% |  |
| PG-30697 |  | CP and Sanitary fixture works | 10.33d | 2025-05-20 | 2025-06-02 | PG-30705, PG-30709 |  | 539.3d |
|  | 1.4.6.2.2 | **FPS Works** |  | 2024-05-09 | 2025-06-18 |  |  |  |
| PG-30699 |  | Piping Works | 14.67d | 2024-05-09 A | 2024-05-27 A | PG-30692 | 100% |  |
| PG-30700 |  | Sprinkler fixing and Testing Works | 24.33d | 2025-05-20 | 2025-06-18 | PG-30699, PG-30709 |  | 299.47d |
|  | 1.4.6.3 | **Civil Finishing works** |  | 2024-07-18 | 2025-05-20 |  |  |  |
| PG-30706 |  | Toilet Tiling Works | 61.5d | 2024-07-18 A | 2024-09-30 A | PG-30696 | 100% |  |
| PG-30705 |  | Toilet waterproofing works | 31.5d | 2024-08-19 A | 2024-09-25 A | PG-30698 SS+30d, PG-30692 | 100% |  |
| PG-30707 |  | Granite and Marble works | 91.67d | 2024-09-30 A | 2025-01-18 A | PG-30703, PG-30702, PG-30701, PG-30706 | 100% |  |
| PG-30708 |  | UPVC Door Window Works | 29.67d | 2025-01-18 A | 2025-02-21 A | PG-30707 | 100% |  |
| PG-30710 |  | Glazing / Façade /Wall Cladding Works | 72.67d | 2025-01-18 A | 2025-04-16 | PG-30707 | 86% | 299.47d |
| PG-30709 |  | Painting Works | 29.83d | 2025-04-16 | 2025-05-20 | PG-30708, PG-30710 |  | 299.47d |
|  | 1.6 | **Testing And Commissioning Works** |  | 2024-05-18 | 2026-10-24 |  |  |  |
| PG-31528 |  | T&C - Roundabout and Water bodies | 15.67d | 2024-07-27 A | 2024-08-16 A | PG-32349 | 100% |  |
| PG-31533 |  | T&C - Clubhouse Lift | 29.33d | 2025-01-13 A | 2025-02-15 A | PG-30704 | 100% |  |
|  | 1.6.1 | **Building 1** |  | 2024-12-20 | 2026-08-18 |  |  |  |
|  | 1.6.1.1 | **Tower 1** |  | 2025-01-15 | 2026-04-20 |  |  |  |
|  | 1.6.1.1.1 | **Units** |  | 2025-01-15 | 2026-02-20 |  |  |  |
| PG-30731 |  | T&C - Ground Floor | 28.67d | 2025-01-15 A | 2025-02-17 A | PG-10207, PG-10210, PG-10213 | 100% |  |
| PG-30732 |  | T&C - Floor 1 | 30.67d | 2025-02-01 A | 2025-03-10 A | PG-10219, PG-10216, PG-10222 | 100% |  |
| PG-30733 |  | T&C - Floor 2 | 29.67d | 2025-02-14 A | 2025-03-21 A | PG-10228, PG-10225, PG-10231 | 100% |  |
| PG-30734 |  | T&C - Floor 3 | 29.67d | 2025-03-04 A | 2025-04-04 | PG-10237, PG-10234, PG-10240 | 98% | 453.34d |
| PG-30735 |  | T&C - Floor 4 | 29.67d | 2025-03-17 A | 2025-04-17 | PG-10243, PG-10246, PG-10249, PG-10256 | 61% | 442.51d |
| PG-30736 |  | T&C - Floor 5 | 29.67d | 2025-04-02 A | 2025-05-07 | PG-10506, PG-10255, PG-10252, PG-10258 | 3% | 426.05d |
| PG-30737 |  | T&C - Floor 6 | 29.67d | 2025-04-16 | 2025-05-21 | PG-10264, PG-10261, PG-10267 |  | 414.72d |
| PG-30738 |  | T&C - Floor 7 | 28.67d | 2025-05-01 | 2025-06-04 | PG-10273, PG-10270, PG-10276 |  | 402.59d |
| PG-30739 |  | T&C - Floor 8 | 28.67d | 2025-05-15 | 2025-06-18 | PG-10282, PG-10279, PG-10285 |  | 388.83d |
| PG-30740 |  | T&C - Floor 9 | 28.67d | 2025-05-29 | 2025-07-02 | PG-10291, PG-10288, PG-10294 |  | 377.6d |
| PG-30741 |  | T&C - Floor 10 | 30.67d | 2025-06-12 | 2025-07-18 | PG-10300, PG-10297, PG-10303 |  | 364.72d |
| PG-30742 |  | T&C - Floor 11 | 30.67d | 2025-06-26 | 2025-08-01 | PG-10309, PG-10306, PG-10312 |  | 352.42d |
| PG-30743 |  | T&C - Floor 12 | 28.83d | 2025-07-10 | 2025-08-12 | PG-10318, PG-10315, PG-10321 |  | 342.92d |
| PG-30744 |  | T&C - Floor 13 | 28.67d | 2025-07-24 | 2025-08-28 | PG-10327, PG-10324, PG-10330 |  | 330.42d |
| PG-30745 |  | T&C - Floor 14 | 28.67d | 2025-08-06 | 2025-09-10 | PG-10336, PG-10333, PG-10339 |  | 319.42d |
| PG-30746 |  | T&C - Floor 15 | 28.67d | 2025-08-19 | 2025-09-22 | PG-10345, PG-10342, PG-10348 |  | 309.42d |
| PG-30747 |  | T&C - Floor 16 | 28.67d | 2025-09-01 | 2025-10-06 | PG-10354, PG-10351, PG-10357 |  | 298.42d |
| PG-30748 |  | T&C - Floor 17 | 28.67d | 2025-09-13 | 2025-10-18 | PG-10363, PG-10360, PG-10366 |  | 287.42d |
| PG-30749 |  | T&C - Floor 18 | 28.67d | 2025-09-26 | 2025-10-31 | PG-10372, PG-10369, PG-10375 |  | 276.42d |
| PG-30750 |  | T&C - Floor 19 | 28.67d | 2025-10-22 | 2025-11-26 | PG-10381, PG-10378, PG-10384 |  | 255.42d |
| PG-30751 |  | T&C - Floor 20 | 28.67d | 2025-11-14 | 2025-12-17 | PG-10390, PG-10387, PG-10393 |  | 236.25d |
| PG-30752 |  | T&C - Floor 21 | 28.67d | 2025-12-06 | 2026-01-08 | PG-10399, PG-10396, PG-10402 |  | 217.25d |
| PG-30753 |  | T&C - Floor 22 | 29.67d | 2025-12-27 | 2026-02-02 | PG-10408, PG-10405, PG-10411 |  | 197.25d |
| PG-30754 |  | T&C - Floor 23 | 28.83d | 2026-01-16 | 2026-02-20 | PG-10417, PG-10414, PG-10420 |  | 181.25d |
|  | 1.6.1.1.2 | **Common Areas** |  | 2025-10-06 | 2026-04-20 |  |  |  |
| PG-30755 |  | T&C - Internal Electrical Works | 12.67d | 2025-10-06 | 2025-10-21 | PG-10815 |  | 256.92d |
| PG-30756 |  | T&C - Internal FPS Works | 12.83d | 2025-10-06 | 2025-10-21 | PG-10817 |  | 256.58d |
| PG-30757 |  | T&C - Data & Communication Works | 12.83d | 2025-10-11 | 2025-10-27 | PG-10820 |  | 251.58d |
| PG-30758 |  | T&C - Internal PHE Works including OHT | 19.33d | 2025-11-15 | 2025-12-08 | PG-10824 |  | 213.58d |
| PG-30761 |  | T&C - Lightining Arrestor works | 6.67d | 2025-12-15 | 2025-12-23 | PG-10843 |  | 245.42d |
| PG-30760 |  | T&C - Electrical Panel Works | 20.5d | 2026-02-26 | 2026-03-21 | PG-10837 |  | 126.92d |
| PG-30759 |  | T&C - Lift Works | 19.33d | 2026-03-27 | 2026-04-20 | PG-10830 |  | 103.08d |
|  | 1.6.1.2 | **Tower 2** |  | 2025-01-11 | 2026-05-08 |  |  |  |
|  | 1.6.1.2.1 | **Units** |  | 2025-01-11 | 2026-03-31 |  |  |  |
| PG-30762 |  | T&C - Ground Floor | 28.67d | 2025-01-11 A | 2025-02-13 A | PG-11022, PG-11019, PG-11025 | 100% |  |
| PG-30763 |  | T&C - Floor 1 | 29.67d | 2025-01-29 A | 2025-03-04 A | PG-11031, PG-11028, PG-11034 | 100% |  |
| PG-30764 |  | T&C - Floor 2 | 30.67d | 2025-02-12 A | 2025-03-20 A | PG-11040, PG-11037, PG-11043 | 100% |  |

| ID | WBS | Task | Duration | Start | Finish | Predecessors | Complete | Total float |
| --- | --- | --- | --- | --- | --- | --- | --- | --- |
| PG-30765 |  | T&C - Floor 3 | 28.67d | 2025-03-01 A | 2025-04-04 A | PG-11049, PG-11046, PG-11052 | 100% |  |
| PG-30766 |  | T&C - Floor 4 | 29.67d | 2025-03-19 A | 2025-04-25 | PG-11058, PG-11055, PG-11061 | 37% | 435.43d |
| PG-30767 |  | T&C - Floor 5 | 29.67d | 2025-03-31 A | 2025-05-06 | PG-11067, PG-11064, PG-11070 | 8% | 426.59d |
| PG-30768 |  | T&C - Floor 6 | 29.67d | 2025-04-16 | 2025-05-21 | PG-11076, PG-11073, PG-11079 |  | 414.69d |
| PG-30769 |  | T&C - Floor 7 | 29.67d | 2025-04-30 | 2025-06-04 | PG-11085, PG-11082, PG-11088 |  | 402.67d |
| PG-30770 |  | T&C - Floor 8 | 28.67d | 2025-05-16 | 2025-06-19 | PG-11094, PG-11091, PG-11097 |  | 388.83d |
| PG-30771 |  | T&C - Floor 9 | 28.67d | 2025-05-28 | 2025-07-01 | PG-11103, PG-11100, PG-11106 |  | 378.67d |
| PG-30772 |  | T&C - Floor 10 | 29.67d | 2025-06-13 | 2025-07-18 | PG-11112, PG-11109, PG-11115 |  | 364.56d |
| PG-30773 |  | T&C - Floor 11 | 29.67d | 2025-06-27 | 2025-08-01 | PG-11121, PG-11118, PG-11124 |  | 352.33d |
| PG-30774 |  | T&C - Floor 12 | 29.67d | 2025-07-11 | 2025-08-14 | PG-11130, PG-11127, PG-11133 |  | 341.33d |
| PG-30775 |  | T&C - Floor 13 | 28.67d | 2025-07-25 | 2025-08-28 | PG-11139, PG-11136, PG-11142 |  | 330.33d |
| PG-30776 |  | T&C - Floor 14 | 28.67d | 2025-08-07 | 2025-09-10 | PG-11148, PG-11145, PG-11151 |  | 319.33d |
| PG-30777 |  | T&C - Floor 15 | 28.67d | 2025-08-20 | 2025-09-22 | PG-11157, PG-11154, PG-11160 |  | 309.33d |
| PG-30778 |  | T&C - Floor 16 | 28.83d | 2025-09-01 | 2025-10-04 | PG-11166, PG-11163, PG-11169 |  | 299d |
| PG-30779 |  | T&C - Floor 17 | 28.83d | 2025-09-13 | 2025-10-17 | PG-11175, PG-11172, PG-11178 |  | 288d |
| PG-30780 |  | T&C - Floor 18 | 29.83d | 2025-09-26 | 2025-11-03 | PG-11184, PG-11181, PG-11187 |  | 276.17d |
| PG-30781 |  | T&C - Floor 19 | 29.83d | 2025-10-10 | 2025-11-15 | PG-11193, PG-11190, PG-11196 |  | 265.17d |
| PG-30782 |  | T&C - Floor 20 | 29.83d | 2025-10-24 | 2025-11-29 | PG-11202, PG-11199, PG-11205 |  | 253.17d |
| PG-30783 |  | T&C - Floor 21 | 29.67d | 2025-11-06 | 2025-12-11 | PG-11211, PG-11208, PG-11214 |  | 243.5d |
| PG-30784 |  | T&C - Floor 22 | 28.67d | 2025-11-28 | 2026-01-01 | PG-11220, PG-11217, PG-11223 |  | 223.67d |
| PG-30785 |  | T&C - Floor 23 | 29.83d | 2025-12-19 | 2026-01-23 | PG-11229, PG-11226, PG-11232 |  | 205.67d |
| PG-30786 |  | T&C - Floor 24 | 30.67d | 2026-01-08 | 2026-02-14 | PG-11238, PG-11235, PG-11241 |  | 186.5d |
| PG-30787 |  | T&C - Floor 25 | 29.67d | 2026-02-03 | 2026-03-09 | PG-11247, PG-11244, PG-11250 |  | 167d |
| PG-30788 |  | T&C - Floor 26 | 30.67d | 2026-02-24 | 2026-03-31 | PG-11256, PG-11253, PG-11259 |  | 119.5d |
|  | 1.6.1.2.2 | **Common Areas** |  | 2025-11-12 | 2026-05-08 |  |  |  |
| PG-30790 |  | T&C - Internal FPS Works | 14.67d | 2025-11-12 | 2025-11-29 | PG-11698 |  | 222.67d |
| PG-30789 |  | T&C - Internal Electrical Works | 14.5d | 2025-11-12 | 2025-11-29 | PG-11696 |  | 222.83d |
| PG-30791 |  | T&C - Data & Communication Works | 14.67d | 2025-11-19 | 2025-12-05 | PG-11701 |  | 217.33d |
| PG-30792 |  | T&C - Internal PHE Works including OHT | 20.5d | 2025-12-23 | 2026-01-15 | PG-11705 |  | 181.5d |
| PG-30795 |  | T&C - Lightining Arrestor works | 6.67d | 2026-01-22 | 2026-01-31 | PG-11724 |  | 215.67d |
| PG-30794 |  | T&C - Electrical Panel Works | 20.5d | 2026-02-25 | 2026-03-20 | PG-11718 |  | 158.33d |
| PG-30793 |  | T&C - Lift Works | 19.5d | 2026-04-16 | 2026-05-08 | PG-11711 |  | 116.17d |
|  | 1.6.1.3 | **Tower 3** |  | 2025-03-17 | 2026-08-18 |  |  |  |
|  | 1.6.1.3.1 | **Units** |  | 2025-03-17 | 2026-07-08 |  |  |  |
| PG-30796 |  | T&C - Ground Floor | 29.67d | 2025-03-17 A | 2025-04-22 | PG-11918, PG-11915, PG-11921 | 49% | 439.94d |
| PG-30797 |  | T&C - Floor 1 | 29.67d | 2025-04-03 A | 2025-05-07 | PG-11927, PG-11924, PG-11930 | 4% | 425.56d |
| PG-30798 |  | T&C - Floor 2 | 28.83d | 2025-04-15 | 2025-05-19 | PG-11936, PG-11933, PG-11939 |  | 414.95d |
| PG-30799 |  | T&C - Floor 3 | 29.67d | 2025-05-02 | 2025-06-06 | PG-11945, PG-11942, PG-11948 |  | 399.58d |
| PG-30800 |  | T&C - Floor 4 | 30.67d | 2025-05-16 | 2025-06-21 | PG-11954, PG-11951, PG-11957 |  | 386.83d |
| PG-30802 |  | T&C - Floor 6 | 29.67d | 2025-06-16 | 2025-07-21 | PG-11972, PG-11969, PG-11975 |  | 362.93d |
| PG-30803 |  | T&C - Floor 7 | 28.67d | 2025-06-30 | 2025-08-02 | PG-11981, PG-11978, PG-11984 |  | 351.5d |
| PG-30804 |  | T&C - Floor 8 | 28.67d | 2025-07-16 | 2025-08-20 | PG-11990, PG-11987, PG-11993 |  | 336.5d |
| PG-30805 |  | T&C - Floor 9 | 28.83d | 2025-07-29 | 2025-09-02 | PG-11999, PG-11996, PG-12002 |  | 325.33d |
| PG-30801 |  | T&C - Floor 5 | 29.67d | 2025-08-12 | 2025-09-16 | PG-11963, PG-11960, PG-11966 |  | 314.17d |
| PG-30806 |  | T&C - Floor 10 | 29.67d | 2025-08-14 | 2025-09-19 | PG-12008, PG-12005, PG-12011 |  | 311.17d |
| PG-30807 |  | T&C - Floor 11 | 29.67d | 2025-08-28 | 2025-10-03 | PG-12017, PG-12014, PG-12020 |  | 300.5d |
| PG-30808 |  | T&C - Floor 12 | 28.83d | 2025-09-13 | 2025-10-18 | PG-12026, PG-12023, PG-12029 |  | 287.17d |
| PG-30809 |  | T&C - Floor 13 | 28.67d | 2025-09-26 | 2025-10-31 | PG-12035, PG-12032, PG-12038 |  | 276.5d |
| PG-30810 |  | T&C - Floor 14 | 28.67d | 2025-10-08 | 2025-11-12 | PG-12044, PG-12041, PG-12047 |  | 267.5d |
| PG-30812 |  | T&C - Floor 16 | 28.67d | 2025-11-05 | 2025-12-08 | PG-12062, PG-12059, PG-12065 |  | 245.33d |
| PG-30813 |  | T&C - Floor 17 | 29.67d | 2025-11-17 | 2025-12-20 | PG-12071, PG-12068, PG-12074 |  | 234.33d |
| PG-30814 |  | T&C - Floor 18 | 29.67d | 2025-11-29 | 2026-01-02 | PG-12080, PG-12077, PG-12083 |  | 223.33d |
| PG-30815 |  | T&C - Floor 19 | 29.67d | 2025-12-12 | 2026-01-15 | PG-12089, PG-12086, PG-12092 |  | 212.33d |
| PG-30816 |  | T&C - Floor 20 | 29.67d | 2025-12-25 | 2026-01-30 | PG-12098, PG-12095, PG-12101 |  | 200.67d |
| PG-30817 |  | T&C - Floor 21 | 29.67d | 2026-01-07 | 2026-02-12 | PG-12107, PG-12104, PG-12110 |  | 189.83d |
| PG-30811 |  | T&C - Floor 15 | 29.83d | 2026-01-14 | 2026-02-19 | PG-12053, PG-12050, PG-12056 |  | 183.17d |
| PG-30818 |  | T&C - Floor 22 | 29.67d | 2026-01-20 | 2026-02-25 | PG-12116, PG-12113, PG-12119 |  | 178.83d |
| PG-30819 |  | T&C - Floor 23 | 29.67d | 2026-02-03 | 2026-03-09 | PG-12125, PG-12122, PG-12128 |  | 168.17d |
| PG-30820 |  | T&C - Floor 24 | 29.67d | 2026-02-16 | 2026-03-23 | PG-12134, PG-12131, PG-12137 |  | 156.83d |
| PG-30821 |  | T&C - Floor 25 | 29.67d | 2026-03-09 | 2026-04-13 | PG-12143, PG-12140, PG-12146 |  | 137.67d |
| PG-30822 |  | T&C - Floor 26 | 31.67d | 2026-03-30 | 2026-05-06 | PG-12152, PG-12149, PG-12155 |  | 118.33d |
| PG-30823 |  | T&C - Floor 27 | 30.67d | 2026-04-21 | 2026-05-27 | PG-12158, PG-12161, PG-12164 |  | 100.5d |
| PG-30824 |  | T&C - Floor 28 | 29.67d | 2026-05-13 | 2026-06-17 | PG-12167, PG-12170, PG-12173 |  | 82.5d |
| PG-30825 |  | T&C - Floor 29 | 29.67d | 2026-06-04 | 2026-07-08 | PG-12176, PG-12179, PG-12182 |  | 64.17d |
|  | 1.6.1.3.2 | **Common Areas** |  | 2026-02-20 | 2026-08-18 |  |  |  |
| PG-30826 |  | T&C - Internal Electrical Works | 14.67d | 2026-02-20 | 2026-03-10 | PG-12661 |  | 182d |
| PG-30827 |  | T&C - Internal FPS Works | 14.83d | 2026-02-20 | 2026-03-10 | PG-12663 |  | 181.5d |
| PG-30828 |  | T&C - Data & Communication Works | 14.67d | 2026-02-26 | 2026-03-16 | PG-12666 |  | 177.67d |
| PG-30829 |  | T&C - Internal PHE Works including OHT | 20.33d | 2026-04-01 | 2026-04-24 | PG-12670 |  | 138.5d |
| PG-30832 |  | T&C - Lightining Arrestor works | 6.67d | 2026-05-01 | 2026-05-08 | PG-12689 |  | 139.17d |

| ID | WBS | Task | Duration | Start | Finish | Predecessors | Complete | Total float |
| --- | --- | --- | --- | --- | --- | --- | --- | --- |
| PG-30831 |  | T&C - Electrical Panel Works | 21.5d | 2026-07-22 | 2026-08-18 | PG-12683 |  | 41.5d |
| PG-30830 |  | T&C - Lift Works | 9.67d | 2026-07-23 | 2026-08-03 | PG-12676 |  | 51.67d |
|  | 1.6.1.4 | **Basements** |  | 2024-12-20 | 2025-01-14 |  |  |  |
| PG-30833 |  | T&C - LBF | 14d | 2024-12-20 A | 2025-01-07 A | PG-12711 | 100% |  |
| PG-30834 |  | T&C - UBF | 14d | 2024-12-27 A | 2025-01-14 A | PG-12714 | 100% |  |
|  | 1.6.9 | **Project InfraStructure Works ( Services & MEP )** |  | 2024-05-18 | 2026-10-24 |  |  |  |
| PG-31526 |  | T&C - FPS & FA works ( External & Plant Room ) | 29.67d | 2025-08-26 | 2025-09-30 | PG-32391 |  | 407.64d |
|  | 1.6.9.1 | **Transformer Works** |  | 2026-09-19 | 2026-10-24 |  |  |  |
| PG-31514 |  | T&C - Transformer 01 ( Building 01 & 02 ) | 28.83d | 2026-09-19 | 2026-10-24 | PG-32392, PG-30464 |  | 58.83d |
|  | 1.6.9.2 | **DG Works** |  | 2024-06-03 | 2024-07-02 |  |  |  |
| PG-31518 |  | T&C - DG 01 ( Tower 1,2,12,13,14 & CH ) | 24.67d | 2024-06-03 A | 2024-07-02 A | PG-30499 | 100% |  |
|  | 1.6.9.3 | **STP Works** |  | 2026-02-17 | 2026-03-24 |  |  |  |
| PG-31521 |  | T&C - Sewage Treatment Plant 01 ( 1000KLD ) | 30d | 2026-02-17 | 2026-03-24 | PG-30547 |  | 211.58d |
|  | 1.6.9.7 | **Swimming Pool** |  | 2024-05-18 | 2024-06-24 |  |  |  |
| PG-31527 |  | T&C - MEP Works | 30.67d | 2024-05-18 A | 2024-06-24 A | PG-30635 | 100% |  |
|  | 1.7 | **Snagging De Snagging** |  | 2024-06-24 | 2026-11-27 |  |  |  |
| PG-32377 |  | Project Signage & Carpark / Driveway marking works | 10.67d | 2026-02-12 | 2026-02-25 | PG-32370 |  | 308.47d |
|  | 1.7.1 | **Building 1** |  | 2025-02-13 | 2026-10-28 |  |  |  |
|  | 1.7.1.1 | **Tower 1** |  | 2025-02-17 | 2026-10-08 |  |  |  |
|  | 1.7.1.1.1 | **Units** |  | 2025-02-17 | 2026-03-28 |  |  |  |
| PG-31534 |  | Ground Floor | 30.67d | 2025-02-17 A | 2025-03-24 A | PG-10436, PG-30731 | 100% |  |
| PG-31535 |  | Floor 1 | 30.67d | 2025-03-10 A | 2025-04-11 | PG-10450, PG-30732 | 79% | 478.22d |
| PG-31536 |  | Floor 2 | 30.67d | 2025-03-21 A | 2025-04-28 | PG-10464, PG-30733 | 32% | 463.81d |
| PG-31537 |  | Floor 3 | 30.67d | 2025-04-04 | 2025-05-10 | PG-10478, PG-30734 |  | 453.34d |
| PG-31538 |  | Floor 4 | 30.67d | 2025-04-17 | 2025-05-23 | PG-10492, PG-30735 |  | 442.51d |
| PG-31539 |  | Floor 5 | 29.83d | 2025-05-07 | 2025-06-11 | PG-10091, PG-30736 |  | 426.05d |
| PG-31540 |  | Floor 6 | 29.83d | 2025-05-21 | 2025-06-24 | PG-10520, PG-30737 |  | 414.72d |
| PG-31541 |  | Floor 7 | 29.67d | 2025-06-04 | 2025-07-09 | PG-10534, PG-30738 |  | 402.59d |
| PG-31542 |  | Floor 8 | 31.67d | 2025-06-18 | 2025-07-24 | PG-10548, PG-30739 |  | 388.83d |
| PG-31543 |  | Floor 9 | 30.67d | 2025-07-02 | 2025-08-07 | PG-10562, PG-30740 |  | 377.6d |
| PG-31544 |  | Floor 10 | 29.67d | 2025-07-18 | 2025-08-22 | PG-10576, PG-30741 |  | 364.72d |
| PG-31545 |  | Floor 11 | 29.67d | 2025-08-01 | 2025-09-06 | PG-10590, PG-30742 |  | 352.42d |
| PG-31546 |  | Floor 12 | 29.83d | 2025-08-12 | 2025-09-17 | PG-10604, PG-30743 |  | 342.92d |
| PG-31547 |  | Floor 13 | 29.67d | 2025-08-28 | 2025-10-03 | PG-10618, PG-30744 |  | 330.42d |
| PG-31548 |  | Floor 14 | 29.67d | 2025-09-10 | 2025-10-16 | PG-10632, PG-30745 |  | 319.42d |
| PG-31549 |  | Floor 15 | 29.67d | 2025-09-22 | 2025-10-28 | PG-10646, PG-30746 |  | 309.42d |
| PG-31550 |  | Floor 16 | 29.67d | 2025-10-06 | 2025-11-11 | PG-10660, PG-30747 |  | 298.42d |
| PG-31551 |  | Floor 17 | 29.67d | 2025-10-18 | 2025-11-24 | PG-10674, PG-30748 |  | 287.42d |
| PG-31552 |  | Floor 18 | 29.67d | 2025-10-31 | 2025-12-06 | PG-10688, PG-30749 |  | 276.42d |
| PG-31553 |  | Floor 19 | 29.67d | 2025-11-26 | 2025-12-31 | PG-10702, PG-30750 |  | 255.42d |
| PG-31554 |  | Floor 20 | 30.67d | 2025-12-17 | 2026-01-22 | PG-10716, PG-30751 |  | 236.25d |
| PG-31555 |  | Floor 21 | 30.67d | 2026-01-08 | 2026-02-14 | PG-10730, PG-30752 |  | 217.25d |
| PG-31556 |  | Floor 22 | 30.83d | 2026-02-02 | 2026-03-10 | PG-10744, PG-30753 |  | 197.25d |
| PG-31557 |  | Floor 23 | 30.67d | 2026-02-20 | 2026-03-28 | PG-10758, PG-30754 |  | 181.25d |
|  | 1.7.1.1.2 | **Common Areas** |  | 2025-10-21 | 2026-10-08 |  |  |  |
| PG-31559 |  | Internal Electrical Works | 58.67d | 2025-10-21 | 2025-12-29 | PG-30755 |  | 256.92d |
| PG-31560 |  | Internal FPS Works | 58.83d | 2025-10-21 | 2025-12-30 | PG-30756 |  | 256.58d |
| PG-31561 |  | Data & Communication Works | 58.83d | 2025-10-27 | 2026-01-05 | PG-30757 |  | 251.58d |
| PG-31562 |  | Internal PHE Works including OHT | 61.33d | 2025-12-08 | 2026-02-19 | PG-30758 |  | 213.58d |
| PG-31565 |  | Lightining Arrestor works | 16.67d | 2025-12-23 | 2026-01-12 | PG-30761 |  | 245.42d |
| PG-31564 |  | Electrical Panel Works | 59.83d | 2026-03-21 | 2026-05-30 | PG-30760 |  | 126.92d |
| PG-31563 |  | Lift Works | 59.5d | 2026-04-20 | 2026-06-27 | PG-30759 |  | 103.08d |
| PG-31558 |  | Common Area Civil Works | 60.67d | 2026-07-27 | 2026-10-08 | PG-10842, PG-10779, PG-10775 |  | 17.33d |
|  | 1.7.1.2 | **Tower 2** |  | 2025-02-13 | 2026-10-15 |  |  |  |
|  | 1.7.1.2.1 | **Units** |  | 2025-02-13 | 2026-05-05 |  |  |  |
| PG-31566 |  | Ground Floor | 31.67d | 2025-02-13 A | 2025-03-26 A | PG-30762, PG-11275 | 100% |  |
| PG-31567 |  | Floor 1 | 29.67d | 2025-03-04 A | 2025-04-09 | PG-30763, PG-11289 | 84% | 479.96d |
| PG-31568 |  | Floor 2 | 30.67d | 2025-03-20 A | 2025-04-23 | PG-30764, PG-11303 | 46% | 468.11d |
| PG-31569 |  | Floor 3 | 30.67d | 2025-04-04 A | 2025-05-08 | PG-30765, PG-11317 | 3% | 454.92d |
| PG-31570 |  | Floor 4 | 30.67d | 2025-04-25 | 2025-05-31 | PG-30766, PG-11331 |  | 435.43d |
| PG-31571 |  | Floor 5 | 30.67d | 2025-05-06 | 2025-06-11 | PG-30767, PG-11345 |  | 426.59d |
| PG-31572 |  | Floor 6 | 29.83d | 2025-05-21 | 2025-06-24 | PG-30768, PG-11359 |  | 414.69d |
| PG-31573 |  | Floor 7 | 29.83d | 2025-06-04 | 2025-07-08 | PG-30769, PG-11373 |  | 402.67d |
| PG-31574 |  | Floor 8 | 30.67d | 2025-06-19 | 2025-07-24 | PG-30770, PG-11387 |  | 388.83d |
| PG-31575 |  | Floor 9 | 30.83d | 2025-07-01 | 2025-08-05 | PG-30771, PG-11401 |  | 378.67d |
| PG-31576 |  | Floor 10 | 29.83d | 2025-07-18 | 2025-08-23 | PG-30772, PG-11415 |  | 364.56d |
| PG-31577 |  | Floor 11 | 29.83d | 2025-08-01 | 2025-09-06 | PG-30773, PG-11429 |  | 352.33d |
| PG-31578 |  | Floor 12 | 29.67d | 2025-08-14 | 2025-09-19 | PG-30774, PG-11443 |  | 341.33d |
| PG-31579 |  | Floor 13 | 29.67d | 2025-08-28 | 2025-10-03 | PG-30775, PG-11457 |  | 330.33d |
| PG-31580 |  | Floor 14 | 29.67d | 2025-09-10 | 2025-10-16 | PG-30776, PG-11471 |  | 319.33d |

| ID | WBS | Task | Duration | Start | Finish | Predecessors | Complete | Total float |
| --- | --- | --- | --- | --- | --- | --- | --- | --- |
| PG-31581 |  | Floor 15 | 29.67d | 2025-09-22 | 2025-10-28 | PG-30777, PG-11485 |  | 309.33d |
| PG-31582 |  | Floor 16 | 29.83d | 2025-10-04 | 2025-11-10 | PG-30778, PG-11499 |  | 299d |
| PG-31583 |  | Floor 17 | 29.83d | 2025-10-17 | 2025-11-22 | PG-30779, PG-11513 |  | 288d |
| PG-31584 |  | Floor 18 | 28.83d | 2025-11-03 | 2025-12-06 | PG-30780, PG-11527 |  | 276.17d |
| PG-31585 |  | Floor 19 | 28.83d | 2025-11-15 | 2025-12-19 | PG-30781, PG-11541 |  | 265.17d |
| PG-31586 |  | Floor 20 | 28.83d | 2025-11-29 | 2026-01-02 | PG-30782, PG-11555 |  | 253.17d |
| PG-31587 |  | Floor 21 | 28.67d | 2025-12-11 | 2026-01-14 | PG-30783, PG-11569 |  | 243.5d |
| PG-31588 |  | Floor 22 | 30.67d | 2026-01-01 | 2026-02-06 | PG-30784, PG-11583 |  | 223.67d |
| PG-31589 |  | Floor 23 | 29.83d | 2026-01-23 | 2026-02-27 | PG-30785, PG-11597 |  | 205.67d |
| PG-31590 |  | Floor 24 | 30.67d | 2026-02-14 | 2026-03-23 | PG-30786, PG-11611 |  | 186.5d |
| PG-31591 |  | Floor 25 | 30.67d | 2026-03-10 | 2026-04-14 | PG-30787, PG-11625 |  | 167d |
| PG-31592 |  | Floor 26 | 29.83d | 2026-03-31 | 2026-05-05 | PG-30788, PG-11639 |  | 149.17d |
|  | 1.7.1.2.2 | **Comman Areas** |  | 2025-11-29 | 2026-10-15 |  |  |  |
| PG-31595 |  | Internal FPS Works | 59.67d | 2025-11-29 | 2026-02-07 | PG-30790 |  | 222.67d |
| PG-31596 |  | Data & Communication Works | 59.67d | 2025-12-05 | 2026-02-14 | PG-30791 |  | 217.33d |
| PG-31597 |  | Internal PHE Works including OHT | 60.5d | 2026-01-15 | 2026-03-28 | PG-30792 |  | 181.5d |
| PG-31600 |  | Lightining Arrestor works | 13.83d | 2026-01-31 | 2026-02-16 | PG-30795 |  | 215.67d |
| PG-31599 |  | Electrical Panel Works | 29.67d | 2026-03-20 | 2026-04-24 | PG-30794 |  | 158.33d |
| PG-31594 |  | Internal Electrical Works | 59.5d | 2026-03-31 | 2026-06-09 | PG-30789, PG-30788 |  | 119.5d |
| PG-31598 |  | Lift Works | 29.5d | 2026-05-09 | 2026-06-12 | PG-30793 |  | 116.17d |
| PG-31593 |  | Common Area Civil Works | 59.67d | 2026-08-05 | 2026-10-15 | PG-11723, PG-11660, PG-11656 |  | 10.67d |
|  | 1.7.1.3 | **Tower 3** |  | 2025-04-22 | 2026-10-28 |  |  |  |
|  | 1.7.1.3.1 | **Units** |  | 2025-04-22 | 2026-08-12 |  |  |  |
| PG-31601 |  | Ground Floor | 29.67d | 2025-04-22 | 2025-05-26 | PG-30796, PG-12198 |  | 439.94d |
| PG-31602 |  | Floor 1 | 30.67d | 2025-05-07 | 2025-06-12 | PG-30797, PG-12212 |  | 425.56d |
| PG-31603 |  | Floor 2 | 31.67d | 2025-05-19 | 2025-06-24 | PG-30798, PG-12226 |  | 414.95d |
| PG-31604 |  | Floor 3 | 30.67d | 2025-06-06 | 2025-07-12 | PG-30799, PG-12240 |  | 399.58d |
| PG-31605 |  | Floor 4 | 30.67d | 2025-06-21 | 2025-07-26 | PG-30800, PG-12254 |  | 386.83d |
| PG-31607 |  | Floor 6 | 29.67d | 2025-07-21 | 2025-08-25 | PG-30802, PG-12282 |  | 362.93d |
| PG-31608 |  | Floor 7 | 29.67d | 2025-08-02 | 2025-09-08 | PG-30803, PG-12296 |  | 351.5d |
| PG-31609 |  | Floor 8 | 30.67d | 2025-08-20 | 2025-09-25 | PG-30804, PG-12310 |  | 336.5d |
| PG-31610 |  | Floor 9 | 30.67d | 2025-09-02 | 2025-10-09 | PG-30805, PG-12324 |  | 325.33d |
| PG-31606 |  | Floor 5 | 29.67d | 2025-09-16 | 2025-10-22 | PG-30801, PG-12268 |  | 314.17d |
| PG-31611 |  | Floor 10 | 30d | 2025-09-19 | 2025-10-25 | PG-30833, PG-30806, PG-12338 |  | 311.17d |
| PG-31612 |  | Floor 11 | 29.67d | 2025-10-03 | 2025-11-08 | PG-30807, PG-12352 |  | 300.5d |
| PG-31613 |  | Floor 12 | 29.83d | 2025-10-18 | 2025-11-24 | PG-30808, PG-12366 |  | 287.17d |
| PG-31614 |  | Floor 13 | 29.67d | 2025-10-31 | 2025-12-06 | PG-30809, PG-12380 |  | 276.5d |
| PG-31615 |  | Floor 14 | 29.67d | 2025-11-12 | 2025-12-17 | PG-30810, PG-12394 |  | 267.5d |
| PG-31617 |  | Floor 16 | 29.67d | 2025-12-08 | 2026-01-12 | PG-30812, PG-12422 |  | 245.33d |
| PG-31618 |  | Floor 17 | 29.67d | 2025-12-20 | 2026-01-24 | PG-30813, PG-12436 |  | 234.33d |
| PG-31619 |  | Floor 18 | 29.67d | 2026-01-02 | 2026-02-07 | PG-30814, PG-12450 |  | 223.33d |
| PG-31620 |  | Floor 19 | 29.67d | 2026-01-15 | 2026-02-20 | PG-30815, PG-12464 |  | 212.33d |
| PG-31621 |  | Floor 20 | 29.67d | 2026-01-30 | 2026-03-05 | PG-30816, PG-12478 |  | 200.67d |
| PG-31622 |  | Floor 21 | 29.67d | 2026-02-12 | 2026-03-18 | PG-30817, PG-12492 |  | 189.83d |
| PG-31616 |  | Floor 15 | 29.83d | 2026-02-19 | 2026-03-26 | PG-30811, PG-12408 |  | 183.17d |
| PG-31623 |  | Floor 22 | 29.67d | 2026-02-25 | 2026-03-31 | PG-30818, PG-12506 |  | 178.83d |
| PG-31624 |  | Floor 23 | 29.67d | 2026-03-09 | 2026-04-13 | PG-30819, PG-12520 |  | 168.17d |
| PG-31625 |  | Floor 24 | 29.67d | 2026-03-23 | 2026-04-25 | PG-30820, PG-12534 |  | 156.83d |
| PG-31626 |  | Floor 25 | 30.67d | 2026-04-13 | 2026-05-18 | PG-30821, PG-12548 |  | 137.67d |
| PG-31627 |  | Floor 26 | 29.83d | 2026-05-06 | 2026-06-10 | PG-30822, PG-12562 |  | 118.33d |
| PG-31628 |  | Floor 27 | 29.67d | 2026-05-27 | 2026-07-01 | PG-30823, PG-12576 |  | 100.5d |
| PG-31629 |  | Floor 28 | 29.67d | 2026-06-17 | 2026-07-22 | PG-30824, PG-12590 |  | 82.5d |
| PG-31630 |  | Floor 29 | 29.67d | 2026-07-08 | 2026-08-12 | PG-30825, PG-12604 |  | 64.17d |
|  | 1.7.1.3.2 | **Common Areas** |  | 2026-03-10 | 2026-10-28 |  |  |  |
| PG-31632 |  | Internal Electrical Works | 15.5d | 2026-03-10 | 2026-03-27 | PG-30826 |  | 182d |
| PG-31633 |  | Internal FPS Works | 15.67d | 2026-03-10 | 2026-03-28 | PG-30827 |  | 181.5d |
| PG-31634 |  | Data & Communication Works | 14.67d | 2026-03-16 | 2026-04-01 | PG-30828 |  | 177.67d |
| PG-31635 |  | Internal PHE Works including OHT | 19.67d | 2026-04-24 | 2026-05-18 | PG-30829 |  | 138.5d |
| PG-31638 |  | Lightining Arrestor works | 6.67d | 2026-05-08 | 2026-05-16 | PG-30832 |  | 139.17d |
| PG-31636 |  | Lift Works | 19.5d | 2026-08-03 | 2026-08-27 | PG-30830 |  | 51.67d |
| PG-31637 |  | Electrical Panel Works | 18.83d | 2026-08-18 | 2026-09-09 | PG-30831 |  | 41.5d |
| PG-31631 |  | Common Area Civil Works | 14.83d | 2026-10-10 | 2026-10-28 | PG-12688, PG-12625, PG-12621 |  | 0d |
|  | 1.7.1.4 | **Basements** |  | 2025-04-03 | 2025-04-28 |  |  |  |
| PG-31639 |  | LBF | 14.67d | 2025-04-03 A | 2025-04-18 | PG-12189, PG-11266, PG-12707, PG-10427 | 13% | 471.87d |
| PG-31640 |  | UBF | 14.67d | 2025-04-11 | 2025-04-28 | PG-30834, PG-12193, PG-11270, PG-12714, PG-12707, PG-10431 |  | 463.98d |
|  | 1.7.9 | **Project InfraStructure Works ( Services & MEP )** |  | 2024-06-24 | 2026-11-27 |  |  |  |
| PG-32348 |  | FPS & FA works ( External & Plant Room ) | 9.67d | 2025-09-30 | 2025-10-13 | PG-31526 |  | 407.64d |
|  | 1.7.9.1 | **Transformer Works** |  | 2026-10-24 | 2026-11-27 |  |  |  |
| PG-32336 |  | Transformer 01 ( Building 01 & 02 ) | 29.83d | 2026-10-24 | 2026-11-27 | PG-31514 |  | 58.83d |
|  | 1.7.9.2 | **DG Works** |  | 2024-07-02 | 2024-07-15 |  |  |  |

| ID | WBS | Task | Duration | Start | Finish | Predecessors | Complete | Total float |
| --- | --- | --- | --- | --- | --- | --- | --- | --- |
| PG-32340 |  | DG 01 ( Tower 1,2,12,13,14 & CH ) | 10.67d | 2024-07-02 A | 2024-07-15 A | PG-31518 | 100% |  |
|  | 1.7.9.3 | **STP Works** |  | 2026-03-24 | 2026-04-27 |  |  |  |
| PG-32343 |  | Sewage Treatment Plant 01 ( 1000KLD ) | 29d | 2026-03-24 | 2026-04-27 | PG-31521 |  | 211.58d |
|  | 1.7.9.7 | **Swimming Pool** |  | 2024-06-24 | 2024-07-27 |  |  |  |
| PG-32349 |  | MEP Works | 29.67d | 2024-06-24 A | 2024-07-27 A | PG-31527 | 100% |  |
|  | 1.7.10 | **External Development Works** |  | 2025-12-23 | 2026-02-12 |  |  |  |
| PG-32370 |  | Clubhouse | 42.83d | 2025-12-23 | 2026-02-12 | PG-30711 |  | 299.47d |
|  | 1.7.11 | **Pumps Installation Works** |  | 2024-06-24 | 2024-07-13 |  |  |  |
| PG-32373 |  | UG Sump Domestic Pumps | 13.67d | 2024-06-24 A | 2024-07-09 A | PG-31527 | 100% |  |
| PG-32374 |  | Water bodies and Swimming Pool Pumps | 16.67d | 2024-06-24 A | 2024-07-13 A | PG-31527 | 100% |  |
| PG-32375 |  | Roof & Rainwater disposal Pumps | 15.67d | 2024-06-24 A | 2024-07-12 A | PG-31527 | 100% |  |
| PG-32376 |  | Car wash water & Strom water pumps in Basement | 13.67d | 2024-06-24 A | 2024-07-09 A | PG-31527 | 100% |  |
|  | 1.8 | **Handing Over** |  | 2026-02-12 | 2027-02-05 |  |  |  |
| PG-32387 |  | External Development Works | 19.67d | 2026-02-12 | 2026-03-07 | PG-32370 |  | 299.47d |
| PG-32378 |  | Building 1 | 9.67d | 2026-10-28 | 2026-11-09 | PG-31640, PG-31639, PG-31638, PG-31637, PG-31636, PG-31635, PG-31634, PG-31633, PG-31632, PG-31631, PG-31630, PG-31629, PG-31628, PG-31627, PG-31626, PG-31625, PG-31624, PG-31623, PG-31622, PG-31621, PG-31620, PG-31619, PG-31618, PG-31617, PG-31616, PG-31615, PG-31614, PG-31613, PG-31612, PG-31611, PG-31610, PG-31609, PG-31608, PG-31607, PG-31606, PG-31605, PG-31604, PG-31603, PG-31602, PG-31601, PG-31600, PG-31599, PG-31598, PG-31597, PG-31596, PG-31595, PG-31594, PG-31593, PG-31592, PG-31591, PG-31590, PG-31589, PG-31588, PG-31587, PG-31586, PG-31585, PG-31584, PG-31583, PG-31582, PG-31581, PG-31580, PG-31579, PG-31578, PG-31577, PG-31576, PG-31575, PG-31574, PG-31573, PG-31572, PG-31571, PG-31570, PG-31569, PG-31568, PG-31567, PG-31566, PG-31565, PG-31564, PG-31563, PG-31562, PG-31561, PG-31560, PG-31559, PG-31558, PG-31557, PG-31556, PG-31555, PG-31554, PG-31553, PG-31552, PG-31551, PG-31550, PG-31549, PG-31548, PG-31547, PG-31546, PG-31545, PG-31544, PG-31543, PG-31542, PG-31541, PG-31540, PG-31539, PG-31538, PG-31537, PG-31536, PG-31535, PG-31534 |  | 0d |
| PG-32386 |  | Project InfraStructure Works ( Services & MEP ) | 14.67d | 2027-01-18 | 2027-02-05 | PG-32396, PG-32395, PG-32393, PG-32349, PG-32348, PG-32343, PG-32340, PG-32336 |  | 15.17d |
|  | 1.10 | **Post Construction Statutory Approvals** |  | 2023-10-04 | 2027-02-23 |  |  |  |
| PG-32392 |  | Bescom Electrical CEIG Approval | 30.5d | 2023-10-04 A | 2023-11-09 A |  | 100% |  |
| PG-32393 |  | CEIG Approval - DG | 29.83d | 2024-07-15 A | 2024-08-20 A | PG-32340 | 100% |  |
| PG-32391 |  | Fire NOC | 58.67d | 2025-06-18 | 2025-08-26 | PG-30700 |  | 407.64d |
| PG-32396 |  | Pollution Control board clearance for STP | 29.67d | 2026-04-27 | 2026-06-01 | PG-32343 |  | 211.58d |
| PG-32394 |  | CEIG Approval - Lift | 29.5d | 2026-11-09 | 2026-12-12 | PG-32378 |  | 0d |
| PG-32395 |  | Pollution Control board CFO | 30.83d | 2026-12-12 | 2027-01-18 | PG-32394 |  | 15.17d |
| PG-32397 |  | Occupation Certificate | 60.67d | 2026-12-12 | 2027-02-23 | PG-32394 |  | 0d |
|  | 2 | **Milestone** |  | 2023-10-04 | 2027-02-23 |  |  |  |
| MS-0000 |  | Project Start | 0d | 2023-10-04 A | 2023-10-04 A |  | 100% |  |
| MS-9006 |  | Roads Complete | 0d | 2024-01-02 A | 2024-01-02 A | PG-30614 | 100% |  |
| MS-0104 |  | DG Sets Delivered to Site | 0d | 2024-04-06 A | 2024-04-06 A | PG-10034 | 100% |  |
| MS-0106 |  | STP Equipment Delivered | 0d | 2024-05-08 A | 2024-05-08 A | PG-10038 | 100% |  |
| MS-9003 |  | DG Commissioned | 0d | 2024-07-03 A | 2024-07-03 A | PG-31518 | 100% |  |
| MS-9004 |  | Swimming Pool Complete | 0d | 2024-07-29 A | 2024-07-29 A | PG-32349 | 100% |  |
| MS-0101 |  | Aluminium Formwork Kit Delivered | 0d | 2024-08-09 A | 2024-08-09 A | PG-10003 | 100% |  |
| MS-0109 |  | CP & Sanitaryware Delivered | 0d | 2025-03-10 A | 2025-03-10 A | PG-10023 | 100% |  |
| MS-1001 |  | Tower 1 - Structure Complete | 0d | 2025-08-18 | 2025-08-18 | PG-10197 |  | 474.08d |
| MS-0105 |  | Electrical Panels Delivered | 0d | 2025-08-25 | 2025-08-25 | PG-10032 |  | 468.42d |
| MS-2001 |  | Tower 2 - Structure Complete | 0d | 2025-09-25 | 2025-09-25 | PG-11009 |  | 441.33d |
| MS-1002 |  | Tower 1 - MEP 1st Fix Complete | 0d | 2025-11-22 | 2025-11-22 | PG-10415 |  | 393.08d |
| MS-0102 |  | Lifts Delivered to Site | 0d | 2025-11-24 | 2025-11-24 | PG-10030 |  | 392.08d |
| MS-0107 |  | FRP Water Tanks Delivered | 0d | 2025-12-01 | 2025-12-01 | PG-10027 |  | 386.42d |
| MS-9005 |  | Club House Complete | 0d | 2025-12-23 | 2025-12-23 | PG-30711 |  | 366.97d |
| MS-2002 |  | Tower 2 - MEP 1st Fix Complete | 0d | 2025-12-26 | 2025-12-26 | PG-11254 |  | 363.67d |
| MS-1003 |  | Tower 1 - MEP 2nd Fix Complete | 0d | 2025-12-27 | 2025-12-27 | PG-10416 |  | 363.08d |
| MS-3001 |  | Tower 3 - Structure Complete | 0d | 2026-01-03 | 2026-01-03 | PG-11905 |  | 356.67d |
| MS-1005 |  | Tower 1 - MEP Final Fix Complete | 0d | 2026-01-16 | 2026-01-16 | PG-10417 |  | 345.58d |
| MS-2003 |  | Tower 2 - MEP 2nd Fix Complete | 0d | 2026-01-31 | 2026-01-31 | PG-11255 |  | 333.83d |
| MS-9008 |  | External Development Complete | 0d | 2026-02-12 | 2026-02-12 | PG-32370 |  | 324.14d |
| MS-2005 |  | Tower 2 - MEP Final Fix Complete | 0d | 2026-02-23 | 2026-02-23 | PG-11259 |  | 314.5d |
| MS-2004 |  | Tower 2 - Internal Finishes Complete | 0d | 2026-03-19 | 2026-03-19 | PG-11660 |  | 293.5d |
| MS-9001 |  | STP Commissioned | 0d | 2026-03-24 | 2026-03-24 | PG-31521 |  | 289.92d |
| MS-1006 |  | Tower 1 - Lifts Commissioned | 0d | 2026-03-27 | 2026-03-27 | PG-10830 |  | 286.75d |
| MS-3002 |  | Tower 3 - MEP 1st Fix Complete | 0d | 2026-04-07 | 2026-04-07 | PG-12177 |  | 278d |
| MS-2006 |  | Tower 2 - Lifts Commissioned | 0d | 2026-04-16 | 2026-04-16 | PG-11711 |  | 270d |
| MS-1007 |  | Tower 1 - T&C Complete | 0d | 2026-04-20 | 2026-04-20 | PG-30759 |  | 267.42d |
| MS-2007 |  | Tower 2 - T&C Complete | 0d | 2026-05-08 | 2026-05-08 | PG-30793 |  | 250.5d |
| MS-3003 |  | Tower 3 - MEP 2nd Fix Complete | 0d | 2026-05-12 | 2026-05-12 | PG-12178 |  | 248d |
| MS-3005 |  | Tower 3 - MEP Final Fix Complete | 0d | 2026-06-04 | 2026-06-04 | PG-12179 |  | 228.33d |
| MS-3004 |  | Tower 3 - Internal Finishes Complete | 0d | 2026-06-26 | 2026-06-26 | PG-12625 |  | 208.83d |
| MS-0108 |  | Tiles & Marble Delivered | 0d | 2026-07-03 | 2026-07-03 | PG-10013 |  | 203.17d |
| MS-0103 |  | Transformer Delivered to Site | 0d | 2026-07-22 | 2026-07-22 | PG-10036 |  | 187.33d |
| MS-3006 |  | Tower 3 - Lifts Commissioned | 0d | 2026-07-22 | 2026-07-22 | PG-12676 |  | 186.5d |
| MS-1004 |  | Tower 1 - Internal Finishes Complete | 0d | 2026-07-27 | 2026-07-27 | PG-10779 |  | 182.83d |
| MS-9007 |  | Landscape Complete | 0d | 2026-08-03 | 2026-08-03 | PG-12718 |  | 177.17d |
| MS-3007 |  | Tower 3 - T&C Complete | 0d | 2026-08-18 | 2026-08-18 | PG-30831 |  | 165.17d |
| MS-9002 |  | Transformer Charged | 0d | 2026-10-24 | 2026-10-24 | PG-31514 |  | 108.33d |
| MS-9990 |  | Snagging Complete | 0d | 2026-11-27 | 2026-11-27 | PG-32336 |  | 78.5d |
| MS-9999 |  | Project Finish / Handover | 0d | 2027-02-05 | 2027-02-05 | PG-32386 |  | 20.17d |
| MS-9991 |  | Statutory Approvals Obtained | 0d | 2027-02-23 | 2027-02-23 | PG-32397 |  | 5d |

## Version 5 (data date 2025-04-11, saved 2026-09-20, file APX_2025-04-11.xer)

Last finish 2027-03-01 → 2027-03-02 (+1d). Complete tasks 985 → 1022.

Changed:

| ID | Task | Start | Finish | Complete | Total float |
| --- | --- | --- | --- | --- | --- |
| 1 | **Project Genisis** |  | 2027-03-01 → 2027-03-02 (+1d) |  |  |
| PG-32433 | Project Close Out | 2027-02-23 → 2027-02-24 (+1d) | 2027-03-01 → 2027-03-02 (+1d) |  |  |
| 1.2 | **Procurement and Materials requirement to Site** |  | 2026-07-22 → 2026-07-23 (+1d) |  |  |
| 1.2.4 | **FRP Tanks Supply** |  | 2025-12-01 → 2025-11-29 (-2d) |  |  |
| PG-10024 | Purchase Order works |  | 2025-05-13 → 2025-05-12 (-1d) |  | 211.58d → 212.91d |
| PG-10025 | Materials Supply to site ( Tower - 1, 2, 3, 9, 14, 18 & 19 ) |  | 2025-08-02 → 2025-08-01 (-1d) |  | 211.58d → 212.91d |
| PG-10026 | Materials Supply to site ( Tower - 4, 8, 10 & 13 ) |  | 2025-09-08 → 2025-09-06 (-2d) |  | 211.58d → 212.91d |
| PG-10027 | Materials Supply to site ( Tower - 5, 6, 7, 11, 12, 15, 16 & 17 ) |  | 2025-12-01 → 2025-11-29 (-2d) |  | 211.58d → 212.91d |
| 1.2.6 | **Electrical Panel Supply** | 2025-04-10 → 2025-04-17 (+7d) | 2025-08-25 → 2025-08-23 (-2d) |  |  |
| PG-10031 | Purchase Order works | 2025-04-10 → 2025-04-17 (+7d) | 2025-04-22 → 2025-04-29 (+7d) |  | 212.51d → 207.44d |
| PG-10032 | Materials Supply to site |  | 2025-08-25 → 2025-08-23 (-2d) |  | 135.58d → 136.91d |
| 1.2.8 | **Transformer Supply** | 2026-02-20 → 2026-02-21 (+1d) | 2026-07-22 → 2026-07-23 (+1d) |  |  |
| PG-10035 | Purchase Order works | 2026-02-20 → 2026-02-21 (+1d) | 2026-03-04 → 2026-03-05 (+1d) |  |  |
| PG-10036 | Materials Supply to site | 2026-06-17 → 2026-06-18 (+1d) | 2026-07-22 → 2026-07-23 (+1d) |  |  |
| 1.3 | **Construction** |  | 2026-10-10 → 2026-10-12 (+2d) |  |  |
| 1.3.1 | **Building 1** |  | 2026-10-10 → 2026-10-12 (+2d) |  |  |
| PG-10153 | Formwork |  | 2025-04-05 A | 79% → 100% | 40.58d → none |
| PG-10154 | Reinforcement |  | 2025-04-08 A | 7% → 100% | 40.58d → none |
| PG-10155 | Concrete | 2025-04-08 A | 2025-04-09 A | 0% → 100% | 40.58d → none |
| PG-10156 | Reinforcement | 2025-04-09 A |  | 0% → 50% | 40.58d → 41.91d |
| 1.3.1.1.3.9 | **Floor 6** |  | 2025-04-16 → 2025-04-17 (+1d) |  |  |
| 1.3.1.1.3.9.1 | **PHE Works** |  | 2025-04-16 → 2025-04-17 (+1d) |  |  |
| PG-10261 | Final Fix - CP & Sanitary fixtures | 2025-04-04 → 2025-04-05 A (+1d) | 2025-04-16 → 2025-04-17 (+1d) | 0% → 55% | 414.72d → 414.68d |
| 1.3.1.1.3.9.2 | **Fire Fighting Works** |  | 2025-04-16 → 2025-04-17 (+1d) |  |  |
| PG-10264 | Final Fix - Smoke & heat detectors, FHC , FAS Etc. | 2025-04-04 → 2025-04-05 A (+1d) | 2025-04-16 → 2025-04-17 (+1d) | 0% → 57% | 414.72d → 414.68d |
| 1.3.1.1.3.9.3 | **Electrical Works** |  | 2025-04-16 → 2025-04-17 (+1d) |  |  |
| PG-10267 | Final Fix - Electrical Fixtures | 2025-04-09 → 2025-04-10 A (+1d) | 2025-04-16 → 2025-04-17 (+1d) | 0% → 16% | 414.72d → 414.68d |
| PG-10272 | 2nd Fix - Sprinkler fixing & Pressure testing |  | 2025-04-10 → 2025-04-11 A (+1d) | 47% → 100% | 411d → none |
| PG-10275 | 2nd Fix - Wiring works |  | 2025-04-09 A | 78% → 100% | 416.5d → none |
| 1.3.1.1.3.11 | **Floor 8** |  | 2025-05-15 → 2025-05-14 (-1d) |  |  |
| 1.3.1.1.3.11.1 | **PHE Works** |  | 2025-05-15 → 2025-05-14 (-1d) |  |  |
| PG-10279 | Final Fix - CP & Sanitary fixtures | 2025-05-03 → 2025-05-02 (-1d) | 2025-05-15 → 2025-05-14 (-1d) |  | 388.83d → 390.37d |
| 1.3.1.1.3.11.2 | **Fire Fighting Works** |  | 2025-05-15 → 2025-05-14 (-1d) |  |  |
| PG-10281 | 2nd Fix - Sprinkler fixing & Pressure testing | 2025-04-12 → 2025-04-11 (-1d) |  |  | 397.33d → 399.05d |
| PG-10282 | Final Fix - Smoke & heat detectors, FHC , FAS Etc. | 2025-05-03 → 2025-05-02 (-1d) | 2025-05-15 → 2025-05-14 (-1d) |  | 388.83d → 390.37d |
| 1.3.1.1.3.11.3 | **Electrical Works** |  | 2025-05-15 → 2025-05-14 (-1d) |  |  |
| PG-10284 | 2nd Fix - Wiring works | 2025-04-05 A |  | 0% → 45% | 402.83d → 404.55d |
| PG-10285 | Final Fix - Electrical Fixtures | 2025-05-09 → 2025-05-08 (-1d) | 2025-05-15 → 2025-05-14 (-1d) |  | 388.83d → 390.37d |
| 1.3.1.1.3.13 | **Floor 10** |  | 2025-06-12 → 2025-06-13 (+1d) |  |  |
| 1.3.1.1.3.13.1 | **PHE Works** |  | 2025-06-12 → 2025-06-13 (+1d) |  |  |
| PG-10295 | 1st Fix - Piping works |  | 2025-04-09 → 2025-04-10 A (+1d) | 64% → 100% | 364.72d → none |
| PG-10296 | 2nd Fix - diverter fixing & Pressure testing | 2025-04-04 → 2025-04-05 A (+1d) | 2025-04-16 → 2025-04-17 (+1d) | 0% → 50% | 364.72d → 364.68d |
| PG-10297 | Final Fix - CP & Sanitary fixtures | 2025-06-02 → 2025-06-03 (+1d) | 2025-06-12 → 2025-06-13 (+1d) |  | 364.72d → 364.68d |
| 1.3.1.1.3.13.2 | **Fire Fighting Works** | 2025-04-04 → 2025-04-05 (+1d) | 2025-06-12 → 2025-06-13 (+1d) |  |  |
| PG-10298 | 1st Fix - Piping and Shaft hydrant works | 2025-04-04 → 2025-04-05 A (+1d) | 2025-04-17 → 2025-04-24 (+7d) | 0% → 41% | 413.67d → 408.77d |
| PG-10299 | 2nd Fix - Sprinkler fixing & Pressure testing | 2025-05-12 → 2025-05-13 (+1d) | 2025-05-23 → 2025-05-24 (+1d) |  | 372.55d → 372.51d |
| PG-10300 | Final Fix - Smoke & heat detectors, FHC , FAS Etc. | 2025-06-02 → 2025-06-03 (+1d) | 2025-06-12 → 2025-06-13 (+1d) |  | 364.72d → 364.68d |
| 1.3.1.1.3.13.3 | **Electrical Works** |  | 2025-06-12 → 2025-06-13 (+1d) |  |  |
| PG-10302 | 2nd Fix - Wiring works | 2025-05-05 → 2025-05-06 (+1d) | 2025-05-22 → 2025-05-23 (+1d) |  | 377.39d → 377.34d |
| PG-10303 | Final Fix - Electrical Fixtures | 2025-06-05 → 2025-06-06 (+1d) | 2025-06-12 → 2025-06-13 (+1d) |  | 364.72d → 364.68d |
| PG-10304 | 1st Fix - Piping works | 2025-04-09 A |  | 0% → 13% | 352.42d → 353.37d |
| 1.3.1.1.3.14.2 | **Fire Fighting Works** | 2025-04-18 → 2025-04-17 (-1d) |  |  |  |
| PG-10307 | 1st Fix - Piping and Shaft hydrant works | 2025-04-18 → 2025-04-17 (-1d) | 2025-05-02 → 2025-05-01 (-1d) |  | 401.08d → 403.03d |
| PG-10310 | 1st Fix - GI wire pulling | 2025-04-09 A | 2025-04-18 → 2025-04-17 (-1d) | 0% → 33% | 401.08d → 403.03d |
| 1.3.1.1.3.15 | **Floor 12** |  | 2025-07-10 → 2025-07-09 (-1d) |  |  |
| 1.3.1.1.3.15.1 | **PHE Works** |  | 2025-07-10 → 2025-07-09 (-1d) |  |  |
| PG-10315 | Final Fix - CP & Sanitary fixtures | 2025-06-28 → 2025-06-27 (-1d) | 2025-07-10 → 2025-07-09 (-1d) |  | 342.92d → 344.24d |
| 1.3.1.1.3.15.2 | **Fire Fighting Works** |  | 2025-07-10 → 2025-07-09 (-1d) |  |  |
| PG-10318 | Final Fix - Smoke & heat detectors, FHC , FAS Etc. | 2025-06-28 → 2025-06-27 (-1d) | 2025-07-10 → 2025-07-09 (-1d) |  | 342.92d → 344.24d |
| 1.3.1.1.3.15.3 | **Electrical Works** |  | 2025-07-10 → 2025-07-09 (-1d) |  |  |
| PG-10321 | Final Fix - Electrical Fixtures | 2025-07-03 → 2025-07-02 (-1d) | 2025-07-10 → 2025-07-09 (-1d) |  | 342.92d → 344.24d |
| 1.3.1.1.3.23 | **Floor 20** |  | 2025-11-14 → 2025-11-13 (-1d) |  |  |
| 1.3.1.1.3.23.1 | **PHE Works** |  | 2025-11-14 → 2025-11-13 (-1d) |  |  |
| PG-10387 | Final Fix - CP & Sanitary fixtures | 2025-11-03 → 2025-10-31 (-3d) | 2025-11-14 → 2025-11-13 (-1d) |  | 236.25d → 237.57d |
| 1.3.1.1.3.23.2 | **Fire Fighting Works** |  | 2025-11-14 → 2025-11-13 (-1d) |  |  |
| PG-10390 | Final Fix - Smoke & heat detectors, FHC , FAS Etc. | 2025-11-03 → 2025-10-31 (-3d) | 2025-11-14 → 2025-11-13 (-1d) |  | 236.25d → 237.57d |
| 1.3.1.1.3.23.3 | **Electrical Works** |  | 2025-11-14 → 2025-11-13 (-1d) |  |  |
| PG-10393 | Final Fix - Electrical Fixtures |  | 2025-11-14 → 2025-11-13 (-1d) |  | 236.25d → 237.57d |
| 1.3.1.1.3.24 | **Floor 21** |  | 2025-12-06 → 2025-12-05 (-1d) |  |  |
| 1.3.1.1.3.24.1 | **PHE Works** |  | 2025-12-06 → 2025-12-05 (-1d) |  |  |

| ID | Task | Start | Finish | Complete | Total float |
| --- | --- | --- | --- | --- | --- |
| PG-10396 | Final Fix - CP & Sanitary fixtures |  | 2025-12-06 → 2025-12-05 (-1d) |  | 217.25d → 218.57d |
| 1.3.1.1.3.24.2 | **Fire Fighting Works** |  | 2025-12-06 → 2025-12-05 (-1d) |  |  |
| PG-10399 | Final Fix - Smoke & heat detectors, FHC , FAS Etc. |  | 2025-12-06 → 2025-12-05 (-1d) |  | 217.25d → 218.57d |
| 1.3.1.1.3.24.3 | **Electrical Works** |  | 2025-12-06 → 2025-12-05 (-1d) |  |  |
| PG-10402 | Final Fix - Electrical Fixtures |  | 2025-12-06 → 2025-12-05 (-1d) |  | 217.25d → 218.57d |
| 1.3.1.1.4.9 | **Floor 6** |  | 2025-04-09 → 2025-04-10 (+1d) |  |  |
| 1.3.1.1.4.9.1 | **Ceiling Finishing works - Civil** |  | 2025-04-08 → 2025-04-09 (+1d) |  |  |
| PG-10520 | Final Coat Painting |  | 2025-04-08 → 2025-04-09 A (+1d) | 84% → 100% | 451.79d → none |
| 1.3.1.1.4.9.2 | **Wall Finishing works - Civil** |  | 2025-04-09 → 2025-04-10 (+1d) |  |  |
| PG-10525 | Final Coat Painting |  | 2025-04-09 → 2025-04-10 A (+1d) | 76% → 100% | 414.72d → none |
| PG-10534 | Final Coat Painting |  |  | 9% → 40% | 437.34d → 438.27d |
| PG-10539 | Final Coat Painting |  |  | 9% → 40% | 402.59d → 403.52d |
| 1.3.1.1.4.11 | **Floor 8** |  | 2025-05-08 → 2025-05-07 (-1d) |  |  |
| 1.3.1.1.4.11.1 | **Ceiling Finishing works - Civil** |  | 2025-05-08 → 2025-05-07 (-1d) |  |  |
| PG-10546 | Painting Works - Putty, Primer and 1st | 2025-04-10 A | 2025-04-16 → 2025-04-15 (-1d) | 0% → 36% | 423.5d → 425.58d |
| PG-10548 | Final Coat Painting | 2025-04-17 → 2025-04-16 (-1d) | 2025-05-08 → 2025-05-07 (-1d) |  | 423.5d → 425.04d |
| 1.3.1.1.4.11.2 | **Wall Finishing works - Civil** |  | 2025-05-08 → 2025-05-07 (-1d) |  |  |
| PG-10550 | UPVC Windows & Sliding doors |  | 2025-04-09 → 2025-04-10 A (+1d) | 19% → 100% | 388.83d → none |
| PG-10552 | Painting Works - Putty, Primer and 1st | 2025-04-10 A |  | 0% → 30% | 388.83d → 390.55d |
| PG-10553 | Final Coat Painting | 2025-04-17 → 2025-04-16 (-1d) | 2025-05-08 → 2025-05-07 (-1d) |  | 388.83d → 390.37d |
| PG-10557 | Wooden doors | 2025-04-11 A |  | 0% → 12% | 388.83d → 390.37d |
| PG-10559 | Cornice fixing | 2025-04-07 A | 2025-04-10 → 2025-04-11 (+1d) | 0% → 100% | 423.67d → 423.84d |
| PG-10565 | Dadoing - Wet area |  | 2025-04-07 → 2025-04-08 A (+1d) | 52% → 100% | 377.6d → none |
| PG-10569 | Floor Tiling - Wet area | 2025-04-07 → 2025-04-08 A (+1d) |  | 0% → 76% | 377.6d → 378.75d |
| 1.3.1.1.4.13 | **Floor 10** |  | 2025-06-05 → 2025-06-06 (+1d) |  |  |
| 1.3.1.1.4.13.1 | **Ceiling Finishing works - Civil** |  | 2025-06-05 → 2025-06-06 (+1d) |  |  |
| PG-10572 | Gypsum Plastering |  | 2025-04-10 → 2025-04-17 (+7d) |  | 212.51d → 207.44d |
| PG-10573 | Cornice fixing | 2025-04-21 → 2025-04-26 (+5d) | 2025-04-24 → 2025-05-01 (+7d) |  | 413.67d → 408.77d |
| PG-10575 | Toilet False ceiling | 2025-04-29 → 2025-04-30 (+1d) | 2025-05-03 → 2025-05-05 (+2d) |  | 389.55d → 389.51d |
| PG-10574 | Painting Works - Putty, Primer and 1st | 2025-05-09 → 2025-05-10 (+1d) | 2025-05-16 → 2025-05-17 (+1d) |  | 401.39d → 401.34d |
| PG-10576 | Final Coat Painting | 2025-05-16 → 2025-05-17 (+1d) | 2025-06-05 → 2025-06-06 (+1d) |  | 401.39d → 401.34d |
| 1.3.1.1.4.13.2 | **Wall Finishing works - Civil** |  | 2025-06-05 → 2025-06-06 (+1d) |  |  |
| PG-10579 | Dadoing - Wet area | 2025-04-16 → 2025-04-17 (+1d) | 2025-04-22 → 2025-04-23 (+1d) |  | 364.72d → 364.68d |
| PG-10578 | UPVC Windows & Sliding doors | 2025-05-03 → 2025-05-05 (+2d) | 2025-05-09 → 2025-05-10 (+1d) |  | 364.72d → 364.68d |
| PG-10580 | Painting Works - Putty, Primer and 1st | 2025-05-09 → 2025-05-10 (+1d) | 2025-05-16 → 2025-05-17 (+1d) |  | 364.72d → 364.68d |
| PG-10581 | Final Coat Painting | 2025-05-16 → 2025-05-17 (+1d) | 2025-06-05 → 2025-06-06 (+1d) |  | 364.72d → 364.68d |
| 1.3.1.1.4.13.3 | **Floor Finishing Works - Civil** |  | 2025-05-16 → 2025-05-17 (+1d) |  |  |
| PG-10583 | Floor Tiling - Wet area | 2025-04-22 → 2025-04-23 (+1d) | 2025-04-28 → 2025-04-29 (+1d) |  | 364.72d → 364.68d |
| PG-10584 | Floor Tiling - Dry area | 2025-04-28 → 2025-04-29 (+1d) | 2025-05-03 → 2025-05-05 (+2d) |  | 364.72d → 364.68d |
| PG-10585 | Wooden doors | 2025-05-10 → 2025-05-12 (+2d) | 2025-05-16 → 2025-05-17 (+1d) |  | 364.72d → 364.68d |
| 1.3.1.1.4.14.1 | **Ceiling Finishing works - Civil** | 2025-04-18 → 2025-04-17 (-1d) |  |  |  |
| PG-10586 | Gypsum Plastering | 2025-04-18 → 2025-04-17 (-1d) | 2025-04-25 → 2025-04-24 (-1d) |  | 401.08d → 403.03d |
| PG-10587 | Cornice fixing | 2025-05-05 → 2025-05-03 (-2d) | 2025-05-09 → 2025-05-08 (-1d) |  | 401.08d → 403.03d |
| PG-10591 | Balcony Railing Fixing works | 2025-04-09 A |  | 0% → 49% | 381.42d → 382.7d |
| PG-10596 | Waterproofing for sunken areas | 2025-04-09 A | 2025-04-12 → 2025-04-11 (-1d) | 0% → 69% | 372.42d → 373.84d |
| 1.3.1.1.4.15 | **Floor 12** |  | 2025-07-03 → 2025-07-02 (-1d) |  |  |
| 1.3.1.1.4.15.1 | **Ceiling Finishing works - Civil** |  | 2025-07-03 → 2025-07-02 (-1d) |  |  |
| PG-10604 | Final Coat Painting |  | 2025-07-03 → 2025-07-02 (-1d) |  | 377.75d → 379.07d |
| 1.3.1.1.4.15.2 | **Wall Finishing works - Civil** |  | 2025-07-03 → 2025-07-02 (-1d) |  |  |
| PG-10609 | Final Coat Painting |  | 2025-07-03 → 2025-07-02 (-1d) |  | 342.92d → 344.24d |
| 1.3.1.1.4.23 | **Floor 20** |  | 2025-11-07 → 2025-11-06 (-1d) |  |  |
| 1.3.1.1.4.23.1 | **Ceiling Finishing works - Civil** |  | 2025-11-07 → 2025-11-06 (-1d) |  |  |
| PG-10716 | Final Coat Painting |  | 2025-11-07 → 2025-11-06 (-1d) |  | 270.92d → 272.24d |
| 1.3.1.1.4.23.2 | **Wall Finishing works - Civil** |  | 2025-11-07 → 2025-11-06 (-1d) |  |  |
| PG-10721 | Final Coat Painting |  | 2025-11-07 → 2025-11-06 (-1d) |  | 236.25d → 237.57d |
| 1.3.1.1.4.24 | **Floor 21** |  | 2025-11-29 → 2025-11-28 (-1d) |  |  |
| 1.3.1.1.4.24.1 | **Ceiling Finishing works - Civil** |  | 2025-11-29 → 2025-11-28 (-1d) |  |  |
| PG-10730 | Final Coat Painting |  | 2025-11-29 → 2025-11-28 (-1d) |  | 251.92d → 253.24d |
| 1.3.1.1.4.24.2 | **Wall Finishing works - Civil** |  | 2025-11-29 → 2025-11-28 (-1d) |  |  |
| PG-10735 | Final Coat Painting |  | 2025-11-29 → 2025-11-28 (-1d) |  | 217.25d → 218.57d |
| 1.3.1.1.6.6 | **OHT Works** | 2025-08-02 → 2025-08-01 (-1d) | 2025-09-22 → 2025-09-20 (-2d) |  |  |
| PG-10809 | Tank materials Supply & Shifting | 2025-08-02 → 2025-08-01 (-1d) | 2025-08-14 → 2025-08-13 (-1d) |  | 213.58d → 214.91d |
| PG-10810 | Assembling OHT FRP Tank | 2025-08-14 → 2025-08-13 (-1d) | 2025-08-27 → 2025-08-26 (-1d) |  | 213.58d → 214.91d |
| PG-10811 | Installation of OHT Tank | 2025-08-27 → 2025-08-26 (-1d) | 2025-09-13 → 2025-09-12 (-1d) |  | 213.58d → 214.91d |
| PG-10812 | Water tightness works and checking | 2025-09-13 → 2025-09-12 (-1d) | 2025-09-22 → 2025-09-20 (-2d) |  | 213.58d → 214.91d |
| PG-10823 | Terrace Ring main & OHT Connection works | 2025-09-22 → 2025-09-20 (-2d) |  |  | 213.58d → 214.91d |
| PG-10832 | Window, Louver and Door fixing works |  | 2025-08-16 → 2025-08-14 (-2d) |  | 126.92d → 128.24d |
| PG-10833 | Pedestal works | 2025-08-16 → 2025-08-14 (-2d) |  |  | 126.92d → 128.24d |
| PG-10835 | Electrical Panel assembly works |  | 2025-11-13 → 2025-11-12 (-1d) |  | 126.92d → 128.24d |
| PG-10836 | Electrical Panel installation and cable termination. | 2025-11-13 → 2025-11-12 (-1d) |  |  | 126.92d → 128.24d |

| ID | Task | Start | Finish | Complete | Total float |
| --- | --- | --- | --- | --- | --- |
| PG-10838 | Flooring Works |  | 2026-03-18 → 2026-03-17 (-1d) |  | 40.58d → 41.91d |
| PG-10839 | Glass Door and False ceiling Works | 2026-03-18 → 2026-03-17 (-1d) |  |  | 40.58d → 41.91d |
| PG-10841 | Canopy Works | 2026-03-18 → 2026-03-17 (-1d) |  |  | 59.42d → 60.74d |
| 1.3.1.2 | **Tower 2 ( 2B+G+26 ) TYP 4 Units - 106 Units** |  | 2026-08-05 → 2026-08-04 (-1d) |  |  |
| 1.3.1.2.2 | **Structure works** |  | 2025-09-25 → 2025-09-24 (-1d) |  |  |
| PG-10950 | Formwork |  | 2025-04-05 A | 85% → 100% | 10.67d → none |
| PG-10951 | Reinforcement |  | 2025-04-08 A | 15% → 100% | 10.67d → none |
| PG-10952 | Concrete | 2025-04-08 A | 2025-04-09 A | 0% → 100% | 10.67d → none |
| 1.3.1.2.2.20 | **Floor 17** |  | 2025-04-22 → 2025-04-21 (-1d) |  |  |
| 1.3.1.2.2.20.1 | **Columns / shear walls** |  | 2025-04-16 → 2025-04-15 (-1d) |  |  |
| PG-10953 | Reinforcement | 2025-04-09 A | 2025-04-14 → 2025-04-12 (-2d) | 0% → 51% | 10.67d → 12.12d |
| PG-10954 | Formwork | 2025-04-11 A | 2025-04-16 → 2025-04-15 (-1d) | 0% → 4% | 10.67d → 12.12d |
| 1.3.1.2.2.20.2 | **Slab, Beams & Staircase** | 2025-04-15 → 2025-04-14 (-1d) | 2025-04-22 → 2025-04-21 (-1d) |  |  |
| PG-10955 | Formwork | 2025-04-15 → 2025-04-14 (-1d) | 2025-04-18 → 2025-04-17 (-1d) |  | 10.67d → 12.12d |
| PG-10956 | Reinforcement | 2025-04-17 → 2025-04-16 (-1d) | 2025-04-21 → 2025-04-19 (-2d) |  | 10.67d → 12.12d |
| PG-10957 | Concrete | 2025-04-21 → 2025-04-19 (-2d) | 2025-04-22 → 2025-04-21 (-1d) |  | 10.67d → 12.12d |
| 1.3.1.2.2.21 | **Floor 18** | 2025-04-22 → 2025-04-21 (-1d) | 2025-05-05 → 2025-05-03 (-2d) |  |  |
| 1.3.1.2.2.21.1 | **Columns / shear walls** | 2025-04-22 → 2025-04-21 (-1d) | 2025-04-29 → 2025-04-28 (-1d) |  |  |
| PG-10958 | Reinforcement | 2025-04-22 → 2025-04-21 (-1d) | 2025-04-26 → 2025-04-25 (-1d) |  | 10.67d → 12.12d |
| PG-10959 | Formwork | 2025-04-24 → 2025-04-23 (-1d) | 2025-04-29 → 2025-04-28 (-1d) |  | 10.67d → 12.12d |
| 1.3.1.2.2.21.2 | **Slab, Beams & Staircase** | 2025-04-28 → 2025-04-26 (-2d) | 2025-05-05 → 2025-05-03 (-2d) |  |  |
| PG-10960 | Formwork | 2025-04-28 → 2025-04-26 (-2d) | 2025-05-01 → 2025-04-30 (-1d) |  | 10.67d → 12.12d |
| PG-10961 | Reinforcement | 2025-04-30 → 2025-04-29 (-1d) | 2025-05-03 → 2025-05-02 (-1d) |  | 10.67d → 12.12d |
| PG-10962 | Concrete | 2025-05-03 → 2025-05-02 (-1d) | 2025-05-05 → 2025-05-03 (-2d) |  | 10.67d → 12.12d |
| 1.3.1.2.2.22 | **Floor 19** | 2025-05-05 → 2025-05-03 (-2d) | 2025-05-17 → 2025-05-16 (-1d) |  |  |
| 1.3.1.2.2.22.1 | **Columns / shear walls** | 2025-05-05 → 2025-05-03 (-2d) | 2025-05-12 → 2025-05-10 (-2d) |  |  |
| PG-10963 | Reinforcement | 2025-05-05 → 2025-05-03 (-2d) | 2025-05-09 → 2025-05-08 (-1d) |  | 10.67d → 12.12d |
| PG-10964 | Formwork | 2025-05-07 → 2025-05-06 (-1d) | 2025-05-12 → 2025-05-10 (-2d) |  | 10.67d → 12.12d |
| 1.3.1.2.2.22.2 | **Slab, Beams & Staircase** | 2025-05-10 → 2025-05-09 (-1d) | 2025-05-17 → 2025-05-16 (-1d) |  |  |
| PG-10965 | Formwork | 2025-05-10 → 2025-05-09 (-1d) | 2025-05-14 → 2025-05-13 (-1d) |  | 10.67d → 12.12d |
| PG-10966 | Reinforcement | 2025-05-13 → 2025-05-12 (-1d) | 2025-05-16 → 2025-05-15 (-1d) |  | 10.67d → 12.12d |
| PG-10967 | Concrete | 2025-05-16 → 2025-05-15 (-1d) | 2025-05-17 → 2025-05-16 (-1d) |  | 10.67d → 12.12d |
| 1.3.1.2.2.23 | **Floor 20** | 2025-05-17 → 2025-05-16 (-1d) | 2025-05-30 → 2025-05-29 (-1d) |  |  |
| 1.3.1.2.2.23.1 | **Columns / shear walls** | 2025-05-17 → 2025-05-16 (-1d) | 2025-05-24 → 2025-05-23 (-1d) |  |  |
| PG-10968 | Reinforcement | 2025-05-17 → 2025-05-16 (-1d) | 2025-05-22 → 2025-05-21 (-1d) |  | 10.67d → 12.12d |
| PG-10969 | Formwork | 2025-05-20 → 2025-05-19 (-1d) | 2025-05-24 → 2025-05-23 (-1d) |  | 10.67d → 12.12d |
| 1.3.1.2.2.23.2 | **Slab, Beams & Staircase** | 2025-05-23 → 2025-05-22 (-1d) | 2025-05-30 → 2025-05-29 (-1d) |  |  |
| PG-10970 | Formwork | 2025-05-23 → 2025-05-22 (-1d) | 2025-05-27 → 2025-05-26 (-1d) |  | 10.67d → 12.12d |
| PG-10971 | Reinforcement | 2025-05-26 → 2025-05-24 (-2d) | 2025-05-29 → 2025-05-28 (-1d) |  | 10.67d → 12.12d |
| PG-10972 | Concrete | 2025-05-29 → 2025-05-28 (-1d) | 2025-05-30 → 2025-05-29 (-1d) |  | 10.67d → 12.12d |
| 1.3.1.2.2.24 | **Floor 21** | 2025-05-30 → 2025-05-29 (-1d) | 2025-06-12 → 2025-06-11 (-1d) |  |  |
| 1.3.1.2.2.24.1 | **Columns / shear walls** | 2025-05-30 → 2025-05-29 (-1d) | 2025-06-06 → 2025-06-05 (-1d) |  |  |
| PG-10973 | Reinforcement | 2025-05-30 → 2025-05-29 (-1d) | 2025-06-04 → 2025-06-03 (-1d) |  | 10.67d → 12.12d |
| PG-10974 | Formwork | 2025-06-02 → 2025-05-31 (-2d) | 2025-06-06 → 2025-06-05 (-1d) |  | 10.67d → 12.12d |
| 1.3.1.2.2.24.2 | **Slab, Beams & Staircase** | 2025-06-05 → 2025-06-04 (-1d) | 2025-06-12 → 2025-06-11 (-1d) |  |  |
| PG-10975 | Formwork | 2025-06-05 → 2025-06-04 (-1d) | 2025-06-09 → 2025-06-07 (-2d) |  | 10.67d → 12.12d |
| PG-10976 | Reinforcement | 2025-06-07 → 2025-06-06 (-1d) | 2025-06-11 → 2025-06-10 (-1d) |  | 10.67d → 12.12d |
| PG-10977 | Concrete | 2025-06-11 → 2025-06-10 (-1d) | 2025-06-12 → 2025-06-11 (-1d) |  | 10.67d → 12.12d |
| 1.3.1.2.2.25 | **Floor 22** | 2025-06-12 → 2025-06-11 (-1d) | 2025-06-25 → 2025-06-24 (-1d) |  |  |
| 1.3.1.2.2.25.1 | **Columns / shear walls** | 2025-06-12 → 2025-06-11 (-1d) | 2025-06-19 → 2025-06-18 (-1d) |  |  |
| PG-10978 | Reinforcement | 2025-06-12 → 2025-06-11 (-1d) | 2025-06-17 → 2025-06-16 (-1d) |  | 10.67d → 12.12d |
| PG-10979 | Formwork | 2025-06-14 → 2025-06-13 (-1d) | 2025-06-19 → 2025-06-18 (-1d) |  | 10.67d → 12.12d |
| 1.3.1.2.2.25.2 | **Slab, Beams & Staircase** | 2025-06-18 → 2025-06-17 (-1d) | 2025-06-25 → 2025-06-24 (-1d) |  |  |
| PG-10980 | Formwork | 2025-06-18 → 2025-06-17 (-1d) | 2025-06-21 → 2025-06-20 (-1d) |  | 10.67d → 12.12d |
| PG-10981 | Reinforcement | 2025-06-20 → 2025-06-19 (-1d) | 2025-06-24 → 2025-06-23 (-1d) |  | 10.67d → 12.12d |
| PG-10982 | Concrete | 2025-06-24 → 2025-06-23 (-1d) | 2025-06-25 → 2025-06-24 (-1d) |  | 10.67d → 12.12d |
| 1.3.1.2.2.26 | **Floor 23** | 2025-06-25 → 2025-06-24 (-1d) | 2025-07-08 → 2025-07-07 (-1d) |  |  |
| 1.3.1.2.2.26.1 | **Columns / shear walls** | 2025-06-25 → 2025-06-24 (-1d) | 2025-07-02 → 2025-07-01 (-1d) |  |  |
| PG-10983 | Reinforcement | 2025-06-25 → 2025-06-24 (-1d) | 2025-06-30 → 2025-06-28 (-2d) |  | 10.67d → 12.12d |
| PG-10984 | Formwork | 2025-06-27 → 2025-06-26 (-1d) | 2025-07-02 → 2025-07-01 (-1d) |  | 10.67d → 12.12d |
| 1.3.1.2.2.26.2 | **Slab, Beams & Staircase** | 2025-07-01 → 2025-06-30 (-1d) | 2025-07-08 → 2025-07-07 (-1d) |  |  |
| PG-10985 | Formwork | 2025-07-01 → 2025-06-30 (-1d) | 2025-07-04 → 2025-07-03 (-1d) |  | 10.67d → 12.12d |
| PG-10986 | Reinforcement | 2025-07-03 → 2025-07-02 (-1d) | 2025-07-07 → 2025-07-05 (-2d) |  | 10.67d → 12.12d |
| PG-10987 | Concrete | 2025-07-07 → 2025-07-05 (-2d) | 2025-07-08 → 2025-07-07 (-1d) |  | 10.67d → 12.12d |
| 1.3.1.2.2.27 | **Floor 24** | 2025-07-08 → 2025-07-07 (-1d) | 2025-07-21 → 2025-07-19 (-2d) |  |  |
| 1.3.1.2.2.27.1 | **Columns / shear walls** | 2025-07-08 → 2025-07-07 (-1d) | 2025-07-15 → 2025-07-14 (-1d) |  |  |
| PG-10988 | Reinforcement | 2025-07-08 → 2025-07-07 (-1d) | 2025-07-12 → 2025-07-11 (-1d) |  | 10.67d → 12.12d |
| PG-10989 | Formwork | 2025-07-10 → 2025-07-09 (-1d) | 2025-07-15 → 2025-07-14 (-1d) |  | 10.67d → 12.12d |
| 1.3.1.2.2.27.2 | **Slab, Beams & Staircase** | 2025-07-14 → 2025-07-12 (-2d) | 2025-07-21 → 2025-07-19 (-2d) |  |  |
| PG-10990 | Formwork | 2025-07-14 → 2025-07-12 (-2d) | 2025-07-17 → 2025-07-16 (-1d) |  | 10.67d → 12.12d |

| ID | Task | Start | Finish | Complete | Total float |
| --- | --- | --- | --- | --- | --- |
| PG-10991 | Reinforcement | 2025-07-16 → 2025-07-15 (-1d) | 2025-07-19 → 2025-07-18 (-1d) |  | 10.67d → 12.12d |
| PG-10992 | Concrete | 2025-07-19 → 2025-07-18 (-1d) | 2025-07-21 → 2025-07-19 (-2d) |  | 10.67d → 12.12d |
| 1.3.1.2.2.28 | **Floor 25** | 2025-07-21 → 2025-07-19 (-2d) | 2025-08-02 → 2025-08-01 (-1d) |  |  |
| 1.3.1.2.2.28.1 | **Columns / shear walls** | 2025-07-21 → 2025-07-19 (-2d) | 2025-07-28 → 2025-07-26 (-2d) |  |  |
| PG-10993 | Reinforcement | 2025-07-21 → 2025-07-19 (-2d) | 2025-07-25 → 2025-07-24 (-1d) |  | 10.67d → 12.12d |
| PG-10994 | Formwork | 2025-07-23 → 2025-07-22 (-1d) | 2025-07-28 → 2025-07-26 (-2d) |  | 10.67d → 12.12d |
| 1.3.1.2.2.28.2 | **Slab, Beams & Staircase** | 2025-07-26 → 2025-07-25 (-1d) | 2025-08-02 → 2025-08-01 (-1d) |  |  |
| PG-10995 | Formwork | 2025-07-26 → 2025-07-25 (-1d) | 2025-07-30 → 2025-07-29 (-1d) |  | 10.67d → 12.12d |
| PG-10996 | Reinforcement | 2025-07-29 → 2025-07-28 (-1d) | 2025-08-01 → 2025-07-31 (-1d) |  | 10.67d → 12.12d |
| PG-10997 | Concrete | 2025-08-01 → 2025-07-31 (-1d) | 2025-08-02 → 2025-08-01 (-1d) |  | 10.67d → 12.12d |
| 1.3.1.2.2.29 | **Floor 26** | 2025-08-02 → 2025-08-01 (-1d) | 2025-08-16 → 2025-08-14 (-2d) |  |  |
| 1.3.1.2.2.29.1 | **Columns / shear walls** | 2025-08-02 → 2025-08-01 (-1d) | 2025-08-09 → 2025-08-08 (-1d) |  |  |
| PG-10998 | Reinforcement | 2025-08-02 → 2025-08-01 (-1d) | 2025-08-07 → 2025-08-06 (-1d) |  | 10.67d → 12.12d |
| PG-10999 | Formwork | 2025-08-05 → 2025-08-04 (-1d) | 2025-08-09 → 2025-08-08 (-1d) |  | 10.67d → 12.12d |
| 1.3.1.2.2.29.2 | **Slab, Beams & Staircase** | 2025-08-08 → 2025-08-07 (-1d) | 2025-08-16 → 2025-08-14 (-2d) |  |  |
| PG-11000 | Formwork | 2025-08-08 → 2025-08-07 (-1d) | 2025-08-12 → 2025-08-11 (-1d) |  | 10.67d → 12.12d |
| PG-11001 | Reinforcement | 2025-08-11 → 2025-08-09 (-2d) | 2025-08-14 → 2025-08-13 (-1d) |  | 10.67d → 12.12d |
| PG-11002 | Concrete | 2025-08-14 → 2025-08-13 (-1d) | 2025-08-16 → 2025-08-14 (-2d) |  | 10.67d → 12.12d |
| 1.3.1.2.2.30 | **Above Terrace Floor** | 2025-08-16 → 2025-08-14 (-2d) | 2025-09-25 → 2025-09-24 (-1d) |  |  |
| 1.3.1.2.2.30.1 | **Columns / shear walls/Parapet Walls** | 2025-08-16 → 2025-08-14 (-2d) | 2025-08-30 → 2025-08-29 (-1d) |  |  |
| PG-11003 | Reinforcement | 2025-08-16 → 2025-08-14 (-2d) | 2025-08-21 → 2025-08-20 (-1d) |  | 116.17d → 117.62d |
| PG-11004 | Formwork | 2025-08-19 → 2025-08-18 (-1d) | 2025-08-25 → 2025-08-23 (-2d) |  | 116.17d → 117.62d |
| PG-11005 | Concrete | 2025-08-25 → 2025-08-23 (-2d) | 2025-08-30 → 2025-08-29 (-1d) |  | 116.17d → 117.62d |
| 1.3.1.2.2.30.2 | **Slab, Beams & Staircase Head rooms, Lift headroom** | 2025-08-22 → 2025-08-21 (-1d) | 2025-09-25 → 2025-09-24 (-1d) |  |  |
| PG-11009 | Terrace Waterproofing and Protective finishing. | 2025-08-22 → 2025-08-21 (-1d) | 2025-09-25 → 2025-09-24 (-1d) |  | 208.83d → 210.29d |
| PG-11006 | Formwork | 2025-08-30 → 2025-08-29 (-1d) | 2025-09-05 → 2025-09-04 (-1d) |  | 208.83d → 210.29d |
| PG-11007 | Reinforcement | 2025-09-05 → 2025-09-04 (-1d) | 2025-09-11 → 2025-09-10 (-1d) |  | 208.83d → 210.29d |
| PG-11008 | Concrete | 2025-09-11 → 2025-09-10 (-1d) | 2025-09-13 → 2025-09-12 (-1d) |  | 208.83d → 210.29d |
| 1.3.1.2.3.9 | **Floor 6** |  | 2025-04-16 → 2025-04-17 (+1d) |  |  |
| 1.3.1.2.3.9.1 | **PHE Works** |  | 2025-04-16 → 2025-04-17 (+1d) |  |  |
| PG-11073 | Final Fix - CP & Sanitary fixtures |  | 2025-04-16 → 2025-04-17 (+1d) | 9% → 61% | 414.69d → 414.84d |
| 1.3.1.2.3.9.2 | **Fire Fighting Works** |  | 2025-04-16 → 2025-04-17 (+1d) |  |  |
| PG-11076 | Final Fix - Smoke & heat detectors, FHC , FAS Etc. |  | 2025-04-16 → 2025-04-17 (+1d) | 3% → 56% | 414.91d → 414.84d |
| 1.3.1.2.3.9.3 | **Electrical Works** |  | 2025-04-16 → 2025-04-17 (+1d) |  |  |
| PG-11079 | Final Fix - Electrical Fixtures | 2025-04-09 → 2025-04-10 A (+1d) | 2025-04-16 → 2025-04-17 (+1d) | 0% → 23% | 414.91d → 414.84d |
| PG-11084 | 2nd Fix - Sprinkler fixing & Pressure testing |  | 2025-04-08 → 2025-04-09 A (+1d) | 67% → 100% | 411.83d → none |
| PG-11087 | 2nd Fix - Wiring works |  | 2025-04-07 → 2025-04-08 A (+1d) | 82% → 100% | 416.82d → none |
| PG-11093 | 2nd Fix - Sprinkler fixing & Pressure testing |  | 2025-04-23 → 2025-04-24 (+1d) |  | 398.83d → 399.43d |
| PG-11096 | 2nd Fix - Wiring works | 2025-04-08 → 2025-04-09 A (+1d) | 2025-04-22 → 2025-04-23 (+1d) | 0% → 13% | 403.83d → 403.78d |
| PG-11102 | 2nd Fix - Sprinkler fixing & Pressure testing |  | 2025-05-06 → 2025-05-07 (+1d) |  | 387.83d → 388.46d |
| PG-11105 | 2nd Fix - Wiring works |  | 2025-05-05 → 2025-05-06 (+1d) |  | 392.67d → 393.29d |
| 1.3.1.2.3.13 | **Floor 10** |  | 2025-06-13 → 2025-06-14 (+1d) |  |  |
| 1.3.1.2.3.13.1 | **PHE Works** |  | 2025-06-13 → 2025-06-14 (+1d) |  |  |
| PG-11107 | 1st Fix - Piping works |  | 2025-04-09 → 2025-04-10 A (+1d) | 64% → 100% | 364.56d → none |
| PG-11108 | 2nd Fix - diverter fixing & Pressure testing | 2025-04-04 → 2025-04-05 A (+1d) | 2025-04-16 → 2025-04-17 (+1d) | 0% → 53% | 364.56d → 364.51d |
| PG-11109 | Final Fix - CP & Sanitary fixtures | 2025-06-02 → 2025-06-03 (+1d) | 2025-06-13 → 2025-06-14 (+1d) |  | 364.56d → 364.51d |
| 1.3.1.2.3.13.2 | **Fire Fighting Works** | 2025-04-04 → 2025-04-05 (+1d) | 2025-06-13 → 2025-06-14 (+1d) |  |  |
| PG-11110 | 1st Fix - Piping and Shaft hydrant works | 2025-04-04 → 2025-04-05 A (+1d) |  | 0% → 48% | 411.97d → 412.59d |
| PG-11111 | 2nd Fix - Sprinkler fixing & Pressure testing | 2025-05-12 → 2025-05-13 (+1d) | 2025-05-23 → 2025-05-24 (+1d) |  | 372.4d → 372.34d |
| PG-11112 | Final Fix - Smoke & heat detectors, FHC , FAS Etc. | 2025-06-02 → 2025-06-03 (+1d) | 2025-06-13 → 2025-06-14 (+1d) |  | 364.56d → 364.51d |
| 1.3.1.2.3.13.3 | **Electrical Works** |  | 2025-06-13 → 2025-06-14 (+1d) |  |  |
| PG-11113 | 1st Fix - GI wire pulling |  | 2025-04-04 → 2025-04-05 A (+1d) | 97% → 100% | 411.97d → none |
| PG-11114 | 2nd Fix - Wiring works | 2025-05-07 → 2025-05-08 (+1d) | 2025-05-22 → 2025-05-23 (+1d) |  | 378.23d → 378.18d |
| PG-11115 | Final Fix - Electrical Fixtures | 2025-06-06 → 2025-06-07 (+1d) | 2025-06-13 → 2025-06-14 (+1d) |  | 364.56d → 364.51d |
| PG-11116 | 1st Fix - Piping works | 2025-04-09 A | 2025-04-23 → 2025-04-22 (-1d) | 0% → 19% | 352.33d → 354.04d |
| PG-11117 | 2nd Fix - diverter fixing & Pressure testing | 2025-04-18 → 2025-04-17 (-1d) | 2025-04-30 → 2025-04-29 (-1d) |  | 352.33d → 354.04d |
| PG-11118 | Final Fix - CP & Sanitary fixtures | 2025-06-16 → 2025-06-14 (-2d) |  |  | 352.33d → 354.04d |
| 1.3.1.2.3.14.2 | **Fire Fighting Works** | 2025-04-18 → 2025-04-17 (-1d) |  |  |  |
| PG-11119 | 1st Fix - Piping and Shaft hydrant works | 2025-04-18 → 2025-04-17 (-1d) | 2025-05-02 → 2025-05-01 (-1d) |  | 400d → 401.55d |
| PG-11120 | 2nd Fix - Sprinkler fixing & Pressure testing | 2025-05-26 → 2025-05-24 (-2d) | 2025-06-06 → 2025-06-05 (-1d) |  | 360.17d → 361.87d |
| PG-11121 | Final Fix - Smoke & heat detectors, FHC , FAS Etc. | 2025-06-16 → 2025-06-14 (-2d) |  |  | 352.33d → 354.04d |
| PG-11122 | 1st Fix - GI wire pulling | 2025-04-09 A | 2025-04-18 → 2025-04-17 (-1d) | 0% → 28% | 400d → 401.55d |
| PG-11123 | 2nd Fix - Wiring works |  | 2025-06-05 → 2025-06-04 (-1d) |  | 366d → 367.71d |
| PG-11124 | Final Fix - Electrical Fixtures | 2025-06-21 → 2025-06-20 (-1d) |  |  | 352.33d → 354.04d |
| 1.3.1.2.3.15 | **Floor 12** | 2025-04-22 → 2025-04-21 (-1d) |  |  |  |
| 1.3.1.2.3.15.1 | **PHE Works** | 2025-04-22 → 2025-04-21 (-1d) |  |  |  |
| PG-11125 | 1st Fix - Piping works | 2025-04-22 → 2025-04-21 (-1d) | 2025-05-06 → 2025-05-05 (-1d) |  | 341.33d → 342.79d |
| PG-11126 | 2nd Fix - diverter fixing & Pressure testing | 2025-05-01 → 2025-04-30 (-1d) | 2025-05-13 → 2025-05-12 (-1d) |  | 341.33d → 342.79d |
| PG-11127 | Final Fix - CP & Sanitary fixtures | 2025-06-30 → 2025-06-28 (-2d) |  |  | 341.33d → 342.79d |
| 1.3.1.2.3.15.2 | **Fire Fighting Works** | 2025-05-02 → 2025-05-01 (-1d) |  |  |  |

| ID | Task | Start | Finish | Total float |
| --- | --- | --- | --- | --- |
| PG-11128 | 1st Fix - Piping and Shaft hydrant works | 2025-05-02 → 2025-05-01 (-1d) | 2025-05-15 → 2025-05-14 (-1d) | 389d → 390.46d |
| PG-11129 | 2nd Fix - Sprinkler fixing & Pressure testing | 2025-06-07 → 2025-06-06 (-1d) | 2025-06-19 → 2025-06-18 (-1d) | 350.33d → 351.79d |
| PG-11130 | Final Fix - Smoke & heat detectors, FHC , FAS Etc. | 2025-06-30 → 2025-06-28 (-2d) |  | 341.33d → 342.79d |
| 1.3.1.2.3.15.3 | **Electrical Works** | 2025-04-22 → 2025-04-21 (-1d) |  |  |
| PG-11131 | 1st Fix - GI wire pulling | 2025-04-22 → 2025-04-21 (-1d) | 2025-05-01 → 2025-04-30 (-1d) | 389d → 390.46d |
| PG-11132 | 2nd Fix - Wiring works |  | 2025-06-18 → 2025-06-17 (-1d) | 355.33d → 356.79d |
| PG-11133 | Final Fix - Electrical Fixtures | 2025-07-04 → 2025-07-03 (-1d) |  | 341.33d → 342.79d |
| 1.3.1.2.3.16 | **Floor 13** | 2025-05-05 → 2025-05-03 (-2d) |  |  |
| 1.3.1.2.3.16.1 | **PHE Works** | 2025-05-05 → 2025-05-03 (-2d) |  |  |
| PG-11134 | 1st Fix - Piping works | 2025-05-05 → 2025-05-03 (-2d) | 2025-05-19 → 2025-05-17 (-2d) | 330.33d → 331.79d |
| PG-11135 | 2nd Fix - diverter fixing & Pressure testing | 2025-05-14 → 2025-05-13 (-1d) | 2025-05-26 → 2025-05-24 (-2d) | 330.33d → 331.79d |
| PG-11136 | Final Fix - CP & Sanitary fixtures | 2025-07-12 → 2025-07-11 (-1d) |  | 330.33d → 331.79d |
| 1.3.1.2.3.16.2 | **Fire Fighting Works** | 2025-05-14 → 2025-05-13 (-1d) |  |  |
| PG-11137 | 1st Fix - Piping and Shaft hydrant works | 2025-05-14 → 2025-05-13 (-1d) | 2025-05-28 → 2025-05-27 (-1d) | 377.33d → 378.79d |
| PG-11138 | 2nd Fix - Sprinkler fixing & Pressure testing | 2025-06-20 → 2025-06-19 (-1d) | 2025-07-02 → 2025-07-01 (-1d) | 339.33d → 340.79d |
| PG-11139 | Final Fix - Smoke & heat detectors, FHC , FAS Etc. | 2025-07-12 → 2025-07-11 (-1d) |  | 330.33d → 331.79d |
| 1.3.1.2.3.16.3 | **Electrical Works** | 2025-05-05 → 2025-05-03 (-2d) |  |  |
| PG-11140 | 1st Fix - GI wire pulling | 2025-05-05 → 2025-05-03 (-2d) | 2025-05-14 → 2025-05-13 (-1d) | 377.33d → 378.79d |
| PG-11141 | 2nd Fix - Wiring works |  | 2025-07-01 → 2025-06-30 (-1d) | 345.33d → 346.79d |
| PG-11142 | Final Fix - Electrical Fixtures | 2025-07-18 → 2025-07-17 (-1d) |  | 330.33d → 331.79d |
| 1.3.1.2.3.17 | **Floor 14** | 2025-05-17 → 2025-05-16 (-1d) |  |  |
| 1.3.1.2.3.17.1 | **PHE Works** | 2025-05-17 → 2025-05-16 (-1d) |  |  |
| PG-11143 | 1st Fix - Piping works | 2025-05-17 → 2025-05-16 (-1d) | 2025-05-31 → 2025-05-30 (-1d) | 319.33d → 320.79d |
| PG-11144 | 2nd Fix - diverter fixing & Pressure testing | 2025-05-27 → 2025-05-26 (-1d) | 2025-06-07 → 2025-06-06 (-1d) | 319.33d → 320.79d |
| PG-11145 | Final Fix - CP & Sanitary fixtures | 2025-07-26 → 2025-07-25 (-1d) |  | 319.33d → 320.79d |
| 1.3.1.2.3.17.2 | **Fire Fighting Works** | 2025-05-28 → 2025-05-27 (-1d) |  |  |
| PG-11146 | 1st Fix - Piping and Shaft hydrant works | 2025-05-28 → 2025-05-27 (-1d) | 2025-06-11 → 2025-06-10 (-1d) | 365.33d → 366.79d |
| PG-11147 | 2nd Fix - Sprinkler fixing & Pressure testing | 2025-07-03 → 2025-07-02 (-1d) | 2025-07-15 → 2025-07-14 (-1d) | 329.33d → 330.79d |
| PG-11148 | Final Fix - Smoke & heat detectors, FHC , FAS Etc. | 2025-07-26 → 2025-07-25 (-1d) |  | 319.33d → 320.79d |
| 1.3.1.2.3.17.3 | **Electrical Works** | 2025-05-17 → 2025-05-16 (-1d) |  |  |
| PG-11149 | 1st Fix - GI wire pulling | 2025-05-17 → 2025-05-16 (-1d) | 2025-05-28 → 2025-05-27 (-1d) | 365.33d → 366.79d |
| PG-11150 | 2nd Fix - Wiring works |  | 2025-07-14 → 2025-07-12 (-2d) | 334.33d → 335.79d |
| PG-11151 | Final Fix - Electrical Fixtures | 2025-07-31 → 2025-07-30 (-1d) |  | 319.33d → 320.79d |
| 1.3.1.2.3.18 | **Floor 15** | 2025-05-30 → 2025-05-29 (-1d) |  |  |
| 1.3.1.2.3.18.1 | **PHE Works** | 2025-05-30 → 2025-05-29 (-1d) |  |  |
| PG-11152 | 1st Fix - Piping works | 2025-05-30 → 2025-05-29 (-1d) | 2025-06-13 → 2025-06-12 (-1d) | 158.33d → 159.79d |
| PG-11153 | 2nd Fix - diverter fixing & Pressure testing | 2025-06-09 → 2025-06-07 (-2d) | 2025-06-20 → 2025-06-19 (-1d) | 158.33d → 159.79d |
| PG-11154 | Final Fix - CP & Sanitary fixtures | 2025-08-07 → 2025-08-06 (-1d) |  | 309.33d → 310.79d |
| 1.3.1.2.3.18.2 | **Fire Fighting Works** | 2025-06-09 → 2025-06-07 (-2d) |  |  |
| PG-11155 | 1st Fix - Piping and Shaft hydrant works | 2025-06-09 → 2025-06-07 (-2d) | 2025-06-23 → 2025-06-21 (-2d) | 356d → 357.46d |
| PG-11156 | 2nd Fix - Sprinkler fixing & Pressure testing | 2025-07-16 → 2025-07-15 (-1d) | 2025-07-28 → 2025-07-26 (-2d) | 318.33d → 319.79d |
| PG-11157 | Final Fix - Smoke & heat detectors, FHC , FAS Etc. | 2025-08-07 → 2025-08-06 (-1d) |  | 309.33d → 310.79d |
| 1.3.1.2.3.18.3 | **Electrical Works** | 2025-05-30 → 2025-05-29 (-1d) |  |  |
| PG-11158 | 1st Fix - GI wire pulling | 2025-05-30 → 2025-05-29 (-1d) | 2025-06-09 → 2025-06-07 (-2d) | 356d → 357.46d |
| PG-11159 | 2nd Fix - Wiring works |  | 2025-07-26 → 2025-07-25 (-1d) | 323.33d → 324.79d |
| PG-11160 | Final Fix - Electrical Fixtures | 2025-08-12 → 2025-08-11 (-1d) |  | 309.33d → 310.79d |
| 1.3.1.2.3.19 | **Floor 16** | 2025-06-12 → 2025-06-11 (-1d) |  |  |
| 1.3.1.2.3.19.1 | **PHE Works** | 2025-06-12 → 2025-06-11 (-1d) |  |  |
| PG-11161 | 1st Fix - Piping works | 2025-06-12 → 2025-06-11 (-1d) | 2025-06-26 → 2025-06-25 (-1d) | 299d → 300.46d |
| PG-11162 | 2nd Fix - diverter fixing & Pressure testing | 2025-06-21 → 2025-06-20 (-1d) | 2025-07-03 → 2025-07-02 (-1d) | 299d → 300.46d |
| 1.3.1.2.3.19.2 | **Fire Fighting Works** | 2025-06-21 → 2025-06-20 (-1d) |  |  |
| PG-11164 | 1st Fix - Piping and Shaft hydrant works | 2025-06-21 → 2025-06-20 (-1d) | 2025-07-05 → 2025-07-04 (-1d) | 344.83d → 346.29d |
| PG-11165 | 2nd Fix - Sprinkler fixing & Pressure testing | 2025-07-29 → 2025-07-28 (-1d) | 2025-08-09 → 2025-08-08 (-1d) | 306.17d → 307.62d |
| 1.3.1.2.3.19.3 | **Electrical Works** | 2025-06-12 → 2025-06-11 (-1d) |  |  |
| PG-11167 | 1st Fix - GI wire pulling | 2025-06-12 → 2025-06-11 (-1d) | 2025-06-21 → 2025-06-20 (-1d) | 344.83d → 346.29d |
| PG-11168 | 2nd Fix - Wiring works |  | 2025-08-08 → 2025-08-07 (-1d) | 312d → 313.46d |
| PG-11169 | Final Fix - Electrical Fixtures | 2025-08-25 → 2025-08-23 (-2d) |  | 299d → 300.46d |
| 1.3.1.2.3.20 | **Floor 17** | 2025-06-25 → 2025-06-24 (-1d) |  |  |
| 1.3.1.2.3.20.1 | **PHE Works** | 2025-06-25 → 2025-06-24 (-1d) |  |  |
| PG-11170 | 1st Fix - Piping works | 2025-06-25 → 2025-06-24 (-1d) | 2025-07-09 → 2025-07-08 (-1d) | 288d → 289.46d |
| PG-11171 | 2nd Fix - diverter fixing & Pressure testing | 2025-07-04 → 2025-07-03 (-1d) | 2025-07-16 → 2025-07-15 (-1d) | 288d → 289.46d |
| 1.3.1.2.3.20.2 | **Fire Fighting Works** | 2025-07-04 → 2025-07-03 (-1d) |  |  |
| PG-11173 | 1st Fix - Piping and Shaft hydrant works | 2025-07-04 → 2025-07-03 (-1d) | 2025-07-18 → 2025-07-17 (-1d) | 333.83d → 335.29d |
| PG-11174 | 2nd Fix - Sprinkler fixing & Pressure testing | 2025-08-11 → 2025-08-09 (-2d) | 2025-08-23 → 2025-08-22 (-1d) | 295.17d → 296.62d |
| 1.3.1.2.3.20.3 | **Electrical Works** | 2025-06-25 → 2025-06-24 (-1d) |  |  |
| PG-11176 | 1st Fix - GI wire pulling | 2025-06-25 → 2025-06-24 (-1d) | 2025-07-04 → 2025-07-03 (-1d) | 333.83d → 335.29d |
| PG-11177 | 2nd Fix - Wiring works |  | 2025-08-22 → 2025-08-21 (-1d) | 301d → 302.46d |
| PG-11178 | Final Fix - Electrical Fixtures | 2025-09-06 → 2025-09-05 (-1d) |  | 288d → 289.46d |
| 1.3.1.2.3.21 | **Floor 18** | 2025-07-08 → 2025-07-07 (-1d) |  |  |
| 1.3.1.2.3.21.1 | **PHE Works** | 2025-07-08 → 2025-07-07 (-1d) |  |  |

| ID | Task | Start | Finish | Total float |
| --- | --- | --- | --- | --- |
| PG-11179 | 1st Fix - Piping works | 2025-07-08 → 2025-07-07 (-1d) | 2025-07-22 → 2025-07-21 (-1d) | 276.17d → 277.62d |
| PG-11180 | 2nd Fix - diverter fixing & Pressure testing | 2025-07-18 → 2025-07-17 (-1d) | 2025-07-29 → 2025-07-28 (-1d) | 276.17d → 277.62d |
| PG-11181 | Final Fix - CP & Sanitary fixtures | 2025-09-15 → 2025-09-13 (-2d) |  | 276.17d → 277.62d |
| PG-11182 | 1st Fix - Piping and Shaft hydrant works |  | 2025-07-31 → 2025-07-30 (-1d) | 323.83d → 325.29d |
| PG-11183 | 2nd Fix - Sprinkler fixing & Pressure testing |  | 2025-09-05 → 2025-09-04 (-1d) | 284.17d → 285.62d |
| PG-11184 | Final Fix - Smoke & heat detectors, FHC , FAS Etc. | 2025-09-15 → 2025-09-13 (-2d) |  | 276.17d → 277.62d |
| 1.3.1.2.3.21.3 | **Electrical Works** | 2025-07-08 → 2025-07-07 (-1d) |  |  |
| PG-11185 | 1st Fix - GI wire pulling | 2025-07-08 → 2025-07-07 (-1d) | 2025-07-17 → 2025-07-16 (-1d) | 323.83d → 325.29d |
| PG-11186 | 2nd Fix - Wiring works |  | 2025-09-04 → 2025-09-03 (-1d) | 290.17d → 291.62d |
| PG-11187 | Final Fix - Electrical Fixtures | 2025-09-20 → 2025-09-19 (-1d) |  | 276.17d → 277.62d |
| 1.3.1.2.3.22 | **Floor 19** | 2025-07-21 → 2025-07-19 (-2d) |  |  |
| 1.3.1.2.3.22.1 | **PHE Works** | 2025-07-21 → 2025-07-19 (-2d) |  |  |
| PG-11188 | 1st Fix - Piping works | 2025-07-21 → 2025-07-19 (-2d) | 2025-08-04 → 2025-08-02 (-2d) | 265.17d → 266.62d |
| PG-11189 | 2nd Fix - diverter fixing & Pressure testing | 2025-07-31 → 2025-07-30 (-1d) | 2025-08-11 → 2025-08-09 (-2d) | 265.17d → 266.62d |
| PG-11190 | Final Fix - CP & Sanitary fixtures | 2025-09-27 → 2025-09-26 (-1d) |  | 265.17d → 266.62d |
| PG-11191 | 1st Fix - Piping and Shaft hydrant works |  | 2025-08-13 → 2025-08-12 (-1d) | 312.83d → 314.29d |
| PG-11192 | 2nd Fix - Sprinkler fixing & Pressure testing |  | 2025-09-18 → 2025-09-17 (-1d) | 273.17d → 274.62d |
| PG-11193 | Final Fix - Smoke & heat detectors, FHC , FAS Etc. | 2025-09-27 → 2025-09-26 (-1d) |  | 265.17d → 266.62d |
| 1.3.1.2.3.22.3 | **Electrical Works** | 2025-07-21 → 2025-07-19 (-2d) |  |  |
| PG-11194 | 1st Fix - GI wire pulling | 2025-07-21 → 2025-07-19 (-2d) | 2025-07-30 → 2025-07-29 (-1d) | 312.83d → 314.29d |
| PG-11195 | 2nd Fix - Wiring works |  | 2025-09-17 → 2025-09-16 (-1d) | 279.17d → 280.62d |
| PG-11196 | Final Fix - Electrical Fixtures | 2025-10-04 → 2025-10-03 (-1d) |  | 265.17d → 266.62d |
| 1.3.1.2.3.23 | **Floor 20** | 2025-08-02 → 2025-08-01 (-1d) |  |  |
| 1.3.1.2.3.23.1 | **PHE Works** | 2025-08-02 → 2025-08-01 (-1d) |  |  |
| PG-11197 | 1st Fix - Piping works | 2025-08-02 → 2025-08-01 (-1d) | 2025-08-19 → 2025-08-18 (-1d) | 253.17d → 254.62d |
| PG-11198 | 2nd Fix - diverter fixing & Pressure testing | 2025-08-14 → 2025-08-13 (-1d) | 2025-08-26 → 2025-08-25 (-1d) | 253.17d → 254.62d |
| PG-11199 | Final Fix - CP & Sanitary fixtures | 2025-10-13 → 2025-10-11 (-2d) |  | 253.17d → 254.62d |
| PG-11200 | 1st Fix - Piping and Shaft hydrant works |  | 2025-08-28 → 2025-08-27 (-1d) | 301d → 302.46d |
| PG-11201 | 2nd Fix - Sprinkler fixing & Pressure testing |  | 2025-10-03 → 2025-10-01 (-2d) | 261.17d → 262.62d |
| PG-11202 | Final Fix - Smoke & heat detectors, FHC , FAS Etc. | 2025-10-13 → 2025-10-11 (-2d) |  | 253.17d → 254.62d |
| 1.3.1.2.3.23.3 | **Electrical Works** | 2025-08-02 → 2025-08-01 (-1d) |  |  |
| PG-11203 | 1st Fix - GI wire pulling | 2025-08-02 → 2025-08-01 (-1d) | 2025-08-13 → 2025-08-12 (-1d) | 301d → 302.46d |
| PG-11204 | 2nd Fix - Wiring works |  | 2025-10-01 → 2025-09-30 (-1d) | 267.17d → 268.62d |
| PG-11205 | Final Fix - Electrical Fixtures | 2025-10-18 → 2025-10-17 (-1d) |  | 253.17d → 254.62d |
| 1.3.1.2.3.24 | **Floor 21** | 2025-08-16 → 2025-08-14 (-2d) |  |  |
| 1.3.1.2.3.24.1 | **PHE Works** | 2025-08-16 → 2025-08-14 (-2d) |  |  |
| PG-11206 | 1st Fix - Piping works | 2025-08-16 → 2025-08-14 (-2d) | 2025-08-29 → 2025-08-28 (-1d) | 10.67d → 12.12d |
| PG-11207 | 2nd Fix - diverter fixing & Pressure testing | 2025-08-25 → 2025-08-23 (-2d) | 2025-09-05 → 2025-09-04 (-1d) | 243.5d → 244.96d |
| PG-11208 | Final Fix - CP & Sanitary fixtures | 2025-10-24 → 2025-10-23 (-1d) |  | 243.5d → 244.96d |
| 1.3.1.2.3.24.2 | **Fire Fighting Works** | 2025-08-25 → 2025-08-23 (-2d) |  |  |
| PG-11209 | 1st Fix - Piping and Shaft hydrant works | 2025-08-25 → 2025-08-23 (-2d) | 2025-09-08 → 2025-09-06 (-2d) | 291.17d → 292.62d |
| PG-11210 | 2nd Fix - Sprinkler fixing & Pressure testing |  | 2025-10-14 → 2025-10-13 (-1d) | 252.5d → 253.96d |
| PG-11211 | Final Fix - Smoke & heat detectors, FHC , FAS Etc. | 2025-10-24 → 2025-10-23 (-1d) |  | 243.5d → 244.96d |
| 1.3.1.2.3.24.3 | **Electrical Works** | 2025-08-16 → 2025-08-14 (-2d) |  |  |
| PG-11212 | 1st Fix - GI wire pulling | 2025-08-16 → 2025-08-14 (-2d) | 2025-08-25 → 2025-08-23 (-2d) | 291.17d → 292.62d |
| PG-11213 | 2nd Fix - Wiring works |  | 2025-10-01 → 2025-09-30 (-1d) | 267.5d → 268.96d |
| PG-11214 | Final Fix - Electrical Fixtures | 2025-10-18 → 2025-10-17 (-1d) |  | 253.5d → 254.96d |
| 1.3.1.2.3.25 | **Floor 22** | 2025-09-06 → 2025-09-05 (-1d) |  |  |
| 1.3.1.2.3.25.1 | **PHE Works** | 2025-09-06 → 2025-09-05 (-1d) |  |  |
| PG-11215 | 1st Fix - Piping works | 2025-09-06 → 2025-09-05 (-1d) |  | 119.5d → 120.96d |
| PG-11216 | 2nd Fix - diverter fixing & Pressure testing | 2025-09-15 → 2025-09-13 (-2d) |  | 129d → 130.46d |
| PG-11217 | Final Fix - CP & Sanitary fixtures | 2025-11-18 → 2025-11-17 (-1d) |  | 223.67d → 225.12d |
| 1.3.1.2.3.25.2 | **Fire Fighting Works** | 2025-09-16 → 2025-09-15 (-1d) |  |  |
| PG-11218 | 1st Fix - Piping and Shaft hydrant works | 2025-09-16 → 2025-09-15 (-1d) |  | 141.17d → 142.62d |
| PG-11219 | 2nd Fix - Sprinkler fixing & Pressure testing | 2025-10-23 → 2025-10-22 (-1d) |  | 233.67d → 235.12d |
| PG-11220 | Final Fix - Smoke & heat detectors, FHC , FAS Etc. | 2025-11-18 → 2025-11-17 (-1d) |  | 223.67d → 225.12d |
| 1.3.1.2.3.25.3 | **Electrical Works** | 2025-09-06 → 2025-09-05 (-1d) |  |  |
| PG-11221 | 1st Fix - GI wire pulling | 2025-09-06 → 2025-09-05 (-1d) |  | 10.67d → 12.12d |
| PG-11222 | 2nd Fix - Wiring works | 2025-10-16 → 2025-10-15 (-1d) |  | 238.67d → 240.12d |
| PG-11223 | Final Fix - Electrical Fixtures | 2025-11-22 → 2025-11-21 (-1d) |  | 223.67d → 225.12d |
| 1.3.1.2.3.26 | **Floor 23** | 2025-09-29 → 2025-09-27 (-2d) | 2025-12-19 → 2025-12-18 (-1d) |  |
| 1.3.1.2.3.26.1 | **PHE Works** | 2025-09-29 → 2025-09-27 (-2d) | 2025-12-19 → 2025-12-18 (-1d) |  |
| PG-11224 | 1st Fix - Piping works | 2025-09-29 → 2025-09-27 (-2d) |  | 119.5d → 120.96d |
| PG-11225 | 2nd Fix - diverter fixing & Pressure testing | 2025-10-09 → 2025-10-08 (-1d) |  | 205.67d → 207.12d |
| PG-11226 | Final Fix - CP & Sanitary fixtures |  | 2025-12-19 → 2025-12-18 (-1d) | 205.67d → 207.12d |
| 1.3.1.2.3.26.2 | **Fire Fighting Works** | 2025-10-09 → 2025-10-08 (-1d) | 2025-12-19 → 2025-12-18 (-1d) |  |
| PG-11227 | 1st Fix - Piping and Shaft hydrant works | 2025-10-09 → 2025-10-08 (-1d) |  | 252.5d → 253.96d |
| PG-11228 | 2nd Fix - Sprinkler fixing & Pressure testing | 2025-11-15 → 2025-11-14 (-1d) |  | 215.67d → 217.12d |
| PG-11229 | Final Fix - Smoke & heat detectors, FHC , FAS Etc. |  | 2025-12-19 → 2025-12-18 (-1d) | 205.67d → 207.12d |
| 1.3.1.2.3.26.3 | **Electrical Works** | 2025-09-29 → 2025-09-27 (-2d) | 2025-12-19 → 2025-12-18 (-1d) |  |

| ID | Task | Start | Finish | Complete | Total float |
| --- | --- | --- | --- | --- | --- |
| PG-11230 | 1st Fix - GI wire pulling | 2025-09-29 → 2025-09-27 (-2d) |  |  | 252.5d → 253.96d |
| PG-11231 | 2nd Fix - Wiring works | 2025-11-08 → 2025-11-07 (-1d) |  |  | 220.67d → 222.12d |
| PG-11232 | Final Fix - Electrical Fixtures |  | 2025-12-19 → 2025-12-18 (-1d) |  | 205.67d → 207.12d |
| PG-11233 | 1st Fix - Piping works |  | 2025-11-04 → 2025-11-03 (-1d) |  | 119.5d → 120.96d |
| PG-11234 | 2nd Fix - diverter fixing & Pressure testing |  | 2025-11-11 → 2025-11-10 (-1d) |  | 186.5d → 187.96d |
| 1.3.1.2.3.27.2 | **Fire Fighting Works** | 2025-10-30 → 2025-10-29 (-1d) |  |  |  |
| PG-11236 | 1st Fix - Piping and Shaft hydrant works | 2025-10-30 → 2025-10-29 (-1d) | 2025-11-13 → 2025-11-12 (-1d) |  | 235.17d → 236.62d |
| PG-11237 | 2nd Fix - Sprinkler fixing & Pressure testing |  | 2025-12-18 → 2025-12-17 (-1d) |  | 195d → 196.46d |
| PG-11239 | 1st Fix - GI wire pulling |  | 2025-10-29 → 2025-10-28 (-1d) |  | 235.17d → 236.62d |
| PG-11240 | 2nd Fix - Wiring works |  | 2025-12-17 → 2025-12-16 (-1d) |  | 200.5d → 201.96d |
| PG-11241 | Final Fix - Electrical Fixtures | 2026-01-02 → 2026-01-01 (-1d) |  |  | 186.5d → 187.96d |
| 1.3.1.2.3.28 | **Floor 25** | 2025-11-12 → 2025-11-11 (-1d) | 2026-02-03 → 2026-02-02 (-1d) |  |  |
| 1.3.1.2.3.28.1 | **PHE Works** | 2025-11-12 → 2025-11-11 (-1d) | 2026-02-03 → 2026-02-02 (-1d) |  |  |
| PG-11242 | 1st Fix - Piping works | 2025-11-12 → 2025-11-11 (-1d) |  |  | 119.5d → 120.96d |
| PG-11243 | 2nd Fix - diverter fixing & Pressure testing | 2025-11-21 → 2025-11-20 (-1d) |  |  | 167d → 168.46d |
| PG-11244 | Final Fix - CP & Sanitary fixtures | 2026-01-21 → 2026-01-20 (-1d) | 2026-02-03 → 2026-02-02 (-1d) |  | 167d → 168.46d |
| 1.3.1.2.3.28.2 | **Fire Fighting Works** |  | 2026-02-03 → 2026-02-02 (-1d) |  |  |
| PG-11247 | Final Fix - Smoke & heat detectors, FHC , FAS Etc. | 2026-01-21 → 2026-01-20 (-1d) | 2026-02-03 → 2026-02-02 (-1d) |  | 167d → 168.46d |
| 1.3.1.2.3.28.3 | **Electrical Works** | 2025-11-12 → 2025-11-11 (-1d) | 2026-02-03 → 2026-02-02 (-1d) |  |  |
| PG-11248 | 1st Fix - GI wire pulling | 2025-11-12 → 2025-11-11 (-1d) |  |  | 214.67d → 216.12d |
| PG-11250 | Final Fix - Electrical Fixtures | 2026-01-28 → 2026-01-27 (-1d) | 2026-02-03 → 2026-02-02 (-1d) |  | 167d → 168.46d |
| 1.3.1.2.3.29 | **Floor 26** | 2025-12-04 → 2025-12-03 (-1d) |  |  |  |
| 1.3.1.2.3.29.1 | **PHE Works** | 2025-12-04 → 2025-12-03 (-1d) |  |  |  |
| PG-11251 | 1st Fix - Piping works | 2025-12-04 → 2025-12-03 (-1d) |  |  | 119.5d → 120.96d |
| PG-11252 | 2nd Fix - diverter fixing & Pressure testing | 2025-12-13 → 2025-12-12 (-1d) |  |  | 119.5d → 120.96d |
| 1.3.1.2.3.29.2 | **Fire Fighting Works** | 2025-12-13 → 2025-12-12 (-1d) |  |  |  |
| PG-11254 | 1st Fix - Piping and Shaft hydrant works | 2025-12-13 → 2025-12-12 (-1d) |  |  | 197.67d → 199.12d |
| PG-11255 | 2nd Fix - Sprinkler fixing & Pressure testing | 2026-01-19 → 2026-01-17 (-2d) |  |  | 128.5d → 129.96d |
| 1.3.1.2.3.29.3 | **Electrical Works** | 2025-12-04 → 2025-12-03 (-1d) |  |  |  |
| PG-11257 | 1st Fix - GI wire pulling | 2025-12-04 → 2025-12-03 (-1d) |  |  | 197.67d → 199.12d |
| PG-11258 | 2nd Fix - Wiring works | 2026-01-12 → 2026-01-10 (-2d) |  |  | 134.5d → 135.96d |
| PG-11359 | Final Coat Painting |  |  | 63% → 92% | 447.18d → 448.11d |
| 1.3.1.2.4.9.2 | **Wall Finishing works - Civil** |  | 2025-04-09 → 2025-04-10 (+1d) |  |  |
| PG-11364 | Final Coat Painting |  | 2025-04-09 → 2025-04-10 A (+1d) | 78% → 100% | 414.91d → none |
| PG-11373 | Final Coat Painting |  |  | 8% → 39% | 436.9d → 437.83d |
| PG-11378 | Final Coat Painting |  |  | 12% → 44% | 402.67d → 403.59d |
| PG-11385 | Painting Works - Putty, Primer and 1st | 2025-04-10 → 2025-04-11 A (+1d) | 2025-04-16 → 2025-04-17 (+1d) | 0% → 13% | 422.33d → 423.07d |
| PG-11389 | UPVC Windows & Sliding doors |  | 2025-04-09 → 2025-04-11 A (+2d) | 3% → 100% | 388.83d → none |
| PG-11391 | Painting Works - Putty, Primer and 1st | 2025-04-10 → 2025-04-11 A (+1d) | 2025-04-16 → 2025-04-17 (+1d) | 0% → 11% | 388.83d → 389.43d |
| 1.3.1.2.4.11.3 | **Floor Finishing Works - Civil** |  | 2025-04-16 → 2025-04-17 (+1d) |  |  |
| PG-11396 | Wooden doors |  | 2025-04-16 → 2025-04-17 (+1d) |  | 388.83d → 389.43d |
| PG-11398 | Cornice fixing | 2025-04-07 A | 2025-04-10 → 2025-04-11 A (+1d) | 0% → 100% | 423.17d → none |
| PG-11400 | Toilet False ceiling |  | 2025-04-16 → 2025-04-17 (+1d) |  | 404.83d → 405.46d |
| PG-11399 | Painting Works - Putty, Primer and 1st |  | 2025-04-29 → 2025-04-30 (+1d) |  | 413.17d → 413.79d |
| PG-11404 | Dadoing - Wet area |  | 2025-04-04 → 2025-04-07 A (+3d) | 80% → 100% | 378.67d → none |
| PG-11403 | UPVC Windows & Sliding doors |  | 2025-04-22 → 2025-04-23 (+1d) |  | 378.67d → 379.29d |
| PG-11405 | Painting Works - Putty, Primer and 1st |  | 2025-04-29 → 2025-04-30 (+1d) |  | 378.67d → 379.29d |
| 1.3.1.2.4.12.3 | **Floor Finishing Works - Civil** |  | 2025-04-29 → 2025-04-30 (+1d) |  |  |
| PG-11408 | Floor Tiling - Wet area | 2025-04-05 → 2025-04-07 A (+2d) | 2025-04-10 → 2025-04-11 (+1d) | 0% → 94% | 378.67d → 379.29d |
| PG-11409 | Floor Tiling - Dry area |  | 2025-04-16 → 2025-04-17 (+1d) |  | 378.67d → 379.29d |
| PG-11410 | Wooden doors |  | 2025-04-29 → 2025-04-30 (+1d) |  | 378.67d → 379.29d |
| 1.3.1.2.4.13 | **Floor 10** |  | 2025-06-06 → 2025-06-07 (+1d) |  |  |
| 1.3.1.2.4.13.1 | **Ceiling Finishing works - Civil** | 2025-04-04 → 2025-04-05 (+1d) | 2025-06-06 → 2025-06-07 (+1d) |  |  |
| PG-11411 | Gypsum Plastering | 2025-04-04 → 2025-04-05 A (+1d) |  | 0% → 92% | 411.97d → 412.59d |
| PG-11414 | Toilet False ceiling | 2025-04-29 → 2025-04-30 (+1d) | 2025-05-03 → 2025-05-05 (+2d) |  | 389.4d → 389.34d |
| PG-11413 | Painting Works - Putty, Primer and 1st | 2025-05-09 → 2025-05-10 (+1d) | 2025-05-16 → 2025-05-17 (+1d) |  | 399.9d → 399.84d |
| PG-11415 | Final Coat Painting | 2025-05-16 → 2025-05-17 (+1d) | 2025-06-06 → 2025-06-07 (+1d) |  | 399.9d → 399.84d |
| 1.3.1.2.4.13.2 | **Wall Finishing works - Civil** |  | 2025-06-06 → 2025-06-07 (+1d) |  |  |
| PG-11418 | Dadoing - Wet area | 2025-04-16 → 2025-04-17 (+1d) | 2025-04-22 → 2025-04-23 (+1d) |  | 364.56d → 364.51d |
| PG-11417 | UPVC Windows & Sliding doors | 2025-05-03 → 2025-05-05 (+2d) | 2025-05-09 → 2025-05-10 (+1d) |  | 364.56d → 364.51d |
| PG-11419 | Painting Works - Putty, Primer and 1st | 2025-05-09 → 2025-05-10 (+1d) | 2025-05-16 → 2025-05-17 (+1d) |  | 364.56d → 364.51d |
| PG-11420 | Final Coat Painting | 2025-05-16 → 2025-05-17 (+1d) | 2025-06-06 → 2025-06-07 (+1d) |  | 364.56d → 364.51d |
| 1.3.1.2.4.13.3 | **Floor Finishing Works - Civil** |  | 2025-05-16 → 2025-05-17 (+1d) |  |  |
| PG-11422 | Floor Tiling - Wet area | 2025-04-22 → 2025-04-23 (+1d) | 2025-04-28 → 2025-04-29 (+1d) |  | 364.56d → 364.51d |
| PG-11423 | Floor Tiling - Dry area | 2025-04-28 → 2025-04-29 (+1d) | 2025-05-03 → 2025-05-05 (+2d) |  | 364.56d → 364.51d |
| PG-11424 | Wooden doors | 2025-05-10 → 2025-05-12 (+2d) | 2025-05-16 → 2025-05-17 (+1d) |  | 364.56d → 364.51d |
| 1.3.1.2.4.14 | **Floor 11** |  | 2025-06-21 → 2025-06-20 (-1d) |  |  |
| 1.3.1.2.4.14.1 | **Ceiling Finishing works - Civil** | 2025-04-18 → 2025-04-17 (-1d) | 2025-06-21 → 2025-06-20 (-1d) |  |  |
| PG-11425 | Gypsum Plastering | 2025-04-18 → 2025-04-17 (-1d) | 2025-04-25 → 2025-04-24 (-1d) |  | 400d → 401.55d |
| PG-11426 | Cornice fixing | 2025-05-05 → 2025-05-03 (-2d) | 2025-05-09 → 2025-05-08 (-1d) |  | 400d → 401.55d |

| ID | Task | Start | Finish | Complete | Total float |
| --- | --- | --- | --- | --- | --- |
| PG-11428 | Toilet False ceiling | 2025-05-13 → 2025-05-12 (-1d) | 2025-05-17 → 2025-05-16 (-1d) |  | 377.17d → 378.87d |
| PG-11427 | Painting Works - Putty, Primer and 1st | 2025-05-23 → 2025-05-22 (-1d) | 2025-05-30 → 2025-05-29 (-1d) |  | 387.67d → 389.37d |
| PG-11429 | Final Coat Painting | 2025-05-30 → 2025-05-29 (-1d) | 2025-06-21 → 2025-06-20 (-1d) |  | 387.67d → 389.37d |
| PG-11430 | Balcony Railing Fixing works | 2025-04-09 A | 2025-04-14 → 2025-04-12 (-2d) | 0% → 61% | 381.33d → 383.21d |
| PG-11432 | Dadoing - Wet area | 2025-04-30 → 2025-04-29 (-1d) | 2025-05-06 → 2025-05-05 (-1d) |  | 352.33d → 354.04d |
| PG-11431 | UPVC Windows & Sliding doors | 2025-05-17 → 2025-05-16 (-1d) | 2025-05-23 → 2025-05-22 (-1d) |  | 352.33d → 354.04d |
| PG-11433 | Painting Works - Putty, Primer and 1st | 2025-05-23 → 2025-05-22 (-1d) | 2025-05-30 → 2025-05-29 (-1d) |  | 352.33d → 354.04d |
| PG-11434 | Final Coat Painting | 2025-05-30 → 2025-05-29 (-1d) |  |  | 352.33d → 354.04d |
| 1.3.1.2.4.14.3 | **Floor Finishing Works - Civil** |  | 2025-05-30 → 2025-05-29 (-1d) |  |  |
| PG-11435 | Waterproofing for sunken areas | 2025-04-09 A | 2025-04-12 → 2025-04-11 (-1d) | 0% → 79% | 372.33d → 374.12d |
| PG-11436 | Floor Tiling - Wet area | 2025-05-06 → 2025-05-05 (-1d) | 2025-05-12 → 2025-05-10 (-2d) |  | 352.33d → 354.04d |
| PG-11437 | Floor Tiling - Dry area | 2025-05-12 → 2025-05-10 (-2d) | 2025-05-17 → 2025-05-16 (-1d) |  | 352.33d → 354.04d |
| PG-11438 | Wooden doors | 2025-05-24 → 2025-05-23 (-1d) | 2025-05-30 → 2025-05-29 (-1d) |  | 352.33d → 354.04d |
| 1.3.1.2.4.15 | **Floor 12** | 2025-04-22 → 2025-04-21 (-1d) | 2025-07-04 → 2025-07-03 (-1d) |  |  |
| 1.3.1.2.4.15.1 | **Ceiling Finishing works - Civil** | 2025-05-01 → 2025-04-30 (-1d) | 2025-07-04 → 2025-07-03 (-1d) |  |  |
| PG-11439 | Gypsum Plastering | 2025-05-01 → 2025-04-30 (-1d) | 2025-05-08 → 2025-05-07 (-1d) |  | 389d → 390.46d |
| PG-11440 | Cornice fixing | 2025-05-17 → 2025-05-16 (-1d) | 2025-05-22 → 2025-05-21 (-1d) |  | 389d → 390.46d |
| PG-11442 | Toilet False ceiling | 2025-05-26 → 2025-05-24 (-2d) | 2025-05-30 → 2025-05-29 (-1d) |  | 367.33d → 368.79d |
| PG-11441 | Painting Works - Putty, Primer and 1st | 2025-06-05 → 2025-06-04 (-1d) | 2025-06-12 → 2025-06-11 (-1d) |  | 376.83d → 378.29d |
| PG-11443 | Final Coat Painting | 2025-06-12 → 2025-06-11 (-1d) | 2025-07-04 → 2025-07-03 (-1d) |  | 376.83d → 378.29d |
| 1.3.1.2.4.15.2 | **Wall Finishing works - Civil** | 2025-04-22 → 2025-04-21 (-1d) |  |  |  |
| PG-11444 | Balcony Railing Fixing works | 2025-04-22 → 2025-04-21 (-1d) | 2025-04-26 → 2025-04-25 (-1d) |  | 370.33d → 371.79d |
| PG-11446 | Dadoing - Wet area | 2025-05-13 → 2025-05-12 (-1d) | 2025-05-19 → 2025-05-17 (-2d) |  | 341.33d → 342.79d |
| PG-11445 | UPVC Windows & Sliding doors | 2025-05-30 → 2025-05-29 (-1d) | 2025-06-05 → 2025-06-04 (-1d) |  | 341.33d → 342.79d |
| PG-11447 | Painting Works - Putty, Primer and 1st | 2025-06-05 → 2025-06-04 (-1d) | 2025-06-12 → 2025-06-11 (-1d) |  | 341.33d → 342.79d |
| PG-11448 | Final Coat Painting | 2025-06-12 → 2025-06-11 (-1d) |  |  | 341.33d → 342.79d |
| 1.3.1.2.4.15.3 | **Floor Finishing Works - Civil** | 2025-04-22 → 2025-04-21 (-1d) | 2025-06-12 → 2025-06-11 (-1d) |  |  |
| PG-11449 | Waterproofing for sunken areas | 2025-04-22 → 2025-04-21 (-1d) | 2025-04-25 → 2025-04-24 (-1d) |  | 361.33d → 362.79d |
| PG-11450 | Floor Tiling - Wet area | 2025-05-19 → 2025-05-17 (-2d) | 2025-05-24 → 2025-05-23 (-1d) |  | 341.33d → 342.79d |
| PG-11451 | Floor Tiling - Dry area | 2025-05-24 → 2025-05-23 (-1d) | 2025-05-30 → 2025-05-29 (-1d) |  | 341.33d → 342.79d |
| PG-11452 | Wooden doors | 2025-06-06 → 2025-06-05 (-1d) | 2025-06-12 → 2025-06-11 (-1d) |  | 341.33d → 342.79d |
| 1.3.1.2.4.16 | **Floor 13** | 2025-05-05 → 2025-05-03 (-2d) |  |  |  |
| 1.3.1.2.4.16.1 | **Ceiling Finishing works - Civil** | 2025-05-14 → 2025-05-13 (-1d) |  |  |  |
| PG-11453 | Gypsum Plastering | 2025-05-14 → 2025-05-13 (-1d) | 2025-05-21 → 2025-05-20 (-1d) |  | 377.33d → 378.79d |
| PG-11454 | Cornice fixing | 2025-05-30 → 2025-05-29 (-1d) | 2025-06-04 → 2025-06-03 (-1d) |  | 377.33d → 378.79d |
| PG-11456 | Toilet False ceiling | 2025-06-07 → 2025-06-06 (-1d) | 2025-06-12 → 2025-06-11 (-1d) |  | 356.33d → 357.79d |
| PG-11455 | Painting Works - Putty, Primer and 1st | 2025-06-18 → 2025-06-17 (-1d) | 2025-06-25 → 2025-06-24 (-1d) |  | 365d → 366.46d |
| PG-11457 | Final Coat Painting | 2025-06-25 → 2025-06-24 (-1d) |  |  | 365d → 366.46d |
| 1.3.1.2.4.16.2 | **Wall Finishing works - Civil** | 2025-05-05 → 2025-05-03 (-2d) |  |  |  |
| PG-11458 | Balcony Railing Fixing works | 2025-05-05 → 2025-05-03 (-2d) | 2025-05-09 → 2025-05-08 (-1d) |  | 359.33d → 360.79d |
| PG-11460 | Dadoing - Wet area | 2025-05-26 → 2025-05-24 (-2d) | 2025-05-31 → 2025-05-30 (-1d) |  | 330.33d → 331.79d |
| PG-11459 | UPVC Windows & Sliding doors | 2025-06-12 → 2025-06-11 (-1d) | 2025-06-18 → 2025-06-17 (-1d) |  | 330.33d → 331.79d |
| PG-11461 | Painting Works - Putty, Primer and 1st | 2025-06-18 → 2025-06-17 (-1d) | 2025-06-25 → 2025-06-24 (-1d) |  | 330.33d → 331.79d |
| PG-11462 | Final Coat Painting | 2025-06-25 → 2025-06-24 (-1d) |  |  | 330.33d → 331.79d |
| 1.3.1.2.4.16.3 | **Floor Finishing Works - Civil** | 2025-05-05 → 2025-05-03 (-2d) | 2025-06-25 → 2025-06-24 (-1d) |  |  |
| PG-11463 | Waterproofing for sunken areas | 2025-05-05 → 2025-05-03 (-2d) | 2025-05-08 → 2025-05-07 (-1d) |  | 350.33d → 351.79d |
| PG-11464 | Floor Tiling - Wet area | 2025-05-31 → 2025-05-30 (-1d) | 2025-06-06 → 2025-06-05 (-1d) |  | 330.33d → 331.79d |
| PG-11465 | Floor Tiling - Dry area | 2025-06-06 → 2025-06-05 (-1d) | 2025-06-12 → 2025-06-11 (-1d) |  | 330.33d → 331.79d |
| PG-11466 | Wooden doors | 2025-06-19 → 2025-06-18 (-1d) | 2025-06-25 → 2025-06-24 (-1d) |  | 330.33d → 331.79d |
| 1.3.1.2.4.17 | **Floor 14** | 2025-05-17 → 2025-05-16 (-1d) |  |  |  |
| 1.3.1.2.4.17.1 | **Ceiling Finishing works - Civil** | 2025-05-28 → 2025-05-27 (-1d) |  |  |  |
| PG-11467 | Gypsum Plastering | 2025-05-28 → 2025-05-27 (-1d) | 2025-06-04 → 2025-06-03 (-1d) |  | 365.33d → 366.79d |
| PG-11468 | Cornice fixing | 2025-06-13 → 2025-06-12 (-1d) | 2025-06-18 → 2025-06-17 (-1d) |  | 365.33d → 366.79d |
| PG-11470 | Toilet False ceiling | 2025-06-20 → 2025-06-19 (-1d) | 2025-06-25 → 2025-06-24 (-1d) |  | 346.33d → 347.79d |
| PG-11469 | Painting Works - Putty, Primer and 1st | 2025-07-01 → 2025-06-30 (-1d) | 2025-07-08 → 2025-07-07 (-1d) |  | 354d → 355.46d |
| PG-11471 | Final Coat Painting | 2025-07-08 → 2025-07-07 (-1d) |  |  | 354d → 355.46d |
| 1.3.1.2.4.17.2 | **Wall Finishing works - Civil** | 2025-05-17 → 2025-05-16 (-1d) |  |  |  |
| PG-11472 | Balcony Railing Fixing works | 2025-05-17 → 2025-05-16 (-1d) | 2025-05-22 → 2025-05-21 (-1d) |  | 348.33d → 349.79d |
| PG-11474 | Dadoing - Wet area | 2025-06-07 → 2025-06-06 (-1d) | 2025-06-13 → 2025-06-12 (-1d) |  | 319.33d → 320.79d |
| PG-11473 | UPVC Windows & Sliding doors | 2025-06-25 → 2025-06-24 (-1d) | 2025-07-01 → 2025-06-30 (-1d) |  | 319.33d → 320.79d |
| PG-11475 | Painting Works - Putty, Primer and 1st | 2025-07-01 → 2025-06-30 (-1d) | 2025-07-08 → 2025-07-07 (-1d) |  | 319.33d → 320.79d |
| PG-11476 | Final Coat Painting | 2025-07-08 → 2025-07-07 (-1d) |  |  | 319.33d → 320.79d |
| 1.3.1.2.4.17.3 | **Floor Finishing Works - Civil** | 2025-05-17 → 2025-05-16 (-1d) | 2025-07-08 → 2025-07-07 (-1d) |  |  |
| PG-11477 | Waterproofing for sunken areas | 2025-05-17 → 2025-05-16 (-1d) | 2025-05-21 → 2025-05-20 (-1d) |  | 339.33d → 340.79d |
| PG-11478 | Floor Tiling - Wet area | 2025-06-13 → 2025-06-12 (-1d) | 2025-06-19 → 2025-06-18 (-1d) |  | 319.33d → 320.79d |
| PG-11479 | Floor Tiling - Dry area | 2025-06-19 → 2025-06-18 (-1d) | 2025-06-25 → 2025-06-24 (-1d) |  | 319.33d → 320.79d |
| PG-11480 | Wooden doors | 2025-07-02 → 2025-07-01 (-1d) | 2025-07-08 → 2025-07-07 (-1d) |  | 319.33d → 320.79d |
| 1.3.1.2.4.18 | **Floor 15** | 2025-05-30 → 2025-05-29 (-1d) | 2025-08-12 → 2025-08-11 (-1d) |  |  |
| 1.3.1.2.4.18.1 | **Ceiling Finishing works - Civil** | 2025-06-09 → 2025-06-07 (-2d) | 2025-08-12 → 2025-08-11 (-1d) |  |  |
| PG-11481 | Gypsum Plastering | 2025-06-09 → 2025-06-07 (-2d) | 2025-06-16 → 2025-06-14 (-2d) |  | 356d → 357.46d |

| ID | Task | Start | Finish | Total float |
| --- | --- | --- | --- | --- |
| PG-11482 | Cornice fixing | 2025-06-25 → 2025-06-24 (-1d) | 2025-06-30 → 2025-06-28 (-2d) | 356d → 357.46d |
| PG-11484 | Toilet False ceiling | 2025-07-03 → 2025-07-02 (-1d) | 2025-07-08 → 2025-07-07 (-1d) | 335.33d → 336.79d |
| PG-11483 | Painting Works - Putty, Primer and 1st | 2025-07-14 → 2025-07-12 (-2d) | 2025-07-21 → 2025-07-19 (-2d) | 343.83d → 345.29d |
| PG-11485 | Final Coat Painting | 2025-07-21 → 2025-07-19 (-2d) | 2025-08-12 → 2025-08-11 (-1d) | 343.83d → 345.29d |
| 1.3.1.2.4.18.2 | **Wall Finishing works - Civil** | 2025-05-30 → 2025-05-29 (-1d) |  |  |
| PG-11486 | Balcony Railing Fixing works | 2025-05-30 → 2025-05-29 (-1d) | 2025-06-04 → 2025-06-03 (-1d) | 187.33d → 188.79d |
| PG-11488 | Dadoing - Wet area | 2025-06-20 → 2025-06-19 (-1d) | 2025-06-26 → 2025-06-25 (-1d) | 158.33d → 159.79d |
| PG-11487 | UPVC Windows & Sliding doors | 2025-07-08 → 2025-07-07 (-1d) | 2025-07-14 → 2025-07-12 (-2d) | 158.33d → 159.79d |
| PG-11489 | Painting Works - Putty, Primer and 1st | 2025-07-14 → 2025-07-12 (-2d) | 2025-07-21 → 2025-07-19 (-2d) | 158.33d → 159.79d |
| PG-11490 | Final Coat Painting | 2025-07-21 → 2025-07-19 (-2d) |  | 309.33d → 310.79d |
| 1.3.1.2.4.18.3 | **Floor Finishing Works - Civil** | 2025-05-30 → 2025-05-29 (-1d) | 2025-07-21 → 2025-07-19 (-2d) |  |
| PG-11491 | Waterproofing for sunken areas | 2025-05-30 → 2025-05-29 (-1d) | 2025-06-03 → 2025-06-02 (-1d) | 178.33d → 179.79d |
| PG-11492 | Floor Tiling - Wet area | 2025-06-26 → 2025-06-25 (-1d) | 2025-07-02 → 2025-07-01 (-1d) | 158.33d → 159.79d |
| PG-11493 | Floor Tiling - Dry area | 2025-07-02 → 2025-07-01 (-1d) | 2025-07-08 → 2025-07-07 (-1d) | 158.33d → 159.79d |
| PG-11494 | Wooden doors | 2025-07-15 → 2025-07-14 (-1d) | 2025-07-21 → 2025-07-19 (-2d) | 158.33d → 159.79d |
| 1.3.1.2.4.19 | **Floor 16** | 2025-06-12 → 2025-06-11 (-1d) | 2025-08-26 → 2025-08-25 (-1d) |  |
| 1.3.1.2.4.19.1 | **Ceiling Finishing works - Civil** | 2025-06-21 → 2025-06-20 (-1d) | 2025-08-26 → 2025-08-25 (-1d) |  |
| PG-11495 | Gypsum Plastering | 2025-06-21 → 2025-06-20 (-1d) | 2025-06-28 → 2025-06-27 (-1d) | 344.83d → 346.29d |
| PG-11496 | Cornice fixing | 2025-07-08 → 2025-07-07 (-1d) | 2025-07-12 → 2025-07-11 (-1d) | 344.83d → 346.29d |
| PG-11498 | Toilet False ceiling | 2025-07-16 → 2025-07-15 (-1d) | 2025-07-21 → 2025-07-19 (-2d) | 323.17d → 324.62d |
| PG-11497 | Painting Works - Putty, Primer and 1st | 2025-07-26 → 2025-07-25 (-1d) | 2025-08-02 → 2025-08-01 (-1d) | 332.67d → 334.12d |
| PG-11499 | Final Coat Painting | 2025-08-02 → 2025-08-01 (-1d) | 2025-08-26 → 2025-08-25 (-1d) | 332.67d → 334.12d |
| 1.3.1.2.4.19.2 | **Wall Finishing works - Civil** | 2025-06-12 → 2025-06-11 (-1d) |  |  |
| PG-11500 | Balcony Railing Fixing works | 2025-06-12 → 2025-06-11 (-1d) | 2025-06-17 → 2025-06-16 (-1d) | 328d → 329.46d |
| PG-11502 | Dadoing - Wet area | 2025-07-03 → 2025-07-02 (-1d) | 2025-07-09 → 2025-07-08 (-1d) | 299d → 300.46d |
| PG-11501 | UPVC Windows & Sliding doors | 2025-07-21 → 2025-07-19 (-2d) | 2025-07-26 → 2025-07-25 (-1d) | 299d → 300.46d |
| PG-11503 | Painting Works - Putty, Primer and 1st | 2025-07-26 → 2025-07-25 (-1d) | 2025-08-02 → 2025-08-01 (-1d) | 299d → 300.46d |
| PG-11504 | Final Coat Painting | 2025-08-02 → 2025-08-01 (-1d) |  | 299d → 300.46d |
| 1.3.1.2.4.19.3 | **Floor Finishing Works - Civil** | 2025-06-12 → 2025-06-11 (-1d) | 2025-08-02 → 2025-08-01 (-1d) |  |
| PG-11505 | Waterproofing for sunken areas | 2025-06-12 → 2025-06-11 (-1d) | 2025-06-16 → 2025-06-14 (-2d) | 319d → 320.46d |
| PG-11506 | Floor Tiling - Wet area | 2025-07-09 → 2025-07-08 (-1d) | 2025-07-15 → 2025-07-14 (-1d) | 299d → 300.46d |
| PG-11507 | Floor Tiling - Dry area | 2025-07-15 → 2025-07-14 (-1d) | 2025-07-21 → 2025-07-19 (-2d) | 299d → 300.46d |
| PG-11508 | Wooden doors | 2025-07-28 → 2025-07-26 (-2d) | 2025-08-02 → 2025-08-01 (-1d) | 299d → 300.46d |
| 1.3.1.2.4.20 | **Floor 17** | 2025-06-25 → 2025-06-24 (-1d) | 2025-09-08 → 2025-09-06 (-2d) |  |
| 1.3.1.2.4.20.1 | **Ceiling Finishing works - Civil** | 2025-07-04 → 2025-07-03 (-1d) | 2025-09-08 → 2025-09-06 (-2d) |  |
| PG-11509 | Gypsum Plastering | 2025-07-04 → 2025-07-03 (-1d) | 2025-07-11 → 2025-07-10 (-1d) | 333.83d → 335.29d |
| PG-11510 | Cornice fixing | 2025-07-21 → 2025-07-19 (-2d) | 2025-07-25 → 2025-07-24 (-1d) | 333.83d → 335.29d |
| PG-11512 | Toilet False ceiling | 2025-07-29 → 2025-07-28 (-1d) | 2025-08-02 → 2025-08-01 (-1d) | 312.17d → 313.62d |
| PG-11511 | Painting Works - Putty, Primer and 1st | 2025-08-08 → 2025-08-07 (-1d) | 2025-08-16 → 2025-08-14 (-2d) | 321.67d → 323.12d |
| PG-11513 | Final Coat Painting | 2025-08-16 → 2025-08-14 (-2d) | 2025-09-08 → 2025-09-06 (-2d) | 321.67d → 323.12d |
| 1.3.1.2.4.20.2 | **Wall Finishing works - Civil** | 2025-06-25 → 2025-06-24 (-1d) |  |  |
| PG-11514 | Balcony Railing Fixing works | 2025-06-25 → 2025-06-24 (-1d) | 2025-06-30 → 2025-06-28 (-2d) | 317d → 318.46d |
| PG-11516 | Dadoing - Wet area | 2025-07-16 → 2025-07-15 (-1d) | 2025-07-22 → 2025-07-21 (-1d) | 288d → 289.46d |
| PG-11515 | UPVC Windows & Sliding doors | 2025-08-02 → 2025-08-01 (-1d) | 2025-08-08 → 2025-08-07 (-1d) | 288d → 289.46d |
| PG-11517 | Painting Works - Putty, Primer and 1st | 2025-08-08 → 2025-08-07 (-1d) | 2025-08-16 → 2025-08-14 (-2d) | 288d → 289.46d |
| PG-11518 | Final Coat Painting | 2025-08-16 → 2025-08-14 (-2d) |  | 288d → 289.46d |
| 1.3.1.2.4.20.3 | **Floor Finishing Works - Civil** | 2025-06-25 → 2025-06-24 (-1d) | 2025-08-16 → 2025-08-14 (-2d) |  |
| PG-11519 | Waterproofing for sunken areas | 2025-06-25 → 2025-06-24 (-1d) | 2025-06-28 → 2025-06-27 (-1d) | 308d → 309.46d |
| PG-11520 | Floor Tiling - Wet area | 2025-07-22 → 2025-07-21 (-1d) | 2025-07-28 → 2025-07-26 (-2d) | 288d → 289.46d |
| PG-11521 | Floor Tiling - Dry area | 2025-07-28 → 2025-07-26 (-2d) | 2025-08-02 → 2025-08-01 (-1d) | 288d → 289.46d |
| PG-11522 | Wooden doors | 2025-08-09 → 2025-08-08 (-1d) | 2025-08-16 → 2025-08-14 (-2d) | 288d → 289.46d |
| 1.3.1.2.4.21 | **Floor 18** | 2025-07-08 → 2025-07-07 (-1d) |  |  |
| 1.3.1.2.4.21.1 | **Ceiling Finishing works - Civil** | 2025-07-17 → 2025-07-16 (-1d) |  |  |
| PG-11523 | Gypsum Plastering | 2025-07-17 → 2025-07-16 (-1d) | 2025-07-24 → 2025-07-23 (-1d) | 323.83d → 325.29d |
| PG-11524 | Cornice fixing | 2025-08-02 → 2025-08-01 (-1d) | 2025-08-07 → 2025-08-06 (-1d) | 323.83d → 325.29d |
| PG-11526 | Toilet False ceiling | 2025-08-11 → 2025-08-09 (-2d) | 2025-08-16 → 2025-08-14 (-2d) | 301.17d → 302.62d |
| PG-11525 | Painting Works - Putty, Primer and 1st | 2025-08-22 → 2025-08-21 (-1d) | 2025-08-29 → 2025-08-28 (-1d) | 312d → 313.46d |
| PG-11527 | Final Coat Painting | 2025-08-29 → 2025-08-28 (-1d) |  | 312d → 313.46d |
| 1.3.1.2.4.21.2 | **Wall Finishing works - Civil** | 2025-07-08 → 2025-07-07 (-1d) |  |  |
| PG-11528 | Balcony Railing Fixing works | 2025-07-08 → 2025-07-07 (-1d) | 2025-07-12 → 2025-07-11 (-1d) | 304.83d → 306.29d |
| PG-11530 | Dadoing - Wet area | 2025-07-29 → 2025-07-28 (-1d) | 2025-08-04 → 2025-08-02 (-2d) | 276.17d → 277.62d |
| PG-11529 | UPVC Windows & Sliding doors | 2025-08-16 → 2025-08-14 (-2d) | 2025-08-22 → 2025-08-21 (-1d) | 276.17d → 277.62d |
| PG-11531 | Painting Works - Putty, Primer and 1st | 2025-08-22 → 2025-08-21 (-1d) | 2025-08-29 → 2025-08-28 (-1d) | 276.17d → 277.62d |
| PG-11532 | Final Coat Painting | 2025-08-29 → 2025-08-28 (-1d) |  | 276.17d → 277.62d |
| 1.3.1.2.4.21.3 | **Floor Finishing Works - Civil** | 2025-07-08 → 2025-07-07 (-1d) | 2025-08-29 → 2025-08-28 (-1d) |  |
| PG-11533 | Waterproofing for sunken areas | 2025-07-08 → 2025-07-07 (-1d) | 2025-07-11 → 2025-07-10 (-1d) | 295.83d → 297.29d |
| PG-11534 | Floor Tiling - Wet area | 2025-08-04 → 2025-08-02 (-2d) | 2025-08-09 → 2025-08-08 (-1d) | 276.17d → 277.62d |
| PG-11535 | Floor Tiling - Dry area | 2025-08-09 → 2025-08-08 (-1d) | 2025-08-16 → 2025-08-14 (-2d) | 276.17d → 277.62d |
| PG-11536 | Wooden doors | 2025-08-23 → 2025-08-22 (-1d) | 2025-08-29 → 2025-08-28 (-1d) | 276.17d → 277.62d |
| 1.3.1.2.4.22 | **Floor 19** | 2025-07-21 → 2025-07-19 (-2d) |  |  |

| ID | Task | Start | Finish | Total float |
| --- | --- | --- | --- | --- |
| 1.3.1.2.4.22.1 | **Ceiling Finishing works - Civil** | 2025-07-30 → 2025-07-29 (-1d) |  |  |
| PG-11537 | Gypsum Plastering | 2025-07-30 → 2025-07-29 (-1d) | 2025-08-06 → 2025-08-05 (-1d) | 312.83d → 314.29d |
| PG-11538 | Cornice fixing |  | 2025-08-21 → 2025-08-20 (-1d) | 312.83d → 314.29d |
| PG-11540 | Toilet False ceiling | 2025-08-25 → 2025-08-23 (-2d) | 2025-08-29 → 2025-08-28 (-1d) | 290.17d → 291.62d |
| PG-11539 | Painting Works - Putty, Primer and 1st | 2025-09-04 → 2025-09-03 (-1d) | 2025-09-11 → 2025-09-10 (-1d) | 301d → 302.46d |
| PG-11541 | Final Coat Painting | 2025-09-11 → 2025-09-10 (-1d) |  | 301d → 302.46d |
| 1.3.1.2.4.22.2 | **Wall Finishing works - Civil** | 2025-07-21 → 2025-07-19 (-2d) |  |  |
| PG-11542 | Balcony Railing Fixing works | 2025-07-21 → 2025-07-19 (-2d) | 2025-07-25 → 2025-07-24 (-1d) | 293.83d → 295.29d |
| PG-11544 | Dadoing - Wet area | 2025-08-11 → 2025-08-09 (-2d) | 2025-08-18 → 2025-08-16 (-2d) | 265.17d → 266.62d |
| PG-11543 | UPVC Windows & Sliding doors | 2025-08-29 → 2025-08-28 (-1d) | 2025-09-04 → 2025-09-03 (-1d) | 265.17d → 266.62d |
| PG-11545 | Painting Works - Putty, Primer and 1st | 2025-09-04 → 2025-09-03 (-1d) | 2025-09-11 → 2025-09-10 (-1d) | 265.17d → 266.62d |
| PG-11546 | Final Coat Painting | 2025-09-11 → 2025-09-10 (-1d) |  | 265.17d → 266.62d |
| 1.3.1.2.4.22.3 | **Floor Finishing Works - Civil** | 2025-07-21 → 2025-07-19 (-2d) | 2025-09-11 → 2025-09-10 (-1d) |  |
| PG-11547 | Waterproofing for sunken areas | 2025-07-21 → 2025-07-19 (-2d) | 2025-07-24 → 2025-07-23 (-1d) | 284.83d → 286.29d |
| PG-11548 | Floor Tiling - Wet area | 2025-08-18 → 2025-08-16 (-2d) | 2025-08-23 → 2025-08-22 (-1d) | 265.17d → 266.62d |
| PG-11549 | Floor Tiling - Dry area | 2025-08-23 → 2025-08-22 (-1d) | 2025-08-29 → 2025-08-28 (-1d) | 265.17d → 266.62d |
| PG-11550 | Wooden doors | 2025-09-05 → 2025-09-04 (-1d) | 2025-09-11 → 2025-09-10 (-1d) | 265.17d → 266.62d |
| 1.3.1.2.4.23 | **Floor 20** | 2025-08-02 → 2025-08-01 (-1d) |  |  |
| 1.3.1.2.4.23.1 | **Ceiling Finishing works - Civil** | 2025-08-13 → 2025-08-12 (-1d) |  |  |
| PG-11551 | Gypsum Plastering | 2025-08-13 → 2025-08-12 (-1d) | 2025-08-21 → 2025-08-20 (-1d) | 301d → 302.46d |
| PG-11552 | Cornice fixing | 2025-08-30 → 2025-08-29 (-1d) | 2025-09-04 → 2025-09-03 (-1d) | 301d → 302.46d |
| PG-11554 | Toilet False ceiling | 2025-09-08 → 2025-09-06 (-2d) | 2025-09-12 → 2025-09-11 (-1d) | 278.17d → 279.62d |
| PG-11553 | Painting Works - Putty, Primer and 1st | 2025-09-18 → 2025-09-17 (-1d) | 2025-09-25 → 2025-09-24 (-1d) | 289d → 290.46d |
| PG-11555 | Final Coat Painting | 2025-09-25 → 2025-09-24 (-1d) |  | 289d → 290.46d |
| 1.3.1.2.4.23.2 | **Wall Finishing works - Civil** | 2025-08-02 → 2025-08-01 (-1d) |  |  |
| PG-11556 | Balcony Railing Fixing works | 2025-08-02 → 2025-08-01 (-1d) | 2025-08-07 → 2025-08-06 (-1d) | 282.83d → 284.29d |
| PG-11558 | Dadoing - Wet area | 2025-08-26 → 2025-08-25 (-1d) | 2025-09-01 → 2025-08-30 (-2d) | 253.17d → 254.62d |
| PG-11557 | UPVC Windows & Sliding doors | 2025-09-12 → 2025-09-11 (-1d) | 2025-09-18 → 2025-09-17 (-1d) | 253.17d → 254.62d |
| PG-11559 | Painting Works - Putty, Primer and 1st | 2025-09-18 → 2025-09-17 (-1d) | 2025-09-25 → 2025-09-24 (-1d) | 253.17d → 254.62d |
| PG-11560 | Final Coat Painting | 2025-09-25 → 2025-09-24 (-1d) |  | 253.17d → 254.62d |
| 1.3.1.2.4.23.3 | **Floor Finishing Works - Civil** | 2025-08-02 → 2025-08-01 (-1d) | 2025-09-25 → 2025-09-24 (-1d) |  |
| PG-11561 | Waterproofing for sunken areas | 2025-08-02 → 2025-08-01 (-1d) | 2025-08-06 → 2025-08-05 (-1d) | 273.83d → 275.29d |
| PG-11562 | Floor Tiling - Wet area | 2025-09-01 → 2025-08-30 (-2d) | 2025-09-06 → 2025-09-05 (-1d) | 253.17d → 254.62d |
| PG-11563 | Floor Tiling - Dry area | 2025-09-06 → 2025-09-05 (-1d) | 2025-09-12 → 2025-09-11 (-1d) | 253.17d → 254.62d |
| PG-11564 | Wooden doors | 2025-09-19 → 2025-09-18 (-1d) | 2025-09-25 → 2025-09-24 (-1d) | 253.17d → 254.62d |
| 1.3.1.2.4.24 | **Floor 21** | 2025-08-16 → 2025-08-14 (-2d) |  |  |
| 1.3.1.2.4.24.1 | **Ceiling Finishing works - Civil** | 2025-08-25 → 2025-08-23 (-2d) |  |  |
| PG-11565 | Gypsum Plastering | 2025-08-25 → 2025-08-23 (-2d) | 2025-09-01 → 2025-08-30 (-2d) | 291.17d → 292.62d |
| PG-11566 | Cornice fixing | 2025-09-10 → 2025-09-09 (-1d) | 2025-09-15 → 2025-09-13 (-2d) | 291.17d → 292.62d |
| PG-11568 | Toilet False ceiling | 2025-09-18 → 2025-09-17 (-1d) | 2025-09-23 → 2025-09-22 (-1d) | 269.5d → 270.96d |
| PG-11567 | Painting Works - Putty, Primer and 1st | 2025-09-29 → 2025-09-27 (-2d) | 2025-10-07 → 2025-10-06 (-1d) | 279.17d → 280.62d |
| PG-11569 | Final Coat Painting | 2025-10-07 → 2025-10-06 (-1d) |  | 279.17d → 280.62d |
| 1.3.1.2.4.24.2 | **Wall Finishing works - Civil** | 2025-08-16 → 2025-08-14 (-2d) |  |  |
| PG-11570 | Balcony Railing Fixing works | 2025-08-16 → 2025-08-14 (-2d) | 2025-08-21 → 2025-08-20 (-1d) | 271.17d → 272.62d |
| PG-11572 | Dadoing - Wet area | 2025-09-05 → 2025-09-04 (-1d) | 2025-09-11 → 2025-09-10 (-1d) | 243.5d → 244.96d |
| PG-11571 | UPVC Windows & Sliding doors | 2025-09-23 → 2025-09-22 (-1d) | 2025-09-29 → 2025-09-27 (-2d) | 243.5d → 244.96d |
| PG-11573 | Painting Works - Putty, Primer and 1st | 2025-09-29 → 2025-09-27 (-2d) | 2025-10-07 → 2025-10-06 (-1d) | 243.5d → 244.96d |
| PG-11574 | Final Coat Painting | 2025-10-07 → 2025-10-06 (-1d) |  | 243.5d → 244.96d |
| 1.3.1.2.4.24.3 | **Floor Finishing Works - Civil** | 2025-08-16 → 2025-08-14 (-2d) | 2025-10-07 → 2025-10-06 (-1d) |  |
| PG-11575 | Waterproofing for sunken areas | 2025-08-16 → 2025-08-14 (-2d) | 2025-08-20 → 2025-08-19 (-1d) | 262.17d → 263.62d |
| PG-11576 | Floor Tiling - Wet area | 2025-09-11 → 2025-09-10 (-1d) | 2025-09-17 → 2025-09-16 (-1d) | 243.5d → 244.96d |
| PG-11577 | Floor Tiling - Dry area | 2025-09-17 → 2025-09-16 (-1d) | 2025-09-23 → 2025-09-22 (-1d) | 243.5d → 244.96d |
| PG-11578 | Wooden doors | 2025-09-30 → 2025-09-29 (-1d) | 2025-10-07 → 2025-10-06 (-1d) | 243.5d → 244.96d |
| 1.3.1.2.4.25 | **Floor 22** | 2025-09-06 → 2025-09-05 (-1d) |  |  |
| PG-11580 | Cornice fixing | 2025-10-03 → 2025-10-01 (-2d) |  | 141.17d → 142.62d |
| PG-11582 | Toilet False ceiling | 2025-10-11 → 2025-10-10 (-1d) |  | 250.67d → 252.12d |
| PG-11581 | Painting Works - Putty, Primer and 1st | 2025-10-22 → 2025-10-21 (-1d) |  | 129d → 130.46d |
| PG-11583 | Final Coat Painting | 2025-10-29 → 2025-10-28 (-1d) |  | 258.33d → 259.79d |
| 1.3.1.2.4.25.2 | **Wall Finishing works - Civil** | 2025-09-06 → 2025-09-05 (-1d) |  |  |
| PG-11584 | Balcony Railing Fixing works | 2025-09-06 → 2025-09-05 (-1d) | 2025-09-11 → 2025-09-10 (-1d) | 157.83d → 159.29d |
| PG-11586 | Dadoing - Wet area | 2025-09-27 → 2025-09-26 (-1d) |  | 129d → 130.46d |
| PG-11585 | UPVC Windows & Sliding doors | 2025-10-16 → 2025-10-15 (-1d) |  | 129d → 130.46d |
| PG-11587 | Painting Works - Putty, Primer and 1st | 2025-10-22 → 2025-10-21 (-1d) |  | 223.67d → 225.12d |
| PG-11588 | Final Coat Painting | 2025-10-29 → 2025-10-28 (-1d) |  | 223.67d → 225.12d |
| 1.3.1.2.4.25.3 | **Floor Finishing Works - Civil** | 2025-09-06 → 2025-09-05 (-1d) |  |  |
| PG-11589 | Waterproofing for sunken areas | 2025-09-06 → 2025-09-05 (-1d) | 2025-09-10 → 2025-09-09 (-1d) | 148.83d → 150.29d |
| PG-11590 | Floor Tiling - Wet area | 2025-10-04 → 2025-10-03 (-1d) |  | 129d → 130.46d |
| PG-11591 | Floor Tiling - Dry area | 2025-10-10 → 2025-10-09 (-1d) |  | 129d → 130.46d |
| PG-11592 | Wooden doors | 2025-10-23 → 2025-10-22 (-1d) |  | 223.67d → 225.12d |
| 1.3.1.2.4.26 | **Floor 23** | 2025-09-29 → 2025-09-27 (-2d) | 2025-12-12 → 2025-12-11 (-1d) |  |

| ID | Task | Start | Finish | Total float |
| --- | --- | --- | --- | --- |
| 1.3.1.2.4.26.1 | **Ceiling Finishing works - Civil** |  | 2025-12-12 → 2025-12-11 (-1d) |  |
| PG-11597 | Final Coat Painting |  | 2025-12-12 → 2025-12-11 (-1d) | 241.5d → 242.96d |
| 1.3.1.2.4.26.2 | **Wall Finishing works - Civil** | 2025-09-29 → 2025-09-27 (-2d) | 2025-12-12 → 2025-12-11 (-1d) |  |
| PG-11598 | Balcony Railing Fixing works | 2025-09-29 → 2025-09-27 (-2d) |  | 233.33d → 234.79d |
| PG-11602 | Final Coat Painting |  | 2025-12-12 → 2025-12-11 (-1d) | 205.67d → 207.12d |
| 1.3.1.2.4.26.3 | **Floor Finishing Works - Civil** | 2025-09-29 → 2025-09-27 (-2d) |  |  |
| PG-11603 | Waterproofing for sunken areas | 2025-09-29 → 2025-09-27 (-2d) |  | 224.33d → 225.79d |
| 1.3.1.2.4.27.1 | **Ceiling Finishing works - Civil** | 2025-10-29 → 2025-10-28 (-1d) |  |  |
| PG-11607 | Gypsum Plastering | 2025-10-29 → 2025-10-28 (-1d) | 2025-11-06 → 2025-11-05 (-1d) | 235.17d → 236.62d |
| PG-11608 | Cornice fixing |  | 2025-11-20 → 2025-11-19 (-1d) | 235.17d → 236.62d |
| PG-11610 | Toilet False ceiling | 2025-11-24 → 2025-11-22 (-2d) | 2025-11-28 → 2025-11-27 (-1d) | 212d → 213.46d |
| PG-11609 | Painting Works - Putty, Primer and 1st | 2025-12-04 → 2025-12-03 (-1d) | 2025-12-11 → 2025-12-10 (-1d) | 223.17d → 224.62d |
| PG-11611 | Final Coat Painting | 2025-12-11 → 2025-12-10 (-1d) |  | 223.17d → 224.62d |
| PG-11614 | Dadoing - Wet area | 2025-11-11 → 2025-11-10 (-1d) | 2025-11-17 → 2025-11-15 (-2d) | 186.5d → 187.96d |
| PG-11613 | UPVC Windows & Sliding doors | 2025-11-28 → 2025-11-27 (-1d) | 2025-12-04 → 2025-12-03 (-1d) | 186.5d → 187.96d |
| PG-11615 | Painting Works - Putty, Primer and 1st | 2025-12-04 → 2025-12-03 (-1d) | 2025-12-11 → 2025-12-10 (-1d) | 186.5d → 187.96d |
| PG-11616 | Final Coat Painting | 2025-12-11 → 2025-12-10 (-1d) |  | 186.5d → 187.96d |
| 1.3.1.2.4.27.3 | **Floor Finishing Works - Civil** |  | 2025-12-11 → 2025-12-10 (-1d) |  |
| PG-11618 | Floor Tiling - Wet area | 2025-11-17 → 2025-11-15 (-2d) | 2025-11-22 → 2025-11-21 (-1d) | 186.5d → 187.96d |
| PG-11619 | Floor Tiling - Dry area | 2025-11-22 → 2025-11-21 (-1d) | 2025-11-28 → 2025-11-27 (-1d) | 186.5d → 187.96d |
| PG-11620 | Wooden doors | 2025-12-05 → 2025-12-04 (-1d) | 2025-12-11 → 2025-12-10 (-1d) | 186.5d → 187.96d |
| 1.3.1.2.4.28 | **Floor 25** | 2025-11-12 → 2025-11-11 (-1d) | 2026-01-27 → 2026-01-24 (-3d) |  |
| 1.3.1.2.4.28.1 | **Ceiling Finishing works - Civil** | 2025-11-21 → 2025-11-20 (-1d) | 2026-01-27 → 2026-01-24 (-3d) |  |
| PG-11621 | Gypsum Plastering | 2025-11-21 → 2025-11-20 (-1d) |  | 214.67d → 216.12d |
| PG-11622 | Cornice fixing | 2025-12-08 → 2025-12-06 (-2d) |  | 214.67d → 216.12d |
| PG-11624 | Toilet False ceiling | 2025-12-16 → 2025-12-15 (-1d) |  | 194d → 195.46d |
| PG-11623 | Painting Works - Putty, Primer and 1st | 2025-12-26 → 2025-12-25 (-1d) |  | 202.67d → 204.12d |
| PG-11625 | Final Coat Painting | 2026-01-02 → 2026-01-01 (-1d) | 2026-01-27 → 2026-01-24 (-3d) | 202.67d → 204.12d |
| 1.3.1.2.4.28.2 | **Wall Finishing works - Civil** | 2025-11-12 → 2025-11-11 (-1d) | 2026-01-27 → 2026-01-24 (-3d) |  |
| PG-11626 | Balcony Railing Fixing works | 2025-11-12 → 2025-11-11 (-1d) | 2025-11-17 → 2025-11-15 (-2d) | 195.67d → 197.12d |
| PG-11628 | Dadoing - Wet area | 2025-12-03 → 2025-12-02 (-1d) |  | 167d → 168.46d |
| PG-11627 | UPVC Windows & Sliding doors | 2025-12-20 → 2025-12-19 (-1d) |  | 167d → 168.46d |
| PG-11629 | Painting Works - Putty, Primer and 1st | 2025-12-26 → 2025-12-25 (-1d) |  | 167d → 168.46d |
| PG-11630 | Final Coat Painting | 2026-01-02 → 2026-01-01 (-1d) | 2026-01-27 → 2026-01-24 (-3d) | 167d → 168.46d |
| 1.3.1.2.4.28.3 | **Floor Finishing Works - Civil** | 2025-11-12 → 2025-11-11 (-1d) |  |  |
| PG-11631 | Waterproofing for sunken areas | 2025-11-12 → 2025-11-11 (-1d) | 2025-11-15 → 2025-11-14 (-1d) | 186.67d → 188.12d |
| PG-11632 | Floor Tiling - Wet area | 2025-12-09 → 2025-12-08 (-1d) |  | 167d → 168.46d |
| PG-11633 | Floor Tiling - Dry area | 2025-12-15 → 2025-12-13 (-2d) |  | 167d → 168.46d |
| PG-11634 | Wooden doors | 2025-12-27 → 2025-12-26 (-1d) |  | 167d → 168.46d |
| 1.3.1.2.4.29 | **Floor 26** | 2025-12-04 → 2025-12-03 (-1d) |  |  |
| PG-11636 | Cornice fixing | 2025-12-30 → 2025-12-29 (-1d) |  | 197.67d → 199.12d |
| 1.3.1.2.4.29.2 | **Wall Finishing works - Civil** | 2025-12-04 → 2025-12-03 (-1d) |  |  |
| PG-11640 | Balcony Railing Fixing works | 2025-12-04 → 2025-12-03 (-1d) |  | 148.17d → 149.62d |
| 1.3.1.2.4.29.3 | **Floor Finishing Works - Civil** | 2025-12-04 → 2025-12-03 (-1d) |  |  |
| PG-11645 | Waterproofing for sunken areas | 2025-12-04 → 2025-12-03 (-1d) |  | 139.17d → 140.62d |
| 1.3.1.2.4.30 | **External Finishing works** | 2025-09-13 → 2025-09-12 (-1d) | 2026-01-10 → 2026-01-09 (-1d) |  |
| PG-11649 | External walls tie rod hole plugging with GP2 | 2025-09-13 → 2025-09-12 (-1d) | 2025-10-20 → 2025-10-18 (-2d) | 215.67d → 217.12d |
| PG-11650 | External walls grinding works | 2025-10-08 → 2025-10-07 (-1d) | 2025-11-25 → 2025-11-24 (-1d) | 215.67d → 217.12d |
| PG-11651 | Texture and painting works | 2025-11-19 → 2025-11-18 (-1d) | 2026-01-10 → 2026-01-09 (-1d) | 215.67d → 217.12d |
| PG-11654 | Painting Works - Putty, Primer and 1st | 2025-12-15 → 2025-12-13 (-2d) |  | 129d → 130.46d |
| PG-11655 | False ceiling | 2025-12-22 → 2025-12-20 (-2d) |  | 129d → 130.46d |
| PG-11656 | Final Coat Painting | 2026-01-07 → 2026-01-06 (-1d) |  | 159d → 160.46d |
| 1.3.1.2.5.2 | **Wall Finishing works - Civil** | 2025-12-26 → 2025-12-25 (-1d) |  |  |
| PG-11657 | UPVC Windows & Sliding doors | 2025-12-26 → 2025-12-25 (-1d) |  | 135d → 136.46d |
| PG-11658 | Wall Cladding Upto 1.2 Mts | 2026-01-13 → 2026-01-12 (-1d) |  | 135d → 136.46d |
| PG-11659 | Painting Works - Texture & one coat Painting works | 2026-02-13 → 2026-02-12 (-1d) |  | 129d → 130.46d |
| PG-11660 | Final Coat Painting | 2026-02-24 → 2026-02-23 (-1d) |  | 129d → 130.46d |
| PG-11664 | Wall and ceiling Gypsum plastering | 2025-12-09 → 2025-12-08 (-1d) |  | 10.67d → 12.12d |
| 1.3.1.2.6 | **MEP Civil Works (Shaft, Lift Shaft & OHT )** | 2025-08-30 → 2025-08-29 (-1d) | 2026-01-29 → 2026-01-28 (-1d) |  |
| 1.3.1.2.6.1 | **Lift Shaft Works** | 2025-08-30 → 2025-08-29 (-1d) | 2026-01-29 → 2026-01-28 (-1d) |  |
| PG-11668 | Tie rod hole packing | 2025-08-30 → 2025-08-29 (-1d) | 2025-09-09 → 2025-09-08 (-1d) | 116.17d → 117.62d |
| PG-11669 | Grinding works | 2025-09-09 → 2025-09-08 (-1d) | 2025-09-15 → 2025-09-13 (-2d) | 116.17d → 117.62d |
| PG-11670 | Lift pit water proofing works | 2025-09-15 → 2025-09-13 (-2d) | 2025-10-09 → 2025-10-08 (-1d) | 116.17d → 117.62d |
| PG-11671 | Shaft door opening finishing | 2025-10-09 → 2025-10-08 (-1d) | 2025-10-17 → 2025-10-16 (-1d) | 116.17d → 117.62d |
| PG-11672 | Painting works | 2025-10-17 → 2025-10-16 (-1d) | 2025-10-27 → 2025-10-25 (-2d) | 116.17d → 117.62d |
| PG-11673 | Lift Wall Cladding Works |  | 2026-01-29 → 2026-01-28 (-1d) | 151.83d → 153.29d |
| 1.3.1.2.6.2 | **Electrical Shaft works** | 2025-08-30 → 2025-08-29 (-1d) |  |  |
| PG-11674 | Tie rod hole packing | 2025-08-30 → 2025-08-29 (-1d) | 2025-09-09 → 2025-09-08 (-1d) | 222.83d → 224.29d |
| PG-11675 | Grinding works | 2025-09-09 → 2025-09-08 (-1d) | 2025-09-15 → 2025-09-13 (-2d) | 222.83d → 224.29d |
| PG-11676 | Shaft door opening finishing | 2025-09-15 → 2025-09-13 (-2d) |  | 222.83d → 224.29d |

| ID | Task | Start | Finish | Complete | Total float |
| --- | --- | --- | --- | --- | --- |
| PG-11677 | Painting works | 2025-09-23 → 2025-09-22 (-1d) |  |  | 222.83d → 224.29d |
| 1.3.1.2.6.3 | **FPS Shaft works** | 2025-08-30 → 2025-08-29 (-1d) |  |  |  |
| PG-11678 | Tie rod hole packing | 2025-08-30 → 2025-08-29 (-1d) | 2025-09-09 → 2025-09-08 (-1d) |  | 222.67d → 224.12d |
| PG-11679 | Grinding works | 2025-09-09 → 2025-09-08 (-1d) | 2025-09-15 → 2025-09-13 (-2d) |  | 222.67d → 224.12d |
| PG-11680 | Shaft door opening finishing | 2025-09-15 → 2025-09-13 (-2d) |  |  | 222.67d → 224.12d |
| PG-11681 | Painting works | 2025-09-23 → 2025-09-22 (-1d) |  |  | 222.67d → 224.12d |
| 1.3.1.2.6.4 | **PHE Shaft works** | 2025-08-30 → 2025-08-29 (-1d) |  |  |  |
| PG-11682 | Tie rod hole packing | 2025-08-30 → 2025-08-29 (-1d) | 2025-09-09 → 2025-09-08 (-1d) |  | 181.5d → 182.96d |
| PG-11683 | Grinding works | 2025-09-09 → 2025-09-08 (-1d) | 2025-09-15 → 2025-09-13 (-2d) |  | 181.5d → 182.96d |
| PG-11684 | Shaft door opening finishing | 2025-09-15 → 2025-09-13 (-2d) |  |  | 181.5d → 182.96d |
| PG-11685 | Painting works | 2025-09-23 → 2025-09-22 (-1d) |  |  | 181.5d → 182.96d |
| 1.3.1.2.6.5 | **Data & Communication Shaft** | 2025-08-30 → 2025-08-29 (-1d) | 2025-09-30 → 2025-09-29 (-1d) |  |  |
| PG-11686 | Tie rod hole packing | 2025-08-30 → 2025-08-29 (-1d) | 2025-09-09 → 2025-09-08 (-1d) |  | 217.33d → 218.79d |
| PG-11687 | Grinding works | 2025-09-09 → 2025-09-08 (-1d) | 2025-09-15 → 2025-09-13 (-2d) |  | 217.33d → 218.79d |
| PG-11688 | Shaft door opening finishing | 2025-09-15 → 2025-09-13 (-2d) | 2025-09-20 → 2025-09-19 (-1d) |  | 217.33d → 218.79d |
| PG-11689 | Painting works | 2025-09-20 → 2025-09-19 (-1d) | 2025-09-30 → 2025-09-29 (-1d) |  | 217.33d → 218.79d |
| 1.3.1.2.6.6 | **OHT Works** | 2025-08-30 → 2025-08-29 (-1d) | 2025-10-20 → 2025-10-18 (-2d) |  |  |
| PG-11690 | Tank materials Supply & Shifting | 2025-08-30 → 2025-08-29 (-1d) | 2025-09-11 → 2025-09-10 (-1d) |  | 188.83d → 190.29d |
| PG-11691 | Assembling OHT FRP Tank | 2025-09-11 → 2025-09-10 (-1d) | 2025-09-23 → 2025-09-22 (-1d) |  | 188.83d → 190.29d |
| PG-11692 | Installation of OHT Tank | 2025-09-23 → 2025-09-22 (-1d) | 2025-10-11 → 2025-10-10 (-1d) |  | 188.83d → 190.29d |
| PG-11693 | Water tightness works and checking | 2025-10-11 → 2025-10-10 (-1d) | 2025-10-20 → 2025-10-18 (-2d) |  | 188.83d → 190.29d |
| 1.3.1.2.7 | **MEP Shaft works** | 2025-09-30 → 2025-09-29 (-1d) | 2025-12-23 → 2025-12-22 (-1d) |  |  |
| 1.3.1.2.7.1 | **Electrical** | 2025-10-03 → 2025-10-01 (-2d) |  |  |  |
| PG-11694 | Tray Works | 2025-10-03 → 2025-10-01 (-2d) |  |  | 222.83d → 224.29d |
| PG-11695 | Cable & Conducting works |  | 2025-10-25 → 2025-10-24 (-1d) |  | 222.83d → 224.29d |
| PG-11696 | Wiring/DB/connector box installation and termination works | 2025-10-25 → 2025-10-24 (-1d) |  |  | 222.83d → 224.29d |
| 1.3.1.2.7.2 | **FPS** | 2025-10-03 → 2025-10-01 (-2d) |  |  |  |
| PG-11697 | Shaft MS Piping & fixtures installation | 2025-10-03 → 2025-10-01 (-2d) |  |  | 222.67d → 224.12d |
| 1.3.1.2.7.3 | **Data & Communication** | 2025-09-30 → 2025-09-29 (-1d) |  |  |  |
| PG-11699 | Tray Works | 2025-09-30 → 2025-09-29 (-1d) |  |  | 217.33d → 218.79d |
| PG-11700 | Tray / cabling / conducting & wiring works |  | 2025-10-31 → 2025-10-30 (-1d) |  | 217.33d → 218.79d |
| PG-11701 | Wiring/DB/connector box installation and termination works | 2025-10-31 → 2025-10-30 (-1d) |  |  | 217.33d → 218.79d |
| 1.3.1.2.7.4 | **PHE** | 2025-10-03 → 2025-10-01 (-2d) | 2025-12-23 → 2025-12-22 (-1d) |  |  |
| PG-11702 | Bracket fixing works | 2025-10-03 → 2025-10-01 (-2d) |  |  | 181.5d → 182.96d |
| PG-11703 | Piping Works |  | 2025-10-28 → 2025-10-27 (-1d) |  | 181.5d → 182.96d |
| PG-11704 | Terrace Ring main & OHT Connection works | 2025-10-28 → 2025-10-27 (-1d) | 2025-12-15 → 2025-12-13 (-2d) |  | 181.5d → 182.96d |
| PG-11705 | Commissioning | 2025-12-15 → 2025-12-13 (-2d) | 2025-12-23 → 2025-12-22 (-1d) |  | 181.5d → 182.96d |
| 1.3.1.2.8 | **Lift Installation and Testing works** | 2025-09-15 → 2025-09-13 (-2d) | 2026-04-16 → 2026-04-15 (-1d) |  |  |
| PG-11706 | Lift Shaft Survey works | 2025-09-15 → 2025-09-13 (-2d) | 2025-09-25 → 2025-09-24 (-1d) |  | 141.83d → 143.29d |
| PG-11707 | Guide Rails fixing works | 2025-10-27 → 2025-10-25 (-2d) |  |  | 116.17d → 117.62d |
| PG-11708 | Lift Frame fixing works | 2025-12-13 → 2025-12-12 (-1d) |  |  | 116.17d → 117.62d |
| PG-11709 | CAR Assembly works |  | 2026-02-04 → 2026-02-03 (-1d) |  | 116.17d → 117.62d |
| PG-11710 | Lift Machine Room Works | 2026-02-04 → 2026-02-03 (-1d) |  |  | 116.17d → 117.62d |
| PG-11711 | Slow Speed & High Speed Testing works |  | 2026-04-16 → 2026-04-15 (-1d) |  | 116.17d → 117.62d |
| 1.3.1.2.9 | **Electrical Panel Works** | 2025-07-21 → 2025-07-19 (-2d) | 2026-02-25 → 2026-02-24 (-1d) |  |  |
| 1.3.1.2.9.1 | **Civil Finishing Works** | 2025-07-21 → 2025-07-19 (-2d) |  |  |  |
| PG-11712 | Wall Tie rod hole packing & Grinding works. | 2025-07-21 → 2025-07-19 (-2d) | 2025-08-06 → 2025-08-05 (-1d) |  | 158.33d → 159.79d |
| PG-11713 | Window, Louver and Door fixing works | 2025-08-06 → 2025-08-05 (-1d) |  |  | 158.33d → 159.79d |
| PG-11714 | Pedestal works |  | 2025-08-26 → 2025-08-25 (-1d) |  | 158.33d → 159.79d |
| PG-11715 | Painting works | 2025-08-26 → 2025-08-25 (-1d) |  |  | 158.33d → 159.79d |
| 1.3.1.2.9.2 | **Electrical Panel works** | 2025-09-03 → 2025-09-02 (-1d) | 2026-02-25 → 2026-02-24 (-1d) |  |  |
| PG-11716 | Electrical Panel assembly works | 2025-09-03 → 2025-09-02 (-1d) | 2025-11-12 → 2025-11-11 (-1d) |  | 158.33d → 159.79d |
| PG-11717 | Electrical Panel installation and cable termination. | 2025-11-12 → 2025-11-11 (-1d) | 2026-01-20 → 2026-01-19 (-1d) |  | 158.33d → 159.79d |
| PG-11718 | Electrical Panel Testing and commissioning works | 2026-01-20 → 2026-01-19 (-1d) | 2026-02-25 → 2026-02-24 (-1d) |  | 158.33d → 159.79d |
| 1.3.1.2.10 | **Entrance Lobby works** |  | 2026-08-05 → 2026-08-04 (-1d) |  |  |
| PG-11719 | Flooring Works |  | 2026-04-23 → 2026-04-22 (-1d) |  | 10.67d → 12.12d |
| PG-11720 | Glass Door and installation Works | 2026-04-23 → 2026-04-22 (-1d) |  |  | 10.67d → 12.12d |
| PG-11722 | Canopy Works | 2026-04-23 → 2026-04-22 (-1d) |  |  | 30.33d → 31.79d |
| PG-11721 | Painting Works | 2026-05-28 → 2026-05-27 (-1d) |  |  | 10.67d → 12.12d |
| PG-11723 | Interior Works |  | 2026-08-05 → 2026-08-04 (-1d) |  | 10.67d → 12.12d |
| 1.3.1.2.11 | **Lightening Arrester works** | 2026-01-10 → 2026-01-09 (-1d) | 2026-01-22 → 2026-01-21 (-1d) |  |  |
| PG-11724 | Conductor will be lifted with RCC Works, But Terrace works will be done once Parapet Painting done | 2026-01-10 → 2026-01-09 (-1d) | 2026-01-22 → 2026-01-21 (-1d) |  | 215.67d → 217.12d |
| 1.3.1.3 | **Tower 3 ( 2B+G+29 ) TYP 4 Units - 118 Units** |  | 2026-10-10 → 2026-10-12 (+2d) |  |  |
| 1.3.1.3.2 | **Structure works** |  | 2026-01-03 → 2026-01-05 (+2d) |  |  |
| 1.3.1.3.2.15 | **Floor 12** |  | 2025-04-11 → 2025-04-12 (+1d) |  |  |
| PG-11810 | Formwork |  | 2025-04-05 A | 85% → 100% | 0d → none |
| 1.3.1.3.2.15.2 | **Slab, Beams & Staircase** |  | 2025-04-11 → 2025-04-12 (+1d) |  |  |
| PG-11811 | Formwork |  | 2025-04-08 A | 3% → 100% | 0d → none |
| PG-11812 | Reinforcement | 2025-04-07 A | 2025-04-10 → 2025-04-11 (+1d) | 0% → 91% |  |
| PG-11813 | Concrete | 2025-04-10 → 2025-04-11 (+1d) | 2025-04-11 → 2025-04-12 (+1d) |  |  |

| ID | Task | Start | Finish |
| --- | --- | --- | --- |
| 1.3.1.3.2.16 | **Floor 13** | 2025-04-11 → 2025-04-12 (+1d) | 2025-04-26 → 2025-04-28 (+2d) |
| 1.3.1.3.2.16.1 | **Columns / shear walls** | 2025-04-11 → 2025-04-12 (+1d) | 2025-04-21 → 2025-04-22 (+1d) |
| PG-11814 | Reinforcement | 2025-04-11 → 2025-04-12 (+1d) | 2025-04-16 → 2025-04-17 (+1d) |
| PG-11815 | Formwork | 2025-04-16 → 2025-04-17 (+1d) | 2025-04-21 → 2025-04-22 (+1d) |
| 1.3.1.3.2.16.2 | **Slab, Beams & Staircase** | 2025-04-19 → 2025-04-21 (+2d) | 2025-04-26 → 2025-04-28 (+2d) |
| PG-11816 | Formwork | 2025-04-19 → 2025-04-21 (+2d) | 2025-04-23 → 2025-04-24 (+1d) |
| PG-11817 | Reinforcement | 2025-04-22 → 2025-04-23 (+1d) | 2025-04-25 → 2025-04-26 (+1d) |
| PG-11818 | Concrete | 2025-04-25 → 2025-04-26 (+1d) | 2025-04-26 → 2025-04-28 (+2d) |
| 1.3.1.3.2.17 | **Floor 14** | 2025-04-26 → 2025-04-28 (+2d) | 2025-05-12 → 2025-05-13 (+1d) |
| 1.3.1.3.2.17.1 | **Columns / shear walls** | 2025-04-26 → 2025-04-28 (+2d) | 2025-05-06 → 2025-05-07 (+1d) |
| PG-11819 | Reinforcement | 2025-04-26 → 2025-04-28 (+2d) | 2025-05-01 → 2025-05-02 (+1d) |
| PG-11820 | Formwork | 2025-05-01 → 2025-05-02 (+1d) | 2025-05-06 → 2025-05-07 (+1d) |
| 1.3.1.3.2.17.2 | **Slab, Beams & Staircase** | 2025-05-05 → 2025-05-06 (+1d) | 2025-05-12 → 2025-05-13 (+1d) |
| PG-11821 | Formwork | 2025-05-05 → 2025-05-06 (+1d) | 2025-05-08 → 2025-05-09 (+1d) |
| PG-11822 | Reinforcement | 2025-05-07 → 2025-05-08 (+1d) | 2025-05-10 → 2025-05-12 (+2d) |
| PG-11823 | Concrete | 2025-05-10 → 2025-05-12 (+2d) | 2025-05-12 → 2025-05-13 (+1d) |
| 1.3.1.3.2.18 | **Floor 15** | 2025-05-12 → 2025-05-13 (+1d) | 2025-05-27 → 2025-05-28 (+1d) |
| 1.3.1.3.2.18.1 | **Columns / shear walls** | 2025-05-12 → 2025-05-13 (+1d) | 2025-05-21 → 2025-05-22 (+1d) |
| PG-11824 | Reinforcement | 2025-05-12 → 2025-05-13 (+1d) | 2025-05-16 → 2025-05-17 (+1d) |
| PG-11825 | Formwork | 2025-05-16 → 2025-05-17 (+1d) | 2025-05-21 → 2025-05-22 (+1d) |
| 1.3.1.3.2.18.2 | **Slab, Beams & Staircase** | 2025-05-20 → 2025-05-21 (+1d) | 2025-05-27 → 2025-05-28 (+1d) |
| PG-11826 | Formwork | 2025-05-20 → 2025-05-21 (+1d) | 2025-05-23 → 2025-05-24 (+1d) |
| PG-11827 | Reinforcement | 2025-05-22 → 2025-05-23 (+1d) | 2025-05-26 → 2025-05-27 (+1d) |
| PG-11828 | Concrete | 2025-05-26 → 2025-05-27 (+1d) | 2025-05-27 → 2025-05-28 (+1d) |
| 1.3.1.3.2.19 | **Floor 16** | 2025-05-27 → 2025-05-28 (+1d) | 2025-06-09 → 2025-06-10 (+1d) |
| 1.3.1.3.2.19.1 | **Columns / shear walls** | 2025-05-27 → 2025-05-28 (+1d) | 2025-06-03 → 2025-06-04 (+1d) |
| PG-11829 | Reinforcement | 2025-05-27 → 2025-05-28 (+1d) | 2025-05-31 → 2025-06-02 (+2d) |
| PG-11830 | Formwork | 2025-05-29 → 2025-05-30 (+1d) | 2025-06-03 → 2025-06-04 (+1d) |
| 1.3.1.3.2.19.2 | **Slab, Beams & Staircase** | 2025-06-02 → 2025-06-03 (+1d) | 2025-06-09 → 2025-06-10 (+1d) |
| PG-11831 | Formwork | 2025-06-02 → 2025-06-03 (+1d) | 2025-06-05 → 2025-06-06 (+1d) |
| PG-11832 | Reinforcement | 2025-06-04 → 2025-06-05 (+1d) | 2025-06-07 → 2025-06-09 (+2d) |
| PG-11833 | Concrete | 2025-06-07 → 2025-06-09 (+2d) | 2025-06-09 → 2025-06-10 (+1d) |
| 1.3.1.3.2.20 | **Floor 17** | 2025-06-09 → 2025-06-10 (+1d) | 2025-06-21 → 2025-06-23 (+2d) |
| 1.3.1.3.2.20.1 | **Columns / shear walls** | 2025-06-09 → 2025-06-10 (+1d) | 2025-06-16 → 2025-06-17 (+1d) |
| PG-11834 | Reinforcement | 2025-06-09 → 2025-06-10 (+1d) | 2025-06-13 → 2025-06-14 (+1d) |
| PG-11835 | Formwork | 2025-06-11 → 2025-06-12 (+1d) | 2025-06-16 → 2025-06-17 (+1d) |
| 1.3.1.3.2.20.2 | **Slab, Beams & Staircase** | 2025-06-14 → 2025-06-16 (+2d) | 2025-06-21 → 2025-06-23 (+2d) |
| PG-11836 | Formwork | 2025-06-14 → 2025-06-16 (+2d) | 2025-06-18 → 2025-06-19 (+1d) |
| PG-11837 | Reinforcement | 2025-06-17 → 2025-06-18 (+1d) | 2025-06-20 → 2025-06-21 (+1d) |
| PG-11838 | Concrete | 2025-06-20 → 2025-06-21 (+1d) | 2025-06-21 → 2025-06-23 (+2d) |
| 1.3.1.3.2.21 | **Floor 18** | 2025-06-21 → 2025-06-23 (+2d) | 2025-07-04 → 2025-07-05 (+1d) |
| 1.3.1.3.2.21.1 | **Columns / shear walls** | 2025-06-21 → 2025-06-23 (+2d) | 2025-06-28 → 2025-06-30 (+2d) |
| PG-11839 | Reinforcement | 2025-06-21 → 2025-06-23 (+2d) | 2025-06-26 → 2025-06-27 (+1d) |
| PG-11840 | Formwork | 2025-06-24 → 2025-06-25 (+1d) | 2025-06-28 → 2025-06-30 (+2d) |
| 1.3.1.3.2.21.2 | **Slab, Beams & Staircase** | 2025-06-27 → 2025-06-28 (+1d) | 2025-07-04 → 2025-07-05 (+1d) |
| PG-11841 | Formwork | 2025-06-27 → 2025-06-28 (+1d) | 2025-07-01 → 2025-07-02 (+1d) |
| PG-11842 | Reinforcement | 2025-06-30 → 2025-07-01 (+1d) | 2025-07-03 → 2025-07-04 (+1d) |
| PG-11843 | Concrete | 2025-07-03 → 2025-07-04 (+1d) | 2025-07-04 → 2025-07-05 (+1d) |
| 1.3.1.3.2.22 | **Floor 19** | 2025-07-04 → 2025-07-05 (+1d) | 2025-07-17 → 2025-07-18 (+1d) |
| 1.3.1.3.2.22.1 | **Columns / shear walls** | 2025-07-04 → 2025-07-05 (+1d) | 2025-07-11 → 2025-07-12 (+1d) |
| PG-11844 | Reinforcement | 2025-07-04 → 2025-07-05 (+1d) | 2025-07-09 → 2025-07-10 (+1d) |
| PG-11845 | Formwork | 2025-07-07 → 2025-07-08 (+1d) | 2025-07-11 → 2025-07-12 (+1d) |
| 1.3.1.3.2.22.2 | **Slab, Beams & Staircase** | 2025-07-10 → 2025-07-11 (+1d) | 2025-07-17 → 2025-07-18 (+1d) |
| PG-11846 | Formwork | 2025-07-10 → 2025-07-11 (+1d) | 2025-07-14 → 2025-07-15 (+1d) |
| PG-11847 | Reinforcement | 2025-07-12 → 2025-07-14 (+2d) | 2025-07-16 → 2025-07-17 (+1d) |
| PG-11848 | Concrete | 2025-07-16 → 2025-07-17 (+1d) | 2025-07-17 → 2025-07-18 (+1d) |
| 1.3.1.3.2.23 | **Floor 20** | 2025-07-17 → 2025-07-18 (+1d) | 2025-07-30 → 2025-07-31 (+1d) |
| 1.3.1.3.2.23.1 | **Columns / shear walls** | 2025-07-17 → 2025-07-18 (+1d) | 2025-07-24 → 2025-07-25 (+1d) |
| PG-11849 | Reinforcement | 2025-07-17 → 2025-07-18 (+1d) | 2025-07-22 → 2025-07-23 (+1d) |
| PG-11850 | Formwork | 2025-07-19 → 2025-07-21 (+2d) | 2025-07-24 → 2025-07-25 (+1d) |
| 1.3.1.3.2.23.2 | **Slab, Beams & Staircase** | 2025-07-23 → 2025-07-24 (+1d) | 2025-07-30 → 2025-07-31 (+1d) |
| PG-11851 | Formwork | 2025-07-23 → 2025-07-24 (+1d) | 2025-07-26 → 2025-07-28 (+2d) |
| PG-11852 | Reinforcement | 2025-07-25 → 2025-07-26 (+1d) | 2025-07-29 → 2025-07-30 (+1d) |
| PG-11853 | Concrete | 2025-07-29 → 2025-07-30 (+1d) | 2025-07-30 → 2025-07-31 (+1d) |
| 1.3.1.3.2.24 | **Floor 21** | 2025-07-30 → 2025-07-31 (+1d) | 2025-08-12 → 2025-08-13 (+1d) |
| 1.3.1.3.2.24.1 | **Columns / shear walls** | 2025-07-30 → 2025-07-31 (+1d) | 2025-08-06 → 2025-08-07 (+1d) |
| PG-11854 | Reinforcement | 2025-07-30 → 2025-07-31 (+1d) | 2025-08-04 → 2025-08-05 (+1d) |
| PG-11855 | Formwork | 2025-08-01 → 2025-08-02 (+1d) | 2025-08-06 → 2025-08-07 (+1d) |
| 1.3.1.3.2.24.2 | **Slab, Beams & Staircase** | 2025-08-05 → 2025-08-06 (+1d) | 2025-08-12 → 2025-08-13 (+1d) |
| PG-11856 | Formwork | 2025-08-05 → 2025-08-06 (+1d) | 2025-08-08 → 2025-08-09 (+1d) |

| ID | Task | Start | Finish |
| --- | --- | --- | --- |
| PG-11857 | Reinforcement | 2025-08-07 → 2025-08-08 (+1d) | 2025-08-11 → 2025-08-12 (+1d) |
| PG-11858 | Concrete | 2025-08-11 → 2025-08-12 (+1d) | 2025-08-12 → 2025-08-13 (+1d) |
| 1.3.1.3.2.25 | **Floor 22** | 2025-08-12 → 2025-08-13 (+1d) | 2025-08-26 → 2025-08-27 (+1d) |
| 1.3.1.3.2.25.1 | **Columns / shear walls** | 2025-08-12 → 2025-08-13 (+1d) | 2025-08-20 → 2025-08-21 (+1d) |
| PG-11859 | Reinforcement | 2025-08-12 → 2025-08-13 (+1d) | 2025-08-18 → 2025-08-19 (+1d) |
| PG-11860 | Formwork | 2025-08-14 → 2025-08-16 (+2d) | 2025-08-20 → 2025-08-21 (+1d) |
| 1.3.1.3.2.25.2 | **Slab, Beams & Staircase** | 2025-08-19 → 2025-08-20 (+1d) | 2025-08-26 → 2025-08-27 (+1d) |
| PG-11861 | Formwork | 2025-08-19 → 2025-08-20 (+1d) | 2025-08-22 → 2025-08-23 (+1d) |
| PG-11862 | Reinforcement | 2025-08-21 → 2025-08-22 (+1d) | 2025-08-25 → 2025-08-26 (+1d) |
| PG-11863 | Concrete | 2025-08-25 → 2025-08-26 (+1d) | 2025-08-26 → 2025-08-27 (+1d) |
| 1.3.1.3.2.26 | **Floor 23** | 2025-08-26 → 2025-08-27 (+1d) | 2025-09-08 → 2025-09-09 (+1d) |
| 1.3.1.3.2.26.1 | **Columns / shear walls** | 2025-08-26 → 2025-08-27 (+1d) | 2025-09-02 → 2025-09-03 (+1d) |
| PG-11864 | Reinforcement | 2025-08-26 → 2025-08-27 (+1d) | 2025-08-30 → 2025-09-01 (+2d) |
| PG-11865 | Formwork | 2025-08-28 → 2025-08-29 (+1d) | 2025-09-02 → 2025-09-03 (+1d) |
| 1.3.1.3.2.26.2 | **Slab, Beams & Staircase** | 2025-09-01 → 2025-09-02 (+1d) | 2025-09-08 → 2025-09-09 (+1d) |
| PG-11866 | Formwork | 2025-09-01 → 2025-09-02 (+1d) | 2025-09-04 → 2025-09-05 (+1d) |
| PG-11867 | Reinforcement | 2025-09-03 → 2025-09-04 (+1d) | 2025-09-06 → 2025-09-08 (+2d) |
| PG-11868 | Concrete | 2025-09-06 → 2025-09-08 (+2d) | 2025-09-08 → 2025-09-09 (+1d) |
| 1.3.1.3.2.27 | **Floor 24** | 2025-09-08 → 2025-09-09 (+1d) | 2025-09-20 → 2025-09-22 (+2d) |
| 1.3.1.3.2.27.1 | **Columns / shear walls** | 2025-09-08 → 2025-09-09 (+1d) | 2025-09-15 → 2025-09-16 (+1d) |
| PG-11869 | Reinforcement | 2025-09-08 → 2025-09-09 (+1d) | 2025-09-12 → 2025-09-13 (+1d) |
| PG-11870 | Formwork | 2025-09-10 → 2025-09-11 (+1d) | 2025-09-15 → 2025-09-16 (+1d) |
| 1.3.1.3.2.27.2 | **Slab, Beams & Staircase** | 2025-09-13 → 2025-09-15 (+2d) | 2025-09-20 → 2025-09-22 (+2d) |
| PG-11871 | Formwork | 2025-09-13 → 2025-09-15 (+2d) | 2025-09-17 → 2025-09-18 (+1d) |
| PG-11872 | Reinforcement | 2025-09-16 → 2025-09-17 (+1d) | 2025-09-19 → 2025-09-20 (+1d) |
| PG-11873 | Concrete | 2025-09-19 → 2025-09-20 (+1d) | 2025-09-20 → 2025-09-22 (+2d) |
| 1.3.1.3.2.28 | **Floor 25** | 2025-09-20 → 2025-09-22 (+2d) | 2025-10-04 → 2025-10-06 (+2d) |
| 1.3.1.3.2.28.1 | **Columns / shear walls** | 2025-09-20 → 2025-09-22 (+2d) | 2025-09-27 → 2025-09-29 (+2d) |
| PG-11874 | Reinforcement | 2025-09-20 → 2025-09-22 (+2d) | 2025-09-25 → 2025-09-26 (+1d) |
| PG-11875 | Formwork | 2025-09-23 → 2025-09-24 (+1d) | 2025-09-27 → 2025-09-29 (+2d) |
| 1.3.1.3.2.28.2 | **Slab, Beams & Staircase** | 2025-09-26 → 2025-09-27 (+1d) | 2025-10-04 → 2025-10-06 (+2d) |
| PG-11876 | Formwork | 2025-09-26 → 2025-09-27 (+1d) | 2025-09-30 → 2025-10-01 (+1d) |
| PG-11877 | Reinforcement | 2025-09-29 → 2025-09-30 (+1d) | 2025-10-03 → 2025-10-04 (+1d) |
| PG-11878 | Concrete | 2025-10-03 → 2025-10-04 (+1d) | 2025-10-04 → 2025-10-06 (+2d) |
| 1.3.1.3.2.29 | **Floor 26** | 2025-10-04 → 2025-10-06 (+2d) | 2025-10-17 → 2025-10-18 (+1d) |
| 1.3.1.3.2.29.1 | **Columns / shear walls** | 2025-10-04 → 2025-10-06 (+2d) | 2025-10-11 → 2025-10-13 (+2d) |
| PG-11879 | Reinforcement | 2025-10-04 → 2025-10-06 (+2d) | 2025-10-09 → 2025-10-10 (+1d) |
| PG-11880 | Formwork | 2025-10-07 → 2025-10-08 (+1d) | 2025-10-11 → 2025-10-13 (+2d) |
| 1.3.1.3.2.29.2 | **Slab, Beams & Staircase** | 2025-10-10 → 2025-10-11 (+1d) | 2025-10-17 → 2025-10-18 (+1d) |
| PG-11881 | Formwork | 2025-10-10 → 2025-10-11 (+1d) | 2025-10-14 → 2025-10-15 (+1d) |
| PG-11882 | Reinforcement | 2025-10-13 → 2025-10-14 (+1d) | 2025-10-16 → 2025-10-17 (+1d) |
| PG-11883 | Concrete | 2025-10-16 → 2025-10-17 (+1d) | 2025-10-17 → 2025-10-18 (+1d) |
| 1.3.1.3.2.30 | **Floor 27** | 2025-10-17 → 2025-10-18 (+1d) | 2025-10-30 → 2025-10-31 (+1d) |
| 1.3.1.3.2.30.1 | **Columns / shear walls** | 2025-10-17 → 2025-10-18 (+1d) | 2025-10-24 → 2025-10-25 (+1d) |
| PG-11884 | Reinforcement | 2025-10-17 → 2025-10-18 (+1d) | 2025-10-22 → 2025-10-23 (+1d) |
| PG-11885 | Formwork | 2025-10-20 → 2025-10-21 (+1d) | 2025-10-24 → 2025-10-25 (+1d) |
| 1.3.1.3.2.30.2 | **Slab, Beams & Staircase** | 2025-10-23 → 2025-10-24 (+1d) | 2025-10-30 → 2025-10-31 (+1d) |
| PG-11886 | Formwork | 2025-10-23 → 2025-10-24 (+1d) | 2025-10-27 → 2025-10-28 (+1d) |
| PG-11887 | Reinforcement | 2025-10-25 → 2025-10-27 (+2d) | 2025-10-29 → 2025-10-30 (+1d) |
| PG-11888 | Concrete | 2025-10-29 → 2025-10-30 (+1d) | 2025-10-30 → 2025-10-31 (+1d) |
| 1.3.1.3.2.31 | **Floor 28** | 2025-10-30 → 2025-10-31 (+1d) | 2025-11-13 → 2025-11-14 (+1d) |
| 1.3.1.3.2.31.1 | **Columns / shear walls** | 2025-10-30 → 2025-10-31 (+1d) | 2025-11-07 → 2025-11-08 (+1d) |
| PG-11889 | Reinforcement | 2025-10-30 → 2025-10-31 (+1d) | 2025-11-05 → 2025-11-06 (+1d) |
| PG-11890 | Formwork | 2025-11-03 → 2025-11-04 (+1d) | 2025-11-07 → 2025-11-08 (+1d) |
| 1.3.1.3.2.31.2 | **Slab, Beams & Staircase** | 2025-11-06 → 2025-11-07 (+1d) | 2025-11-13 → 2025-11-14 (+1d) |
| PG-11891 | Formwork | 2025-11-06 → 2025-11-07 (+1d) | 2025-11-10 → 2025-11-11 (+1d) |
| PG-11892 | Reinforcement | 2025-11-08 → 2025-11-10 (+2d) | 2025-11-12 → 2025-11-13 (+1d) |
| PG-11893 | Concrete | 2025-11-12 → 2025-11-13 (+1d) | 2025-11-13 → 2025-11-14 (+1d) |
| 1.3.1.3.2.32 | **Floor 29** | 2025-11-13 → 2025-11-14 (+1d) | 2025-11-26 → 2025-11-27 (+1d) |
| 1.3.1.3.2.32.1 | **Columns / shear walls** | 2025-11-13 → 2025-11-14 (+1d) | 2025-11-20 → 2025-11-21 (+1d) |
| PG-11894 | Reinforcement | 2025-11-13 → 2025-11-14 (+1d) | 2025-11-18 → 2025-11-19 (+1d) |
| PG-11895 | Formwork | 2025-11-15 → 2025-11-17 (+2d) | 2025-11-20 → 2025-11-21 (+1d) |
| 1.3.1.3.2.32.2 | **Slab, Beams & Staircase** | 2025-11-19 → 2025-11-20 (+1d) | 2025-11-26 → 2025-11-27 (+1d) |
| PG-11896 | Formwork | 2025-11-19 → 2025-11-20 (+1d) | 2025-11-22 → 2025-11-24 (+2d) |
| PG-11897 | Reinforcement | 2025-11-21 → 2025-11-22 (+1d) | 2025-11-25 → 2025-11-26 (+1d) |
| PG-11898 | Concrete | 2025-11-25 → 2025-11-26 (+1d) | 2025-11-26 → 2025-11-27 (+1d) |
| 1.3.1.3.2.33 | **Above Terrace Floor** | 2025-11-26 → 2025-11-27 (+1d) | 2026-01-03 → 2026-01-05 (+2d) |
| 1.3.1.3.2.33.1 | **Columns / shear walls/Parapet Walls** | 2025-11-26 → 2025-11-27 (+1d) | 2025-12-09 → 2025-12-10 (+1d) |
| PG-11899 | Reinforcement | 2025-11-26 → 2025-11-27 (+1d) | 2025-12-01 → 2025-12-02 (+1d) |
| PG-11900 | Formwork | 2025-11-28 → 2025-11-29 (+1d) | 2025-12-04 → 2025-12-05 (+1d) |

| ID | Task | Start | Finish | Complete | Total float |
| --- | --- | --- | --- | --- | --- |
| PG-11901 | Concrete | 2025-12-04 → 2025-12-05 (+1d) | 2025-12-09 → 2025-12-10 (+1d) |  |  |
| 1.3.1.3.2.33.2 | **Slab, Beams & Staircase Head rooms, Lift headroom** | 2025-12-01 → 2025-12-02 (+1d) | 2026-01-03 → 2026-01-05 (+2d) |  |  |
| PG-11905 | Terrace Waterproofing and Protective finishing. | 2025-12-01 → 2025-12-02 (+1d) | 2026-01-03 → 2026-01-05 (+2d) |  |  |
| PG-11902 | Formwork | 2025-12-09 → 2025-12-10 (+1d) | 2025-12-15 → 2025-12-16 (+1d) |  |  |
| PG-11903 | Reinforcement | 2025-12-15 → 2025-12-16 (+1d) | 2025-12-20 → 2025-12-22 (+2d) |  |  |
| PG-11904 | Concrete | 2025-12-20 → 2025-12-22 (+2d) | 2025-12-23 → 2025-12-24 (+1d) |  |  |
| 1.3.1.3.3 | **MEP Internal works** |  | 2026-06-04 → 2026-06-05 (+1d) |  |  |
| PG-11933 | Final Fix - CP & Sanitary fixtures |  |  | 13% → 71% | 415.08d → 415.18d |
| PG-11936 | Final Fix - Smoke & heat detectors, FHC , FAS Etc. |  |  | 12% → 69% | 414.95d → 415.18d |
| 1.3.1.3.3.5.3 | **Electrical Works** |  | 2025-04-14 → 2025-04-15 (+1d) |  |  |
| PG-11939 | Final Fix - Electrical Fixtures | 2025-04-07 → 2025-04-08 A (+1d) | 2025-04-14 → 2025-04-15 (+1d) | 0% → 45% | 415.24d → 415.18d |
| 1.3.1.3.3.6 | **Floor 3** |  | 2025-05-02 → 2025-05-06 (+4d) |  |  |
| 1.3.1.3.3.6.1 | **PHE Works** |  | 2025-05-02 → 2025-05-06 (+4d) |  |  |
| PG-11942 | Final Fix - CP & Sanitary fixtures | 2025-04-22 → 2025-04-25 (+3d) | 2025-05-02 → 2025-05-06 (+4d) |  | 399.58d → 397.37d |
| 1.3.1.3.3.6.2 | **Fire Fighting Works** |  | 2025-05-02 → 2025-05-06 (+4d) |  |  |
| PG-11944 | 2nd Fix - Sprinkler fixing & Pressure testing |  | 2025-04-10 → 2025-04-11 A (+1d) | 47% → 100% | 408.83d → none |
| PG-11945 | Final Fix - Smoke & heat detectors, FHC , FAS Etc. | 2025-04-22 → 2025-04-25 (+3d) | 2025-05-02 → 2025-05-06 (+4d) |  | 399.58d → 397.37d |
| 1.3.1.3.3.6.3 | **Electrical Works** |  | 2025-05-02 → 2025-05-06 (+4d) |  |  |
| PG-11947 | 2nd Fix - Wiring works |  | 2025-04-09 → 2025-04-10 A (+1d) | 69% → 100% | 413.83d → none |
| PG-11948 | Final Fix - Electrical Fixtures | 2025-04-26 → 2025-04-30 (+4d) | 2025-05-02 → 2025-05-06 (+4d) |  | 399.58d → 397.37d |
| PG-11951 | Final Fix - CP & Sanitary fixtures | 2025-05-07 → 2025-05-06 (-1d) |  |  | 386.83d → 388.11d |
| PG-11953 | 2nd Fix - Sprinkler fixing & Pressure testing | 2025-04-14 → 2025-04-12 (-2d) | 2025-04-25 → 2025-04-24 (-1d) |  | 396.67d → 397.94d |
| PG-11954 | Final Fix - Smoke & heat detectors, FHC , FAS Etc. | 2025-05-07 → 2025-05-06 (-1d) |  |  | 386.83d → 388.11d |
| PG-11956 | 2nd Fix - Wiring works | 2025-04-07 A |  | 0% → 24% | 400.67d → 401.32d |
| PG-11957 | Final Fix - Electrical Fixtures | 2025-05-10 → 2025-05-09 (-1d) |  |  | 386.83d → 388.11d |
| 1.3.1.3.3.9 | **Floor 6** |  | 2025-06-16 → 2025-06-17 (+1d) |  |  |
| 1.3.1.3.3.9.1 | **PHE Works** |  | 2025-06-16 → 2025-06-17 (+1d) |  |  |
| PG-11967 | 1st Fix - Piping works |  | 2025-04-09 → 2025-04-10 A (+1d) | 59% → 100% | 362.93d → none |
| PG-11968 | 2nd Fix - diverter fixing & Pressure testing | 2025-04-04 → 2025-04-05 A (+1d) | 2025-04-16 → 2025-04-18 (+2d) | 0% → 38% | 362.93d → 362.57d |
| PG-11969 | Final Fix - CP & Sanitary fixtures | 2025-06-04 → 2025-06-06 (+2d) | 2025-06-16 → 2025-06-17 (+1d) |  | 362.93d → 362.57d |
| 1.3.1.3.3.9.2 | **Fire Fighting Works** | 2025-04-04 → 2025-04-07 (+3d) | 2025-06-16 → 2025-06-17 (+1d) |  |  |
| PG-11970 | 1st Fix - Piping and Shaft hydrant works | 2025-04-04 → 2025-04-07 A (+3d) | 2025-04-18 → 2025-04-21 (+3d) | 0% → 25% | 409.64d → 408.71d |
| PG-11971 | 2nd Fix - Sprinkler fixing & Pressure testing | 2025-05-12 → 2025-05-14 (+2d) | 2025-05-23 → 2025-05-26 (+3d) |  | 372.93d → 372.57d |
| PG-11972 | Final Fix - Smoke & heat detectors, FHC , FAS Etc. | 2025-06-04 → 2025-06-06 (+2d) | 2025-06-16 → 2025-06-17 (+1d) |  | 362.93d → 362.57d |
| 1.3.1.3.3.9.3 | **Electrical Works** |  | 2025-06-16 → 2025-06-17 (+1d) |  |  |
| PG-11973 | 1st Fix - GI wire pulling |  | 2025-04-04 → 2025-04-05 A (+1d) | 89% → 100% | 409.64d → none |
| PG-11974 | 2nd Fix - Wiring works | 2025-05-07 → 2025-05-08 (+1d) | 2025-05-22 → 2025-05-24 (+2d) |  | 377.93d → 377.57d |
| PG-11975 | Final Fix - Electrical Fixtures | 2025-06-09 → 2025-06-11 (+2d) | 2025-06-16 → 2025-06-17 (+1d) |  | 362.93d → 362.57d |
| 1.3.1.3.3.10 | **Floor 7** | 2025-04-11 → 2025-04-12 (+1d) | 2025-06-30 → 2025-07-01 (+1d) |  |  |
| 1.3.1.3.3.10.1 | **PHE Works** | 2025-04-11 → 2025-04-12 (+1d) | 2025-06-30 → 2025-07-01 (+1d) |  |  |
| PG-11976 | 1st Fix - Piping works | 2025-04-11 → 2025-04-12 (+1d) | 2025-04-25 → 2025-04-26 (+1d) |  |  |
| PG-11977 | 2nd Fix - diverter fixing & Pressure testing | 2025-04-21 → 2025-04-22 (+1d) | 2025-05-02 → 2025-05-03 (+1d) |  |  |
| PG-11978 | Final Fix - CP & Sanitary fixtures | 2025-06-20 → 2025-06-21 (+1d) | 2025-06-30 → 2025-07-01 (+1d) |  |  |
| 1.3.1.3.3.10.2 | **Fire Fighting Works** |  | 2025-06-30 → 2025-07-01 (+1d) |  |  |
| PG-11979 | 1st Fix - Piping and Shaft hydrant works |  | 2025-05-03 → 2025-05-05 (+2d) |  |  |
| PG-11980 | 2nd Fix - Sprinkler fixing & Pressure testing | 2025-05-28 → 2025-05-29 (+1d) | 2025-06-09 → 2025-06-10 (+1d) |  |  |
| PG-11981 | Final Fix - Smoke & heat detectors, FHC , FAS Etc. | 2025-06-20 → 2025-06-21 (+1d) | 2025-06-30 → 2025-07-01 (+1d) |  |  |
| 1.3.1.3.3.10.3 | **Electrical Works** | 2025-04-11 → 2025-04-12 (+1d) | 2025-06-30 → 2025-07-01 (+1d) |  |  |
| PG-11982 | 1st Fix - GI wire pulling | 2025-04-11 → 2025-04-12 (+1d) | 2025-04-19 → 2025-04-21 (+2d) |  |  |
| PG-11983 | 2nd Fix - Wiring works | 2025-05-21 → 2025-05-22 (+1d) | 2025-06-07 → 2025-06-09 (+2d) |  |  |
| PG-11984 | Final Fix - Electrical Fixtures | 2025-06-24 → 2025-06-25 (+1d) | 2025-06-30 → 2025-07-01 (+1d) |  |  |
| 1.3.1.3.3.11 | **Floor 8** | 2025-04-26 → 2025-04-28 (+2d) | 2025-07-16 → 2025-07-17 (+1d) |  |  |
| 1.3.1.3.3.11.1 | **PHE Works** | 2025-04-26 → 2025-04-28 (+2d) | 2025-07-16 → 2025-07-17 (+1d) |  |  |
| PG-11985 | 1st Fix - Piping works | 2025-04-26 → 2025-04-28 (+2d) | 2025-05-10 → 2025-05-12 (+2d) |  |  |
| PG-11986 | 2nd Fix - diverter fixing & Pressure testing | 2025-05-06 → 2025-05-07 (+1d) | 2025-05-17 → 2025-05-19 (+2d) |  |  |
| PG-11987 | Final Fix - CP & Sanitary fixtures | 2025-07-05 → 2025-07-07 (+2d) | 2025-07-16 → 2025-07-17 (+1d) |  |  |
| 1.3.1.3.3.11.2 | **Fire Fighting Works** |  | 2025-07-16 → 2025-07-17 (+1d) |  |  |
| PG-11988 | 1st Fix - Piping and Shaft hydrant works |  | 2025-05-19 → 2025-05-20 (+1d) |  |  |
| PG-11989 | 2nd Fix - Sprinkler fixing & Pressure testing | 2025-06-12 → 2025-06-13 (+1d) | 2025-06-24 → 2025-06-25 (+1d) |  |  |
| PG-11990 | Final Fix - Smoke & heat detectors, FHC , FAS Etc. | 2025-07-05 → 2025-07-07 (+2d) | 2025-07-16 → 2025-07-17 (+1d) |  |  |
| 1.3.1.3.3.11.3 | **Electrical Works** | 2025-04-26 → 2025-04-28 (+2d) | 2025-07-16 → 2025-07-17 (+1d) |  |  |
| PG-11991 | 1st Fix - GI wire pulling | 2025-04-26 → 2025-04-28 (+2d) | 2025-05-05 → 2025-05-06 (+1d) |  |  |
| PG-11992 | 2nd Fix - Wiring works | 2025-06-06 → 2025-06-07 (+1d) | 2025-06-23 → 2025-06-24 (+1d) |  |  |
| PG-11993 | Final Fix - Electrical Fixtures | 2025-07-10 → 2025-07-11 (+1d) | 2025-07-16 → 2025-07-17 (+1d) |  |  |
| 1.3.1.3.3.12 | **Floor 9** | 2025-05-12 → 2025-05-13 (+1d) | 2025-07-29 → 2025-07-30 (+1d) |  |  |
| 1.3.1.3.3.12.1 | **PHE Works** | 2025-05-12 → 2025-05-13 (+1d) | 2025-07-29 → 2025-07-30 (+1d) |  |  |
| PG-11994 | 1st Fix - Piping works | 2025-05-12 → 2025-05-13 (+1d) | 2025-05-26 → 2025-05-27 (+1d) |  |  |
| PG-11995 | 2nd Fix - diverter fixing & Pressure testing | 2025-05-21 → 2025-05-22 (+1d) | 2025-06-02 → 2025-06-03 (+1d) |  |  |
| PG-11996 | Final Fix - CP & Sanitary fixtures | 2025-07-18 → 2025-07-19 (+1d) | 2025-07-29 → 2025-07-30 (+1d) |  |  |
| 1.3.1.3.3.12.2 | **Fire Fighting Works** | 2025-05-21 → 2025-05-22 (+1d) | 2025-07-29 → 2025-07-30 (+1d) |  |  |

| ID | Task | Start | Finish |
| --- | --- | --- | --- |
| PG-11997 | 1st Fix - Piping and Shaft hydrant works | 2025-05-21 → 2025-05-22 (+1d) | 2025-06-04 → 2025-06-05 (+1d) |
| PG-11998 | 2nd Fix - Sprinkler fixing & Pressure testing | 2025-06-27 → 2025-06-28 (+1d) | 2025-07-09 → 2025-07-10 (+1d) |
| PG-11999 | Final Fix - Smoke & heat detectors, FHC , FAS Etc. | 2025-07-18 → 2025-07-19 (+1d) | 2025-07-29 → 2025-07-30 (+1d) |
| 1.3.1.3.3.12.3 | **Electrical Works** | 2025-05-12 → 2025-05-13 (+1d) | 2025-07-29 → 2025-07-30 (+1d) |
| PG-12000 | 1st Fix - GI wire pulling | 2025-05-12 → 2025-05-13 (+1d) | 2025-05-21 → 2025-05-22 (+1d) |
| PG-12001 | 2nd Fix - Wiring works | 2025-06-21 → 2025-06-23 (+2d) | 2025-07-08 → 2025-07-09 (+1d) |
| PG-12002 | Final Fix - Electrical Fixtures | 2025-07-23 → 2025-07-24 (+1d) | 2025-07-29 → 2025-07-30 (+1d) |
| 1.3.1.3.3.13 | **Floor 10** | 2025-05-27 → 2025-05-28 (+1d) | 2025-08-14 → 2025-08-16 (+2d) |
| 1.3.1.3.3.13.1 | **PHE Works** | 2025-05-27 → 2025-05-28 (+1d) | 2025-08-14 → 2025-08-16 (+2d) |
| PG-12003 | 1st Fix - Piping works | 2025-05-27 → 2025-05-28 (+1d) | 2025-06-10 → 2025-06-11 (+1d) |
| PG-12004 | 2nd Fix - diverter fixing & Pressure testing | 2025-06-05 → 2025-06-06 (+1d) | 2025-06-17 → 2025-06-18 (+1d) |
| PG-12005 | Final Fix - CP & Sanitary fixtures | 2025-08-04 → 2025-08-05 (+1d) | 2025-08-14 → 2025-08-16 (+2d) |
| 1.3.1.3.3.13.2 | **Fire Fighting Works** |  | 2025-08-14 → 2025-08-16 (+2d) |
| PG-12006 | 1st Fix - Piping and Shaft hydrant works |  | 2025-06-18 → 2025-06-19 (+1d) |
| PG-12007 | 2nd Fix - Sprinkler fixing & Pressure testing | 2025-07-12 → 2025-07-14 (+2d) | 2025-07-24 → 2025-07-25 (+1d) |
| PG-12008 | Final Fix - Smoke & heat detectors, FHC , FAS Etc. | 2025-08-04 → 2025-08-05 (+1d) | 2025-08-14 → 2025-08-16 (+2d) |
| 1.3.1.3.3.13.3 | **Electrical Works** | 2025-05-27 → 2025-05-28 (+1d) | 2025-08-14 → 2025-08-16 (+2d) |
| PG-12009 | 1st Fix - GI wire pulling | 2025-05-27 → 2025-05-28 (+1d) | 2025-06-04 → 2025-06-05 (+1d) |
| PG-12010 | 2nd Fix - Wiring works | 2025-07-08 → 2025-07-09 (+1d) | 2025-07-23 → 2025-07-24 (+1d) |
| PG-12011 | Final Fix - Electrical Fixtures | 2025-08-08 → 2025-08-09 (+1d) | 2025-08-14 → 2025-08-16 (+2d) |
| 1.3.1.3.3.14 | **Floor 11** | 2025-06-09 → 2025-06-10 (+1d) | 2025-08-28 → 2025-08-29 (+1d) |
| 1.3.1.3.3.14.1 | **PHE Works** | 2025-06-09 → 2025-06-10 (+1d) | 2025-08-28 → 2025-08-29 (+1d) |
| PG-12012 | 1st Fix - Piping works | 2025-06-09 → 2025-06-10 (+1d) | 2025-06-23 → 2025-06-24 (+1d) |
| PG-12013 | 2nd Fix - diverter fixing & Pressure testing | 2025-06-18 → 2025-06-19 (+1d) | 2025-06-30 → 2025-07-01 (+1d) |
| PG-12014 | Final Fix - CP & Sanitary fixtures | 2025-08-18 → 2025-08-19 (+1d) | 2025-08-28 → 2025-08-29 (+1d) |
| 1.3.1.3.3.14.2 | **Fire Fighting Works** | 2025-06-18 → 2025-06-19 (+1d) | 2025-08-28 → 2025-08-29 (+1d) |
| PG-12015 | 1st Fix - Piping and Shaft hydrant works | 2025-06-18 → 2025-06-19 (+1d) | 2025-07-02 → 2025-07-03 (+1d) |
| PG-12016 | 2nd Fix - Sprinkler fixing & Pressure testing | 2025-07-25 → 2025-07-26 (+1d) | 2025-08-06 → 2025-08-07 (+1d) |
| PG-12017 | Final Fix - Smoke & heat detectors, FHC , FAS Etc. | 2025-08-18 → 2025-08-19 (+1d) | 2025-08-28 → 2025-08-29 (+1d) |
| 1.3.1.3.3.14.3 | **Electrical Works** | 2025-06-09 → 2025-06-10 (+1d) | 2025-08-28 → 2025-08-29 (+1d) |
| PG-12018 | 1st Fix - GI wire pulling | 2025-06-09 → 2025-06-10 (+1d) | 2025-06-18 → 2025-06-19 (+1d) |
| PG-12019 | 2nd Fix - Wiring works | 2025-07-21 → 2025-07-22 (+1d) | 2025-08-05 → 2025-08-06 (+1d) |
| PG-12020 | Final Fix - Electrical Fixtures | 2025-08-22 → 2025-08-23 (+1d) | 2025-08-28 → 2025-08-29 (+1d) |
| 1.3.1.3.3.15 | **Floor 12** | 2025-06-21 → 2025-06-23 (+2d) | 2025-09-13 → 2025-09-15 (+2d) |
| 1.3.1.3.3.15.1 | **PHE Works** | 2025-06-21 → 2025-06-23 (+2d) | 2025-09-13 → 2025-09-15 (+2d) |
| PG-12021 | 1st Fix - Piping works | 2025-06-21 → 2025-06-23 (+2d) | 2025-07-05 → 2025-07-07 (+2d) |
| PG-12022 | 2nd Fix - diverter fixing & Pressure testing | 2025-07-01 → 2025-07-02 (+1d) | 2025-07-12 → 2025-07-14 (+2d) |
| PG-12023 | Final Fix - CP & Sanitary fixtures | 2025-09-01 → 2025-09-02 (+1d) | 2025-09-13 → 2025-09-15 (+2d) |
| 1.3.1.3.3.15.2 | **Fire Fighting Works** |  | 2025-09-13 → 2025-09-15 (+2d) |
| PG-12024 | 1st Fix - Piping and Shaft hydrant works |  | 2025-07-14 → 2025-07-15 (+1d) |
| PG-12025 | 2nd Fix - Sprinkler fixing & Pressure testing | 2025-08-07 → 2025-08-08 (+1d) | 2025-08-20 → 2025-08-21 (+1d) |
| PG-12026 | Final Fix - Smoke & heat detectors, FHC , FAS Etc. | 2025-09-01 → 2025-09-02 (+1d) | 2025-09-13 → 2025-09-15 (+2d) |
| 1.3.1.3.3.15.3 | **Electrical Works** | 2025-06-21 → 2025-06-23 (+2d) | 2025-09-13 → 2025-09-15 (+2d) |
| PG-12027 | 1st Fix - GI wire pulling | 2025-06-21 → 2025-06-23 (+2d) | 2025-06-30 → 2025-07-01 (+1d) |
| PG-12028 | 2nd Fix - Wiring works | 2025-08-01 → 2025-08-02 (+1d) | 2025-08-19 → 2025-08-20 (+1d) |
| PG-12029 | Final Fix - Electrical Fixtures | 2025-09-08 → 2025-09-09 (+1d) | 2025-09-13 → 2025-09-15 (+2d) |
| 1.3.1.3.3.16 | **Floor 13** | 2025-07-04 → 2025-07-05 (+1d) | 2025-09-26 → 2025-09-27 (+1d) |
| 1.3.1.3.3.16.1 | **PHE Works** | 2025-07-04 → 2025-07-05 (+1d) | 2025-09-26 → 2025-09-27 (+1d) |
| PG-12030 | 1st Fix - Piping works | 2025-07-04 → 2025-07-05 (+1d) | 2025-07-18 → 2025-07-19 (+1d) |
| PG-12031 | 2nd Fix - diverter fixing & Pressure testing | 2025-07-14 → 2025-07-15 (+1d) | 2025-07-25 → 2025-07-26 (+1d) |
| PG-12032 | Final Fix - CP & Sanitary fixtures | 2025-09-15 → 2025-09-16 (+1d) | 2025-09-26 → 2025-09-27 (+1d) |
| 1.3.1.3.3.16.2 | **Fire Fighting Works** |  | 2025-09-26 → 2025-09-27 (+1d) |
| PG-12033 | 1st Fix - Piping and Shaft hydrant works |  | 2025-07-26 → 2025-07-28 (+2d) |
| PG-12034 | 2nd Fix - Sprinkler fixing & Pressure testing | 2025-08-21 → 2025-08-22 (+1d) | 2025-09-02 → 2025-09-03 (+1d) |
| PG-12035 | Final Fix - Smoke & heat detectors, FHC , FAS Etc. | 2025-09-15 → 2025-09-16 (+1d) | 2025-09-26 → 2025-09-27 (+1d) |
| 1.3.1.3.3.16.3 | **Electrical Works** | 2025-07-04 → 2025-07-05 (+1d) | 2025-09-26 → 2025-09-27 (+1d) |
| PG-12036 | 1st Fix - GI wire pulling | 2025-07-04 → 2025-07-05 (+1d) | 2025-07-12 → 2025-07-14 (+2d) |
| PG-12037 | 2nd Fix - Wiring works | 2025-08-14 → 2025-08-16 (+2d) | 2025-09-01 → 2025-09-02 (+1d) |
| PG-12038 | Final Fix - Electrical Fixtures | 2025-09-20 → 2025-09-22 (+2d) | 2025-09-26 → 2025-09-27 (+1d) |
| 1.3.1.3.3.17 | **Floor 14** | 2025-07-17 → 2025-07-18 (+1d) | 2025-10-08 → 2025-10-09 (+1d) |
| 1.3.1.3.3.17.1 | **PHE Works** | 2025-07-17 → 2025-07-18 (+1d) | 2025-10-08 → 2025-10-09 (+1d) |
| PG-12039 | 1st Fix - Piping works | 2025-07-17 → 2025-07-18 (+1d) | 2025-07-31 → 2025-08-01 (+1d) |
| PG-12040 | 2nd Fix - diverter fixing & Pressure testing | 2025-07-26 → 2025-07-28 (+2d) | 2025-08-07 → 2025-08-08 (+1d) |
| PG-12041 | Final Fix - CP & Sanitary fixtures | 2025-09-26 → 2025-09-27 (+1d) | 2025-10-08 → 2025-10-09 (+1d) |
| 1.3.1.3.3.17.2 | **Fire Fighting Works** |  | 2025-10-08 → 2025-10-09 (+1d) |
| PG-12042 | 1st Fix - Piping and Shaft hydrant works |  | 2025-08-08 → 2025-08-09 (+1d) |
| PG-12043 | 2nd Fix - Sprinkler fixing & Pressure testing | 2025-09-03 → 2025-09-04 (+1d) | 2025-09-15 → 2025-09-16 (+1d) |
| PG-12044 | Final Fix - Smoke & heat detectors, FHC , FAS Etc. | 2025-09-26 → 2025-09-27 (+1d) | 2025-10-08 → 2025-10-09 (+1d) |
| 1.3.1.3.3.17.3 | **Electrical Works** | 2025-07-17 → 2025-07-18 (+1d) | 2025-10-08 → 2025-10-09 (+1d) |
| PG-12045 | 1st Fix - GI wire pulling | 2025-07-17 → 2025-07-18 (+1d) | 2025-07-25 → 2025-07-26 (+1d) |

| ID | Task | Start | Finish |
| --- | --- | --- | --- |
| PG-12046 | 2nd Fix - Wiring works | 2025-08-27 → 2025-08-28 (+1d) | 2025-09-13 → 2025-09-15 (+2d) |
| PG-12047 | Final Fix - Electrical Fixtures | 2025-10-01 → 2025-10-03 (+2d) | 2025-10-08 → 2025-10-09 (+1d) |
| 1.3.1.3.3.18 | **Floor 15** | 2025-07-30 → 2025-07-31 (+1d) |  |
| 1.3.1.3.3.18.1 | **PHE Works** | 2025-07-30 → 2025-07-31 (+1d) |  |
| PG-12048 | 1st Fix - Piping works | 2025-07-30 → 2025-07-31 (+1d) | 2025-08-13 → 2025-08-14 (+1d) |
| PG-12049 | 2nd Fix - diverter fixing & Pressure testing | 2025-08-08 → 2025-08-09 (+1d) | 2025-08-21 → 2025-08-22 (+1d) |
| PG-12051 | 1st Fix - Piping and Shaft hydrant works |  | 2025-08-22 → 2025-08-23 (+1d) |
| 1.3.1.3.3.18.3 | **Electrical Works** | 2025-07-30 → 2025-07-31 (+1d) |  |
| PG-12054 | 1st Fix - GI wire pulling | 2025-07-30 → 2025-07-31 (+1d) | 2025-08-07 → 2025-08-08 (+1d) |
| 1.3.1.3.3.19 | **Floor 16** | 2025-08-12 → 2025-08-13 (+1d) | 2025-11-04 → 2025-11-05 (+1d) |
| 1.3.1.3.3.19.1 | **PHE Works** | 2025-08-12 → 2025-08-13 (+1d) | 2025-11-04 → 2025-11-05 (+1d) |
| PG-12057 | 1st Fix - Piping works | 2025-08-12 → 2025-08-13 (+1d) | 2025-08-27 → 2025-08-28 (+1d) |
| PG-12058 | 2nd Fix - diverter fixing & Pressure testing | 2025-08-22 → 2025-08-23 (+1d) | 2025-09-03 → 2025-09-04 (+1d) |
| PG-12059 | Final Fix - CP & Sanitary fixtures | 2025-10-22 → 2025-10-23 (+1d) | 2025-11-04 → 2025-11-05 (+1d) |
| 1.3.1.3.3.19.2 | **Fire Fighting Works** |  | 2025-11-04 → 2025-11-05 (+1d) |
| PG-12060 | 1st Fix - Piping and Shaft hydrant works |  | 2025-09-04 → 2025-09-05 (+1d) |
| PG-12061 | 2nd Fix - Sprinkler fixing & Pressure testing | 2025-09-29 → 2025-09-30 (+1d) | 2025-10-11 → 2025-10-13 (+2d) |
| PG-12062 | Final Fix - Smoke & heat detectors, FHC , FAS Etc. | 2025-10-22 → 2025-10-23 (+1d) | 2025-11-04 → 2025-11-05 (+1d) |
| 1.3.1.3.3.19.3 | **Electrical Works** | 2025-08-12 → 2025-08-13 (+1d) | 2025-11-04 → 2025-11-05 (+1d) |
| PG-12063 | 1st Fix - GI wire pulling | 2025-08-12 → 2025-08-13 (+1d) | 2025-08-21 → 2025-08-22 (+1d) |
| PG-12064 | 2nd Fix - Wiring works | 2025-09-24 → 2025-09-25 (+1d) | 2025-10-10 → 2025-10-11 (+1d) |
| PG-12065 | Final Fix - Electrical Fixtures | 2025-10-28 → 2025-10-29 (+1d) | 2025-11-04 → 2025-11-05 (+1d) |
| 1.3.1.3.3.20 | **Floor 17** | 2025-08-26 → 2025-08-27 (+1d) | 2025-11-15 → 2025-11-17 (+2d) |
| 1.3.1.3.3.20.1 | **PHE Works** | 2025-08-26 → 2025-08-27 (+1d) | 2025-11-15 → 2025-11-17 (+2d) |
| PG-12066 | 1st Fix - Piping works | 2025-08-26 → 2025-08-27 (+1d) | 2025-09-09 → 2025-09-10 (+1d) |
| PG-12067 | 2nd Fix - diverter fixing & Pressure testing | 2025-09-04 → 2025-09-05 (+1d) | 2025-09-16 → 2025-09-17 (+1d) |
| PG-12068 | Final Fix - CP & Sanitary fixtures | 2025-11-04 → 2025-11-05 (+1d) | 2025-11-15 → 2025-11-17 (+2d) |
| 1.3.1.3.3.20.2 | **Fire Fighting Works** |  | 2025-11-15 → 2025-11-17 (+2d) |
| PG-12069 | 1st Fix - Piping and Shaft hydrant works |  | 2025-09-17 → 2025-09-18 (+1d) |
| PG-12070 | 2nd Fix - Sprinkler fixing & Pressure testing | 2025-10-13 → 2025-10-14 (+1d) | 2025-10-24 → 2025-10-25 (+1d) |
| PG-12071 | Final Fix - Smoke & heat detectors, FHC , FAS Etc. | 2025-11-04 → 2025-11-05 (+1d) | 2025-11-15 → 2025-11-17 (+2d) |
| 1.3.1.3.3.20.3 | **Electrical Works** | 2025-08-26 → 2025-08-27 (+1d) | 2025-11-15 → 2025-11-17 (+2d) |
| PG-12072 | 1st Fix - GI wire pulling | 2025-08-26 → 2025-08-27 (+1d) | 2025-09-03 → 2025-09-04 (+1d) |
| PG-12073 | 2nd Fix - Wiring works | 2025-10-07 → 2025-10-08 (+1d) | 2025-10-23 → 2025-10-24 (+1d) |
| PG-12074 | Final Fix - Electrical Fixtures | 2025-11-10 → 2025-11-11 (+1d) | 2025-11-15 → 2025-11-17 (+2d) |
| 1.3.1.3.3.21 | **Floor 18** | 2025-09-08 → 2025-09-09 (+1d) | 2025-11-28 → 2025-11-29 (+1d) |
| 1.3.1.3.3.21.1 | **PHE Works** | 2025-09-08 → 2025-09-09 (+1d) | 2025-11-28 → 2025-11-29 (+1d) |
| PG-12075 | 1st Fix - Piping works | 2025-09-08 → 2025-09-09 (+1d) | 2025-09-22 → 2025-09-23 (+1d) |
| PG-12076 | 2nd Fix - diverter fixing & Pressure testing | 2025-09-17 → 2025-09-18 (+1d) | 2025-09-29 → 2025-09-30 (+1d) |
| PG-12077 | Final Fix - CP & Sanitary fixtures | 2025-11-17 → 2025-11-18 (+1d) | 2025-11-28 → 2025-11-29 (+1d) |
| 1.3.1.3.3.21.2 | **Fire Fighting Works** |  | 2025-11-28 → 2025-11-29 (+1d) |
| PG-12078 | 1st Fix - Piping and Shaft hydrant works |  | 2025-09-30 → 2025-10-01 (+1d) |
| PG-12079 | 2nd Fix - Sprinkler fixing & Pressure testing | 2025-10-25 → 2025-10-27 (+2d) | 2025-11-07 → 2025-11-08 (+1d) |
| PG-12080 | Final Fix - Smoke & heat detectors, FHC , FAS Etc. | 2025-11-17 → 2025-11-18 (+1d) | 2025-11-28 → 2025-11-29 (+1d) |
| 1.3.1.3.3.21.3 | **Electrical Works** | 2025-09-08 → 2025-09-09 (+1d) | 2025-11-28 → 2025-11-29 (+1d) |
| PG-12081 | 1st Fix - GI wire pulling | 2025-09-08 → 2025-09-09 (+1d) | 2025-09-16 → 2025-09-17 (+1d) |
| PG-12082 | 2nd Fix - Wiring works | 2025-10-20 → 2025-10-21 (+1d) | 2025-11-06 → 2025-11-07 (+1d) |
| PG-12083 | Final Fix - Electrical Fixtures | 2025-11-22 → 2025-11-24 (+2d) | 2025-11-28 → 2025-11-29 (+1d) |
| 1.3.1.3.3.22 | **Floor 19** | 2025-09-20 → 2025-09-22 (+2d) | 2025-12-11 → 2025-12-12 (+1d) |
| 1.3.1.3.3.22.1 | **PHE Works** | 2025-09-20 → 2025-09-22 (+2d) | 2025-12-11 → 2025-12-12 (+1d) |
| PG-12084 | 1st Fix - Piping works | 2025-09-20 → 2025-09-22 (+2d) | 2025-10-06 → 2025-10-07 (+1d) |
| PG-12085 | 2nd Fix - diverter fixing & Pressure testing | 2025-09-30 → 2025-10-01 (+1d) | 2025-10-13 → 2025-10-14 (+1d) |
| PG-12086 | Final Fix - CP & Sanitary fixtures | 2025-11-29 → 2025-12-01 (+2d) | 2025-12-11 → 2025-12-12 (+1d) |
| 1.3.1.3.3.22.2 | **Fire Fighting Works** |  | 2025-12-11 → 2025-12-12 (+1d) |
| PG-12087 | 1st Fix - Piping and Shaft hydrant works |  | 2025-10-14 → 2025-10-15 (+1d) |
| PG-12088 | 2nd Fix - Sprinkler fixing & Pressure testing | 2025-11-08 → 2025-11-10 (+2d) | 2025-11-20 → 2025-11-21 (+1d) |
| PG-12089 | Final Fix - Smoke & heat detectors, FHC , FAS Etc. | 2025-11-29 → 2025-12-01 (+2d) | 2025-12-11 → 2025-12-12 (+1d) |
| 1.3.1.3.3.22.3 | **Electrical Works** | 2025-09-20 → 2025-09-22 (+2d) | 2025-12-11 → 2025-12-12 (+1d) |
| PG-12090 | 1st Fix - GI wire pulling | 2025-09-20 → 2025-09-22 (+2d) | 2025-09-29 → 2025-09-30 (+1d) |
| PG-12091 | 2nd Fix - Wiring works | 2025-11-03 → 2025-11-04 (+1d) | 2025-11-19 → 2025-11-20 (+1d) |
| PG-12092 | Final Fix - Electrical Fixtures | 2025-12-05 → 2025-12-06 (+1d) | 2025-12-11 → 2025-12-12 (+1d) |
| 1.3.1.3.3.23 | **Floor 20** | 2025-10-04 → 2025-10-06 (+2d) | 2025-12-25 → 2025-12-26 (+1d) |
| 1.3.1.3.3.23.1 | **PHE Works** | 2025-10-04 → 2025-10-06 (+2d) | 2025-12-25 → 2025-12-26 (+1d) |
| PG-12093 | 1st Fix - Piping works | 2025-10-04 → 2025-10-06 (+2d) | 2025-10-18 → 2025-10-20 (+2d) |
| PG-12094 | 2nd Fix - diverter fixing & Pressure testing | 2025-10-14 → 2025-10-15 (+1d) | 2025-10-25 → 2025-10-27 (+2d) |
| PG-12095 | Final Fix - CP & Sanitary fixtures | 2025-12-15 → 2025-12-16 (+1d) | 2025-12-25 → 2025-12-26 (+1d) |
| 1.3.1.3.3.23.2 | **Fire Fighting Works** | 2025-10-14 → 2025-10-15 (+1d) | 2025-12-25 → 2025-12-26 (+1d) |
| PG-12096 | 1st Fix - Piping and Shaft hydrant works | 2025-10-14 → 2025-10-15 (+1d) | 2025-10-28 → 2025-10-29 (+1d) |
| PG-12097 | 2nd Fix - Sprinkler fixing & Pressure testing | 2025-11-21 → 2025-11-22 (+1d) | 2025-12-03 → 2025-12-04 (+1d) |
| PG-12098 | Final Fix - Smoke & heat detectors, FHC , FAS Etc. | 2025-12-15 → 2025-12-16 (+1d) | 2025-12-25 → 2025-12-26 (+1d) |

| ID | Task | Start | Finish |
| --- | --- | --- | --- |
| 1.3.1.3.3.23.3 | **Electrical Works** | 2025-10-04 → 2025-10-06 (+2d) | 2025-12-25 → 2025-12-26 (+1d) |
| PG-12099 | 1st Fix - GI wire pulling | 2025-10-04 → 2025-10-06 (+2d) | 2025-10-14 → 2025-10-15 (+1d) |
| PG-12100 | 2nd Fix - Wiring works | 2025-11-15 → 2025-11-17 (+2d) | 2025-12-02 → 2025-12-03 (+1d) |
| PG-12101 | Final Fix - Electrical Fixtures | 2025-12-19 → 2025-12-20 (+1d) | 2025-12-25 → 2025-12-26 (+1d) |
| 1.3.1.3.3.24 | **Floor 21** | 2025-10-17 → 2025-10-18 (+1d) | 2026-01-07 → 2026-01-08 (+1d) |
| 1.3.1.3.3.24.1 | **PHE Works** | 2025-10-17 → 2025-10-18 (+1d) | 2026-01-07 → 2026-01-08 (+1d) |
| PG-12102 | 1st Fix - Piping works | 2025-10-17 → 2025-10-18 (+1d) | 2025-10-30 → 2025-10-31 (+1d) |
| PG-12103 | 2nd Fix - diverter fixing & Pressure testing | 2025-10-28 → 2025-10-29 (+1d) | 2025-11-07 → 2025-11-08 (+1d) |
| PG-12104 | Final Fix - CP & Sanitary fixtures |  | 2026-01-07 → 2026-01-08 (+1d) |
| 1.3.1.3.3.24.2 | **Fire Fighting Works** | 2025-10-27 → 2025-10-28 (+1d) | 2026-01-07 → 2026-01-08 (+1d) |
| PG-12105 | 1st Fix - Piping and Shaft hydrant works | 2025-10-27 → 2025-10-28 (+1d) | 2025-11-11 → 2025-11-12 (+1d) |
| PG-12106 | 2nd Fix - Sprinkler fixing & Pressure testing | 2025-12-04 → 2025-12-05 (+1d) | 2025-12-15 → 2025-12-16 (+1d) |
| PG-12107 | Final Fix - Smoke & heat detectors, FHC , FAS Etc. |  | 2026-01-07 → 2026-01-08 (+1d) |
| 1.3.1.3.3.24.3 | **Electrical Works** | 2025-10-17 → 2025-10-18 (+1d) | 2025-12-25 → 2025-12-26 (+1d) |
| PG-12108 | 1st Fix - GI wire pulling | 2025-10-17 → 2025-10-18 (+1d) | 2025-10-27 → 2025-10-28 (+1d) |
| PG-12109 | 2nd Fix - Wiring works | 2025-11-15 → 2025-11-17 (+2d) | 2025-12-02 → 2025-12-03 (+1d) |
| PG-12110 | Final Fix - Electrical Fixtures | 2025-12-19 → 2025-12-20 (+1d) | 2025-12-25 → 2025-12-26 (+1d) |
| 1.3.1.3.3.25 | **Floor 22** | 2025-10-30 → 2025-10-31 (+1d) | 2026-01-20 → 2026-01-21 (+1d) |
| 1.3.1.3.3.25.1 | **PHE Works** | 2025-10-30 → 2025-10-31 (+1d) | 2026-01-20 → 2026-01-21 (+1d) |
| PG-12111 | 1st Fix - Piping works | 2025-10-30 → 2025-10-31 (+1d) | 2025-11-13 → 2025-11-14 (+1d) |
| PG-12112 | 2nd Fix - diverter fixing & Pressure testing | 2025-11-11 → 2025-11-12 (+1d) | 2025-11-20 → 2025-11-21 (+1d) |
| PG-12113 | Final Fix - CP & Sanitary fixtures |  | 2026-01-20 → 2026-01-21 (+1d) |
| 1.3.1.3.3.25.2 | **Fire Fighting Works** | 2025-11-10 → 2025-11-11 (+1d) | 2026-01-20 → 2026-01-21 (+1d) |
| PG-12114 | 1st Fix - Piping and Shaft hydrant works | 2025-11-10 → 2025-11-11 (+1d) | 2025-11-24 → 2025-11-25 (+1d) |
| PG-12115 | 2nd Fix - Sprinkler fixing & Pressure testing | 2025-12-17 → 2025-12-18 (+1d) | 2025-12-27 → 2025-12-29 (+2d) |
| PG-12116 | Final Fix - Smoke & heat detectors, FHC , FAS Etc. |  | 2026-01-20 → 2026-01-21 (+1d) |
| 1.3.1.3.3.25.3 | **Electrical Works** | 2025-10-30 → 2025-10-31 (+1d) | 2026-01-20 → 2026-01-21 (+1d) |
| PG-12117 | 1st Fix - GI wire pulling | 2025-10-30 → 2025-10-31 (+1d) | 2025-11-10 → 2025-11-11 (+1d) |
| PG-12118 | 2nd Fix - Wiring works | 2025-12-11 → 2025-12-12 (+1d) | 2025-12-26 → 2025-12-27 (+1d) |
| PG-12119 | Final Fix - Electrical Fixtures |  | 2026-01-20 → 2026-01-21 (+1d) |
| 1.3.1.3.3.26 | **Floor 23** | 2025-11-13 → 2025-11-14 (+1d) | 2026-02-03 → 2026-02-04 (+1d) |
| 1.3.1.3.3.26.1 | **PHE Works** | 2025-11-13 → 2025-11-14 (+1d) | 2026-02-03 → 2026-02-04 (+1d) |
| PG-12120 | 1st Fix - Piping works | 2025-11-13 → 2025-11-14 (+1d) | 2025-11-25 → 2025-11-26 (+1d) |
| PG-12121 | 2nd Fix - diverter fixing & Pressure testing | 2025-11-21 → 2025-11-22 (+1d) | 2025-12-02 → 2025-12-03 (+1d) |
| PG-12122 | Final Fix - CP & Sanitary fixtures | 2026-01-21 → 2026-01-22 (+1d) | 2026-02-03 → 2026-02-04 (+1d) |
| 1.3.1.3.3.26.2 | **Fire Fighting Works** | 2025-11-21 → 2025-11-22 (+1d) | 2026-02-03 → 2026-02-04 (+1d) |
| PG-12123 | 1st Fix - Piping and Shaft hydrant works | 2025-11-21 → 2025-11-22 (+1d) | 2025-12-04 → 2025-12-05 (+1d) |
| PG-12124 | 2nd Fix - Sprinkler fixing & Pressure testing | 2025-12-27 → 2025-12-29 (+2d) | 2026-01-08 → 2026-01-09 (+1d) |
| PG-12125 | Final Fix - Smoke & heat detectors, FHC , FAS Etc. | 2026-01-21 → 2026-01-22 (+1d) | 2026-02-03 → 2026-02-04 (+1d) |
| 1.3.1.3.3.26.3 | **Electrical Works** | 2025-11-13 → 2025-11-14 (+1d) | 2026-02-03 → 2026-02-04 (+1d) |
| PG-12126 | 1st Fix - GI wire pulling | 2025-11-13 → 2025-11-14 (+1d) | 2025-11-20 → 2025-11-21 (+1d) |
| PG-12127 | 2nd Fix - Wiring works | 2025-12-22 → 2025-12-23 (+1d) | 2026-01-07 → 2026-01-08 (+1d) |
| PG-12128 | Final Fix - Electrical Fixtures | 2026-01-27 → 2026-01-28 (+1d) | 2026-02-03 → 2026-02-04 (+1d) |
| 1.3.1.3.3.27 | **Floor 24** | 2025-11-26 → 2025-11-27 (+1d) | 2026-02-16 → 2026-02-17 (+1d) |
| 1.3.1.3.3.27.1 | **PHE Works** | 2025-11-26 → 2025-11-27 (+1d) | 2026-02-16 → 2026-02-17 (+1d) |
| PG-12129 | 1st Fix - Piping works | 2025-11-26 → 2025-11-27 (+1d) | 2025-12-09 → 2025-12-10 (+1d) |
| PG-12130 | 2nd Fix - diverter fixing & Pressure testing | 2025-12-05 → 2025-12-06 (+1d) | 2025-12-16 → 2025-12-17 (+1d) |
| PG-12131 | Final Fix - CP & Sanitary fixtures | 2026-02-04 → 2026-02-05 (+1d) | 2026-02-16 → 2026-02-17 (+1d) |
| 1.3.1.3.3.27.2 | **Fire Fighting Works** | 2025-12-05 → 2025-12-06 (+1d) | 2026-02-16 → 2026-02-17 (+1d) |
| PG-12132 | 1st Fix - Piping and Shaft hydrant works | 2025-12-05 → 2025-12-06 (+1d) | 2025-12-18 → 2025-12-19 (+1d) |
| PG-12133 | 2nd Fix - Sprinkler fixing & Pressure testing | 2026-01-10 → 2026-01-12 (+2d) | 2026-01-22 → 2026-01-23 (+1d) |
| PG-12134 | Final Fix - Smoke & heat detectors, FHC , FAS Etc. | 2026-02-04 → 2026-02-05 (+1d) | 2026-02-16 → 2026-02-17 (+1d) |
| 1.3.1.3.3.27.3 | **Electrical Works** | 2025-11-26 → 2025-11-27 (+1d) | 2026-02-16 → 2026-02-17 (+1d) |
| PG-12135 | 1st Fix - GI wire pulling | 2025-11-26 → 2025-11-27 (+1d) | 2025-12-04 → 2025-12-05 (+1d) |
| PG-12136 | 2nd Fix - Wiring works | 2026-01-05 → 2026-01-06 (+1d) | 2026-01-21 → 2026-01-22 (+1d) |
| PG-12137 | Final Fix - Electrical Fixtures | 2026-02-09 → 2026-02-10 (+1d) | 2026-02-16 → 2026-02-17 (+1d) |
| 1.3.1.3.3.28 | **Floor 25** | 2025-12-17 → 2025-12-18 (+1d) | 2026-03-09 → 2026-03-10 (+1d) |
| 1.3.1.3.3.28.1 | **PHE Works** | 2025-12-17 → 2025-12-18 (+1d) | 2026-03-09 → 2026-03-10 (+1d) |
| PG-12138 | 1st Fix - Piping works | 2025-12-17 → 2025-12-18 (+1d) | 2025-12-30 → 2025-12-31 (+1d) |
| PG-12139 | 2nd Fix - diverter fixing & Pressure testing |  | 2026-01-06 → 2026-01-07 (+1d) |
| PG-12140 | Final Fix - CP & Sanitary fixtures | 2026-02-26 → 2026-02-27 (+1d) | 2026-03-09 → 2026-03-10 (+1d) |
| 1.3.1.3.3.28.2 | **Fire Fighting Works** |  | 2026-03-09 → 2026-03-10 (+1d) |
| PG-12141 | 1st Fix - Piping and Shaft hydrant works |  | 2026-01-09 → 2026-01-10 (+1d) |
| PG-12142 | 2nd Fix - Sprinkler fixing & Pressure testing | 2026-02-03 → 2026-02-04 (+1d) | 2026-02-13 → 2026-02-14 (+1d) |
| PG-12143 | Final Fix - Smoke & heat detectors, FHC , FAS Etc. | 2026-02-26 → 2026-02-27 (+1d) | 2026-03-09 → 2026-03-10 (+1d) |
| 1.3.1.3.3.28.3 | **Electrical Works** | 2025-12-17 → 2025-12-18 (+1d) | 2026-03-09 → 2026-03-10 (+1d) |
| PG-12144 | 1st Fix - GI wire pulling | 2025-12-17 → 2025-12-18 (+1d) | 2025-12-26 → 2025-12-27 (+1d) |
| PG-12145 | 2nd Fix - Wiring works | 2026-01-24 → 2026-01-27 (+3d) | 2026-02-12 → 2026-02-13 (+1d) |
| PG-12146 | Final Fix - Electrical Fixtures | 2026-03-03 → 2026-03-04 (+1d) | 2026-03-09 → 2026-03-10 (+1d) |
| 1.3.1.3.3.29 | **Floor 26** | 2026-01-07 → 2026-01-08 (+1d) | 2026-03-30 → 2026-03-31 (+1d) |

| ID | Task | Start | Finish | Complete | Total float |
| --- | --- | --- | --- | --- | --- |
| 1.3.1.3.3.29.1 | **PHE Works** | 2026-01-07 → 2026-01-08 (+1d) | 2026-03-30 → 2026-03-31 (+1d) |  |  |
| PG-12147 | 1st Fix - Piping works | 2026-01-07 → 2026-01-08 (+1d) | 2026-01-21 → 2026-01-22 (+1d) |  |  |
| PG-12148 | 2nd Fix - diverter fixing & Pressure testing | 2026-01-15 → 2026-01-16 (+1d) | 2026-01-29 → 2026-01-30 (+1d) |  |  |
| PG-12149 | Final Fix - CP & Sanitary fixtures | 2026-03-20 → 2026-03-21 (+1d) | 2026-03-30 → 2026-03-31 (+1d) |  |  |
| 1.3.1.3.3.29.2 | **Fire Fighting Works** | 2026-01-16 → 2026-01-17 (+1d) | 2026-03-30 → 2026-03-31 (+1d) |  |  |
| PG-12150 | 1st Fix - Piping and Shaft hydrant works | 2026-01-16 → 2026-01-17 (+1d) | 2026-01-31 → 2026-02-02 (+2d) |  |  |
| PG-12151 | 2nd Fix - Sprinkler fixing & Pressure testing | 2026-02-24 → 2026-02-25 (+1d) | 2026-03-07 → 2026-03-09 (+2d) |  |  |
| PG-12152 | Final Fix - Smoke & heat detectors, FHC , FAS Etc. | 2026-03-20 → 2026-03-21 (+1d) | 2026-03-30 → 2026-03-31 (+1d) |  |  |
| 1.3.1.3.3.29.3 | **Electrical Works** | 2026-01-07 → 2026-01-08 (+1d) | 2026-03-30 → 2026-03-31 (+1d) |  |  |
| PG-12153 | 1st Fix - GI wire pulling | 2026-01-07 → 2026-01-08 (+1d) | 2026-01-16 → 2026-01-17 (+1d) |  |  |
| PG-12154 | 2nd Fix - Wiring works | 2026-02-17 → 2026-02-18 (+1d) | 2026-03-06 → 2026-03-07 (+1d) |  |  |
| PG-12155 | Final Fix - Electrical Fixtures | 2026-03-24 → 2026-03-25 (+1d) | 2026-03-30 → 2026-03-31 (+1d) |  |  |
| 1.3.1.3.3.30 | **Floor 27** | 2026-01-30 → 2026-01-31 (+1d) | 2026-04-21 → 2026-04-22 (+1d) |  |  |
| 1.3.1.3.3.30.1 | **PHE Works** | 2026-01-30 → 2026-01-31 (+1d) | 2026-04-21 → 2026-04-22 (+1d) |  |  |
| PG-12156 | 1st Fix - Piping works | 2026-01-30 → 2026-01-31 (+1d) | 2026-02-13 → 2026-02-14 (+1d) |  |  |
| PG-12157 | 2nd Fix - diverter fixing & Pressure testing | 2026-02-09 → 2026-02-10 (+1d) | 2026-02-20 → 2026-02-21 (+1d) |  |  |
| PG-12158 | Final Fix - CP & Sanitary fixtures | 2026-04-09 → 2026-04-10 (+1d) | 2026-04-21 → 2026-04-22 (+1d) |  |  |
| 1.3.1.3.3.30.2 | **Fire Fighting Works** | 2026-02-09 → 2026-02-10 (+1d) | 2026-04-21 → 2026-04-22 (+1d) |  |  |
| PG-12159 | 1st Fix - Piping and Shaft hydrant works | 2026-02-09 → 2026-02-10 (+1d) | 2026-02-23 → 2026-02-24 (+1d) |  |  |
| PG-12160 | 2nd Fix - Sprinkler fixing & Pressure testing | 2026-03-19 → 2026-03-20 (+1d) | 2026-03-30 → 2026-03-31 (+1d) |  |  |
| PG-12161 | Final Fix - Smoke & heat detectors, FHC , FAS Etc. | 2026-04-09 → 2026-04-10 (+1d) | 2026-04-21 → 2026-04-22 (+1d) |  |  |
| 1.3.1.3.3.30.3 | **Electrical Works** | 2026-01-30 → 2026-01-31 (+1d) | 2026-04-21 → 2026-04-22 (+1d) |  |  |
| PG-12162 | 1st Fix - GI wire pulling | 2026-01-30 → 2026-01-31 (+1d) | 2026-02-09 → 2026-02-10 (+1d) |  |  |
| PG-12163 | 2nd Fix - Wiring works | 2026-03-12 → 2026-03-13 (+1d) | 2026-03-28 → 2026-03-30 (+2d) |  |  |
| PG-12164 | Final Fix - Electrical Fixtures | 2026-04-15 → 2026-04-16 (+1d) | 2026-04-21 → 2026-04-22 (+1d) |  |  |
| 1.3.1.3.3.31 | **Floor 28** | 2026-02-21 → 2026-02-23 (+2d) | 2026-05-13 → 2026-05-14 (+1d) |  |  |
| 1.3.1.3.3.31.1 | **PHE Works** | 2026-02-21 → 2026-02-23 (+2d) | 2026-05-13 → 2026-05-14 (+1d) |  |  |
| PG-12165 | 1st Fix - Piping works | 2026-02-21 → 2026-02-23 (+2d) | 2026-03-06 → 2026-03-07 (+1d) |  |  |
| PG-12166 | 2nd Fix - diverter fixing & Pressure testing | 2026-03-03 → 2026-03-04 (+1d) | 2026-03-13 → 2026-03-14 (+1d) |  |  |
| PG-12167 | Final Fix - CP & Sanitary fixtures | 2026-05-02 → 2026-05-04 (+2d) | 2026-05-13 → 2026-05-14 (+1d) |  |  |
| 1.3.1.3.3.31.2 | **Fire Fighting Works** | 2026-03-03 → 2026-03-04 (+1d) | 2026-05-13 → 2026-05-14 (+1d) |  |  |
| PG-12168 | 1st Fix - Piping and Shaft hydrant works | 2026-03-03 → 2026-03-04 (+1d) | 2026-03-16 → 2026-03-17 (+1d) |  |  |
| PG-12169 | 2nd Fix - Sprinkler fixing & Pressure testing | 2026-04-09 → 2026-04-10 (+1d) | 2026-04-20 → 2026-04-21 (+1d) |  |  |
| PG-12170 | Final Fix - Smoke & heat detectors, FHC , FAS Etc. | 2026-05-02 → 2026-05-04 (+2d) | 2026-05-13 → 2026-05-14 (+1d) |  |  |
| 1.3.1.3.3.31.3 | **Electrical Works** | 2026-02-21 → 2026-02-23 (+2d) | 2026-05-13 → 2026-05-14 (+1d) |  |  |
| PG-12171 | 1st Fix - GI wire pulling | 2026-02-21 → 2026-02-23 (+2d) | 2026-03-02 → 2026-03-03 (+1d) |  |  |
| PG-12172 | 2nd Fix - Wiring works | 2026-04-02 → 2026-04-03 (+1d) | 2026-04-18 → 2026-04-20 (+2d) |  |  |
| PG-12173 | Final Fix - Electrical Fixtures | 2026-05-07 → 2026-05-08 (+1d) | 2026-05-13 → 2026-05-14 (+1d) |  |  |
| 1.3.1.3.3.32 | **Floor 29** | 2026-03-14 → 2026-03-16 (+2d) | 2026-06-04 → 2026-06-05 (+1d) |  |  |
| 1.3.1.3.3.32.1 | **PHE Works** | 2026-03-14 → 2026-03-16 (+2d) | 2026-06-04 → 2026-06-05 (+1d) |  |  |
| PG-12174 | 1st Fix - Piping works | 2026-03-14 → 2026-03-16 (+2d) | 2026-03-28 → 2026-03-30 (+2d) |  |  |
| PG-12175 | 2nd Fix - diverter fixing & Pressure testing | 2026-03-24 → 2026-03-25 (+1d) | 2026-04-04 → 2026-04-06 (+2d) |  |  |
| PG-12176 | Final Fix - CP & Sanitary fixtures | 2026-05-23 → 2026-05-25 (+2d) | 2026-06-04 → 2026-06-05 (+1d) |  |  |
| 1.3.1.3.3.32.2 | **Fire Fighting Works** |  | 2026-06-04 → 2026-06-05 (+1d) |  |  |
| PG-12177 | 1st Fix - Piping and Shaft hydrant works |  | 2026-04-07 → 2026-04-08 (+1d) |  |  |
| PG-12178 | 2nd Fix - Sprinkler fixing & Pressure testing |  | 2026-05-12 → 2026-05-13 (+1d) |  |  |
| PG-12179 | Final Fix - Smoke & heat detectors, FHC , FAS Etc. | 2026-05-23 → 2026-05-25 (+2d) | 2026-06-04 → 2026-06-05 (+1d) |  |  |
| 1.3.1.3.3.32.3 | **Electrical Works** | 2026-03-14 → 2026-03-16 (+2d) | 2026-06-04 → 2026-06-05 (+1d) |  |  |
| PG-12180 | 1st Fix - GI wire pulling | 2026-03-14 → 2026-03-16 (+2d) | 2026-03-24 → 2026-03-25 (+1d) |  |  |
| PG-12181 | 2nd Fix - Wiring works |  | 2026-05-11 → 2026-05-12 (+1d) |  |  |
| PG-12182 | Final Fix - Electrical Fixtures | 2026-05-28 → 2026-05-29 (+1d) | 2026-06-04 → 2026-06-05 (+1d) |  |  |
| 1.3.1.3.4 | **Civil Finishes - Units** |  | 2026-05-28 → 2026-05-29 (+1d) |  |  |
| PG-12193 | Car park marking and column corner beading fixing |  |  | 38% → 100% | 463.98d → 464.91d |
| 1.3.1.3.4.5 | **Floor 2** |  | 2025-04-09 → 2025-04-10 (+1d) |  |  |
| 1.3.1.3.4.5.1 | **Ceiling Finishing works - Civil** |  | 2025-04-09 → 2025-04-10 (+1d) |  |  |
| PG-12226 | Final Coat Painting |  | 2025-04-09 → 2025-04-10 A (+1d) | 74% → 100% | 448.43d → none |
| 1.3.1.3.4.5.2 | **Wall Finishing works - Civil** |  | 2025-04-07 → 2025-04-08 (+1d) |  |  |
| PG-12231 | Final Coat Painting |  | 2025-04-07 → 2025-04-08 A (+1d) | 83% → 100% | 415.24d → none |
| 1.3.1.3.4.6 | **Floor 3** |  | 2025-04-25 → 2025-04-29 (+4d) |  |  |
| 1.3.1.3.4.6.1 | **Ceiling Finishing works - Civil** |  | 2025-04-25 → 2025-04-28 (+3d) |  |  |
| PG-12240 | Final Coat Painting |  | 2025-04-25 → 2025-04-28 (+3d) | 3% → 25% | 435.25d → 434.44d |
| 1.3.1.3.4.6.2 | **Wall Finishing works - Civil** |  | 2025-04-25 → 2025-04-29 (+4d) |  |  |
| PG-12245 | Final Coat Painting |  | 2025-04-25 → 2025-04-29 (+4d) | 3% → 18% | 399.58d → 397.37d |
| PG-12253 | Toilet False ceiling |  | 2025-04-05 A | 85% → 100% | 413.67d → none |
| PG-12252 | Painting Works - Putty, Primer and 1st | 2025-04-11 A | 2025-04-18 → 2025-04-17 (-1d) | 0% → 3% | 423.5d → 424.77d |
| PG-12254 | Final Coat Painting | 2025-04-18 → 2025-04-17 (-1d) |  |  | 423.5d → 424.77d |
| PG-12256 | UPVC Windows & Sliding doors | 2025-04-05 A | 2025-04-11 A | 0% → 100% | 386.83d → none |
| PG-12258 | Painting Works - Putty, Primer and 1st | 2025-04-11 A | 2025-04-18 → 2025-04-17 (-1d) | 0% → 3% | 386.83d → 388.11d |
| PG-12259 | Final Coat Painting | 2025-04-18 → 2025-04-17 (-1d) |  |  | 386.83d → 388.11d |
| 1.3.1.3.4.7.3 | **Floor Finishing Works - Civil** |  | 2025-04-18 → 2025-04-17 (-1d) |  |  |

| ID | Task | Start | Finish | Complete | Total float |
| --- | --- | --- | --- | --- | --- |
| PG-12262 | Floor Tiling - Dry area |  | 2025-04-05 A | 83% → 100% | 386.83d → none |
| PG-12263 | Wooden doors | 2025-04-12 → 2025-04-11 (-1d) | 2025-04-18 → 2025-04-17 (-1d) |  | 386.83d → 388.11d |
| PG-12265 | Cornice fixing | 2025-04-05 A | 2025-04-10 → 2025-04-11 A (+1d) | 0% → 100% | 424.67d → none |
| 1.3.1.3.4.9 | **Floor 6** |  | 2025-06-10 → 2025-06-11 (+1d) |  |  |
| 1.3.1.3.4.9.1 | **Ceiling Finishing works - Civil** | 2025-04-04 → 2025-04-05 (+1d) | 2025-06-10 → 2025-06-11 (+1d) |  |  |
| PG-12278 | Gypsum Plastering | 2025-04-04 → 2025-04-05 A (+1d) | 2025-04-11 → 2025-04-12 (+1d) | 0% → 76% | 409.64d → 409.96d |
| PG-12279 | Cornice fixing | 2025-04-21 → 2025-04-23 (+2d) | 2025-04-25 → 2025-04-28 (+3d) |  | 409.64d → 408.71d |
| PG-12281 | Toilet False ceiling | 2025-04-29 → 2025-05-01 (+2d) | 2025-05-03 → 2025-05-06 (+3d) |  | 389.93d → 389.57d |
| PG-12280 | Painting Works - Putty, Primer and 1st | 2025-05-09 → 2025-05-12 (+3d) | 2025-05-16 → 2025-05-19 (+3d) |  | 397.6d → 397.24d |
| PG-12282 | Final Coat Painting | 2025-05-16 → 2025-05-19 (+3d) | 2025-06-10 → 2025-06-11 (+1d) |  | 397.6d → 397.24d |
| 1.3.1.3.4.9.2 | **Wall Finishing works - Civil** |  | 2025-06-09 → 2025-06-10 (+1d) |  |  |
| PG-12285 | Dadoing - Wet area | 2025-04-16 → 2025-04-18 (+2d) | 2025-04-22 → 2025-04-24 (+2d) |  | 362.93d → 362.57d |
| PG-12284 | UPVC Windows & Sliding doors | 2025-05-03 → 2025-05-06 (+3d) | 2025-05-09 → 2025-05-12 (+3d) |  | 362.93d → 362.57d |
| PG-12286 | Painting Works - Putty, Primer and 1st | 2025-05-09 → 2025-05-12 (+3d) | 2025-05-16 → 2025-05-19 (+3d) |  | 362.93d → 362.57d |
| PG-12287 | Final Coat Painting | 2025-05-16 → 2025-05-19 (+3d) | 2025-06-09 → 2025-06-10 (+1d) |  | 362.93d → 362.57d |
| 1.3.1.3.4.9.3 | **Floor Finishing Works - Civil** |  | 2025-05-16 → 2025-05-19 (+3d) |  |  |
| PG-12289 | Floor Tiling - Wet area | 2025-04-22 → 2025-04-24 (+2d) | 2025-04-28 → 2025-04-30 (+2d) |  | 362.93d → 362.57d |
| PG-12290 | Floor Tiling - Dry area | 2025-04-28 → 2025-04-30 (+2d) | 2025-05-03 → 2025-05-06 (+3d) |  | 362.93d → 362.57d |
| PG-12291 | Wooden doors | 2025-05-10 → 2025-05-13 (+3d) | 2025-05-16 → 2025-05-19 (+3d) |  | 362.93d → 362.57d |
| 1.3.1.3.4.10 | **Floor 7** | 2025-04-11 → 2025-04-12 (+1d) | 2025-06-24 → 2025-06-25 (+1d) |  |  |
| 1.3.1.3.4.10.1 | **Ceiling Finishing works - Civil** |  | 2025-06-24 → 2025-06-25 (+1d) |  |  |
| PG-12292 | Gypsum Plastering |  | 2025-04-26 → 2025-04-28 (+2d) |  |  |
| PG-12293 | Cornice fixing |  | 2025-05-10 → 2025-05-12 (+2d) |  |  |
| PG-12295 | Toilet False ceiling | 2025-05-15 → 2025-05-16 (+1d) | 2025-05-20 → 2025-05-21 (+1d) |  |  |
| PG-12294 | Painting Works - Putty, Primer and 1st | 2025-05-26 → 2025-05-27 (+1d) | 2025-06-02 → 2025-06-03 (+1d) |  |  |
| PG-12296 | Final Coat Painting | 2025-06-02 → 2025-06-03 (+1d) | 2025-06-24 → 2025-06-25 (+1d) |  |  |
| 1.3.1.3.4.10.2 | **Wall Finishing works - Civil** | 2025-04-11 → 2025-04-12 (+1d) | 2025-06-23 → 2025-06-24 (+1d) |  |  |
| PG-12297 | Balcony Railing Fixing works | 2025-04-11 → 2025-04-12 (+1d) | 2025-04-16 → 2025-04-17 (+1d) |  |  |
| PG-12299 | Dadoing - Wet area | 2025-05-02 → 2025-05-03 (+1d) | 2025-05-08 → 2025-05-09 (+1d) |  |  |
| PG-12298 | UPVC Windows & Sliding doors | 2025-05-20 → 2025-05-21 (+1d) | 2025-05-26 → 2025-05-27 (+1d) |  |  |
| PG-12300 | Painting Works - Putty, Primer and 1st | 2025-05-26 → 2025-05-27 (+1d) | 2025-06-02 → 2025-06-03 (+1d) |  |  |
| PG-12301 | Final Coat Painting | 2025-06-02 → 2025-06-03 (+1d) | 2025-06-23 → 2025-06-24 (+1d) |  |  |
| 1.3.1.3.4.10.3 | **Floor Finishing Works - Civil** | 2025-04-11 → 2025-04-12 (+1d) | 2025-06-02 → 2025-06-03 (+1d) |  |  |
| PG-12302 | Waterproofing for sunken areas | 2025-04-11 → 2025-04-12 (+1d) | 2025-04-15 → 2025-04-16 (+1d) |  |  |
| PG-12303 | Floor Tiling - Wet area | 2025-05-08 → 2025-05-09 (+1d) | 2025-05-14 → 2025-05-15 (+1d) |  |  |
| PG-12304 | Floor Tiling - Dry area | 2025-05-14 → 2025-05-15 (+1d) | 2025-05-20 → 2025-05-21 (+1d) |  |  |
| PG-12305 | Wooden doors | 2025-05-27 → 2025-05-28 (+1d) | 2025-06-02 → 2025-06-03 (+1d) |  |  |
| 1.3.1.3.4.11 | **Floor 8** | 2025-04-26 → 2025-04-28 (+2d) | 2025-07-10 → 2025-07-11 (+1d) |  |  |
| 1.3.1.3.4.11.1 | **Ceiling Finishing works - Civil** |  | 2025-07-10 → 2025-07-11 (+1d) |  |  |
| PG-12306 | Gypsum Plastering |  | 2025-05-12 → 2025-05-13 (+1d) |  |  |
| PG-12307 | Cornice fixing |  | 2025-05-26 → 2025-05-27 (+1d) |  |  |
| PG-12309 | Toilet False ceiling | 2025-05-30 → 2025-05-31 (+1d) | 2025-06-04 → 2025-06-05 (+1d) |  |  |
| PG-12308 | Painting Works - Putty, Primer and 1st | 2025-06-10 → 2025-06-11 (+1d) | 2025-06-17 → 2025-06-18 (+1d) |  |  |
| PG-12310 | Final Coat Painting | 2025-06-17 → 2025-06-18 (+1d) | 2025-07-10 → 2025-07-11 (+1d) |  |  |
| 1.3.1.3.4.11.2 | **Wall Finishing works - Civil** | 2025-04-26 → 2025-04-28 (+2d) | 2025-07-09 → 2025-07-10 (+1d) |  |  |
| PG-12311 | Balcony Railing Fixing works | 2025-04-26 → 2025-04-28 (+2d) | 2025-05-01 → 2025-05-02 (+1d) |  |  |
| PG-12313 | Dadoing - Wet area | 2025-05-17 → 2025-05-19 (+2d) | 2025-05-23 → 2025-05-24 (+1d) |  |  |
| PG-12312 | UPVC Windows & Sliding doors | 2025-06-04 → 2025-06-05 (+1d) | 2025-06-10 → 2025-06-11 (+1d) |  |  |
| PG-12314 | Painting Works - Putty, Primer and 1st | 2025-06-10 → 2025-06-11 (+1d) | 2025-06-17 → 2025-06-18 (+1d) |  |  |
| PG-12315 | Final Coat Painting | 2025-06-17 → 2025-06-18 (+1d) | 2025-07-09 → 2025-07-10 (+1d) |  |  |
| 1.3.1.3.4.11.3 | **Floor Finishing Works - Civil** | 2025-04-26 → 2025-04-28 (+2d) | 2025-06-17 → 2025-06-18 (+1d) |  |  |
| PG-12316 | Waterproofing for sunken areas | 2025-04-26 → 2025-04-28 (+2d) | 2025-04-30 → 2025-05-01 (+1d) |  |  |
| PG-12317 | Floor Tiling - Wet area | 2025-05-23 → 2025-05-24 (+1d) | 2025-05-29 → 2025-05-30 (+1d) |  |  |
| PG-12318 | Floor Tiling - Dry area | 2025-05-29 → 2025-05-30 (+1d) | 2025-06-04 → 2025-06-05 (+1d) |  |  |
| PG-12319 | Wooden doors | 2025-06-11 → 2025-06-12 (+1d) | 2025-06-17 → 2025-06-18 (+1d) |  |  |
| 1.3.1.3.4.12 | **Floor 9** | 2025-05-12 → 2025-05-13 (+1d) | 2025-07-23 → 2025-07-24 (+1d) |  |  |
| 1.3.1.3.4.12.1 | **Ceiling Finishing works - Civil** | 2025-05-21 → 2025-05-22 (+1d) | 2025-07-23 → 2025-07-24 (+1d) |  |  |
| PG-12320 | Gypsum Plastering | 2025-05-21 → 2025-05-22 (+1d) | 2025-05-28 → 2025-05-29 (+1d) |  |  |
| PG-12321 | Cornice fixing | 2025-06-06 → 2025-06-07 (+1d) | 2025-06-11 → 2025-06-12 (+1d) |  |  |
| PG-12323 | Toilet False ceiling | 2025-06-14 → 2025-06-16 (+2d) | 2025-06-19 → 2025-06-20 (+1d) |  |  |
| PG-12322 | Painting Works - Putty, Primer and 1st | 2025-06-25 → 2025-06-26 (+1d) | 2025-07-02 → 2025-07-03 (+1d) |  |  |
| PG-12324 | Final Coat Painting | 2025-07-02 → 2025-07-03 (+1d) | 2025-07-23 → 2025-07-24 (+1d) |  |  |
| 1.3.1.3.4.12.2 | **Wall Finishing works - Civil** | 2025-05-12 → 2025-05-13 (+1d) | 2025-07-22 → 2025-07-23 (+1d) |  |  |
| PG-12325 | Balcony Railing Fixing works | 2025-05-12 → 2025-05-13 (+1d) | 2025-05-16 → 2025-05-17 (+1d) |  |  |
| PG-12327 | Dadoing - Wet area | 2025-06-02 → 2025-06-03 (+1d) | 2025-06-07 → 2025-06-09 (+2d) |  |  |
| PG-12326 | UPVC Windows & Sliding doors | 2025-06-19 → 2025-06-20 (+1d) | 2025-06-25 → 2025-06-26 (+1d) |  |  |
| PG-12328 | Painting Works - Putty, Primer and 1st | 2025-06-25 → 2025-06-26 (+1d) | 2025-07-02 → 2025-07-03 (+1d) |  |  |
| PG-12329 | Final Coat Painting | 2025-07-02 → 2025-07-03 (+1d) | 2025-07-22 → 2025-07-23 (+1d) |  |  |
| 1.3.1.3.4.12.3 | **Floor Finishing Works - Civil** | 2025-05-12 → 2025-05-13 (+1d) | 2025-07-02 → 2025-07-03 (+1d) |  |  |
| PG-12330 | Waterproofing for sunken areas | 2025-05-12 → 2025-05-13 (+1d) | 2025-05-15 → 2025-05-16 (+1d) |  |  |

| ID | Task | Start | Finish |
| --- | --- | --- | --- |
| PG-12331 | Floor Tiling - Wet area | 2025-06-07 → 2025-06-09 (+2d) | 2025-06-13 → 2025-06-14 (+1d) |
| PG-12332 | Floor Tiling - Dry area | 2025-06-13 → 2025-06-14 (+1d) | 2025-06-19 → 2025-06-20 (+1d) |
| PG-12333 | Wooden doors | 2025-06-26 → 2025-06-27 (+1d) | 2025-07-02 → 2025-07-03 (+1d) |
| 1.3.1.3.4.13 | **Floor 10** | 2025-05-27 → 2025-05-28 (+1d) | 2025-08-08 → 2025-08-09 (+1d) |
| 1.3.1.3.4.13.1 | **Ceiling Finishing works - Civil** |  | 2025-08-08 → 2025-08-09 (+1d) |
| PG-12334 | Gypsum Plastering |  | 2025-06-11 → 2025-06-12 (+1d) |
| PG-12335 | Cornice fixing |  | 2025-06-25 → 2025-06-26 (+1d) |
| PG-12337 | Toilet False ceiling | 2025-06-30 → 2025-07-01 (+1d) | 2025-07-04 → 2025-07-05 (+1d) |
| PG-12336 | Painting Works - Putty, Primer and 1st | 2025-07-10 → 2025-07-11 (+1d) | 2025-07-17 → 2025-07-18 (+1d) |
| PG-12338 | Final Coat Painting | 2025-07-17 → 2025-07-18 (+1d) | 2025-08-08 → 2025-08-09 (+1d) |
| 1.3.1.3.4.13.2 | **Wall Finishing works - Civil** | 2025-05-27 → 2025-05-28 (+1d) | 2025-08-07 → 2025-08-08 (+1d) |
| PG-12339 | Balcony Railing Fixing works | 2025-05-27 → 2025-05-28 (+1d) | 2025-05-31 → 2025-06-02 (+2d) |
| PG-12341 | Dadoing - Wet area | 2025-06-17 → 2025-06-18 (+1d) | 2025-06-23 → 2025-06-24 (+1d) |
| PG-12340 | UPVC Windows & Sliding doors | 2025-07-04 → 2025-07-05 (+1d) | 2025-07-10 → 2025-07-11 (+1d) |
| PG-12342 | Painting Works - Putty, Primer and 1st | 2025-07-10 → 2025-07-11 (+1d) | 2025-07-17 → 2025-07-18 (+1d) |
| PG-12343 | Final Coat Painting | 2025-07-17 → 2025-07-18 (+1d) | 2025-08-07 → 2025-08-08 (+1d) |
| 1.3.1.3.4.13.3 | **Floor Finishing Works - Civil** | 2025-05-27 → 2025-05-28 (+1d) | 2025-07-17 → 2025-07-18 (+1d) |
| PG-12344 | Waterproofing for sunken areas | 2025-05-27 → 2025-05-28 (+1d) | 2025-05-30 → 2025-05-31 (+1d) |
| PG-12345 | Floor Tiling - Wet area | 2025-06-23 → 2025-06-24 (+1d) | 2025-06-28 → 2025-06-30 (+2d) |
| PG-12346 | Floor Tiling - Dry area | 2025-06-28 → 2025-06-30 (+2d) | 2025-07-04 → 2025-07-05 (+1d) |
| PG-12347 | Wooden doors | 2025-07-11 → 2025-07-12 (+1d) | 2025-07-17 → 2025-07-18 (+1d) |
| 1.3.1.3.4.14 | **Floor 11** | 2025-06-09 → 2025-06-10 (+1d) | 2025-08-22 → 2025-08-23 (+1d) |
| 1.3.1.3.4.14.1 | **Ceiling Finishing works - Civil** | 2025-06-18 → 2025-06-19 (+1d) | 2025-08-22 → 2025-08-23 (+1d) |
| PG-12348 | Gypsum Plastering | 2025-06-18 → 2025-06-19 (+1d) | 2025-06-25 → 2025-06-26 (+1d) |
| PG-12349 | Cornice fixing | 2025-07-04 → 2025-07-05 (+1d) | 2025-07-09 → 2025-07-10 (+1d) |
| PG-12351 | Toilet False ceiling | 2025-07-12 → 2025-07-14 (+2d) | 2025-07-17 → 2025-07-18 (+1d) |
| PG-12350 | Painting Works - Putty, Primer and 1st | 2025-07-23 → 2025-07-24 (+1d) | 2025-07-30 → 2025-07-31 (+1d) |
| PG-12352 | Final Coat Painting | 2025-07-30 → 2025-07-31 (+1d) | 2025-08-22 → 2025-08-23 (+1d) |
| 1.3.1.3.4.14.2 | **Wall Finishing works - Civil** | 2025-06-09 → 2025-06-10 (+1d) | 2025-08-21 → 2025-08-22 (+1d) |
| PG-12353 | Balcony Railing Fixing works | 2025-06-09 → 2025-06-10 (+1d) | 2025-06-13 → 2025-06-14 (+1d) |
| PG-12355 | Dadoing - Wet area | 2025-06-30 → 2025-07-01 (+1d) | 2025-07-05 → 2025-07-07 (+2d) |
| PG-12354 | UPVC Windows & Sliding doors | 2025-07-17 → 2025-07-18 (+1d) | 2025-07-23 → 2025-07-24 (+1d) |
| PG-12356 | Painting Works - Putty, Primer and 1st | 2025-07-23 → 2025-07-24 (+1d) | 2025-07-30 → 2025-07-31 (+1d) |
| PG-12357 | Final Coat Painting | 2025-07-30 → 2025-07-31 (+1d) | 2025-08-21 → 2025-08-22 (+1d) |
| 1.3.1.3.4.14.3 | **Floor Finishing Works - Civil** | 2025-06-09 → 2025-06-10 (+1d) | 2025-07-30 → 2025-07-31 (+1d) |
| PG-12358 | Waterproofing for sunken areas | 2025-06-09 → 2025-06-10 (+1d) | 2025-06-12 → 2025-06-13 (+1d) |
| PG-12359 | Floor Tiling - Wet area | 2025-07-05 → 2025-07-07 (+2d) | 2025-07-11 → 2025-07-12 (+1d) |
| PG-12360 | Floor Tiling - Dry area | 2025-07-11 → 2025-07-12 (+1d) | 2025-07-17 → 2025-07-18 (+1d) |
| PG-12361 | Wooden doors | 2025-07-24 → 2025-07-25 (+1d) | 2025-07-30 → 2025-07-31 (+1d) |
| 1.3.1.3.4.15 | **Floor 12** | 2025-06-21 → 2025-06-23 (+2d) | 2025-09-06 → 2025-09-08 (+2d) |
| 1.3.1.3.4.15.1 | **Ceiling Finishing works - Civil** |  | 2025-09-06 → 2025-09-08 (+2d) |
| PG-12362 | Gypsum Plastering |  | 2025-07-07 → 2025-07-08 (+1d) |
| PG-12363 | Cornice fixing |  | 2025-07-21 → 2025-07-22 (+1d) |
| PG-12365 | Toilet False ceiling | 2025-07-25 → 2025-07-26 (+1d) | 2025-07-30 → 2025-07-31 (+1d) |
| PG-12364 | Painting Works - Putty, Primer and 1st | 2025-08-05 → 2025-08-06 (+1d) | 2025-08-12 → 2025-08-13 (+1d) |
| PG-12366 | Final Coat Painting | 2025-08-12 → 2025-08-13 (+1d) | 2025-09-06 → 2025-09-08 (+2d) |
| 1.3.1.3.4.15.2 | **Wall Finishing works - Civil** | 2025-06-21 → 2025-06-23 (+2d) | 2025-09-06 → 2025-09-08 (+2d) |
| PG-12367 | Balcony Railing Fixing works | 2025-06-21 → 2025-06-23 (+2d) | 2025-06-26 → 2025-06-27 (+1d) |
| PG-12369 | Dadoing - Wet area | 2025-07-12 → 2025-07-14 (+2d) | 2025-07-18 → 2025-07-19 (+1d) |
| PG-12368 | UPVC Windows & Sliding doors | 2025-07-30 → 2025-07-31 (+1d) | 2025-08-05 → 2025-08-06 (+1d) |
| PG-12370 | Painting Works - Putty, Primer and 1st | 2025-08-05 → 2025-08-06 (+1d) | 2025-08-12 → 2025-08-13 (+1d) |
| PG-12371 | Final Coat Painting | 2025-08-12 → 2025-08-13 (+1d) | 2025-09-06 → 2025-09-08 (+2d) |
| 1.3.1.3.4.15.3 | **Floor Finishing Works - Civil** | 2025-06-21 → 2025-06-23 (+2d) | 2025-08-12 → 2025-08-13 (+1d) |
| PG-12372 | Waterproofing for sunken areas | 2025-06-21 → 2025-06-23 (+2d) | 2025-06-25 → 2025-06-26 (+1d) |
| PG-12373 | Floor Tiling - Wet area | 2025-07-18 → 2025-07-19 (+1d) | 2025-07-24 → 2025-07-25 (+1d) |
| PG-12374 | Floor Tiling - Dry area | 2025-07-24 → 2025-07-25 (+1d) | 2025-07-30 → 2025-07-31 (+1d) |
| PG-12375 | Wooden doors | 2025-08-06 → 2025-08-07 (+1d) | 2025-08-12 → 2025-08-13 (+1d) |
| 1.3.1.3.4.16 | **Floor 13** | 2025-07-04 → 2025-07-05 (+1d) | 2025-09-19 → 2025-09-20 (+1d) |
| 1.3.1.3.4.16.1 | **Ceiling Finishing works - Civil** |  | 2025-09-19 → 2025-09-20 (+1d) |
| PG-12376 | Gypsum Plastering |  | 2025-07-19 → 2025-07-21 (+2d) |
| PG-12377 | Cornice fixing |  | 2025-08-02 → 2025-08-04 (+2d) |
| PG-12379 | Toilet False ceiling | 2025-08-07 → 2025-08-08 (+1d) | 2025-08-12 → 2025-08-13 (+1d) |
| PG-12378 | Painting Works - Putty, Primer and 1st | 2025-08-19 → 2025-08-20 (+1d) | 2025-08-26 → 2025-08-27 (+1d) |
| PG-12380 | Final Coat Painting | 2025-08-26 → 2025-08-27 (+1d) | 2025-09-19 → 2025-09-20 (+1d) |
| 1.3.1.3.4.16.2 | **Wall Finishing works - Civil** | 2025-07-04 → 2025-07-05 (+1d) | 2025-09-19 → 2025-09-20 (+1d) |
| PG-12381 | Balcony Railing Fixing works | 2025-07-04 → 2025-07-05 (+1d) | 2025-07-09 → 2025-07-10 (+1d) |
| PG-12383 | Dadoing - Wet area | 2025-07-25 → 2025-07-26 (+1d) | 2025-07-31 → 2025-08-01 (+1d) |
| PG-12382 | UPVC Windows & Sliding doors | 2025-08-12 → 2025-08-13 (+1d) | 2025-08-19 → 2025-08-20 (+1d) |
| PG-12384 | Painting Works - Putty, Primer and 1st | 2025-08-19 → 2025-08-20 (+1d) | 2025-08-26 → 2025-08-27 (+1d) |
| PG-12385 | Final Coat Painting | 2025-08-26 → 2025-08-27 (+1d) | 2025-09-19 → 2025-09-20 (+1d) |

| ID | Task | Start | Finish |
| --- | --- | --- | --- |
| 1.3.1.3.4.16.3 | **Floor Finishing Works - Civil** | 2025-07-04 → 2025-07-05 (+1d) | 2025-08-26 → 2025-08-27 (+1d) |
| PG-12386 | Waterproofing for sunken areas | 2025-07-04 → 2025-07-05 (+1d) | 2025-07-08 → 2025-07-09 (+1d) |
| PG-12387 | Floor Tiling - Wet area | 2025-07-31 → 2025-08-01 (+1d) | 2025-08-06 → 2025-08-07 (+1d) |
| PG-12388 | Floor Tiling - Dry area | 2025-08-06 → 2025-08-07 (+1d) | 2025-08-12 → 2025-08-13 (+1d) |
| PG-12389 | Wooden doors | 2025-08-20 → 2025-08-21 (+1d) | 2025-08-26 → 2025-08-27 (+1d) |
| 1.3.1.3.4.17 | **Floor 14** | 2025-07-17 → 2025-07-18 (+1d) | 2025-09-30 → 2025-10-01 (+1d) |
| 1.3.1.3.4.17.1 | **Ceiling Finishing works - Civil** |  | 2025-09-30 → 2025-10-01 (+1d) |
| PG-12390 | Gypsum Plastering |  | 2025-08-01 → 2025-08-02 (+1d) |
| PG-12391 | Cornice fixing |  | 2025-08-16 → 2025-08-18 (+2d) |
| PG-12393 | Toilet False ceiling | 2025-08-21 → 2025-08-22 (+1d) | 2025-08-26 → 2025-08-27 (+1d) |
| PG-12392 | Painting Works - Putty, Primer and 1st | 2025-09-01 → 2025-09-02 (+1d) | 2025-09-08 → 2025-09-09 (+1d) |
| PG-12394 | Final Coat Painting | 2025-09-08 → 2025-09-09 (+1d) | 2025-09-30 → 2025-10-01 (+1d) |
| 1.3.1.3.4.17.2 | **Wall Finishing works - Civil** | 2025-07-17 → 2025-07-18 (+1d) | 2025-09-30 → 2025-10-01 (+1d) |
| PG-12395 | Balcony Railing Fixing works | 2025-07-17 → 2025-07-18 (+1d) | 2025-07-22 → 2025-07-23 (+1d) |
| PG-12397 | Dadoing - Wet area | 2025-08-07 → 2025-08-08 (+1d) | 2025-08-13 → 2025-08-14 (+1d) |
| PG-12396 | UPVC Windows & Sliding doors | 2025-08-26 → 2025-08-27 (+1d) | 2025-09-01 → 2025-09-02 (+1d) |
| PG-12398 | Painting Works - Putty, Primer and 1st | 2025-09-01 → 2025-09-02 (+1d) | 2025-09-08 → 2025-09-09 (+1d) |
| PG-12399 | Final Coat Painting | 2025-09-08 → 2025-09-09 (+1d) | 2025-09-30 → 2025-10-01 (+1d) |
| 1.3.1.3.4.17.3 | **Floor Finishing Works - Civil** | 2025-07-17 → 2025-07-18 (+1d) | 2025-09-08 → 2025-09-09 (+1d) |
| PG-12400 | Waterproofing for sunken areas | 2025-07-17 → 2025-07-18 (+1d) | 2025-07-21 → 2025-07-22 (+1d) |
| PG-12401 | Floor Tiling - Wet area | 2025-08-13 → 2025-08-14 (+1d) | 2025-08-20 → 2025-08-21 (+1d) |
| PG-12402 | Floor Tiling - Dry area | 2025-08-20 → 2025-08-21 (+1d) | 2025-08-26 → 2025-08-27 (+1d) |
| PG-12403 | Wooden doors | 2025-09-02 → 2025-09-03 (+1d) | 2025-09-08 → 2025-09-09 (+1d) |
| 1.3.1.3.4.18 | **Floor 15** | 2025-07-30 → 2025-07-31 (+1d) |  |
| PG-12404 | Gypsum Plastering |  | 2025-08-14 → 2025-08-16 (+2d) |
| PG-12405 | Cornice fixing |  | 2025-08-29 → 2025-08-30 (+1d) |
| 1.3.1.3.4.18.2 | **Wall Finishing works - Civil** | 2025-07-30 → 2025-07-31 (+1d) |  |
| PG-12409 | Balcony Railing Fixing works | 2025-07-30 → 2025-07-31 (+1d) | 2025-08-04 → 2025-08-05 (+1d) |
| 1.3.1.3.4.18.3 | **Floor Finishing Works - Civil** | 2025-07-30 → 2025-07-31 (+1d) |  |
| PG-12414 | Waterproofing for sunken areas | 2025-07-30 → 2025-07-31 (+1d) | 2025-08-02 → 2025-08-04 (+2d) |
| 1.3.1.3.4.19 | **Floor 16** | 2025-08-12 → 2025-08-13 (+1d) | 2025-10-27 → 2025-10-28 (+1d) |
| 1.3.1.3.4.19.1 | **Ceiling Finishing works - Civil** |  | 2025-10-27 → 2025-10-28 (+1d) |
| PG-12418 | Gypsum Plastering |  | 2025-08-28 → 2025-08-29 (+1d) |
| PG-12419 | Cornice fixing |  | 2025-09-11 → 2025-09-12 (+1d) |
| PG-12421 | Toilet False ceiling | 2025-09-16 → 2025-09-17 (+1d) | 2025-09-20 → 2025-09-22 (+2d) |
| PG-12420 | Painting Works - Putty, Primer and 1st | 2025-09-26 → 2025-09-27 (+1d) | 2025-10-04 → 2025-10-06 (+2d) |
| PG-12422 | Final Coat Painting | 2025-10-04 → 2025-10-06 (+2d) | 2025-10-27 → 2025-10-28 (+1d) |
| 1.3.1.3.4.19.2 | **Wall Finishing works - Civil** | 2025-08-12 → 2025-08-13 (+1d) | 2025-10-27 → 2025-10-28 (+1d) |
| PG-12423 | Balcony Railing Fixing works | 2025-08-12 → 2025-08-13 (+1d) | 2025-08-18 → 2025-08-19 (+1d) |
| PG-12425 | Dadoing - Wet area | 2025-09-03 → 2025-09-04 (+1d) | 2025-09-09 → 2025-09-10 (+1d) |
| PG-12424 | UPVC Windows & Sliding doors | 2025-09-20 → 2025-09-22 (+2d) | 2025-09-26 → 2025-09-27 (+1d) |
| PG-12426 | Painting Works - Putty, Primer and 1st | 2025-09-26 → 2025-09-27 (+1d) | 2025-10-04 → 2025-10-06 (+2d) |
| PG-12427 | Final Coat Painting | 2025-10-04 → 2025-10-06 (+2d) | 2025-10-27 → 2025-10-28 (+1d) |
| 1.3.1.3.4.19.3 | **Floor Finishing Works - Civil** | 2025-08-12 → 2025-08-13 (+1d) | 2025-10-04 → 2025-10-06 (+2d) |
| PG-12428 | Waterproofing for sunken areas | 2025-08-12 → 2025-08-13 (+1d) | 2025-08-16 → 2025-08-18 (+2d) |
| PG-12429 | Floor Tiling - Wet area | 2025-09-09 → 2025-09-10 (+1d) | 2025-09-15 → 2025-09-16 (+1d) |
| PG-12430 | Floor Tiling - Dry area | 2025-09-15 → 2025-09-16 (+1d) | 2025-09-20 → 2025-09-22 (+2d) |
| PG-12431 | Wooden doors | 2025-09-27 → 2025-09-29 (+2d) | 2025-10-04 → 2025-10-06 (+2d) |
| 1.3.1.3.4.20 | **Floor 17** | 2025-08-26 → 2025-08-27 (+1d) | 2025-11-08 → 2025-11-10 (+2d) |
| 1.3.1.3.4.20.1 | **Ceiling Finishing works - Civil** |  | 2025-11-08 → 2025-11-10 (+2d) |
| PG-12432 | Gypsum Plastering |  | 2025-09-10 → 2025-09-11 (+1d) |
| PG-12433 | Cornice fixing |  | 2025-09-24 → 2025-09-25 (+1d) |
| PG-12435 | Toilet False ceiling | 2025-09-29 → 2025-09-30 (+1d) | 2025-10-04 → 2025-10-06 (+2d) |
| PG-12434 | Painting Works - Putty, Primer and 1st | 2025-10-10 → 2025-10-11 (+1d) | 2025-10-17 → 2025-10-18 (+1d) |
| PG-12436 | Final Coat Painting | 2025-10-17 → 2025-10-18 (+1d) | 2025-11-08 → 2025-11-10 (+2d) |
| 1.3.1.3.4.20.2 | **Wall Finishing works - Civil** | 2025-08-26 → 2025-08-27 (+1d) | 2025-11-08 → 2025-11-10 (+2d) |
| PG-12437 | Balcony Railing Fixing works | 2025-08-26 → 2025-08-27 (+1d) | 2025-08-30 → 2025-09-01 (+2d) |
| PG-12439 | Dadoing - Wet area | 2025-09-16 → 2025-09-17 (+1d) | 2025-09-22 → 2025-09-23 (+1d) |
| PG-12438 | UPVC Windows & Sliding doors | 2025-10-04 → 2025-10-06 (+2d) | 2025-10-10 → 2025-10-11 (+1d) |
| PG-12440 | Painting Works - Putty, Primer and 1st | 2025-10-10 → 2025-10-11 (+1d) | 2025-10-17 → 2025-10-18 (+1d) |
| PG-12441 | Final Coat Painting | 2025-10-17 → 2025-10-18 (+1d) | 2025-11-08 → 2025-11-10 (+2d) |
| 1.3.1.3.4.20.3 | **Floor Finishing Works - Civil** | 2025-08-26 → 2025-08-27 (+1d) | 2025-10-17 → 2025-10-18 (+1d) |
| PG-12442 | Waterproofing for sunken areas | 2025-08-26 → 2025-08-27 (+1d) | 2025-08-29 → 2025-08-30 (+1d) |
| PG-12443 | Floor Tiling - Wet area | 2025-09-22 → 2025-09-23 (+1d) | 2025-09-27 → 2025-09-29 (+2d) |
| PG-12444 | Floor Tiling - Dry area | 2025-09-27 → 2025-09-29 (+2d) | 2025-10-04 → 2025-10-06 (+2d) |
| PG-12445 | Wooden doors | 2025-10-11 → 2025-10-13 (+2d) | 2025-10-17 → 2025-10-18 (+1d) |
| 1.3.1.3.4.21 | **Floor 18** | 2025-09-08 → 2025-09-09 (+1d) | 2025-11-21 → 2025-11-22 (+1d) |
| 1.3.1.3.4.21.1 | **Ceiling Finishing works - Civil** |  | 2025-11-21 → 2025-11-22 (+1d) |
| PG-12446 | Gypsum Plastering |  | 2025-09-23 → 2025-09-24 (+1d) |
| PG-12447 | Cornice fixing |  | 2025-10-08 → 2025-10-09 (+1d) |

| ID | Task | Start | Finish |
| --- | --- | --- | --- |
| PG-12449 | Toilet False ceiling | 2025-10-13 → 2025-10-14 (+1d) | 2025-10-17 → 2025-10-18 (+1d) |
| PG-12448 | Painting Works - Putty, Primer and 1st | 2025-10-23 → 2025-10-24 (+1d) | 2025-10-30 → 2025-10-31 (+1d) |
| PG-12450 | Final Coat Painting | 2025-10-30 → 2025-10-31 (+1d) | 2025-11-21 → 2025-11-22 (+1d) |
| 1.3.1.3.4.21.2 | **Wall Finishing works - Civil** | 2025-09-08 → 2025-09-09 (+1d) | 2025-11-21 → 2025-11-22 (+1d) |
| PG-12451 | Balcony Railing Fixing works | 2025-09-08 → 2025-09-09 (+1d) | 2025-09-12 → 2025-09-13 (+1d) |
| PG-12453 | Dadoing - Wet area | 2025-09-29 → 2025-09-30 (+1d) | 2025-10-06 → 2025-10-07 (+1d) |
| PG-12452 | UPVC Windows & Sliding doors | 2025-10-17 → 2025-10-18 (+1d) | 2025-10-23 → 2025-10-24 (+1d) |
| PG-12454 | Painting Works - Putty, Primer and 1st | 2025-10-23 → 2025-10-24 (+1d) | 2025-10-30 → 2025-10-31 (+1d) |
| PG-12455 | Final Coat Painting | 2025-10-30 → 2025-10-31 (+1d) | 2025-11-21 → 2025-11-22 (+1d) |
| 1.3.1.3.4.21.3 | **Floor Finishing Works - Civil** | 2025-09-08 → 2025-09-09 (+1d) | 2025-10-30 → 2025-10-31 (+1d) |
| PG-12456 | Waterproofing for sunken areas | 2025-09-08 → 2025-09-09 (+1d) | 2025-09-11 → 2025-09-12 (+1d) |
| PG-12457 | Floor Tiling - Wet area | 2025-10-06 → 2025-10-07 (+1d) | 2025-10-11 → 2025-10-13 (+2d) |
| PG-12458 | Floor Tiling - Dry area | 2025-10-11 → 2025-10-13 (+2d) | 2025-10-17 → 2025-10-18 (+1d) |
| PG-12459 | Wooden doors | 2025-10-24 → 2025-10-25 (+1d) | 2025-10-30 → 2025-10-31 (+1d) |
| 1.3.1.3.4.22 | **Floor 19** | 2025-09-20 → 2025-09-22 (+2d) | 2025-12-04 → 2025-12-05 (+1d) |
| 1.3.1.3.4.22.1 | **Ceiling Finishing works - Civil** |  | 2025-12-04 → 2025-12-05 (+1d) |
| PG-12460 | Gypsum Plastering |  | 2025-10-07 → 2025-10-08 (+1d) |
| PG-12461 | Cornice fixing |  | 2025-10-21 → 2025-10-22 (+1d) |
| PG-12463 | Toilet False ceiling | 2025-10-25 → 2025-10-27 (+2d) | 2025-10-30 → 2025-10-31 (+1d) |
| PG-12462 | Painting Works - Putty, Primer and 1st | 2025-11-06 → 2025-11-07 (+1d) | 2025-11-13 → 2025-11-14 (+1d) |
| PG-12464 | Final Coat Painting | 2025-11-13 → 2025-11-14 (+1d) | 2025-12-04 → 2025-12-05 (+1d) |
| 1.3.1.3.4.22.2 | **Wall Finishing works - Civil** | 2025-09-20 → 2025-09-22 (+2d) | 2025-12-04 → 2025-12-05 (+1d) |
| PG-12465 | Balcony Railing Fixing works | 2025-09-20 → 2025-09-22 (+2d) | 2025-09-25 → 2025-09-26 (+1d) |
| PG-12467 | Dadoing - Wet area | 2025-10-13 → 2025-10-14 (+1d) | 2025-10-18 → 2025-10-20 (+2d) |
| PG-12466 | UPVC Windows & Sliding doors | 2025-10-30 → 2025-10-31 (+1d) | 2025-11-06 → 2025-11-07 (+1d) |
| PG-12468 | Painting Works - Putty, Primer and 1st | 2025-11-06 → 2025-11-07 (+1d) | 2025-11-13 → 2025-11-14 (+1d) |
| PG-12469 | Final Coat Painting | 2025-11-13 → 2025-11-14 (+1d) | 2025-12-04 → 2025-12-05 (+1d) |
| 1.3.1.3.4.22.3 | **Floor Finishing Works - Civil** | 2025-09-20 → 2025-09-22 (+2d) | 2025-11-13 → 2025-11-14 (+1d) |
| PG-12470 | Waterproofing for sunken areas | 2025-09-20 → 2025-09-22 (+2d) | 2025-09-24 → 2025-09-25 (+1d) |
| PG-12471 | Floor Tiling - Wet area | 2025-10-18 → 2025-10-20 (+2d) | 2025-10-24 → 2025-10-25 (+1d) |
| PG-12472 | Floor Tiling - Dry area | 2025-10-24 → 2025-10-25 (+1d) | 2025-10-30 → 2025-10-31 (+1d) |
| PG-12473 | Wooden doors | 2025-11-07 → 2025-11-08 (+1d) | 2025-11-13 → 2025-11-14 (+1d) |
| 1.3.1.3.4.23 | **Floor 20** | 2025-10-04 → 2025-10-06 (+2d) | 2025-12-18 → 2025-12-19 (+1d) |
| 1.3.1.3.4.23.1 | **Ceiling Finishing works - Civil** | 2025-10-14 → 2025-10-15 (+1d) | 2025-12-18 → 2025-12-19 (+1d) |
| PG-12474 | Gypsum Plastering | 2025-10-14 → 2025-10-15 (+1d) | 2025-10-21 → 2025-10-22 (+1d) |
| PG-12475 | Cornice fixing | 2025-10-30 → 2025-10-31 (+1d) | 2025-11-05 → 2025-11-06 (+1d) |
| PG-12477 | Toilet False ceiling | 2025-11-08 → 2025-11-10 (+2d) | 2025-11-13 → 2025-11-14 (+1d) |
| PG-12476 | Painting Works - Putty, Primer and 1st | 2025-11-19 → 2025-11-20 (+1d) | 2025-11-26 → 2025-11-27 (+1d) |
| PG-12478 | Final Coat Painting | 2025-11-26 → 2025-11-27 (+1d) | 2025-12-18 → 2025-12-19 (+1d) |
| 1.3.1.3.4.23.2 | **Wall Finishing works - Civil** | 2025-10-04 → 2025-10-06 (+2d) | 2025-12-18 → 2025-12-19 (+1d) |
| PG-12479 | Balcony Railing Fixing works | 2025-10-04 → 2025-10-06 (+2d) | 2025-10-09 → 2025-10-10 (+1d) |
| PG-12481 | Dadoing - Wet area | 2025-10-25 → 2025-10-27 (+2d) | 2025-10-31 → 2025-11-03 (+3d) |
| PG-12480 | UPVC Windows & Sliding doors | 2025-11-13 → 2025-11-14 (+1d) | 2025-11-19 → 2025-11-20 (+1d) |
| PG-12482 | Painting Works - Putty, Primer and 1st | 2025-11-19 → 2025-11-20 (+1d) | 2025-11-26 → 2025-11-27 (+1d) |
| PG-12483 | Final Coat Painting | 2025-11-26 → 2025-11-27 (+1d) | 2025-12-18 → 2025-12-19 (+1d) |
| 1.3.1.3.4.23.3 | **Floor Finishing Works - Civil** | 2025-10-04 → 2025-10-06 (+2d) | 2025-11-26 → 2025-11-27 (+1d) |
| PG-12484 | Waterproofing for sunken areas | 2025-10-04 → 2025-10-06 (+2d) | 2025-10-08 → 2025-10-09 (+1d) |
| PG-12485 | Floor Tiling - Wet area | 2025-10-31 → 2025-11-03 (+3d) | 2025-11-07 → 2025-11-08 (+1d) |
| PG-12486 | Floor Tiling - Dry area | 2025-11-07 → 2025-11-08 (+1d) | 2025-11-13 → 2025-11-14 (+1d) |
| PG-12487 | Wooden doors | 2025-11-20 → 2025-11-21 (+1d) | 2025-11-26 → 2025-11-27 (+1d) |
| 1.3.1.3.4.24 | **Floor 21** | 2025-10-17 → 2025-10-18 (+1d) | 2025-12-31 → 2026-01-01 (+1d) |
| 1.3.1.3.4.24.1 | **Ceiling Finishing works - Civil** | 2025-10-27 → 2025-10-28 (+1d) | 2025-12-31 → 2026-01-01 (+1d) |
| PG-12488 | Gypsum Plastering | 2025-10-27 → 2025-10-28 (+1d) | 2025-11-04 → 2025-11-05 (+1d) |
| PG-12489 | Cornice fixing | 2025-11-13 → 2025-11-14 (+1d) | 2025-11-18 → 2025-11-19 (+1d) |
| PG-12491 | Toilet False ceiling |  | 2025-11-25 → 2025-11-26 (+1d) |
| PG-12490 | Painting Works - Putty, Primer and 1st |  | 2025-12-08 → 2025-12-09 (+1d) |
| PG-12492 | Final Coat Painting |  | 2025-12-31 → 2026-01-01 (+1d) |
| 1.3.1.3.4.24.2 | **Wall Finishing works - Civil** | 2025-10-17 → 2025-10-18 (+1d) | 2025-12-31 → 2026-01-01 (+1d) |
| PG-12493 | Balcony Railing Fixing works | 2025-10-17 → 2025-10-18 (+1d) | 2025-10-22 → 2025-10-23 (+1d) |
| PG-12495 | Dadoing - Wet area |  | 2025-11-13 → 2025-11-14 (+1d) |
| PG-12494 | UPVC Windows & Sliding doors |  | 2025-12-01 → 2025-12-02 (+1d) |
| PG-12496 | Painting Works - Putty, Primer and 1st |  | 2025-12-08 → 2025-12-09 (+1d) |
| PG-12497 | Final Coat Painting |  | 2025-12-31 → 2026-01-01 (+1d) |
| 1.3.1.3.4.24.3 | **Floor Finishing Works - Civil** | 2025-10-17 → 2025-10-18 (+1d) | 2025-12-08 → 2025-12-09 (+1d) |
| PG-12498 | Waterproofing for sunken areas | 2025-10-17 → 2025-10-18 (+1d) | 2025-10-21 → 2025-10-22 (+1d) |
| PG-12499 | Floor Tiling - Wet area |  | 2025-11-19 → 2025-11-20 (+1d) |
| PG-12500 | Floor Tiling - Dry area |  | 2025-11-25 → 2025-11-26 (+1d) |
| PG-12501 | Wooden doors |  | 2025-12-08 → 2025-12-09 (+1d) |
| 1.3.1.3.4.25 | **Floor 22** | 2025-10-30 → 2025-10-31 (+1d) | 2026-01-13 → 2026-01-14 (+1d) |
| 1.3.1.3.4.25.1 | **Ceiling Finishing works - Civil** | 2025-11-10 → 2025-11-11 (+1d) | 2026-01-13 → 2026-01-14 (+1d) |

| ID | Task | Start | Finish |
| --- | --- | --- | --- |
| PG-12502 | Gypsum Plastering | 2025-11-10 → 2025-11-11 (+1d) | 2025-11-17 → 2025-11-18 (+1d) |
| PG-12503 | Cornice fixing | 2025-11-26 → 2025-11-27 (+1d) | 2025-12-01 → 2025-12-02 (+1d) |
| PG-12505 | Toilet False ceiling |  | 2025-12-08 → 2025-12-09 (+1d) |
| PG-12504 | Painting Works - Putty, Primer and 1st |  | 2025-12-20 → 2025-12-22 (+2d) |
| PG-12506 | Final Coat Painting |  | 2026-01-13 → 2026-01-14 (+1d) |
| 1.3.1.3.4.25.2 | **Wall Finishing works - Civil** | 2025-10-30 → 2025-10-31 (+1d) | 2026-01-13 → 2026-01-14 (+1d) |
| PG-12507 | Balcony Railing Fixing works | 2025-10-30 → 2025-10-31 (+1d) | 2025-11-05 → 2025-11-06 (+1d) |
| PG-12509 | Dadoing - Wet area |  | 2025-11-26 → 2025-11-27 (+1d) |
| PG-12508 | UPVC Windows & Sliding doors |  | 2025-12-13 → 2025-12-15 (+2d) |
| PG-12510 | Painting Works - Putty, Primer and 1st |  | 2025-12-20 → 2025-12-22 (+2d) |
| PG-12511 | Final Coat Painting |  | 2026-01-13 → 2026-01-14 (+1d) |
| 1.3.1.3.4.25.3 | **Floor Finishing Works - Civil** | 2025-10-30 → 2025-10-31 (+1d) | 2025-12-20 → 2025-12-22 (+2d) |
| PG-12512 | Waterproofing for sunken areas | 2025-10-30 → 2025-10-31 (+1d) | 2025-11-04 → 2025-11-05 (+1d) |
| PG-12513 | Floor Tiling - Wet area |  | 2025-12-02 → 2025-12-03 (+1d) |
| PG-12514 | Floor Tiling - Dry area |  | 2025-12-08 → 2025-12-09 (+1d) |
| PG-12515 | Wooden doors |  | 2025-12-20 → 2025-12-22 (+2d) |
| 1.3.1.3.4.26 | **Floor 23** | 2025-11-13 → 2025-11-14 (+1d) | 2026-01-27 → 2026-01-28 (+1d) |
| 1.3.1.3.4.26.1 | **Ceiling Finishing works - Civil** |  | 2026-01-27 → 2026-01-28 (+1d) |
| PG-12516 | Gypsum Plastering |  | 2025-11-27 → 2025-11-28 (+1d) |
| PG-12517 | Cornice fixing |  | 2025-12-11 → 2025-12-12 (+1d) |
| PG-12519 | Toilet False ceiling | 2025-12-15 → 2025-12-16 (+1d) | 2025-12-19 → 2025-12-20 (+1d) |
| PG-12518 | Painting Works - Putty, Primer and 1st | 2025-12-25 → 2025-12-26 (+1d) | 2026-01-01 → 2026-01-02 (+1d) |
| PG-12520 | Final Coat Painting | 2026-01-01 → 2026-01-02 (+1d) | 2026-01-27 → 2026-01-28 (+1d) |
| 1.3.1.3.4.26.2 | **Wall Finishing works - Civil** | 2025-11-13 → 2025-11-14 (+1d) | 2026-01-27 → 2026-01-28 (+1d) |
| PG-12521 | Balcony Railing Fixing works | 2025-11-13 → 2025-11-14 (+1d) | 2025-11-18 → 2025-11-19 (+1d) |
| PG-12523 | Dadoing - Wet area | 2025-12-02 → 2025-12-03 (+1d) | 2025-12-08 → 2025-12-09 (+1d) |
| PG-12522 | UPVC Windows & Sliding doors | 2025-12-19 → 2025-12-20 (+1d) | 2025-12-25 → 2025-12-26 (+1d) |
| PG-12524 | Painting Works - Putty, Primer and 1st | 2025-12-25 → 2025-12-26 (+1d) | 2026-01-01 → 2026-01-02 (+1d) |
| PG-12525 | Final Coat Painting | 2026-01-01 → 2026-01-02 (+1d) | 2026-01-27 → 2026-01-28 (+1d) |
| 1.3.1.3.4.26.3 | **Floor Finishing Works - Civil** | 2025-11-13 → 2025-11-14 (+1d) | 2026-01-01 → 2026-01-02 (+1d) |
| PG-12526 | Waterproofing for sunken areas | 2025-11-13 → 2025-11-14 (+1d) | 2025-11-17 → 2025-11-18 (+1d) |
| PG-12527 | Floor Tiling - Wet area | 2025-12-08 → 2025-12-09 (+1d) | 2025-12-13 → 2025-12-15 (+2d) |
| PG-12528 | Floor Tiling - Dry area | 2025-12-13 → 2025-12-15 (+2d) | 2025-12-19 → 2025-12-20 (+1d) |
| PG-12529 | Wooden doors | 2025-12-26 → 2025-12-27 (+1d) | 2026-01-01 → 2026-01-02 (+1d) |
| 1.3.1.3.4.27 | **Floor 24** | 2025-11-26 → 2025-11-27 (+1d) | 2026-02-09 → 2026-02-10 (+1d) |
| 1.3.1.3.4.27.1 | **Ceiling Finishing works - Civil** |  | 2026-02-09 → 2026-02-10 (+1d) |
| PG-12530 | Gypsum Plastering |  | 2025-12-11 → 2025-12-12 (+1d) |
| PG-12531 | Cornice fixing |  | 2025-12-25 → 2025-12-26 (+1d) |
| PG-12533 | Toilet False ceiling | 2025-12-29 → 2025-12-30 (+1d) | 2026-01-02 → 2026-01-03 (+1d) |
| PG-12532 | Painting Works - Putty, Primer and 1st | 2026-01-08 → 2026-01-09 (+1d) | 2026-01-15 → 2026-01-16 (+1d) |
| PG-12534 | Final Coat Painting | 2026-01-15 → 2026-01-16 (+1d) | 2026-02-09 → 2026-02-10 (+1d) |
| 1.3.1.3.4.27.2 | **Wall Finishing works - Civil** | 2025-11-26 → 2025-11-27 (+1d) | 2026-02-09 → 2026-02-10 (+1d) |
| PG-12535 | Balcony Railing Fixing works | 2025-11-26 → 2025-11-27 (+1d) | 2025-12-01 → 2025-12-02 (+1d) |
| PG-12537 | Dadoing - Wet area | 2025-12-16 → 2025-12-17 (+1d) | 2025-12-22 → 2025-12-23 (+1d) |
| PG-12536 | UPVC Windows & Sliding doors | 2026-01-02 → 2026-01-03 (+1d) | 2026-01-08 → 2026-01-09 (+1d) |
| PG-12538 | Painting Works - Putty, Primer and 1st | 2026-01-08 → 2026-01-09 (+1d) | 2026-01-15 → 2026-01-16 (+1d) |
| PG-12539 | Final Coat Painting | 2026-01-15 → 2026-01-16 (+1d) | 2026-02-09 → 2026-02-10 (+1d) |
| 1.3.1.3.4.27.3 | **Floor Finishing Works - Civil** | 2025-11-26 → 2025-11-27 (+1d) | 2026-01-15 → 2026-01-16 (+1d) |
| PG-12540 | Waterproofing for sunken areas | 2025-11-26 → 2025-11-27 (+1d) | 2025-11-29 → 2025-12-01 (+2d) |
| PG-12541 | Floor Tiling - Wet area | 2025-12-22 → 2025-12-23 (+1d) | 2025-12-27 → 2025-12-29 (+2d) |
| PG-12542 | Floor Tiling - Dry area | 2025-12-27 → 2025-12-29 (+2d) | 2026-01-02 → 2026-01-03 (+1d) |
| PG-12543 | Wooden doors | 2026-01-09 → 2026-01-10 (+1d) | 2026-01-15 → 2026-01-16 (+1d) |
| 1.3.1.3.4.28 | **Floor 25** | 2025-12-17 → 2025-12-18 (+1d) | 2026-03-02 → 2026-03-03 (+1d) |
| 1.3.1.3.4.28.1 | **Ceiling Finishing works - Civil** | 2025-12-26 → 2025-12-27 (+1d) | 2026-03-02 → 2026-03-03 (+1d) |
| PG-12544 | Gypsum Plastering | 2025-12-26 → 2025-12-27 (+1d) | 2026-01-02 → 2026-01-03 (+1d) |
| PG-12545 | Cornice fixing | 2026-01-12 → 2026-01-13 (+1d) | 2026-01-16 → 2026-01-17 (+1d) |
| PG-12547 | Toilet False ceiling | 2026-01-19 → 2026-01-20 (+1d) | 2026-01-23 → 2026-01-24 (+1d) |
| PG-12546 | Painting Works - Putty, Primer and 1st | 2026-01-30 → 2026-01-31 (+1d) | 2026-02-06 → 2026-02-07 (+1d) |
| PG-12548 | Final Coat Painting | 2026-02-06 → 2026-02-07 (+1d) | 2026-03-02 → 2026-03-03 (+1d) |
| 1.3.1.3.4.28.2 | **Wall Finishing works - Civil** | 2025-12-17 → 2025-12-18 (+1d) | 2026-03-02 → 2026-03-03 (+1d) |
| PG-12549 | Balcony Railing Fixing works | 2025-12-17 → 2025-12-18 (+1d) | 2025-12-22 → 2025-12-23 (+1d) |
| PG-12551 | Dadoing - Wet area | 2026-01-06 → 2026-01-07 (+1d) | 2026-01-12 → 2026-01-13 (+1d) |
| PG-12550 | UPVC Windows & Sliding doors | 2026-01-23 → 2026-01-24 (+1d) | 2026-01-30 → 2026-01-31 (+1d) |
| PG-12552 | Painting Works - Putty, Primer and 1st | 2026-01-30 → 2026-01-31 (+1d) | 2026-02-06 → 2026-02-07 (+1d) |
| PG-12553 | Final Coat Painting | 2026-02-06 → 2026-02-07 (+1d) | 2026-03-02 → 2026-03-03 (+1d) |
| 1.3.1.3.4.28.3 | **Floor Finishing Works - Civil** | 2025-12-17 → 2025-12-18 (+1d) | 2026-02-06 → 2026-02-07 (+1d) |
| PG-12554 | Waterproofing for sunken areas | 2025-12-17 → 2025-12-18 (+1d) | 2025-12-20 → 2025-12-22 (+2d) |
| PG-12555 | Floor Tiling - Wet area | 2026-01-12 → 2026-01-13 (+1d) | 2026-01-17 → 2026-01-19 (+2d) |
| PG-12556 | Floor Tiling - Dry area | 2026-01-17 → 2026-01-19 (+2d) | 2026-01-23 → 2026-01-24 (+1d) |
| PG-12557 | Wooden doors | 2026-01-31 → 2026-02-02 (+2d) | 2026-02-06 → 2026-02-07 (+1d) |

| ID | Task | Start | Finish |
| --- | --- | --- | --- |
| 1.3.1.3.4.29 | **Floor 26** | 2026-01-07 → 2026-01-08 (+1d) | 2026-03-24 → 2026-03-25 (+1d) |
| 1.3.1.3.4.29.1 | **Ceiling Finishing works - Civil** | 2026-01-16 → 2026-01-17 (+1d) | 2026-03-24 → 2026-03-25 (+1d) |
| PG-12558 | Gypsum Plastering | 2026-01-16 → 2026-01-17 (+1d) | 2026-01-23 → 2026-01-24 (+1d) |
| PG-12559 | Cornice fixing | 2026-02-03 → 2026-02-04 (+1d) | 2026-02-07 → 2026-02-09 (+2d) |
| PG-12561 | Toilet False ceiling | 2026-02-11 → 2026-02-12 (+1d) | 2026-02-16 → 2026-02-17 (+1d) |
| PG-12560 | Painting Works - Putty, Primer and 1st | 2026-02-21 → 2026-02-23 (+2d) | 2026-02-28 → 2026-03-02 (+2d) |
| PG-12562 | Final Coat Painting | 2026-02-28 → 2026-03-02 (+2d) | 2026-03-24 → 2026-03-25 (+1d) |
| 1.3.1.3.4.29.2 | **Wall Finishing works - Civil** | 2026-01-07 → 2026-01-08 (+1d) | 2026-03-23 → 2026-03-24 (+1d) |
| PG-12563 | Balcony Railing Fixing works | 2026-01-07 → 2026-01-08 (+1d) | 2026-01-12 → 2026-01-13 (+1d) |
| PG-12565 | Dadoing - Wet area | 2026-01-29 → 2026-01-30 (+1d) | 2026-02-04 → 2026-02-05 (+1d) |
| PG-12564 | UPVC Windows & Sliding doors | 2026-02-16 → 2026-02-17 (+1d) | 2026-02-21 → 2026-02-23 (+2d) |
| PG-12566 | Painting Works - Putty, Primer and 1st | 2026-02-21 → 2026-02-23 (+2d) | 2026-02-28 → 2026-03-02 (+2d) |
| PG-12567 | Final Coat Painting | 2026-02-28 → 2026-03-02 (+2d) | 2026-03-23 → 2026-03-24 (+1d) |
| 1.3.1.3.4.29.3 | **Floor Finishing Works - Civil** | 2026-01-07 → 2026-01-08 (+1d) | 2026-02-28 → 2026-03-02 (+2d) |
| PG-12568 | Waterproofing for sunken areas | 2026-01-07 → 2026-01-08 (+1d) | 2026-01-10 → 2026-01-12 (+2d) |
| PG-12569 | Floor Tiling - Wet area | 2026-02-04 → 2026-02-05 (+1d) | 2026-02-10 → 2026-02-11 (+1d) |
| PG-12570 | Floor Tiling - Dry area | 2026-02-10 → 2026-02-11 (+1d) | 2026-02-16 → 2026-02-17 (+1d) |
| PG-12571 | Wooden doors | 2026-02-23 → 2026-02-24 (+1d) | 2026-02-28 → 2026-03-02 (+2d) |
| 1.3.1.3.4.30 | **Floor 27** | 2026-01-30 → 2026-01-31 (+1d) | 2026-04-14 → 2026-04-15 (+1d) |
| 1.3.1.3.4.30.1 | **Ceiling Finishing works - Civil** | 2026-02-09 → 2026-02-10 (+1d) | 2026-04-14 → 2026-04-15 (+1d) |
| PG-12572 | Gypsum Plastering | 2026-02-09 → 2026-02-10 (+1d) | 2026-02-16 → 2026-02-17 (+1d) |
| PG-12573 | Cornice fixing | 2026-02-25 → 2026-02-26 (+1d) | 2026-03-02 → 2026-03-03 (+1d) |
| PG-12575 | Toilet False ceiling | 2026-03-05 → 2026-03-06 (+1d) | 2026-03-10 → 2026-03-11 (+1d) |
| PG-12574 | Painting Works - Putty, Primer and 1st | 2026-03-16 → 2026-03-17 (+1d) | 2026-03-23 → 2026-03-24 (+1d) |
| PG-12576 | Final Coat Painting | 2026-03-23 → 2026-03-24 (+1d) | 2026-04-14 → 2026-04-15 (+1d) |
| 1.3.1.3.4.30.2 | **Wall Finishing works - Civil** | 2026-01-30 → 2026-01-31 (+1d) | 2026-04-14 → 2026-04-15 (+1d) |
| PG-12577 | Balcony Railing Fixing works | 2026-01-30 → 2026-01-31 (+1d) | 2026-02-04 → 2026-02-05 (+1d) |
| PG-12579 | Dadoing - Wet area | 2026-02-20 → 2026-02-21 (+1d) | 2026-02-26 → 2026-02-27 (+1d) |
| PG-12578 | UPVC Windows & Sliding doors | 2026-03-10 → 2026-03-11 (+1d) | 2026-03-16 → 2026-03-17 (+1d) |
| PG-12580 | Painting Works - Putty, Primer and 1st | 2026-03-16 → 2026-03-17 (+1d) | 2026-03-23 → 2026-03-24 (+1d) |
| PG-12581 | Final Coat Painting | 2026-03-23 → 2026-03-24 (+1d) | 2026-04-14 → 2026-04-15 (+1d) |
| 1.3.1.3.4.30.3 | **Floor Finishing Works - Civil** | 2026-01-30 → 2026-01-31 (+1d) | 2026-03-23 → 2026-03-24 (+1d) |
| PG-12582 | Waterproofing for sunken areas | 2026-01-30 → 2026-01-31 (+1d) | 2026-02-03 → 2026-02-04 (+1d) |
| PG-12583 | Floor Tiling - Wet area | 2026-02-26 → 2026-02-27 (+1d) | 2026-03-04 → 2026-03-05 (+1d) |
| PG-12584 | Floor Tiling - Dry area | 2026-03-04 → 2026-03-05 (+1d) | 2026-03-10 → 2026-03-11 (+1d) |
| PG-12585 | Wooden doors | 2026-03-17 → 2026-03-18 (+1d) | 2026-03-23 → 2026-03-24 (+1d) |
| 1.3.1.3.4.31 | **Floor 28** | 2026-02-21 → 2026-02-23 (+2d) | 2026-05-06 → 2026-05-07 (+1d) |
| 1.3.1.3.4.31.1 | **Ceiling Finishing works - Civil** | 2026-03-02 → 2026-03-03 (+1d) | 2026-05-06 → 2026-05-07 (+1d) |
| PG-12586 | Gypsum Plastering | 2026-03-02 → 2026-03-03 (+1d) | 2026-03-09 → 2026-03-10 (+1d) |
| PG-12587 | Cornice fixing | 2026-03-19 → 2026-03-20 (+1d) | 2026-03-23 → 2026-03-24 (+1d) |
| PG-12589 | Toilet False ceiling | 2026-03-26 → 2026-03-27 (+1d) | 2026-03-31 → 2026-04-01 (+1d) |
| PG-12588 | Painting Works - Putty, Primer and 1st | 2026-04-06 → 2026-04-07 (+1d) | 2026-04-13 → 2026-04-14 (+1d) |
| PG-12590 | Final Coat Painting | 2026-04-13 → 2026-04-14 (+1d) | 2026-05-06 → 2026-05-07 (+1d) |
| 1.3.1.3.4.31.2 | **Wall Finishing works - Civil** | 2026-02-21 → 2026-02-23 (+2d) | 2026-05-06 → 2026-05-07 (+1d) |
| PG-12591 | Balcony Railing Fixing works | 2026-02-21 → 2026-02-23 (+2d) | 2026-02-26 → 2026-02-27 (+1d) |
| PG-12593 | Dadoing - Wet area | 2026-03-13 → 2026-03-14 (+1d) | 2026-03-19 → 2026-03-20 (+1d) |
| PG-12592 | UPVC Windows & Sliding doors | 2026-03-31 → 2026-04-01 (+1d) | 2026-04-06 → 2026-04-07 (+1d) |
| PG-12594 | Painting Works - Putty, Primer and 1st | 2026-04-06 → 2026-04-07 (+1d) | 2026-04-13 → 2026-04-14 (+1d) |
| PG-12595 | Final Coat Painting | 2026-04-13 → 2026-04-14 (+1d) | 2026-05-06 → 2026-05-07 (+1d) |
| 1.3.1.3.4.31.3 | **Floor Finishing Works - Civil** | 2026-02-21 → 2026-02-23 (+2d) | 2026-04-13 → 2026-04-14 (+1d) |
| PG-12596 | Waterproofing for sunken areas | 2026-02-21 → 2026-02-23 (+2d) | 2026-02-25 → 2026-02-26 (+1d) |
| PG-12597 | Floor Tiling - Wet area | 2026-03-19 → 2026-03-20 (+1d) | 2026-03-25 → 2026-03-26 (+1d) |
| PG-12598 | Floor Tiling - Dry area | 2026-03-25 → 2026-03-26 (+1d) | 2026-03-31 → 2026-04-01 (+1d) |
| PG-12599 | Wooden doors | 2026-04-07 → 2026-04-08 (+1d) | 2026-04-13 → 2026-04-14 (+1d) |
| 1.3.1.3.4.32 | **Floor 29** | 2026-03-14 → 2026-03-16 (+2d) | 2026-05-28 → 2026-05-29 (+1d) |
| 1.3.1.3.4.32.1 | **Ceiling Finishing works - Civil** | 2026-03-24 → 2026-03-25 (+1d) | 2026-05-28 → 2026-05-29 (+1d) |
| PG-12600 | Gypsum Plastering | 2026-03-24 → 2026-03-25 (+1d) | 2026-03-31 → 2026-04-01 (+1d) |
| PG-12601 | Cornice fixing | 2026-04-16 → 2026-04-17 (+1d) | 2026-04-21 → 2026-04-22 (+1d) |
| PG-12603 | Toilet False ceiling | 2026-04-17 → 2026-04-18 (+1d) | 2026-04-22 → 2026-04-23 (+1d) |
| PG-12602 | Painting Works - Putty, Primer and 1st | 2026-04-28 → 2026-04-29 (+1d) | 2026-05-05 → 2026-05-06 (+1d) |
| PG-12604 | Final Coat Painting | 2026-05-05 → 2026-05-06 (+1d) | 2026-05-28 → 2026-05-29 (+1d) |
| 1.3.1.3.4.32.2 | **Wall Finishing works - Civil** | 2026-03-14 → 2026-03-16 (+2d) | 2026-05-28 → 2026-05-29 (+1d) |
| PG-12605 | Balcony Railing Fixing works | 2026-03-14 → 2026-03-16 (+2d) | 2026-03-19 → 2026-03-20 (+1d) |
| PG-12607 | Dadoing - Wet area | 2026-04-04 → 2026-04-06 (+2d) | 2026-04-10 → 2026-04-11 (+1d) |
| PG-12606 | UPVC Windows & Sliding doors | 2026-04-22 → 2026-04-23 (+1d) | 2026-04-28 → 2026-04-29 (+1d) |
| PG-12608 | Painting Works - Putty, Primer and 1st | 2026-04-28 → 2026-04-29 (+1d) | 2026-05-05 → 2026-05-06 (+1d) |
| PG-12609 | Final Coat Painting | 2026-05-05 → 2026-05-06 (+1d) | 2026-05-28 → 2026-05-29 (+1d) |
| 1.3.1.3.4.32.3 | **Floor Finishing Works - Civil** | 2026-03-14 → 2026-03-16 (+2d) | 2026-05-05 → 2026-05-06 (+1d) |
| PG-12610 | Waterproofing for sunken areas | 2026-03-14 → 2026-03-16 (+2d) | 2026-03-18 → 2026-03-19 (+1d) |
| PG-12611 | Floor Tiling - Wet area | 2026-04-10 → 2026-04-11 (+1d) | 2026-04-16 → 2026-04-17 (+1d) |

| ID | Task | Start | Finish |
| --- | --- | --- | --- |
| PG-12612 | Floor Tiling - Dry area | 2026-04-16 → 2026-04-17 (+1d) | 2026-04-22 → 2026-04-23 (+1d) |
| PG-12613 | Wooden doors | 2026-04-29 → 2026-04-30 (+1d) | 2026-05-05 → 2026-05-06 (+1d) |
| 1.3.1.3.4.33 | **External Finishing works** | 2025-12-23 → 2025-12-24 (+1d) | 2026-04-20 → 2026-04-21 (+1d) |
| PG-12614 | External walls tie rod hole plugging with GP2 | 2025-12-23 → 2025-12-24 (+1d) | 2026-01-28 → 2026-01-29 (+1d) |
| PG-12615 | External walls grinding works | 2026-01-15 → 2026-01-16 (+1d) | 2026-03-04 → 2026-03-05 (+1d) |
| PG-12616 | Texture and painting works | 2026-02-26 → 2026-02-27 (+1d) | 2026-04-20 → 2026-04-21 (+1d) |
| 1.3.1.3.5 | **Corridor & Fire Staircase Finishing works** | 2026-02-28 → 2026-03-02 (+2d) | 2026-06-26 → 2026-06-27 (+1d) |
| 1.3.1.3.5.1 | **Ceiling Finishing works - Civil** | 2026-02-28 → 2026-03-02 (+2d) | 2026-05-22 → 2026-05-23 (+1d) |
| PG-12617 | Gypsum Plastering | 2026-02-28 → 2026-03-02 (+2d) | 2026-03-07 → 2026-03-09 (+2d) |
| PG-12618 | Cornice fixing | 2026-03-06 → 2026-03-07 (+1d) | 2026-03-11 → 2026-03-12 (+1d) |
| PG-12619 | Painting Works - Putty, Primer and 1st | 2026-03-24 → 2026-03-25 (+1d) | 2026-03-31 → 2026-04-01 (+1d) |
| PG-12620 | False ceiling | 2026-03-31 → 2026-04-01 (+1d) | 2026-05-05 → 2026-05-06 (+1d) |
| PG-12621 | Final Coat Painting |  | 2026-05-22 → 2026-05-23 (+1d) |
| 1.3.1.3.5.2 | **Wall Finishing works - Civil** | 2026-04-04 → 2026-04-06 (+2d) | 2026-06-26 → 2026-06-27 (+1d) |
| PG-12622 | UPVC Windows & Sliding doors | 2026-04-04 → 2026-04-06 (+2d) | 2026-04-10 → 2026-04-11 (+1d) |
| PG-12623 | Wall Cladding Upto 1.2 Mts | 2026-04-22 → 2026-04-23 (+1d) | 2026-05-15 → 2026-05-16 (+1d) |
| PG-12624 | Painting Works - Texture & one coat Painting works | 2026-05-22 → 2026-05-23 (+1d) | 2026-06-09 → 2026-06-10 (+1d) |
| PG-12625 | Final Coat Painting |  | 2026-06-26 → 2026-06-27 (+1d) |
| 1.3.1.3.5.3 | **Floor Finishing Works - Civil** | 2026-03-07 → 2026-03-09 (+2d) | 2026-04-06 → 2026-04-07 (+1d) |
| PG-12626 | Fire Doors installation | 2026-03-07 → 2026-03-09 (+2d) | 2026-03-19 → 2026-03-20 (+1d) |
| PG-12627 | Vitrified tile flooring works | 2026-03-19 → 2026-03-20 (+1d) | 2026-04-06 → 2026-04-07 (+1d) |
| 1.3.1.3.5.4 | **Fire Staircase Finishing Works - Civil** | 2026-03-07 → 2026-03-09 (+2d) | 2026-06-26 → 2026-06-27 (+1d) |
| PG-12628 | Staircase Railing Fixing works | 2026-03-07 → 2026-03-09 (+2d) | 2026-03-31 → 2026-04-01 (+1d) |
| PG-12629 | Wall and ceiling Gypsum plastering |  | 2026-04-23 → 2026-04-24 (+1d) |
| PG-12630 | Staircase Flooring and Skirting Works |  | 2026-05-22 → 2026-05-23 (+1d) |
| PG-12631 | UPVC Window fixing works |  | 2026-06-09 → 2026-06-10 (+1d) |
| PG-12632 | Staircase Painting works | 2026-06-03 → 2026-06-04 (+1d) | 2026-06-26 → 2026-06-27 (+1d) |
| 1.3.1.3.6 | **MEP Civil Works (Shaft, Lift Shaft & OHT )** | 2025-12-09 → 2025-12-10 (+1d) | 2026-05-08 → 2026-05-09 (+1d) |
| 1.3.1.3.6.1 | **Lift Shaft Works** | 2025-12-09 → 2025-12-10 (+1d) | 2026-05-08 → 2026-05-09 (+1d) |
| PG-12633 | Tie rod hole packing | 2025-12-09 → 2025-12-10 (+1d) | 2025-12-18 → 2025-12-19 (+1d) |
| PG-12634 | Grinding works | 2025-12-18 → 2025-12-19 (+1d) | 2025-12-24 → 2025-12-25 (+1d) |
| PG-12635 | Lift pit water proofing works | 2025-12-24 → 2025-12-25 (+1d) | 2026-01-17 → 2026-01-19 (+2d) |
| PG-12636 | Shaft door opening finishing | 2026-01-17 → 2026-01-19 (+2d) | 2026-01-27 → 2026-01-28 (+1d) |
| PG-12637 | Painting works | 2026-01-27 → 2026-01-28 (+1d) | 2026-02-05 → 2026-02-06 (+1d) |
| PG-12638 | Lift Wall Cladding Works | 2026-04-21 → 2026-04-22 (+1d) | 2026-05-08 → 2026-05-09 (+1d) |
| 1.3.1.3.6.2 | **Electrical Shaft works** | 2025-12-09 → 2025-12-10 (+1d) | 2026-01-10 → 2026-01-12 (+2d) |
| PG-12639 | Tie rod hole packing | 2025-12-09 → 2025-12-10 (+1d) | 2025-12-18 → 2025-12-19 (+1d) |
| PG-12640 | Grinding works | 2025-12-18 → 2025-12-19 (+1d) | 2025-12-24 → 2025-12-25 (+1d) |
| PG-12641 | Shaft door opening finishing | 2025-12-24 → 2025-12-25 (+1d) | 2026-01-01 → 2026-01-02 (+1d) |
| PG-12642 | Painting works | 2026-01-01 → 2026-01-02 (+1d) | 2026-01-10 → 2026-01-12 (+2d) |
| 1.3.1.3.6.3 | **FPS Shaft works** | 2025-12-09 → 2025-12-10 (+1d) | 2026-01-10 → 2026-01-12 (+2d) |
| PG-12643 | Tie rod hole packing | 2025-12-09 → 2025-12-10 (+1d) | 2025-12-18 → 2025-12-19 (+1d) |
| PG-12644 | Grinding works | 2025-12-18 → 2025-12-19 (+1d) | 2025-12-24 → 2025-12-25 (+1d) |
| PG-12645 | Shaft door opening finishing | 2025-12-24 → 2025-12-25 (+1d) | 2026-01-01 → 2026-01-02 (+1d) |
| PG-12646 | Painting works | 2026-01-01 → 2026-01-02 (+1d) | 2026-01-10 → 2026-01-12 (+2d) |
| 1.3.1.3.6.4 | **PHE Shaft works** | 2025-12-09 → 2025-12-10 (+1d) | 2026-01-10 → 2026-01-12 (+2d) |
| PG-12647 | Tie rod hole packing | 2025-12-09 → 2025-12-10 (+1d) | 2025-12-18 → 2025-12-19 (+1d) |
| PG-12648 | Grinding works | 2025-12-18 → 2025-12-19 (+1d) | 2025-12-24 → 2025-12-25 (+1d) |
| PG-12649 | Shaft door opening finishing | 2025-12-24 → 2025-12-25 (+1d) | 2026-01-01 → 2026-01-02 (+1d) |
| PG-12650 | Painting works | 2026-01-01 → 2026-01-02 (+1d) | 2026-01-10 → 2026-01-12 (+2d) |
| 1.3.1.3.6.5 | **Data & Communication Shaft** | 2025-12-09 → 2025-12-10 (+1d) | 2026-01-08 → 2026-01-09 (+1d) |
| PG-12651 | Tie rod hole packing | 2025-12-09 → 2025-12-10 (+1d) | 2025-12-18 → 2025-12-19 (+1d) |
| PG-12652 | Grinding works | 2025-12-18 → 2025-12-19 (+1d) | 2025-12-24 → 2025-12-25 (+1d) |
| PG-12653 | Shaft door opening finishing | 2025-12-24 → 2025-12-25 (+1d) | 2025-12-30 → 2025-12-31 (+1d) |
| PG-12654 | Painting works | 2025-12-30 → 2025-12-31 (+1d) | 2026-01-08 → 2026-01-09 (+1d) |
| 1.3.1.3.6.6 | **OHT Works** | 2025-12-09 → 2025-12-10 (+1d) | 2026-01-28 → 2026-01-29 (+1d) |
| PG-12655 | Tank materials Supply & Shifting | 2025-12-09 → 2025-12-10 (+1d) | 2025-12-20 → 2025-12-22 (+2d) |
| PG-12656 | Assembling OHT FRP Tank | 2025-12-20 → 2025-12-22 (+2d) | 2026-01-01 → 2026-01-02 (+1d) |
| PG-12657 | Installation of OHT Tank | 2026-01-01 → 2026-01-02 (+1d) | 2026-01-19 → 2026-01-20 (+1d) |
| PG-12658 | Water tightness works and checking | 2026-01-19 → 2026-01-20 (+1d) | 2026-01-28 → 2026-01-29 (+1d) |
| 1.3.1.3.7 | **MEP Shaft works** | 2026-01-08 → 2026-01-09 (+1d) | 2026-04-01 → 2026-04-02 (+1d) |
| 1.3.1.3.7.1 | **Electrical** | 2026-01-10 → 2026-01-12 (+2d) | 2026-02-20 → 2026-02-21 (+1d) |
| PG-12659 | Tray Works | 2026-01-10 → 2026-01-12 (+2d) | 2026-01-22 → 2026-01-23 (+1d) |
| PG-12660 | Cable & Conducting works | 2026-01-22 → 2026-01-23 (+1d) | 2026-02-03 → 2026-02-04 (+1d) |
| PG-12661 | Wiring/DB/connector box installation and termination works |  | 2026-02-20 → 2026-02-21 (+1d) |
| 1.3.1.3.7.2 | **FPS** | 2026-01-10 → 2026-01-12 (+2d) | 2026-02-20 → 2026-02-21 (+1d) |
| PG-12662 | Shaft MS Piping & fixtures installation | 2026-01-10 → 2026-01-12 (+2d) | 2026-02-04 → 2026-02-05 (+1d) |
| PG-12663 | Tray / cabling / conducting & wiring works | 2026-02-04 → 2026-02-05 (+1d) | 2026-02-20 → 2026-02-21 (+1d) |
| 1.3.1.3.7.3 | **Data & Communication** | 2026-01-08 → 2026-01-09 (+1d) | 2026-02-26 → 2026-02-27 (+1d) |
| PG-12664 | Tray Works | 2026-01-08 → 2026-01-09 (+1d) | 2026-01-22 → 2026-01-23 (+1d) |

| ID | Task | Start | Finish | Complete | Total float |
| --- | --- | --- | --- | --- | --- |
| PG-12665 | Tray / cabling / conducting & wiring works | 2026-01-22 → 2026-01-23 (+1d) | 2026-02-10 → 2026-02-11 (+1d) |  |  |
| PG-12666 | Wiring/DB/connector box installation and termination works | 2026-02-10 → 2026-02-11 (+1d) | 2026-02-26 → 2026-02-27 (+1d) |  |  |
| 1.3.1.3.7.4 | **PHE** | 2026-01-10 → 2026-01-12 (+2d) | 2026-04-01 → 2026-04-02 (+1d) |  |  |
| PG-12667 | Bracket fixing works | 2026-01-10 → 2026-01-12 (+2d) | 2026-01-19 → 2026-01-20 (+1d) |  |  |
| PG-12668 | Piping Works | 2026-01-19 → 2026-01-20 (+1d) | 2026-02-05 → 2026-02-06 (+1d) |  |  |
| PG-12669 | Terrace Ring main & OHT Connection works | 2026-02-05 → 2026-02-06 (+1d) | 2026-03-24 → 2026-03-25 (+1d) |  |  |
| PG-12670 | Commissioning | 2026-03-24 → 2026-03-25 (+1d) | 2026-04-01 → 2026-04-02 (+1d) |  |  |
| 1.3.1.3.8 | **Lift Installation and Testing works** | 2025-12-24 → 2025-12-25 (+1d) | 2026-07-22 → 2026-07-23 (+1d) |  |  |
| PG-12671 | Lift Shaft Survey works | 2025-12-24 → 2025-12-25 (+1d) | 2026-01-05 → 2026-01-06 (+1d) |  |  |
| PG-12672 | Guide Rails fixing works | 2026-02-05 → 2026-02-06 (+1d) | 2026-03-24 → 2026-03-25 (+1d) |  |  |
| PG-12673 | Lift Frame fixing works |  | 2026-04-21 → 2026-04-22 (+1d) |  |  |
| PG-12674 | CAR Assembly works | 2026-04-21 → 2026-04-22 (+1d) | 2026-05-14 → 2026-05-15 (+1d) |  |  |
| PG-12675 | Lift Machine Room Works |  | 2026-06-18 → 2026-06-19 (+1d) |  |  |
| PG-12676 | Slow Speed & High Speed Testing works | 2026-06-18 → 2026-06-19 (+1d) | 2026-07-22 → 2026-07-23 (+1d) |  |  |
| 1.3.1.3.10 | **Entrance Lobby works** | 2026-06-26 → 2026-06-27 (+1d) | 2026-10-10 → 2026-10-12 (+2d) |  |  |
| PG-12684 | Flooring Works | 2026-06-26 → 2026-06-27 (+1d) | 2026-07-13 → 2026-07-14 (+1d) |  |  |
| PG-12685 | Glass Door and installation Works |  | 2026-08-05 → 2026-08-06 (+1d) |  |  |
| PG-12687 | Canopy Works |  | 2026-08-11 → 2026-08-12 (+1d) |  |  |
| PG-12686 | Painting Works | 2026-08-05 → 2026-08-06 (+1d) | 2026-08-18 → 2026-08-19 (+1d) |  |  |
| PG-12688 | Interior Works | 2026-08-18 → 2026-08-19 (+1d) | 2026-10-10 → 2026-10-12 (+2d) |  |  |
| 1.3.1.3.11 | **Lightening Arrester works** | 2026-04-20 → 2026-04-21 (+1d) | 2026-05-01 → 2026-05-02 (+1d) |  |  |
| PG-12689 | Conductor will be lifted with RCC Works, But Terrace works will be done once Parapet Painting done | 2026-04-20 → 2026-04-21 (+1d) | 2026-05-01 → 2026-05-02 (+1d) |  |  |
| 1.3.1.5 | **Landscape and Hardscape works** | 2026-04-20 → 2026-04-21 (+1d) | 2026-08-03 → 2026-08-04 (+1d) |  |  |
| PG-12715 | Hardscape ( Granite, Planter, Walkways Etc..) | 2026-04-20 → 2026-04-21 (+1d) | 2026-06-11 → 2026-06-12 (+1d) |  |  |
| PG-12716 | Filter media and soil filling works |  | 2026-06-29 → 2026-06-30 (+1d) |  |  |
| PG-12717 | Irrigation piping works |  | 2026-07-10 → 2026-07-11 (+1d) |  |  |
| PG-12718 | Planting works | 2026-07-10 → 2026-07-11 (+1d) | 2026-08-03 → 2026-08-04 (+1d) |  |  |
| 1.3.9 | **Project Infrastructure Works ( Services/MEP )** |  | 2026-09-19 → 2026-09-21 (+2d) |  |  |
| 1.3.9.1 | **Civil & Services Works ( Transformer, DG,STP )** |  | 2026-09-19 → 2026-09-21 (+2d) |  |  |
| 1.3.9.1.1 | **Transformer Yard Civil Works** |  | 2026-05-25 → 2026-05-26 (+1d) |  |  |
| 1.3.9.1.1.1 | **Transformer 01** |  | 2026-05-25 → 2026-05-26 (+1d) |  |  |
| PG-30428 | Footing and Pedestal Excavation Works |  | 2026-03-27 → 2026-03-28 (+1d) |  |  |
| PG-30429 | Footing and Pedestal Reinforcement works | 2026-03-30 → 2026-03-31 (+1d) | 2026-04-02 → 2026-04-03 (+1d) |  |  |
| PG-30430 | Footing and Pedestal Concrete works | 2026-04-02 → 2026-04-03 (+1d) | 2026-04-14 → 2026-04-15 (+1d) |  |  |
| PG-30431 | Fencing Retaining wall footing reinforcement works | 2026-04-14 → 2026-04-15 (+1d) | 2026-04-21 → 2026-04-22 (+1d) |  |  |
| PG-30432 | Fencing Retaining wall footing formwork and concrete works | 2026-04-21 → 2026-04-22 (+1d) | 2026-04-28 → 2026-04-29 (+1d) |  |  |
| PG-30434 | Fencing works MS/GRC | 2026-04-25 → 2026-04-27 (+2d) | 2026-05-20 → 2026-05-21 (+1d) |  |  |
| PG-30433 | Retaining wall upto low level concrete works | 2026-04-28 → 2026-04-29 (+1d) | 2026-05-02 → 2026-05-04 (+2d) |  |  |
| PG-30435 | Floor Aggregates spreading works | 2026-05-20 → 2026-05-21 (+1d) | 2026-05-25 → 2026-05-26 (+1d) |  |  |
| 1.3.9.1.2 | **Transformer Yard Electrical works** | 2026-08-03 → 2026-08-04 (+1d) | 2026-09-19 → 2026-09-21 (+2d) |  |  |
| 1.3.9.1.2.1 | **Transformer 01** | 2026-08-03 → 2026-08-04 (+1d) | 2026-09-19 → 2026-09-21 (+2d) |  |  |
| PG-30460 | Cable Trench works | 2026-08-03 → 2026-08-04 (+1d) | 2026-08-13 → 2026-08-14 (+1d) |  |  |
| PG-30461 | LTQS Installation Works | 2026-08-13 → 2026-08-14 (+1d) | 2026-08-24 → 2026-08-25 (+1d) |  |  |
| PG-30462 | Cable laying works | 2026-08-24 → 2026-08-25 (+1d) | 2026-09-08 → 2026-09-09 (+1d) |  |  |
| PG-30463 | Cable Termination works |  | 2026-09-12 → 2026-09-14 (+2d) |  |  |
| PG-30464 | Testing and commissioning works | 2026-09-12 → 2026-09-14 (+2d) | 2026-09-19 → 2026-09-21 (+2d) |  |  |
| PG-30542 | piping for Excess Treated water discharge | 2025-12-01 → 2025-11-29 (-2d) |  |  | 211.58d → 212.91d |
| PG-30710 | Glazing / Façade /Wall Cladding Works |  |  | 86% → 94% | 299.47d → 300.4d |
| 1.6 | **Testing And Commissioning Works** |  | 2026-10-24 → 2026-10-26 (+2d) |  |  |
| 1.6.1.1 | **Tower 1** |  | 2026-04-20 → 2026-04-18 (-2d) |  |  |
| PG-30734 | T&C - Floor 3 |  | 2025-04-04 → 2025-04-05 A (+1d) | 98% → 100% | 453.34d → none |
| PG-30735 | T&C - Floor 4 |  |  | 61% → 81% | 442.51d → 443.44d |
| PG-30736 | T&C - Floor 5 |  | 2025-05-07 → 2025-05-08 (+1d) | 3% → 21% | 426.05d → 426.41d |
| PG-30737 | T&C - Floor 6 | 2025-04-16 → 2025-04-17 (+1d) | 2025-05-21 → 2025-05-22 (+1d) |  | 414.72d → 414.68d |
| PG-30739 | T&C - Floor 8 | 2025-05-15 → 2025-05-14 (-1d) | 2025-06-18 → 2025-06-17 (-1d) |  | 388.83d → 390.37d |
| PG-30741 | T&C - Floor 10 | 2025-06-12 → 2025-06-13 (+1d) | 2025-07-18 → 2025-07-19 (+1d) |  | 364.72d → 364.68d |
| PG-30743 | T&C - Floor 12 | 2025-07-10 → 2025-07-09 (-1d) |  |  | 342.92d → 344.24d |
| PG-30751 | T&C - Floor 20 | 2025-11-14 → 2025-11-13 (-1d) |  |  | 236.25d → 237.57d |
| PG-30752 | T&C - Floor 21 | 2025-12-06 → 2025-12-05 (-1d) |  |  | 217.25d → 218.57d |
| 1.6.1.1.2 | **Common Areas** |  | 2026-04-20 → 2026-04-18 (-2d) |  |  |
| PG-30755 | T&C - Internal Electrical Works |  | 2025-10-21 → 2025-10-20 (-1d) |  | 256.92d → 258.24d |
| PG-30756 | T&C - Internal FPS Works |  | 2025-10-21 → 2025-10-20 (-1d) |  | 256.58d → 257.91d |
| PG-30757 | T&C - Data & Communication Works |  | 2025-10-27 → 2025-10-25 (-2d) |  | 251.58d → 252.91d |
| PG-30759 | T&C - Lift Works |  | 2026-04-20 → 2026-04-18 (-2d) |  | 103.08d → 104.41d |
| PG-30766 | T&C - Floor 4 |  |  | 37% → 58% | 435.43d → 436.36d |
| PG-30767 | T&C - Floor 5 |  |  | 8% → 28% | 426.59d → 427.52d |
| PG-30768 | T&C - Floor 6 | 2025-04-16 → 2025-04-17 (+1d) |  |  | 414.69d → 414.84d |
| PG-30772 | T&C - Floor 10 | 2025-06-13 → 2025-06-14 (+1d) | 2025-07-18 → 2025-07-19 (+1d) |  | 364.56d → 364.51d |
| PG-30773 | T&C - Floor 11 |  | 2025-08-01 → 2025-07-31 (-1d) |  | 352.33d → 354.04d |
| PG-30774 | T&C - Floor 12 | 2025-07-11 → 2025-07-10 (-1d) |  |  | 341.33d → 342.79d |

| ID | Task | Start | Finish | Complete | Total float |
| --- | --- | --- | --- | --- | --- |
| PG-30775 | T&C - Floor 13 | 2025-07-25 → 2025-07-24 (-1d) |  |  | 330.33d → 331.79d |
| PG-30776 | T&C - Floor 14 | 2025-08-07 → 2025-08-06 (-1d) |  |  | 319.33d → 320.79d |
| PG-30777 | T&C - Floor 15 | 2025-08-20 → 2025-08-19 (-1d) |  |  | 309.33d → 310.79d |
| PG-30778 | T&C - Floor 16 | 2025-09-01 → 2025-08-30 (-2d) |  |  | 299d → 300.46d |
| PG-30779 | T&C - Floor 17 | 2025-09-13 → 2025-09-12 (-1d) |  |  | 288d → 289.46d |
| PG-30783 | T&C - Floor 21 |  | 2025-12-11 → 2025-12-10 (-1d) |  | 243.5d → 244.96d |
| PG-30784 | T&C - Floor 22 |  | 2026-01-01 → 2025-12-31 (-1d) |  | 223.67d → 225.12d |
| PG-30785 | T&C - Floor 23 | 2025-12-19 → 2025-12-18 (-1d) | 2026-01-23 → 2026-01-22 (-1d) |  | 205.67d → 207.12d |
| PG-30786 | T&C - Floor 24 |  | 2026-02-14 → 2026-02-13 (-1d) |  | 186.5d → 187.96d |
| PG-30787 | T&C - Floor 25 | 2026-02-03 → 2026-02-02 (-1d) |  |  | 167d → 168.46d |
| PG-30788 | T&C - Floor 26 | 2026-02-24 → 2026-02-23 (-1d) |  |  | 119.5d → 120.96d |
| PG-30790 | T&C - Internal FPS Works |  | 2025-11-29 → 2025-11-28 (-1d) |  | 222.67d → 224.12d |
| PG-30789 | T&C - Internal Electrical Works |  | 2025-11-29 → 2025-11-28 (-1d) |  | 222.83d → 224.29d |
| PG-30791 | T&C - Data & Communication Works | 2025-11-19 → 2025-11-18 (-1d) |  |  | 217.33d → 218.79d |
| PG-30792 | T&C - Internal PHE Works including OHT | 2025-12-23 → 2025-12-22 (-1d) |  |  | 181.5d → 182.96d |
| PG-30795 | T&C - Lightining Arrestor works | 2026-01-22 → 2026-01-21 (-1d) | 2026-01-31 → 2026-01-30 (-1d) |  | 215.67d → 217.12d |
| PG-30794 | T&C - Electrical Panel Works | 2026-02-25 → 2026-02-24 (-1d) |  |  | 158.33d → 159.79d |
| PG-30793 | T&C - Lift Works | 2026-04-16 → 2026-04-15 (-1d) |  |  | 116.17d → 117.62d |
| 1.6.1.3.1 | **Units** |  | 2026-07-08 → 2026-07-09 (+1d) |  |  |
| PG-30796 | T&C - Ground Floor |  |  | 49% → 69% | 439.94d → 440.87d |
| PG-30797 | T&C - Floor 1 |  |  | 4% → 24% | 425.56d → 426.49d |
| PG-30799 | T&C - Floor 3 | 2025-05-02 → 2025-05-06 (+4d) | 2025-06-06 → 2025-06-10 (+4d) |  | 399.58d → 397.37d |
| PG-30800 | T&C - Floor 4 |  | 2025-06-21 → 2025-06-20 (-1d) |  | 386.83d → 388.11d |
| PG-30802 | T&C - Floor 6 | 2025-06-16 → 2025-06-17 (+1d) | 2025-07-21 → 2025-07-22 (+1d) |  | 362.93d → 362.57d |
| PG-30803 | T&C - Floor 7 | 2025-06-30 → 2025-07-01 (+1d) | 2025-08-02 → 2025-08-04 (+2d) |  |  |
| PG-30804 | T&C - Floor 8 | 2025-07-16 → 2025-07-17 (+1d) | 2025-08-20 → 2025-08-21 (+1d) |  |  |
| PG-30805 | T&C - Floor 9 | 2025-07-29 → 2025-07-30 (+1d) | 2025-09-02 → 2025-09-03 (+1d) |  |  |
| PG-30806 | T&C - Floor 10 | 2025-08-14 → 2025-08-16 (+2d) | 2025-09-19 → 2025-09-20 (+1d) |  |  |
| PG-30807 | T&C - Floor 11 | 2025-08-28 → 2025-08-29 (+1d) | 2025-10-03 → 2025-10-04 (+1d) |  |  |
| PG-30808 | T&C - Floor 12 | 2025-09-13 → 2025-09-15 (+2d) | 2025-10-18 → 2025-10-20 (+2d) |  |  |
| PG-30809 | T&C - Floor 13 | 2025-09-26 → 2025-09-27 (+1d) | 2025-10-31 → 2025-11-03 (+3d) |  |  |
| PG-30810 | T&C - Floor 14 | 2025-10-08 → 2025-10-09 (+1d) | 2025-11-12 → 2025-11-13 (+1d) |  |  |
| PG-30812 | T&C - Floor 16 |  | 2025-12-08 → 2025-12-09 (+1d) |  |  |
| PG-30813 | T&C - Floor 17 |  | 2025-12-20 → 2025-12-22 (+2d) |  |  |
| PG-30814 | T&C - Floor 18 |  | 2026-01-02 → 2026-01-03 (+1d) |  |  |
| PG-30815 | T&C - Floor 19 |  | 2026-01-15 → 2026-01-16 (+1d) |  |  |
| PG-30816 | T&C - Floor 20 | 2025-12-25 → 2025-12-26 (+1d) | 2026-01-30 → 2026-01-31 (+1d) |  |  |
| PG-30817 | T&C - Floor 21 | 2026-01-07 → 2026-01-08 (+1d) | 2026-02-12 → 2026-02-13 (+1d) |  |  |
| PG-30818 | T&C - Floor 22 | 2026-01-20 → 2026-01-21 (+1d) | 2026-02-25 → 2026-02-26 (+1d) |  |  |
| PG-30819 | T&C - Floor 23 | 2026-02-03 → 2026-02-04 (+1d) | 2026-03-09 → 2026-03-10 (+1d) |  |  |
| PG-30820 | T&C - Floor 24 | 2026-02-16 → 2026-02-17 (+1d) | 2026-03-23 → 2026-03-24 (+1d) |  |  |
| PG-30821 | T&C - Floor 25 | 2026-03-09 → 2026-03-10 (+1d) | 2026-04-13 → 2026-04-14 (+1d) |  |  |
| PG-30822 | T&C - Floor 26 | 2026-03-30 → 2026-03-31 (+1d) | 2026-05-06 → 2026-05-07 (+1d) |  |  |
| PG-30823 | T&C - Floor 27 | 2026-04-21 → 2026-04-22 (+1d) | 2026-05-27 → 2026-05-28 (+1d) |  |  |
| PG-30824 | T&C - Floor 28 | 2026-05-13 → 2026-05-14 (+1d) | 2026-06-17 → 2026-06-18 (+1d) |  |  |
| PG-30825 | T&C - Floor 29 | 2026-06-04 → 2026-06-05 (+1d) | 2026-07-08 → 2026-07-09 (+1d) |  |  |
| 1.6.1.3.2 | **Common Areas** | 2026-02-20 → 2026-02-21 (+1d) |  |  |  |
| PG-30826 | T&C - Internal Electrical Works | 2026-02-20 → 2026-02-21 (+1d) | 2026-03-10 → 2026-03-11 (+1d) |  |  |
| PG-30827 | T&C - Internal FPS Works | 2026-02-20 → 2026-02-21 (+1d) | 2026-03-10 → 2026-03-11 (+1d) |  |  |
| PG-30828 | T&C - Data & Communication Works | 2026-02-26 → 2026-02-27 (+1d) | 2026-03-16 → 2026-03-17 (+1d) |  |  |
| PG-30829 | T&C - Internal PHE Works including OHT | 2026-04-01 → 2026-04-02 (+1d) | 2026-04-24 → 2026-04-25 (+1d) |  |  |
| PG-30832 | T&C - Lightining Arrestor works | 2026-05-01 → 2026-05-02 (+1d) | 2026-05-08 → 2026-05-09 (+1d) |  |  |
| PG-30830 | T&C - Lift Works |  | 2026-08-03 → 2026-08-04 (+1d) |  |  |
| 1.6.9 | **Project InfraStructure Works ( Services & MEP )** |  | 2026-10-24 → 2026-10-26 (+2d) |  |  |
| 1.6.9.1 | **Transformer Works** | 2026-09-19 → 2026-09-21 (+2d) | 2026-10-24 → 2026-10-26 (+2d) |  |  |
| PG-31514 | T&C - Transformer 01 ( Building 01 & 02 ) | 2026-09-19 → 2026-09-21 (+2d) | 2026-10-24 → 2026-10-26 (+2d) |  |  |
| 1.7 | **Snagging De Snagging** |  | 2026-11-27 → 2026-11-28 (+1d) |  |  |
| 1.7.1 | **Building 1** |  | 2026-10-28 → 2026-10-29 (+1d) |  |  |
| PG-31535 | Floor 1 |  |  | 79% → 99% | 478.22d → 479.14d |
| PG-31536 | Floor 2 |  |  | 32% → 52% | 463.81d → 464.73d |
| PG-31537 | Floor 3 | 2025-04-04 → 2025-04-05 A (+1d) | 2025-05-10 → 2025-05-08 (-2d) | 0% → 24% | 453.34d → 456.14d |
| PG-31539 | Floor 5 | 2025-05-07 → 2025-05-08 (+1d) | 2025-06-11 → 2025-06-12 (+1d) |  | 426.05d → 426.41d |
| PG-31540 | Floor 6 | 2025-05-21 → 2025-05-22 (+1d) | 2025-06-24 → 2025-06-25 (+1d) |  | 414.72d → 414.68d |
| PG-31542 | Floor 8 | 2025-06-18 → 2025-06-17 (-1d) |  |  | 388.83d → 390.37d |
| PG-31543 | Floor 9 |  | 2025-08-07 → 2025-08-06 (-1d) |  | 377.6d → 378.75d |
| PG-31544 | Floor 10 | 2025-07-18 → 2025-07-19 (+1d) | 2025-08-22 → 2025-08-23 (+1d) |  | 364.72d → 364.68d |
| PG-31547 | Floor 13 |  | 2025-10-03 → 2025-10-01 (-2d) |  | 330.42d → 331.74d |
| PG-31548 | Floor 14 |  | 2025-10-16 → 2025-10-15 (-1d) |  | 319.42d → 320.74d |
| PG-31549 | Floor 15 |  | 2025-10-28 → 2025-10-27 (-1d) |  | 309.42d → 310.74d |
| PG-31550 | Floor 16 |  | 2025-11-11 → 2025-11-10 (-1d) |  | 298.42d → 299.74d |

| ID | Task | Start | Finish | Complete | Total float |
| --- | --- | --- | --- | --- | --- |
| PG-31551 | Floor 17 |  | 2025-11-24 → 2025-11-22 (-2d) |  | 287.42d → 288.74d |
| PG-31552 | Floor 18 |  | 2025-12-06 → 2025-12-05 (-1d) |  | 276.42d → 277.74d |
| PG-31553 | Floor 19 |  | 2025-12-31 → 2025-12-30 (-1d) |  | 255.42d → 256.74d |
| 1.7.1.1.2 | **Common Areas** | 2025-10-21 → 2025-10-20 (-1d) |  |  |  |
| PG-31559 | Internal Electrical Works | 2025-10-21 → 2025-10-20 (-1d) |  |  | 256.92d → 258.24d |
| PG-31560 | Internal FPS Works | 2025-10-21 → 2025-10-20 (-1d) | 2025-12-30 → 2025-12-29 (-1d) |  | 256.58d → 257.91d |
| PG-31561 | Data & Communication Works | 2025-10-27 → 2025-10-25 (-2d) | 2026-01-05 → 2026-01-03 (-2d) |  | 251.58d → 252.91d |
| PG-31562 | Internal PHE Works including OHT |  | 2026-02-19 → 2026-02-18 (-1d) |  | 213.58d → 214.91d |
| PG-31565 | Lightining Arrestor works |  | 2026-01-12 → 2026-01-10 (-2d) |  | 245.42d → 246.74d |
| PG-31563 | Lift Works | 2026-04-20 → 2026-04-18 (-2d) |  |  | 103.08d → 104.41d |
| 1.7.1.2.1 | **Units** |  | 2026-05-05 → 2026-05-04 (-1d) |  |  |
| PG-31567 | Floor 1 |  | 2025-04-09 → 2025-04-10 A (+1d) | 84% → 100% | 479.96d → none |
| PG-31568 | Floor 2 |  |  | 46% → 66% | 468.11d → 469.03d |
| PG-31569 | Floor 3 |  | 2025-05-08 → 2025-05-09 (+1d) | 3% → 18% | 454.92d → 454.59d |
| PG-31572 | Floor 6 |  | 2025-06-24 → 2025-06-25 (+1d) |  | 414.69d → 414.84d |
| PG-31574 | Floor 8 |  | 2025-07-24 → 2025-07-25 (+1d) |  | 388.83d → 389.43d |
| PG-31575 | Floor 9 |  | 2025-08-05 → 2025-08-06 (+1d) |  | 378.67d → 379.29d |
| PG-31576 | Floor 10 | 2025-07-18 → 2025-07-19 (+1d) | 2025-08-23 → 2025-08-25 (+2d) |  | 364.56d → 364.51d |
| PG-31577 | Floor 11 | 2025-08-01 → 2025-07-31 (-1d) | 2025-09-06 → 2025-09-05 (-1d) |  | 352.33d → 354.04d |
| PG-31578 | Floor 12 |  | 2025-09-19 → 2025-09-18 (-1d) |  | 341.33d → 342.79d |
| PG-31579 | Floor 13 |  | 2025-10-03 → 2025-10-01 (-2d) |  | 330.33d → 331.79d |
| PG-31580 | Floor 14 |  | 2025-10-16 → 2025-10-15 (-1d) |  | 319.33d → 320.79d |
| PG-31581 | Floor 15 |  | 2025-10-28 → 2025-10-27 (-1d) |  | 309.33d → 310.79d |
| PG-31584 | Floor 18 |  | 2025-12-06 → 2025-12-05 (-1d) |  | 276.17d → 277.62d |
| PG-31585 | Floor 19 |  | 2025-12-19 → 2025-12-18 (-1d) |  | 265.17d → 266.62d |
| PG-31586 | Floor 20 |  | 2026-01-02 → 2026-01-01 (-1d) |  | 253.17d → 254.62d |
| PG-31587 | Floor 21 | 2025-12-11 → 2025-12-10 (-1d) | 2026-01-14 → 2026-01-13 (-1d) |  | 243.5d → 244.96d |
| PG-31588 | Floor 22 | 2026-01-01 → 2025-12-31 (-1d) |  |  | 223.67d → 225.12d |
| PG-31589 | Floor 23 | 2026-01-23 → 2026-01-22 (-1d) |  |  | 205.67d → 207.12d |
| PG-31590 | Floor 24 | 2026-02-14 → 2026-02-13 (-1d) | 2026-03-23 → 2026-03-21 (-2d) |  | 186.5d → 187.96d |
| PG-31591 | Floor 25 | 2026-03-10 → 2026-03-09 (-1d) |  |  | 167d → 168.46d |
| PG-31592 | Floor 26 |  | 2026-05-05 → 2026-05-04 (-1d) |  | 149.17d → 150.62d |
| 1.7.1.2.2 | **Comman Areas** | 2025-11-29 → 2025-11-28 (-1d) |  |  |  |
| PG-31595 | Internal FPS Works | 2025-11-29 → 2025-11-28 (-1d) |  |  | 222.67d → 224.12d |
| PG-31596 | Data & Communication Works |  | 2026-02-14 → 2026-02-13 (-1d) |  | 217.33d → 218.79d |
| PG-31597 | Internal PHE Works including OHT |  | 2026-03-28 → 2026-03-27 (-1d) |  | 181.5d → 182.96d |
| PG-31600 | Lightining Arrestor works | 2026-01-31 → 2026-01-30 (-1d) |  |  | 215.67d → 217.12d |
| PG-31599 | Electrical Panel Works |  | 2026-04-24 → 2026-04-23 (-1d) |  | 158.33d → 159.79d |
| PG-31594 | Internal Electrical Works |  | 2026-06-09 → 2026-06-08 (-1d) |  | 119.5d → 120.96d |
| PG-31598 | Lift Works | 2026-05-09 → 2026-05-08 (-1d) | 2026-06-12 → 2026-06-11 (-1d) |  | 116.17d → 117.62d |
| PG-31593 | Common Area Civil Works | 2026-08-05 → 2026-08-04 (-1d) |  |  | 10.67d → 12.12d |
| 1.7.1.3 | **Tower 3** |  | 2026-10-28 → 2026-10-29 (+1d) |  |  |
| 1.7.1.3.1 | **Units** |  | 2026-08-12 → 2026-08-13 (+1d) |  |  |
| PG-31603 | Floor 2 |  | 2025-06-24 → 2025-06-25 (+1d) |  | 414.95d → 415.18d |
| PG-31604 | Floor 3 | 2025-06-06 → 2025-06-10 (+4d) | 2025-07-12 → 2025-07-16 (+4d) |  | 399.58d → 397.37d |
| PG-31605 | Floor 4 | 2025-06-21 → 2025-06-20 (-1d) |  |  | 386.83d → 388.11d |
| PG-31607 | Floor 6 | 2025-07-21 → 2025-07-22 (+1d) | 2025-08-25 → 2025-08-27 (+2d) |  | 362.93d → 362.57d |
| PG-31608 | Floor 7 | 2025-08-02 → 2025-08-04 (+2d) | 2025-09-08 → 2025-09-09 (+1d) |  |  |
| PG-31609 | Floor 8 | 2025-08-20 → 2025-08-21 (+1d) | 2025-09-25 → 2025-09-26 (+1d) |  |  |
| PG-31610 | Floor 9 | 2025-09-02 → 2025-09-03 (+1d) | 2025-10-09 → 2025-10-10 (+1d) |  |  |
| PG-31611 | Floor 10 | 2025-09-19 → 2025-09-20 (+1d) | 2025-10-25 → 2025-10-27 (+2d) |  |  |
| PG-31612 | Floor 11 | 2025-10-03 → 2025-10-04 (+1d) | 2025-11-08 → 2025-11-10 (+2d) |  |  |
| PG-31613 | Floor 12 | 2025-10-18 → 2025-10-20 (+2d) | 2025-11-24 → 2025-11-25 (+1d) |  |  |
| PG-31614 | Floor 13 | 2025-10-31 → 2025-11-03 (+3d) | 2025-12-06 → 2025-12-08 (+2d) |  |  |
| PG-31615 | Floor 14 | 2025-11-12 → 2025-11-13 (+1d) | 2025-12-17 → 2025-12-18 (+1d) |  |  |
| PG-31617 | Floor 16 | 2025-12-08 → 2025-12-09 (+1d) | 2026-01-12 → 2026-01-13 (+1d) |  |  |
| PG-31618 | Floor 17 | 2025-12-20 → 2025-12-22 (+2d) | 2026-01-24 → 2026-01-27 (+3d) |  |  |
| PG-31619 | Floor 18 | 2026-01-02 → 2026-01-03 (+1d) | 2026-02-07 → 2026-02-09 (+2d) |  |  |
| PG-31620 | Floor 19 | 2026-01-15 → 2026-01-16 (+1d) | 2026-02-20 → 2026-02-21 (+1d) |  |  |
| PG-31621 | Floor 20 | 2026-01-30 → 2026-01-31 (+1d) | 2026-03-05 → 2026-03-06 (+1d) |  |  |
| PG-31622 | Floor 21 | 2026-02-12 → 2026-02-13 (+1d) | 2026-03-18 → 2026-03-19 (+1d) |  |  |
| PG-31623 | Floor 22 | 2026-02-25 → 2026-02-26 (+1d) | 2026-03-31 → 2026-04-01 (+1d) |  |  |
| PG-31624 | Floor 23 | 2026-03-09 → 2026-03-10 (+1d) | 2026-04-13 → 2026-04-14 (+1d) |  |  |
| PG-31625 | Floor 24 | 2026-03-23 → 2026-03-24 (+1d) | 2026-04-25 → 2026-04-27 (+2d) |  |  |
| PG-31626 | Floor 25 | 2026-04-13 → 2026-04-14 (+1d) | 2026-05-18 → 2026-05-19 (+1d) |  |  |
| PG-31627 | Floor 26 | 2026-05-06 → 2026-05-07 (+1d) | 2026-06-10 → 2026-06-11 (+1d) |  |  |
| PG-31628 | Floor 27 | 2026-05-27 → 2026-05-28 (+1d) | 2026-07-01 → 2026-07-02 (+1d) |  |  |
| PG-31629 | Floor 28 | 2026-06-17 → 2026-06-18 (+1d) | 2026-07-22 → 2026-07-23 (+1d) |  |  |
| PG-31630 | Floor 29 | 2026-07-08 → 2026-07-09 (+1d) | 2026-08-12 → 2026-08-13 (+1d) |  |  |
| 1.7.1.3.2 | **Common Areas** | 2026-03-10 → 2026-03-11 (+1d) | 2026-10-28 → 2026-10-29 (+1d) |  |  |

| ID | Task | Start | Finish | Complete | Total float |
| --- | --- | --- | --- | --- | --- |
| PG-31632 | Internal Electrical Works | 2026-03-10 → 2026-03-11 (+1d) | 2026-03-27 → 2026-03-28 (+1d) |  |  |
| PG-31633 | Internal FPS Works | 2026-03-10 → 2026-03-11 (+1d) | 2026-03-28 → 2026-03-30 (+2d) |  |  |
| PG-31634 | Data & Communication Works | 2026-03-16 → 2026-03-17 (+1d) | 2026-04-01 → 2026-04-02 (+1d) |  |  |
| PG-31635 | Internal PHE Works including OHT | 2026-04-24 → 2026-04-25 (+1d) | 2026-05-18 → 2026-05-19 (+1d) |  |  |
| PG-31638 | Lightining Arrestor works | 2026-05-08 → 2026-05-09 (+1d) | 2026-05-16 → 2026-05-18 (+2d) |  |  |
| PG-31636 | Lift Works | 2026-08-03 → 2026-08-04 (+1d) | 2026-08-27 → 2026-08-28 (+1d) |  |  |
| PG-31631 | Common Area Civil Works | 2026-10-10 → 2026-10-12 (+2d) | 2026-10-28 → 2026-10-29 (+1d) |  |  |
| PG-31639 | LBF |  |  | 13% → 54% | 471.87d → 472.79d |
| 1.7.9 | **Project InfraStructure Works ( Services & MEP )** |  | 2026-11-27 → 2026-11-28 (+1d) |  |  |
| 1.7.9.1 | **Transformer Works** | 2026-10-24 → 2026-10-26 (+2d) | 2026-11-27 → 2026-11-28 (+1d) |  |  |
| PG-32336 | Transformer 01 ( Building 01 & 02 ) | 2026-10-24 → 2026-10-26 (+2d) | 2026-11-27 → 2026-11-28 (+1d) |  |  |
| 1.8 | **Handing Over** |  | 2027-02-05 → 2027-02-06 (+1d) |  |  |
| PG-32378 | Building 1 | 2026-10-28 → 2026-10-29 (+1d) | 2026-11-09 → 2026-11-10 (+1d) |  |  |
| PG-32386 | Project InfraStructure Works ( Services & MEP ) | 2027-01-18 → 2027-01-19 (+1d) | 2027-02-05 → 2027-02-06 (+1d) |  |  |
| 1.10 | **Post Construction Statutory Approvals** |  | 2027-02-23 → 2027-02-24 (+1d) |  |  |
| PG-32396 | Pollution Control board clearance for STP |  | 2026-06-01 → 2026-05-30 (-2d) |  | 211.58d → 212.91d |
| PG-32394 | CEIG Approval - Lift | 2026-11-09 → 2026-11-10 (+1d) | 2026-12-12 → 2026-12-14 (+2d) |  |  |
| PG-32395 | Pollution Control board CFO | 2026-12-12 → 2026-12-14 (+2d) | 2027-01-18 → 2027-01-19 (+1d) |  |  |
| PG-32397 | Occupation Certificate | 2026-12-12 → 2026-12-14 (+2d) | 2027-02-23 → 2027-02-24 (+1d) |  |  |
| 2 | **Milestone** |  | 2027-02-23 → 2027-02-24 (+1d) |  |  |
| MS-0105 | Electrical Panels Delivered | 2025-08-25 → 2025-08-23 (-2d) | 2025-08-25 → 2025-08-23 (-2d) |  | 468.42d → 469.74d |
| MS-2001 | Tower 2 - Structure Complete | 2025-09-25 → 2025-09-24 (-1d) | 2025-09-25 → 2025-09-24 (-1d) |  | 441.33d → 442.79d |
| MS-0107 | FRP Water Tanks Delivered | 2025-12-01 → 2025-11-29 (-2d) | 2025-12-01 → 2025-11-29 (-2d) |  | 386.42d → 387.74d |
| MS-3001 | Tower 3 - Structure Complete | 2026-01-03 → 2026-01-05 (+2d) | 2026-01-03 → 2026-01-05 (+2d) |  |  |
| MS-3002 | Tower 3 - MEP 1st Fix Complete | 2026-04-07 → 2026-04-08 (+1d) | 2026-04-07 → 2026-04-08 (+1d) |  |  |
| MS-2006 | Tower 2 - Lifts Commissioned | 2026-04-16 → 2026-04-15 (-1d) | 2026-04-16 → 2026-04-15 (-1d) |  | 270d → 271.46d |
| MS-1007 | Tower 1 - T&C Complete | 2026-04-20 → 2026-04-18 (-2d) | 2026-04-20 → 2026-04-18 (-2d) |  | 267.42d → 268.74d |
| MS-3003 | Tower 3 - MEP 2nd Fix Complete | 2026-05-12 → 2026-05-13 (+1d) | 2026-05-12 → 2026-05-13 (+1d) |  |  |
| MS-3005 | Tower 3 - MEP Final Fix Complete | 2026-06-04 → 2026-06-05 (+1d) | 2026-06-04 → 2026-06-05 (+1d) |  |  |
| MS-3004 | Tower 3 - Internal Finishes Complete | 2026-06-26 → 2026-06-27 (+1d) | 2026-06-26 → 2026-06-27 (+1d) |  |  |
| MS-0103 | Transformer Delivered to Site | 2026-07-22 → 2026-07-23 (+1d) | 2026-07-22 → 2026-07-23 (+1d) |  |  |
| MS-3006 | Tower 3 - Lifts Commissioned | 2026-07-22 → 2026-07-23 (+1d) | 2026-07-22 → 2026-07-23 (+1d) |  |  |
| MS-9007 | Landscape Complete | 2026-08-03 → 2026-08-04 (+1d) | 2026-08-03 → 2026-08-04 (+1d) |  |  |
| MS-9002 | Transformer Charged | 2026-10-24 → 2026-10-26 (+2d) | 2026-10-24 → 2026-10-26 (+2d) |  |  |
| MS-9990 | Snagging Complete | 2026-11-27 → 2026-11-28 (+1d) | 2026-11-27 → 2026-11-28 (+1d) |  |  |
| MS-9999 | Project Finish / Handover | 2027-02-05 → 2027-02-06 (+1d) | 2027-02-05 → 2027-02-06 (+1d) |  |  |
| MS-9991 | Statutory Approvals Obtained | 2027-02-23 → 2027-02-24 (+1d) | 2027-02-23 → 2027-02-24 (+1d) |  |  |

## Version 6 (data date 2025-04-18, saved 2026-09-20, file APX_2025-04-18.xer)

Last finish 2027-03-02 → 2027-03-04 (+2d). Complete tasks 1022 → 1066.

Changed:

| ID | Task | Start | Finish | Complete | Total float |
| --- | --- | --- | --- | --- | --- |
| 1 | **Project Genisis** |  | 2027-03-02 → 2027-03-04 (+2d) |  |  |
| PG-32433 | Project Close Out | 2027-02-24 → 2027-02-26 (+2d) | 2027-03-02 → 2027-03-04 (+2d) |  |  |
| 1.2 | **Procurement and Materials requirement to Site** |  | 2026-07-23 → 2026-07-25 (+2d) |  |  |
| 1.2.4 | **FRP Tanks Supply** |  | 2025-11-29 → 2025-12-01 (+2d) |  |  |
| PG-10024 | Purchase Order works |  | 2025-05-12 → 2025-05-13 (+1d) |  | 212.91d → 214.36d |
| PG-10025 | Materials Supply to site ( Tower - 1, 2, 3, 9, 14, 18 & 19 ) |  | 2025-08-01 → 2025-08-02 (+1d) |  | 212.91d → 214.36d |
| PG-10026 | Materials Supply to site ( Tower - 4, 8, 10 & 13 ) |  | 2025-09-06 → 2025-09-08 (+2d) |  | 212.91d → 214.36d |
| PG-10027 | Materials Supply to site ( Tower - 5, 6, 7, 11, 12, 15, 16 & 17 ) |  | 2025-11-29 → 2025-12-01 (+2d) |  | 212.91d → 214.36d |
| 1.2.6 | **Electrical Panel Supply** | 2025-04-17 → 2025-04-12 (-5d) | 2025-08-23 → 2025-08-25 (+2d) |  |  |
| PG-10031 | Purchase Order works | 2025-04-17 → 2025-04-12 A (-5d) | 2025-04-29 → 2025-04-22 (-7d) | 0% → 59% | 207.44d → 215.14d |
| PG-10032 | Materials Supply to site |  | 2025-08-23 → 2025-08-25 (+2d) |  | 136.91d → 138.36d |
| 1.2.8 | **Transformer Supply** | 2026-02-21 → 2026-02-24 (+3d) | 2026-07-23 → 2026-07-25 (+2d) |  |  |
| PG-10035 | Purchase Order works | 2026-02-21 → 2026-02-24 (+3d) | 2026-03-05 → 2026-03-07 (+2d) |  |  |
| PG-10036 | Materials Supply to site | 2026-06-18 → 2026-06-20 (+2d) | 2026-07-23 → 2026-07-25 (+2d) |  |  |
| 1.3 | **Construction** |  | 2026-10-12 → 2026-10-14 (+2d) |  |  |
| 1.3.1 | **Building 1** |  | 2026-10-12 → 2026-10-14 (+2d) |  |  |
| PG-10156 | Reinforcement |  | 2025-04-14 → 2025-04-15 A (+1d) | 50% → 100% | 41.91d → none |
| PG-10157 | Formwork | 2025-04-11 → 2025-04-12 A (+1d) | 2025-04-16 A | 0% → 100% | 41.91d → none |
| PG-10158 | Formwork | 2025-04-15 A |  | 0% → 99% | 41.91d → 43.36d |
| PG-10159 | Reinforcement | 2025-04-17 → 2025-04-18 A (+1d) |  | 0% → 37% | 41.91d → 43.36d |
| 1.3.1.1.3 | **MEP Internal works** |  | 2026-01-16 → 2026-01-17 (+1d) |  |  |
| PG-10261 | Final Fix - CP & Sanitary fixtures |  | 2025-04-17 A | 55% → 100% | 414.68d → none |
| PG-10264 | Final Fix - Smoke & heat detectors, FHC , FAS Etc. |  | 2025-04-17 A | 57% → 100% | 414.68d → none |
| PG-10267 | Final Fix - Electrical Fixtures |  | 2025-04-17 A | 16% → 100% | 414.68d → none |
| 1.3.1.1.3.11 | **Floor 8** |  | 2025-05-14 → 2025-05-15 (+1d) |  |  |
| 1.3.1.1.3.11.1 | **PHE Works** |  | 2025-05-14 → 2025-05-15 (+1d) |  |  |
| PG-10279 | Final Fix - CP & Sanitary fixtures | 2025-05-02 → 2025-05-03 (+1d) | 2025-05-14 → 2025-05-15 (+1d) |  | 390.37d → 391.49d |
| 1.3.1.1.3.11.2 | **Fire Fighting Works** |  | 2025-05-14 → 2025-05-15 (+1d) |  |  |
| PG-10281 | 2nd Fix - Sprinkler fixing & Pressure testing | 2025-04-11 → 2025-04-12 A (+1d) | 2025-04-23 → 2025-04-24 (+1d) | 0% → 57% | 399.05d → 400.19d |
| PG-10282 | Final Fix - Smoke & heat detectors, FHC , FAS Etc. | 2025-05-02 → 2025-05-03 (+1d) | 2025-05-14 → 2025-05-15 (+1d) |  | 390.37d → 391.49d |
| 1.3.1.1.3.11.3 | **Electrical Works** |  | 2025-05-14 → 2025-05-15 (+1d) |  |  |
| PG-10284 | 2nd Fix - Wiring works |  | 2025-04-22 → 2025-04-23 (+1d) | 45% → 86% | 404.55d → 405.69d |
| PG-10285 | Final Fix - Electrical Fixtures | 2025-05-08 → 2025-05-09 (+1d) | 2025-05-14 → 2025-05-15 (+1d) |  | 390.37d → 391.49d |
| 1.3.1.1.3.12 | **Floor 9** |  | 2025-05-29 → 2025-05-30 (+1d) |  |  |
| 1.3.1.1.3.12.1 | **PHE Works** |  | 2025-05-29 → 2025-05-30 (+1d) |  |  |
| PG-10288 | Final Fix - CP & Sanitary fixtures | 2025-05-17 → 2025-05-19 (+2d) | 2025-05-29 → 2025-05-30 (+1d) |  | 378.75d → 379.94d |
| 1.3.1.1.3.12.2 | **Fire Fighting Works** |  | 2025-05-29 → 2025-05-30 (+1d) |  |  |
| PG-10290 | 2nd Fix - Sprinkler fixing & Pressure testing | 2025-04-26 → 2025-04-28 (+2d) | 2025-05-08 → 2025-05-09 (+1d) |  | 387.08d → 388.27d |
| PG-10291 | Final Fix - Smoke & heat detectors, FHC , FAS Etc. | 2025-05-17 → 2025-05-19 (+2d) | 2025-05-29 → 2025-05-30 (+1d) |  | 378.75d → 379.94d |
| 1.3.1.1.3.12.3 | **Electrical Works** |  | 2025-05-29 → 2025-05-30 (+1d) |  |  |
| PG-10293 | 2nd Fix - Wiring works | 2025-04-19 → 2025-04-21 (+2d) | 2025-05-07 → 2025-05-08 (+1d) |  | 392.58d → 393.77d |
| PG-10294 | Final Fix - Electrical Fixtures | 2025-05-23 → 2025-05-24 (+1d) | 2025-05-29 → 2025-05-30 (+1d) |  | 378.75d → 379.94d |
| 1.3.1.1.3.13 | **Floor 10** |  | 2025-06-13 → 2025-06-12 (-1d) |  |  |
| 1.3.1.1.3.13.1 | **PHE Works** |  | 2025-06-13 → 2025-06-12 (-1d) |  |  |
| PG-10296 | 2nd Fix - diverter fixing & Pressure testing |  | 2025-04-17 A | 50% → 100% | 364.68d → none |
| PG-10297 | Final Fix - CP & Sanitary fixtures | 2025-06-03 → 2025-06-02 (-1d) | 2025-06-13 → 2025-06-12 (-1d) |  | 364.68d → 367.45d |
| 1.3.1.1.3.13.2 | **Fire Fighting Works** |  | 2025-06-13 → 2025-06-12 (-1d) |  |  |
| PG-10298 | 1st Fix - Piping and Shaft hydrant works |  | 2025-04-24 → 2025-04-19 (-5d) | 41% → 93% | 408.77d → 415.61d |
| PG-10299 | 2nd Fix - Sprinkler fixing & Pressure testing | 2025-05-13 → 2025-05-12 (-1d) | 2025-05-24 → 2025-05-23 (-1d) |  | 372.51d → 375.28d |
| PG-10300 | Final Fix - Smoke & heat detectors, FHC , FAS Etc. | 2025-06-03 → 2025-06-02 (-1d) | 2025-06-13 → 2025-06-12 (-1d) |  | 364.68d → 367.45d |
| 1.3.1.1.3.13.3 | **Electrical Works** |  | 2025-06-13 → 2025-06-12 (-1d) |  |  |
| PG-10302 | 2nd Fix - Wiring works | 2025-05-06 → 2025-05-05 (-1d) | 2025-05-23 → 2025-05-22 (-1d) |  | 377.34d → 380.11d |
| PG-10303 | Final Fix - Electrical Fixtures |  | 2025-06-13 → 2025-06-12 (-1d) |  | 364.68d → 367.45d |
| PG-10304 | 1st Fix - Piping works |  |  | 13% → 63% | 353.37d → 355.55d |
| 1.3.1.1.3.14.2 | **Fire Fighting Works** | 2025-04-17 → 2025-04-18 (+1d) |  |  |  |
| PG-10307 | 1st Fix - Piping and Shaft hydrant works | 2025-04-17 → 2025-04-18 A (+1d) |  | 0% → 3% | 403.03d → 404.79d |
| PG-10310 | 1st Fix - GI wire pulling |  | 2025-04-17 → 2025-04-18 A (+1d) | 33% → 100% | 403.03d → none |
| 1.3.1.1.3.15 | **Floor 12** |  | 2025-07-09 → 2025-07-10 (+1d) |  |  |
| 1.3.1.1.3.15.1 | **PHE Works** |  | 2025-07-09 → 2025-07-10 (+1d) |  |  |
| PG-10315 | Final Fix - CP & Sanitary fixtures | 2025-06-27 → 2025-06-28 (+1d) | 2025-07-09 → 2025-07-10 (+1d) |  | 344.24d → 345.69d |
| 1.3.1.1.3.15.2 | **Fire Fighting Works** |  | 2025-07-09 → 2025-07-10 (+1d) |  |  |
| PG-10318 | Final Fix - Smoke & heat detectors, FHC , FAS Etc. | 2025-06-27 → 2025-06-28 (+1d) | 2025-07-09 → 2025-07-10 (+1d) |  | 344.24d → 345.69d |
| 1.3.1.1.3.15.3 | **Electrical Works** |  | 2025-07-09 → 2025-07-10 (+1d) |  |  |
| PG-10321 | Final Fix - Electrical Fixtures | 2025-07-02 → 2025-07-03 (+1d) | 2025-07-09 → 2025-07-10 (+1d) |  | 344.24d → 345.69d |
| 1.3.1.1.3.16 | **Floor 13** |  | 2025-07-24 → 2025-07-25 (+1d) |  |  |
| 1.3.1.1.3.16.1 | **PHE Works** |  | 2025-07-24 → 2025-07-25 (+1d) |  |  |
| PG-10324 | Final Fix - CP & Sanitary fixtures | 2025-07-12 → 2025-07-14 (+2d) | 2025-07-24 → 2025-07-25 (+1d) |  | 331.74d → 333.19d |
| 1.3.1.1.3.16.2 | **Fire Fighting Works** |  | 2025-07-24 → 2025-07-25 (+1d) |  |  |
| PG-10327 | Final Fix - Smoke & heat detectors, FHC , FAS Etc. |  | 2025-07-24 → 2025-07-25 (+1d) |  | 331.74d → 333.19d |
| 1.3.1.1.3.16.3 | **Electrical Works** |  | 2025-07-24 → 2025-07-25 (+1d) |  |  |

| ID | Task | Start | Finish | Total float |
| --- | --- | --- | --- | --- |
| PG-10330 | Final Fix - Electrical Fixtures |  | 2025-07-24 → 2025-07-25 (+1d) | 331.74d → 333.19d |
| 1.3.1.1.3.17 | **Floor 14** |  | 2025-08-06 → 2025-08-07 (+1d) |  |
| 1.3.1.1.3.17.1 | **PHE Works** |  | 2025-08-06 → 2025-08-07 (+1d) |  |
| PG-10333 | Final Fix - CP & Sanitary fixtures |  | 2025-08-06 → 2025-08-07 (+1d) | 320.74d → 322.19d |
| 1.3.1.1.3.17.2 | **Fire Fighting Works** |  | 2025-08-06 → 2025-08-07 (+1d) |  |
| PG-10336 | Final Fix - Smoke & heat detectors, FHC , FAS Etc. |  | 2025-08-06 → 2025-08-07 (+1d) | 320.74d → 322.19d |
| 1.3.1.1.3.17.3 | **Electrical Works** |  | 2025-08-06 → 2025-08-07 (+1d) |  |
| PG-10339 | Final Fix - Electrical Fixtures |  | 2025-08-06 → 2025-08-07 (+1d) | 320.74d → 322.19d |
| 1.3.1.1.3.18 | **Floor 15** |  | 2025-08-19 → 2025-08-20 (+1d) |  |
| 1.3.1.1.3.18.1 | **PHE Works** |  | 2025-08-19 → 2025-08-20 (+1d) |  |
| PG-10342 | Final Fix - CP & Sanitary fixtures |  | 2025-08-19 → 2025-08-20 (+1d) | 310.74d → 312.19d |
| 1.3.1.1.3.18.2 | **Fire Fighting Works** |  | 2025-08-19 → 2025-08-20 (+1d) |  |
| PG-10345 | Final Fix - Smoke & heat detectors, FHC , FAS Etc. |  | 2025-08-19 → 2025-08-20 (+1d) | 310.74d → 312.19d |
| 1.3.1.1.3.18.3 | **Electrical Works** |  | 2025-08-19 → 2025-08-20 (+1d) |  |
| PG-10348 | Final Fix - Electrical Fixtures |  | 2025-08-19 → 2025-08-20 (+1d) | 310.74d → 312.19d |
| 1.3.1.1.3.19 | **Floor 16** |  | 2025-09-01 → 2025-09-02 (+1d) |  |
| 1.3.1.1.3.19.1 | **PHE Works** |  | 2025-09-01 → 2025-09-02 (+1d) |  |
| PG-10351 | Final Fix - CP & Sanitary fixtures |  | 2025-09-01 → 2025-09-02 (+1d) | 299.74d → 301.19d |
| 1.3.1.1.3.19.2 | **Fire Fighting Works** |  | 2025-09-01 → 2025-09-02 (+1d) |  |
| PG-10354 | Final Fix - Smoke & heat detectors, FHC , FAS Etc. |  | 2025-09-01 → 2025-09-02 (+1d) | 299.74d → 301.19d |
| 1.3.1.1.3.19.3 | **Electrical Works** |  | 2025-09-01 → 2025-09-02 (+1d) |  |
| PG-10357 | Final Fix - Electrical Fixtures |  | 2025-09-01 → 2025-09-02 (+1d) | 299.74d → 301.19d |
| 1.3.1.1.3.20 | **Floor 17** |  | 2025-09-13 → 2025-09-15 (+2d) |  |
| 1.3.1.1.3.20.1 | **PHE Works** |  | 2025-09-13 → 2025-09-15 (+2d) |  |
| PG-10360 | Final Fix - CP & Sanitary fixtures |  | 2025-09-13 → 2025-09-15 (+2d) | 288.74d → 290.19d |
| 1.3.1.1.3.20.2 | **Fire Fighting Works** |  | 2025-09-13 → 2025-09-15 (+2d) |  |
| PG-10363 | Final Fix - Smoke & heat detectors, FHC , FAS Etc. |  | 2025-09-13 → 2025-09-15 (+2d) | 288.74d → 290.19d |
| 1.3.1.1.3.20.3 | **Electrical Works** |  | 2025-09-13 → 2025-09-15 (+2d) |  |
| PG-10366 | Final Fix - Electrical Fixtures |  | 2025-09-13 → 2025-09-15 (+2d) | 288.74d → 290.19d |
| 1.3.1.1.3.21 | **Floor 18** |  | 2025-09-26 → 2025-09-27 (+1d) |  |
| 1.3.1.1.3.21.1 | **PHE Works** |  | 2025-09-26 → 2025-09-27 (+1d) |  |
| PG-10369 | Final Fix - CP & Sanitary fixtures |  | 2025-09-26 → 2025-09-27 (+1d) | 277.74d → 279.19d |
| 1.3.1.1.3.21.2 | **Fire Fighting Works** |  | 2025-09-26 → 2025-09-27 (+1d) |  |
| PG-10372 | Final Fix - Smoke & heat detectors, FHC , FAS Etc. |  | 2025-09-26 → 2025-09-27 (+1d) | 277.74d → 279.19d |
| 1.3.1.1.3.21.3 | **Electrical Works** |  | 2025-09-26 → 2025-09-27 (+1d) |  |
| PG-10375 | Final Fix - Electrical Fixtures |  | 2025-09-26 → 2025-09-27 (+1d) | 277.74d → 279.19d |
| 1.3.1.1.3.22 | **Floor 19** |  | 2025-10-22 → 2025-10-23 (+1d) |  |
| 1.3.1.1.3.22.1 | **PHE Works** |  | 2025-10-22 → 2025-10-23 (+1d) |  |
| PG-10378 | Final Fix - CP & Sanitary fixtures |  | 2025-10-22 → 2025-10-23 (+1d) | 256.74d → 258.19d |
| 1.3.1.1.3.22.2 | **Fire Fighting Works** |  | 2025-10-22 → 2025-10-23 (+1d) |  |
| PG-10381 | Final Fix - Smoke & heat detectors, FHC , FAS Etc. |  | 2025-10-22 → 2025-10-23 (+1d) | 256.74d → 258.19d |
| 1.3.1.1.3.22.3 | **Electrical Works** |  | 2025-10-22 → 2025-10-23 (+1d) |  |
| PG-10384 | Final Fix - Electrical Fixtures |  | 2025-10-22 → 2025-10-23 (+1d) | 256.74d → 258.19d |
| 1.3.1.1.3.23 | **Floor 20** |  | 2025-11-13 → 2025-11-14 (+1d) |  |
| 1.3.1.1.3.23.1 | **PHE Works** |  | 2025-11-13 → 2025-11-14 (+1d) |  |
| PG-10387 | Final Fix - CP & Sanitary fixtures | 2025-10-31 → 2025-11-03 (+3d) | 2025-11-13 → 2025-11-14 (+1d) | 237.57d → 239.02d |
| 1.3.1.1.3.23.2 | **Fire Fighting Works** |  | 2025-11-13 → 2025-11-14 (+1d) |  |
| PG-10390 | Final Fix - Smoke & heat detectors, FHC , FAS Etc. | 2025-10-31 → 2025-11-03 (+3d) | 2025-11-13 → 2025-11-14 (+1d) | 237.57d → 239.02d |
| 1.3.1.1.3.23.3 | **Electrical Works** |  | 2025-11-13 → 2025-11-14 (+1d) |  |
| PG-10393 | Final Fix - Electrical Fixtures |  | 2025-11-13 → 2025-11-14 (+1d) | 237.57d → 239.02d |
| 1.3.1.1.3.24 | **Floor 21** |  | 2025-12-05 → 2025-12-06 (+1d) |  |
| 1.3.1.1.3.24.1 | **PHE Works** |  | 2025-12-05 → 2025-12-06 (+1d) |  |
| PG-10396 | Final Fix - CP & Sanitary fixtures |  | 2025-12-05 → 2025-12-06 (+1d) | 218.57d → 220.02d |
| 1.3.1.1.3.24.2 | **Fire Fighting Works** |  | 2025-12-05 → 2025-12-06 (+1d) |  |
| PG-10399 | Final Fix - Smoke & heat detectors, FHC , FAS Etc. |  | 2025-12-05 → 2025-12-06 (+1d) | 218.57d → 220.02d |
| 1.3.1.1.3.24.3 | **Electrical Works** |  | 2025-12-05 → 2025-12-06 (+1d) |  |
| PG-10402 | Final Fix - Electrical Fixtures |  | 2025-12-05 → 2025-12-06 (+1d) | 218.57d → 220.02d |
| 1.3.1.1.3.25 | **Floor 22** |  | 2025-12-27 → 2025-12-29 (+2d) |  |
| 1.3.1.1.3.25.1 | **PHE Works** |  | 2025-12-27 → 2025-12-29 (+2d) |  |
| PG-10405 | Final Fix - CP & Sanitary fixtures |  | 2025-12-27 → 2025-12-29 (+2d) | 198.57d → 200.02d |
| 1.3.1.1.3.25.2 | **Fire Fighting Works** |  | 2025-12-27 → 2025-12-29 (+2d) |  |
| PG-10408 | Final Fix - Smoke & heat detectors, FHC , FAS Etc. |  | 2025-12-27 → 2025-12-29 (+2d) | 198.57d → 200.02d |
| 1.3.1.1.3.25.3 | **Electrical Works** |  | 2025-12-27 → 2025-12-29 (+2d) |  |
| PG-10411 | Final Fix - Electrical Fixtures |  | 2025-12-27 → 2025-12-29 (+2d) | 198.57d → 200.02d |
| 1.3.1.1.3.26 | **Floor 23** |  | 2026-01-16 → 2026-01-17 (+1d) |  |
| 1.3.1.1.3.26.1 | **PHE Works** |  | 2026-01-16 → 2026-01-17 (+1d) |  |
| PG-10414 | Final Fix - CP & Sanitary fixtures | 2026-01-05 → 2026-01-06 (+1d) | 2026-01-16 → 2026-01-17 (+1d) | 182.57d → 184.02d |
| 1.3.1.1.3.26.2 | **Fire Fighting Works** |  | 2026-01-16 → 2026-01-17 (+1d) |  |
| PG-10417 | Final Fix - Smoke & heat detectors, FHC , FAS Etc. | 2026-01-05 → 2026-01-06 (+1d) | 2026-01-16 → 2026-01-17 (+1d) | 182.57d → 184.02d |
| 1.3.1.1.3.26.3 | **Electrical Works** |  | 2026-01-16 → 2026-01-17 (+1d) |  |

| ID | Task | Start | Finish | Complete | Total float |
| --- | --- | --- | --- | --- | --- |
| PG-10420 | Final Fix - Electrical Fixtures | 2026-01-09 → 2026-01-10 (+1d) | 2026-01-16 → 2026-01-17 (+1d) |  | 182.57d → 184.02d |
| 1.3.1.1.4 | **Civil Finishes - Units** |  | 2026-01-12 → 2026-01-13 (+1d) |  |  |
| PG-10534 | Final Coat Painting |  |  | 40% → 71% | 438.27d → 440.45d |
| PG-10539 | Final Coat Painting |  |  | 40% → 71% | 403.52d → 405.7d |
| 1.3.1.1.4.11 | **Floor 8** |  | 2025-05-07 → 2025-05-08 (+1d) |  |  |
| PG-10546 | Painting Works - Putty, Primer and 1st |  | 2025-04-15 → 2025-04-16 A (+1d) | 36% → 100% | 425.58d → none |
| PG-10548 | Final Coat Painting | 2025-04-16 → 2025-04-17 A (+1d) |  | 0% → 8% | 425.04d → 427.11d |
| 1.3.1.1.4.11.2 | **Wall Finishing works - Civil** |  | 2025-05-07 → 2025-05-08 (+1d) |  |  |
| PG-10552 | Painting Works - Putty, Primer and 1st |  | 2025-04-16 → 2025-04-17 A (+1d) | 30% → 100% | 390.55d → none |
| PG-10553 | Final Coat Painting | 2025-04-16 → 2025-04-17 A (+1d) | 2025-05-07 → 2025-05-08 (+1d) | 0% → 3% | 390.37d → 391.49d |
| 1.3.1.1.4.11.3 | **Floor Finishing Works - Civil** |  | 2025-04-16 → 2025-04-17 (+1d) |  |  |
| PG-10557 | Wooden doors |  | 2025-04-16 → 2025-04-17 A (+1d) | 12% → 100% | 390.37d → none |
| 1.3.1.1.4.12 | **Floor 9** |  | 2025-05-22 → 2025-05-23 (+1d) |  |  |
| 1.3.1.1.4.12.1 | **Ceiling Finishing works - Civil** |  | 2025-05-22 → 2025-05-23 (+1d) |  |  |
| PG-10559 | Cornice fixing |  | 2025-04-11 → 2025-04-12 A (+1d) |  | 423.84d → none |
| PG-10561 | Toilet False ceiling | 2025-04-14 → 2025-04-15 A (+1d) | 2025-04-18 → 2025-04-19 (+1d) | 0% → 96% | 404.08d → 405.27d |
| PG-10560 | Painting Works - Putty, Primer and 1st | 2025-04-24 → 2025-04-25 (+1d) | 2025-05-01 → 2025-05-02 (+1d) |  | 413.41d → 414.61d |
| PG-10562 | Final Coat Painting | 2025-05-01 → 2025-05-02 (+1d) | 2025-05-22 → 2025-05-23 (+1d) |  | 413.41d → 414.61d |
| 1.3.1.1.4.12.2 | **Wall Finishing works - Civil** |  | 2025-05-22 → 2025-05-23 (+1d) |  |  |
| PG-10564 | UPVC Windows & Sliding doors | 2025-04-18 → 2025-04-19 (+1d) | 2025-04-24 → 2025-04-25 (+1d) |  | 378.75d → 379.94d |
| PG-10566 | Painting Works - Putty, Primer and 1st | 2025-04-24 → 2025-04-25 (+1d) | 2025-05-01 → 2025-05-02 (+1d) |  | 378.75d → 379.94d |
| PG-10567 | Final Coat Painting | 2025-05-01 → 2025-05-02 (+1d) | 2025-05-22 → 2025-05-23 (+1d) |  | 378.75d → 379.94d |
| 1.3.1.1.4.12.3 | **Floor Finishing Works - Civil** |  | 2025-05-01 → 2025-05-02 (+1d) |  |  |
| PG-10569 | Floor Tiling - Wet area |  | 2025-04-12 → 2025-04-14 A (+2d) | 76% → 100% | 378.75d → none |
| PG-10570 | Floor Tiling - Dry area | 2025-04-12 → 2025-04-14 A (+2d) | 2025-04-18 → 2025-04-19 (+1d) | 0% → 95% | 378.75d → 379.94d |
| PG-10571 | Wooden doors | 2025-04-25 → 2025-04-26 (+1d) | 2025-05-01 → 2025-05-02 (+1d) |  | 378.75d → 379.94d |
| 1.3.1.1.4.13 | **Floor 10** |  | 2025-06-06 → 2025-06-05 (-1d) |  |  |
| 1.3.1.1.4.13.1 | **Ceiling Finishing works - Civil** |  | 2025-06-06 → 2025-06-05 (-1d) |  |  |
| PG-10572 | Gypsum Plastering |  | 2025-04-17 → 2025-04-12 A (-5d) | 3% → 100% | 207.44d → none |
| PG-10573 | Cornice fixing | 2025-04-26 → 2025-04-22 (-4d) | 2025-05-01 → 2025-04-26 (-5d) |  | 408.77d → 415.61d |
| PG-10575 | Toilet False ceiling | 2025-04-30 → 2025-04-29 (-1d) | 2025-05-05 → 2025-05-03 (-2d) |  | 389.51d → 392.28d |
| PG-10574 | Painting Works - Putty, Primer and 1st | 2025-05-10 → 2025-05-09 (-1d) | 2025-05-17 → 2025-05-16 (-1d) |  | 401.34d → 404.11d |
| PG-10576 | Final Coat Painting | 2025-05-17 → 2025-05-16 (-1d) | 2025-06-06 → 2025-06-05 (-1d) |  | 401.34d → 404.11d |
| 1.3.1.1.4.13.2 | **Wall Finishing works - Civil** |  | 2025-06-06 → 2025-06-05 (-1d) |  |  |
| PG-10579 | Dadoing - Wet area | 2025-04-17 A | 2025-04-23 → 2025-04-22 (-1d) | 0% → 27% | 364.68d → 367.45d |
| PG-10578 | UPVC Windows & Sliding doors | 2025-05-05 → 2025-05-03 (-2d) | 2025-05-10 → 2025-05-09 (-1d) |  | 364.68d → 367.45d |
| PG-10580 | Painting Works - Putty, Primer and 1st | 2025-05-10 → 2025-05-09 (-1d) | 2025-05-17 → 2025-05-16 (-1d) |  | 364.68d → 367.45d |
| PG-10581 | Final Coat Painting | 2025-05-17 → 2025-05-16 (-1d) | 2025-06-06 → 2025-06-05 (-1d) |  | 364.68d → 367.45d |
| 1.3.1.1.4.13.3 | **Floor Finishing Works - Civil** |  | 2025-05-17 → 2025-05-16 (-1d) |  |  |
| PG-10583 | Floor Tiling - Wet area | 2025-04-23 → 2025-04-22 (-1d) | 2025-04-29 → 2025-04-28 (-1d) |  | 364.68d → 367.45d |
| PG-10584 | Floor Tiling - Dry area | 2025-04-29 → 2025-04-28 (-1d) | 2025-05-05 → 2025-05-03 (-2d) |  | 364.68d → 367.45d |
| PG-10585 | Wooden doors | 2025-05-12 → 2025-05-10 (-2d) | 2025-05-17 → 2025-05-16 (-1d) |  | 364.68d → 367.45d |
| 1.3.1.1.4.14.1 | **Ceiling Finishing works - Civil** | 2025-04-17 → 2025-04-18 (+1d) |  |  |  |
| PG-10586 | Gypsum Plastering | 2025-04-17 → 2025-04-18 A (+1d) |  | 0% → 3% | 403.03d → 404.79d |
| PG-10591 | Balcony Railing Fixing works |  | 2025-04-14 → 2025-04-15 A (+1d) | 49% → 100% | 382.7d → none |
| PG-10596 | Waterproofing for sunken areas |  | 2025-04-11 → 2025-04-12 A (+1d) | 69% → 100% | 373.84d → none |
| 1.3.1.1.4.15 | **Floor 12** |  | 2025-07-02 → 2025-07-03 (+1d) |  |  |
| 1.3.1.1.4.15.1 | **Ceiling Finishing works - Civil** |  | 2025-07-02 → 2025-07-03 (+1d) |  |  |
| PG-10604 | Final Coat Painting |  | 2025-07-02 → 2025-07-03 (+1d) |  | 379.07d → 380.52d |
| 1.3.1.1.4.15.2 | **Wall Finishing works - Civil** |  | 2025-07-02 → 2025-07-03 (+1d) |  |  |
| PG-10609 | Final Coat Painting |  | 2025-07-02 → 2025-07-03 (+1d) |  | 344.24d → 345.69d |
| 1.3.1.1.4.16 | **Floor 13** |  | 2025-07-19 → 2025-07-21 (+2d) |  |  |
| 1.3.1.1.4.16.1 | **Ceiling Finishing works - Civil** |  | 2025-07-19 → 2025-07-21 (+2d) |  |  |
| PG-10618 | Final Coat Painting |  | 2025-07-19 → 2025-07-21 (+2d) |  | 364.41d → 365.86d |
| 1.3.1.1.4.16.2 | **Wall Finishing works - Civil** |  | 2025-07-17 → 2025-07-18 (+1d) |  |  |
| PG-10623 | Final Coat Painting |  | 2025-07-17 → 2025-07-18 (+1d) |  | 331.74d → 333.19d |
| 1.3.1.1.4.17 | **Floor 14** |  | 2025-07-30 → 2025-07-31 (+1d) |  |  |
| 1.3.1.1.4.17.1 | **Ceiling Finishing works - Civil** |  | 2025-07-30 → 2025-07-31 (+1d) |  |  |
| PG-10632 | Final Coat Painting |  | 2025-07-30 → 2025-07-31 (+1d) |  | 355.41d → 356.86d |
| 1.3.1.1.4.17.2 | **Wall Finishing works - Civil** |  | 2025-07-30 → 2025-07-31 (+1d) |  |  |
| PG-10637 | Final Coat Painting |  | 2025-07-30 → 2025-07-31 (+1d) |  | 320.74d → 322.19d |
| 1.3.1.1.4.18 | **Floor 15** |  | 2025-08-11 → 2025-08-12 (+1d) |  |  |
| 1.3.1.1.4.18.1 | **Ceiling Finishing works - Civil** |  | 2025-08-11 → 2025-08-12 (+1d) |  |  |
| PG-10646 | Final Coat Painting |  | 2025-08-11 → 2025-08-12 (+1d) |  | 345.41d → 346.86d |
| 1.3.1.1.4.18.2 | **Wall Finishing works - Civil** |  | 2025-08-11 → 2025-08-12 (+1d) |  |  |
| PG-10651 | Final Coat Painting |  | 2025-08-11 → 2025-08-12 (+1d) |  | 310.74d → 312.19d |
| 1.3.1.1.4.19 | **Floor 16** |  | 2025-08-25 → 2025-08-26 (+1d) |  |  |
| 1.3.1.1.4.19.1 | **Ceiling Finishing works - Civil** |  | 2025-08-25 → 2025-08-26 (+1d) |  |  |
| PG-10660 | Final Coat Painting |  | 2025-08-25 → 2025-08-26 (+1d) |  | 334.41d → 335.86d |
| 1.3.1.1.4.19.2 | **Wall Finishing works - Civil** |  | 2025-08-25 → 2025-08-26 (+1d) |  |  |

| ID | Task | Start | Finish | Complete | Total float |
| --- | --- | --- | --- | --- | --- |
| PG-10665 | Final Coat Painting |  | 2025-08-25 → 2025-08-26 (+1d) |  | 299.74d → 301.19d |
| 1.3.1.1.4.20 | **Floor 17** |  | 2025-09-06 → 2025-09-08 (+2d) |  |  |
| 1.3.1.1.4.20.1 | **Ceiling Finishing works - Civil** |  | 2025-09-06 → 2025-09-08 (+2d) |  |  |
| PG-10674 | Final Coat Painting |  | 2025-09-06 → 2025-09-08 (+2d) |  | 323.41d → 324.86d |
| 1.3.1.1.4.20.2 | **Wall Finishing works - Civil** |  | 2025-09-06 → 2025-09-08 (+2d) |  |  |
| PG-10679 | Final Coat Painting |  | 2025-09-06 → 2025-09-08 (+2d) |  | 288.74d → 290.19d |
| 1.3.1.1.4.21 | **Floor 18** |  | 2025-09-19 → 2025-09-20 (+1d) |  |  |
| 1.3.1.1.4.21.1 | **Ceiling Finishing works - Civil** |  | 2025-09-19 → 2025-09-20 (+1d) |  |  |
| PG-10688 | Final Coat Painting |  | 2025-09-19 → 2025-09-20 (+1d) |  | 312.41d → 313.86d |
| 1.3.1.1.4.21.2 | **Wall Finishing works - Civil** |  | 2025-09-19 → 2025-09-20 (+1d) |  |  |
| PG-10693 | Final Coat Painting |  | 2025-09-19 → 2025-09-20 (+1d) |  | 277.74d → 279.19d |
| 1.3.1.1.4.22 | **Floor 19** |  | 2025-10-15 → 2025-10-16 (+1d) |  |  |
| 1.3.1.1.4.22.1 | **Ceiling Finishing works - Civil** |  | 2025-10-15 → 2025-10-16 (+1d) |  |  |
| PG-10702 | Final Coat Painting |  | 2025-10-15 → 2025-10-16 (+1d) |  | 291.41d → 292.86d |
| 1.3.1.1.4.22.2 | **Wall Finishing works - Civil** |  | 2025-10-15 → 2025-10-16 (+1d) |  |  |
| PG-10707 | Final Coat Painting |  | 2025-10-15 → 2025-10-16 (+1d) |  | 256.74d → 258.19d |
| 1.3.1.1.4.23 | **Floor 20** |  | 2025-11-06 → 2025-11-07 (+1d) |  |  |
| 1.3.1.1.4.23.1 | **Ceiling Finishing works - Civil** |  | 2025-11-06 → 2025-11-07 (+1d) |  |  |
| PG-10716 | Final Coat Painting |  | 2025-11-06 → 2025-11-07 (+1d) |  | 272.24d → 273.69d |
| 1.3.1.1.4.23.2 | **Wall Finishing works - Civil** |  | 2025-11-06 → 2025-11-07 (+1d) |  |  |
| PG-10721 | Final Coat Painting |  | 2025-11-06 → 2025-11-07 (+1d) |  | 237.57d → 239.02d |
| 1.3.1.1.4.24 | **Floor 21** |  | 2025-11-28 → 2025-11-29 (+1d) |  |  |
| 1.3.1.1.4.24.1 | **Ceiling Finishing works - Civil** |  | 2025-11-28 → 2025-11-29 (+1d) |  |  |
| PG-10730 | Final Coat Painting |  | 2025-11-28 → 2025-11-29 (+1d) |  | 253.24d → 254.69d |
| 1.3.1.1.4.24.2 | **Wall Finishing works - Civil** |  | 2025-11-28 → 2025-11-29 (+1d) |  |  |
| PG-10735 | Final Coat Painting |  | 2025-11-28 → 2025-11-29 (+1d) |  | 218.57d → 220.02d |
| 1.3.1.1.4.25 | **Floor 22** |  | 2025-12-20 → 2025-12-22 (+2d) |  |  |
| 1.3.1.1.4.25.1 | **Ceiling Finishing works - Civil** |  | 2025-12-20 → 2025-12-22 (+2d) |  |  |
| PG-10744 | Final Coat Painting |  | 2025-12-20 → 2025-12-22 (+2d) |  | 234.24d → 235.69d |
| 1.3.1.1.4.25.2 | **Wall Finishing works - Civil** |  | 2025-12-20 → 2025-12-22 (+2d) |  |  |
| PG-10749 | Final Coat Painting |  | 2025-12-20 → 2025-12-22 (+2d) |  | 198.57d → 200.02d |
| 1.3.1.1.4.26 | **Floor 23** |  | 2026-01-12 → 2026-01-13 (+1d) |  |  |
| 1.3.1.1.4.26.1 | **Ceiling Finishing works - Civil** |  | 2026-01-12 → 2026-01-13 (+1d) |  |  |
| PG-10758 | Final Coat Painting |  | 2026-01-12 → 2026-01-13 (+1d) |  | 215.41d → 216.86d |
| 1.3.1.1.4.26.2 | **Wall Finishing works - Civil** |  | 2026-01-09 → 2026-01-10 (+1d) |  |  |
| PG-10763 | Final Coat Painting |  | 2026-01-09 → 2026-01-10 (+1d) |  | 182.57d → 184.02d |
| 1.3.1.1.6 | **MEP Civil Works (Shaft, Lift Shaft & OHT )** |  | 2026-01-09 → 2026-01-10 (+1d) |  |  |
| 1.3.1.1.6.1 | **Lift Shaft Works** |  | 2026-01-09 → 2026-01-10 (+1d) |  |  |
| PG-10792 | Lift Wall Cladding Works |  | 2026-01-09 → 2026-01-10 (+1d) |  | 139.41d → 140.86d |
| 1.3.1.1.6.6 | **OHT Works** | 2025-08-01 → 2025-08-02 (+1d) | 2025-09-20 → 2025-09-22 (+2d) |  |  |
| PG-10809 | Tank materials Supply & Shifting | 2025-08-01 → 2025-08-02 (+1d) | 2025-08-13 → 2025-08-14 (+1d) |  | 214.91d → 216.36d |
| PG-10810 | Assembling OHT FRP Tank | 2025-08-13 → 2025-08-14 (+1d) | 2025-08-26 → 2025-08-27 (+1d) |  | 214.91d → 216.36d |
| PG-10811 | Installation of OHT Tank | 2025-08-26 → 2025-08-27 (+1d) | 2025-09-12 → 2025-09-13 (+1d) |  | 214.91d → 216.36d |
| PG-10812 | Water tightness works and checking | 2025-09-12 → 2025-09-13 (+1d) | 2025-09-20 → 2025-09-22 (+2d) |  | 214.91d → 216.36d |
| PG-10823 | Terrace Ring main & OHT Connection works | 2025-09-20 → 2025-09-22 (+2d) | 2025-11-08 → 2025-11-10 (+2d) |  | 214.91d → 216.36d |
| PG-10824 | Commissioning | 2025-11-08 → 2025-11-10 (+2d) |  |  | 214.91d → 216.36d |
| 1.3.1.1.8 | **Lift Installation and Testing works** |  | 2026-03-27 → 2026-03-28 (+1d) |  |  |
| PG-10825 | Lift Shaft Survey works |  | 2025-08-18 → 2025-08-19 (+1d) |  | 145.91d → 147.36d |
| PG-10829 | Lift Machine Room Works |  | 2026-02-20 → 2026-02-21 (+1d) |  | 104.41d → 105.86d |
| PG-10830 | Slow Speed & High Speed Testing works | 2026-02-20 → 2026-02-21 (+1d) | 2026-03-27 → 2026-03-28 (+1d) |  | 104.41d → 105.86d |
| 1.3.1.1.9.1 | **Civil Finishing Works** |  | 2025-09-03 → 2025-09-04 (+1d) |  |  |
| PG-10832 | Window, Louver and Door fixing works |  | 2025-08-14 → 2025-08-16 (+2d) |  | 128.24d → 129.69d |
| PG-10833 | Pedestal works | 2025-08-14 → 2025-08-16 (+2d) | 2025-08-27 → 2025-08-28 (+1d) |  | 128.24d → 129.69d |
| PG-10834 | Painting works | 2025-08-27 → 2025-08-28 (+1d) | 2025-09-03 → 2025-09-04 (+1d) |  | 128.24d → 129.69d |
| 1.3.1.1.9.2 | **Electrical Panel works** | 2025-09-03 → 2025-09-04 (+1d) |  |  |  |
| PG-10835 | Electrical Panel assembly works | 2025-09-03 → 2025-09-04 (+1d) | 2025-11-12 → 2025-11-13 (+1d) |  | 128.24d → 129.69d |
| PG-10836 | Electrical Panel installation and cable termination. | 2025-11-12 → 2025-11-13 (+1d) | 2026-01-21 → 2026-01-22 (+1d) |  | 128.24d → 129.69d |
| PG-10837 | Electrical Panel Testing and commissioning works | 2026-01-21 → 2026-01-22 (+1d) |  |  | 128.24d → 129.69d |
| PG-10838 | Flooring Works |  | 2026-03-17 → 2026-03-18 (+1d) |  | 41.91d → 43.36d |
| PG-10839 | Glass Door and False ceiling Works | 2026-03-17 → 2026-03-18 (+1d) | 2026-04-21 → 2026-04-22 (+1d) |  | 41.91d → 43.36d |
| PG-10841 | Canopy Works | 2026-03-17 → 2026-03-18 (+1d) | 2026-04-16 → 2026-04-17 (+1d) |  | 60.74d → 62.19d |
| PG-10840 | Painting Works | 2026-04-21 → 2026-04-22 (+1d) |  |  | 41.91d → 43.36d |
| 1.3.1.1.11 | **Lightening Arrester works** |  | 2025-12-15 → 2025-12-16 (+1d) |  |  |
| PG-10843 | Conductor will be lifted with RCC Works, But Terrace works will be done once Parapet Painting done |  | 2025-12-15 → 2025-12-16 (+1d) |  | 246.74d → 248.19d |
| 1.3.1.2.2.20.1 | **Columns / shear walls** |  | 2025-04-15 → 2025-04-16 (+1d) |  |  |
| PG-10953 | Reinforcement |  | 2025-04-12 → 2025-04-14 A (+2d) | 51% → 100% | 12.12d → none |
| PG-10954 | Formwork |  | 2025-04-15 → 2025-04-16 A (+1d) | 4% → 100% | 12.12d → none |
| 1.3.1.2.2.20.2 | **Slab, Beams & Staircase** | 2025-04-14 → 2025-04-15 (+1d) |  |  |  |
| PG-10955 | Formwork | 2025-04-14 → 2025-04-15 A (+1d) | 2025-04-17 → 2025-04-18 A (+1d) | 0% → 100% | 12.12d → none |
| PG-10956 | Reinforcement | 2025-04-16 → 2025-04-17 A (+1d) |  | 0% → 40% | 12.12d → 14.27d |

| ID | Task | Start | Total float |
| --- | --- | --- | --- |
| PG-10957 | Concrete | 2025-04-19 → 2025-04-21 (+2d) | 12.12d → 14.27d |
| 1.3.1.2.2.21 | **Floor 18** | 2025-04-21 → 2025-04-22 (+1d) |  |
| 1.3.1.2.2.21.1 | **Columns / shear walls** | 2025-04-21 → 2025-04-22 (+1d) |  |
| PG-10958 | Reinforcement | 2025-04-21 → 2025-04-22 (+1d) | 12.12d → 14.27d |
| PG-10959 | Formwork | 2025-04-23 → 2025-04-24 (+1d) | 12.12d → 14.27d |
| 1.3.1.2.2.21.2 | **Slab, Beams & Staircase** | 2025-04-26 → 2025-04-28 (+2d) |  |
| PG-10960 | Formwork | 2025-04-26 → 2025-04-28 (+2d) | 12.12d → 14.27d |
| PG-10961 | Reinforcement | 2025-04-29 → 2025-04-30 (+1d) | 12.12d → 14.27d |
| PG-10962 | Concrete | 2025-05-02 → 2025-05-03 (+1d) | 12.12d → 14.27d |
| 1.3.1.2.2.22 | **Floor 19** | 2025-05-03 → 2025-05-05 (+2d) |  |
| 1.3.1.2.2.22.1 | **Columns / shear walls** | 2025-05-03 → 2025-05-05 (+2d) |  |
| PG-10963 | Reinforcement | 2025-05-03 → 2025-05-05 (+2d) | 12.12d → 14.27d |
| PG-10964 | Formwork | 2025-05-06 → 2025-05-07 (+1d) | 12.12d → 14.27d |
| 1.3.1.2.2.22.2 | **Slab, Beams & Staircase** | 2025-05-09 → 2025-05-10 (+1d) |  |
| PG-10965 | Formwork | 2025-05-09 → 2025-05-10 (+1d) | 12.12d → 14.27d |
| PG-10966 | Reinforcement | 2025-05-12 → 2025-05-13 (+1d) | 12.12d → 14.27d |
| PG-10967 | Concrete | 2025-05-15 → 2025-05-16 (+1d) | 12.12d → 14.27d |
| 1.3.1.2.2.23 | **Floor 20** | 2025-05-16 → 2025-05-17 (+1d) |  |
| 1.3.1.2.2.23.1 | **Columns / shear walls** | 2025-05-16 → 2025-05-17 (+1d) |  |
| PG-10968 | Reinforcement | 2025-05-16 → 2025-05-17 (+1d) | 12.12d → 14.27d |
| PG-10969 | Formwork | 2025-05-19 → 2025-05-20 (+1d) | 12.12d → 14.27d |
| 1.3.1.2.2.23.2 | **Slab, Beams & Staircase** | 2025-05-22 → 2025-05-23 (+1d) |  |
| PG-10970 | Formwork | 2025-05-22 → 2025-05-23 (+1d) | 12.12d → 14.27d |
| PG-10971 | Reinforcement | 2025-05-24 → 2025-05-26 (+2d) | 12.12d → 14.27d |
| PG-10972 | Concrete | 2025-05-28 → 2025-05-29 (+1d) | 12.12d → 14.27d |
| 1.3.1.2.2.24 | **Floor 21** | 2025-05-29 → 2025-05-30 (+1d) |  |
| 1.3.1.2.2.24.1 | **Columns / shear walls** | 2025-05-29 → 2025-05-30 (+1d) |  |
| PG-10973 | Reinforcement | 2025-05-29 → 2025-05-30 (+1d) | 12.12d → 14.27d |
| PG-10974 | Formwork | 2025-05-31 → 2025-06-02 (+2d) | 12.12d → 14.27d |
| 1.3.1.2.2.24.2 | **Slab, Beams & Staircase** | 2025-06-04 → 2025-06-05 (+1d) |  |
| PG-10975 | Formwork | 2025-06-04 → 2025-06-05 (+1d) | 12.12d → 14.27d |
| PG-10976 | Reinforcement | 2025-06-06 → 2025-06-07 (+1d) | 12.12d → 14.27d |
| PG-10977 | Concrete | 2025-06-10 → 2025-06-11 (+1d) | 12.12d → 14.27d |
| 1.3.1.2.2.25 | **Floor 22** | 2025-06-11 → 2025-06-12 (+1d) |  |
| 1.3.1.2.2.25.1 | **Columns / shear walls** | 2025-06-11 → 2025-06-12 (+1d) |  |
| PG-10978 | Reinforcement | 2025-06-11 → 2025-06-12 (+1d) | 12.12d → 14.27d |
| PG-10979 | Formwork | 2025-06-13 → 2025-06-14 (+1d) | 12.12d → 14.27d |
| 1.3.1.2.2.25.2 | **Slab, Beams & Staircase** | 2025-06-17 → 2025-06-18 (+1d) |  |
| PG-10980 | Formwork | 2025-06-17 → 2025-06-18 (+1d) | 12.12d → 14.27d |
| PG-10981 | Reinforcement | 2025-06-19 → 2025-06-20 (+1d) | 12.12d → 14.27d |
| PG-10982 | Concrete | 2025-06-23 → 2025-06-24 (+1d) | 12.12d → 14.27d |
| 1.3.1.2.2.26 | **Floor 23** | 2025-06-24 → 2025-06-25 (+1d) |  |
| 1.3.1.2.2.26.1 | **Columns / shear walls** | 2025-06-24 → 2025-06-25 (+1d) |  |
| PG-10983 | Reinforcement | 2025-06-24 → 2025-06-25 (+1d) | 12.12d → 14.27d |
| PG-10984 | Formwork | 2025-06-26 → 2025-06-27 (+1d) | 12.12d → 14.27d |
| 1.3.1.2.2.26.2 | **Slab, Beams & Staircase** | 2025-06-30 → 2025-07-01 (+1d) |  |
| PG-10985 | Formwork | 2025-06-30 → 2025-07-01 (+1d) | 12.12d → 14.27d |
| PG-10986 | Reinforcement | 2025-07-02 → 2025-07-03 (+1d) | 12.12d → 14.27d |
| PG-10987 | Concrete | 2025-07-05 → 2025-07-07 (+2d) | 12.12d → 14.27d |
| 1.3.1.2.2.27 | **Floor 24** | 2025-07-07 → 2025-07-08 (+1d) |  |
| 1.3.1.2.2.27.1 | **Columns / shear walls** | 2025-07-07 → 2025-07-08 (+1d) |  |
| PG-10988 | Reinforcement | 2025-07-07 → 2025-07-08 (+1d) | 12.12d → 14.27d |
| PG-10989 | Formwork | 2025-07-09 → 2025-07-10 (+1d) | 12.12d → 14.27d |
| 1.3.1.2.2.27.2 | **Slab, Beams & Staircase** | 2025-07-12 → 2025-07-14 (+2d) |  |
| PG-10990 | Formwork | 2025-07-12 → 2025-07-14 (+2d) | 12.12d → 14.27d |
| PG-10991 | Reinforcement | 2025-07-15 → 2025-07-16 (+1d) | 12.12d → 14.27d |
| PG-10992 | Concrete | 2025-07-18 → 2025-07-19 (+1d) | 12.12d → 14.27d |
| 1.3.1.2.2.28 | **Floor 25** | 2025-07-19 → 2025-07-21 (+2d) |  |
| 1.3.1.2.2.28.1 | **Columns / shear walls** | 2025-07-19 → 2025-07-21 (+2d) |  |
| PG-10993 | Reinforcement | 2025-07-19 → 2025-07-21 (+2d) | 12.12d → 14.27d |
| PG-10994 | Formwork | 2025-07-22 → 2025-07-23 (+1d) | 12.12d → 14.27d |
| 1.3.1.2.2.28.2 | **Slab, Beams & Staircase** | 2025-07-25 → 2025-07-26 (+1d) |  |
| PG-10995 | Formwork | 2025-07-25 → 2025-07-26 (+1d) | 12.12d → 14.27d |
| PG-10996 | Reinforcement | 2025-07-28 → 2025-07-29 (+1d) | 12.12d → 14.27d |
| PG-10997 | Concrete | 2025-07-31 → 2025-08-01 (+1d) | 12.12d → 14.27d |
| 1.3.1.2.2.29 | **Floor 26** | 2025-08-01 → 2025-08-02 (+1d) |  |
| 1.3.1.2.2.29.1 | **Columns / shear walls** | 2025-08-01 → 2025-08-02 (+1d) |  |
| PG-10998 | Reinforcement | 2025-08-01 → 2025-08-02 (+1d) | 12.12d → 14.27d |
| PG-10999 | Formwork | 2025-08-04 → 2025-08-05 (+1d) | 12.12d → 14.27d |
| 1.3.1.2.2.29.2 | **Slab, Beams & Staircase** | 2025-08-07 → 2025-08-08 (+1d) |  |

| ID | Task | Start | Finish | Complete | Total float |
| --- | --- | --- | --- | --- | --- |
| PG-11000 | Formwork | 2025-08-07 → 2025-08-08 (+1d) |  |  | 12.12d → 14.27d |
| PG-11001 | Reinforcement | 2025-08-09 → 2025-08-11 (+2d) |  |  | 12.12d → 14.27d |
| PG-11002 | Concrete | 2025-08-13 → 2025-08-14 (+1d) |  |  | 12.12d → 14.27d |
| 1.3.1.2.2.30 | **Above Terrace Floor** | 2025-08-14 → 2025-08-16 (+2d) |  |  |  |
| 1.3.1.2.2.30.1 | **Columns / shear walls/Parapet Walls** | 2025-08-14 → 2025-08-16 (+2d) |  |  |  |
| PG-11003 | Reinforcement | 2025-08-14 → 2025-08-16 (+2d) |  |  | 117.62d → 119.77d |
| PG-11004 | Formwork | 2025-08-18 → 2025-08-19 (+1d) |  |  | 117.62d → 119.77d |
| PG-11005 | Concrete | 2025-08-23 → 2025-08-25 (+2d) |  |  | 117.62d → 119.77d |
| 1.3.1.2.2.30.2 | **Slab, Beams & Staircase Head rooms, Lift headroom** | 2025-08-21 → 2025-08-22 (+1d) |  |  |  |
| PG-11009 | Terrace Waterproofing and Protective finishing. | 2025-08-21 → 2025-08-22 (+1d) |  |  | 210.29d → 212.44d |
| PG-11073 | Final Fix - CP & Sanitary fixtures |  | 2025-04-17 A | 61% → 100% | 414.84d → none |
| PG-11076 | Final Fix - Smoke & heat detectors, FHC , FAS Etc. |  | 2025-04-17 A | 56% → 100% | 414.84d → none |
| PG-11079 | Final Fix - Electrical Fixtures |  | 2025-04-17 A | 23% → 100% | 414.84d → none |
| PG-11093 | 2nd Fix - Sprinkler fixing & Pressure testing | 2025-04-12 → 2025-04-14 A (+2d) |  | 0% → 47% | 399.43d → 400.94d |
| PG-11096 | 2nd Fix - Wiring works |  |  | 13% → 61% | 403.78d → 405.94d |
| 1.3.1.2.3.12 | **Floor 9** |  | 2025-05-28 → 2025-05-29 (+1d) |  |  |
| 1.3.1.2.3.12.1 | **PHE Works** |  | 2025-05-28 → 2025-05-29 (+1d) |  |  |
| PG-11100 | Final Fix - CP & Sanitary fixtures | 2025-05-17 → 2025-05-19 (+2d) | 2025-05-28 → 2025-05-29 (+1d) |  | 379.29d → 380.77d |
| 1.3.1.2.3.12.2 | **Fire Fighting Works** |  | 2025-05-28 → 2025-05-29 (+1d) |  |  |
| PG-11102 | 2nd Fix - Sprinkler fixing & Pressure testing | 2025-04-25 → 2025-04-26 (+1d) |  |  | 388.46d → 389.94d |
| PG-11103 | Final Fix - Smoke & heat detectors, FHC , FAS Etc. | 2025-05-17 → 2025-05-19 (+2d) | 2025-05-28 → 2025-05-29 (+1d) |  | 379.29d → 380.77d |
| 1.3.1.2.3.12.3 | **Electrical Works** |  | 2025-05-28 → 2025-05-29 (+1d) |  |  |
| PG-11105 | 2nd Fix - Wiring works | 2025-04-18 → 2025-04-19 (+1d) |  |  | 393.29d → 394.77d |
| PG-11106 | Final Fix - Electrical Fixtures | 2025-05-22 → 2025-05-23 (+1d) | 2025-05-28 → 2025-05-29 (+1d) |  | 379.29d → 380.77d |
| 1.3.1.2.3.13 | **Floor 10** |  | 2025-06-14 → 2025-06-13 (-1d) |  |  |
| 1.3.1.2.3.13.1 | **PHE Works** |  | 2025-06-14 → 2025-06-13 (-1d) |  |  |
| PG-11108 | 2nd Fix - diverter fixing & Pressure testing |  | 2025-04-17 A | 53% → 100% | 364.51d → none |
| PG-11109 | Final Fix - CP & Sanitary fixtures | 2025-06-03 → 2025-06-02 (-1d) | 2025-06-14 → 2025-06-13 (-1d) |  | 364.51d → 367.29d |
| 1.3.1.2.3.13.2 | **Fire Fighting Works** |  | 2025-06-14 → 2025-06-13 (-1d) |  |  |
| PG-11110 | 1st Fix - Piping and Shaft hydrant works |  | 2025-04-18 → 2025-04-19 (+1d) | 48% → 98% | 412.59d → 413.77d |
| PG-11111 | 2nd Fix - Sprinkler fixing & Pressure testing | 2025-05-13 → 2025-05-12 (-1d) | 2025-05-24 → 2025-05-23 (-1d) |  | 372.34d → 375.12d |
| PG-11112 | Final Fix - Smoke & heat detectors, FHC , FAS Etc. | 2025-06-03 → 2025-06-02 (-1d) | 2025-06-14 → 2025-06-13 (-1d) |  | 364.51d → 367.29d |
| 1.3.1.2.3.13.3 | **Electrical Works** |  | 2025-06-14 → 2025-06-13 (-1d) |  |  |
| PG-11114 | 2nd Fix - Wiring works | 2025-05-08 → 2025-05-07 (-1d) | 2025-05-23 → 2025-05-22 (-1d) |  | 378.18d → 380.96d |
| PG-11115 | Final Fix - Electrical Fixtures |  | 2025-06-14 → 2025-06-13 (-1d) |  | 364.51d → 367.29d |
| PG-11116 | 1st Fix - Piping works |  |  | 19% → 69% | 354.04d → 356.22d |
| PG-11117 | 2nd Fix - diverter fixing & Pressure testing | 2025-04-17 → 2025-04-18 A (+1d) |  | 0% → 3% | 354.04d → 356.22d |
| 1.3.1.2.3.14.2 | **Fire Fighting Works** | 2025-04-17 → 2025-04-18 (+1d) |  |  |  |
| PG-11119 | 1st Fix - Piping and Shaft hydrant works | 2025-04-17 → 2025-04-18 A (+1d) |  | 0% → 3% | 401.55d → 403.45d |
| PG-11122 | 1st Fix - GI wire pulling |  | 2025-04-17 → 2025-04-18 A (+1d) | 28% → 100% | 401.55d → none |
| 1.3.1.2.3.15 | **Floor 12** | 2025-04-21 → 2025-04-22 (+1d) |  |  |  |
| 1.3.1.2.3.15.1 | **PHE Works** | 2025-04-21 → 2025-04-22 (+1d) |  |  |  |
| PG-11125 | 1st Fix - Piping works | 2025-04-21 → 2025-04-22 (+1d) |  |  | 342.79d → 344.94d |
| PG-11126 | 2nd Fix - diverter fixing & Pressure testing | 2025-04-30 → 2025-05-01 (+1d) |  |  | 342.79d → 344.94d |
| PG-11127 | Final Fix - CP & Sanitary fixtures | 2025-06-28 → 2025-06-30 (+2d) |  |  | 342.79d → 344.94d |
| PG-11129 | 2nd Fix - Sprinkler fixing & Pressure testing | 2025-06-06 → 2025-06-07 (+1d) |  |  | 351.79d → 353.94d |
| PG-11130 | Final Fix - Smoke & heat detectors, FHC , FAS Etc. | 2025-06-28 → 2025-06-30 (+2d) |  |  | 342.79d → 344.94d |
| 1.3.1.2.3.15.3 | **Electrical Works** | 2025-04-21 → 2025-04-22 (+1d) |  |  |  |
| PG-11131 | 1st Fix - GI wire pulling | 2025-04-21 → 2025-04-22 (+1d) |  |  | 390.46d → 392.61d |
| PG-11133 | Final Fix - Electrical Fixtures | 2025-07-03 → 2025-07-04 (+1d) |  |  | 342.79d → 344.94d |
| 1.3.1.2.3.16 | **Floor 13** | 2025-05-03 → 2025-05-05 (+2d) |  |  |  |
| 1.3.1.2.3.16.1 | **PHE Works** | 2025-05-03 → 2025-05-05 (+2d) |  |  |  |
| PG-11134 | 1st Fix - Piping works | 2025-05-03 → 2025-05-05 (+2d) |  |  | 331.79d → 333.94d |
| PG-11135 | 2nd Fix - diverter fixing & Pressure testing | 2025-05-13 → 2025-05-14 (+1d) |  |  | 331.79d → 333.94d |
| PG-11136 | Final Fix - CP & Sanitary fixtures | 2025-07-11 → 2025-07-12 (+1d) |  |  | 331.79d → 333.94d |
| PG-11138 | 2nd Fix - Sprinkler fixing & Pressure testing | 2025-06-19 → 2025-06-20 (+1d) |  |  | 340.79d → 342.94d |
| PG-11139 | Final Fix - Smoke & heat detectors, FHC , FAS Etc. | 2025-07-11 → 2025-07-12 (+1d) |  |  | 331.79d → 333.94d |
| 1.3.1.2.3.16.3 | **Electrical Works** | 2025-05-03 → 2025-05-05 (+2d) |  |  |  |
| PG-11140 | 1st Fix - GI wire pulling | 2025-05-03 → 2025-05-05 (+2d) |  |  | 378.79d → 380.94d |
| PG-11142 | Final Fix - Electrical Fixtures | 2025-07-17 → 2025-07-18 (+1d) |  |  | 331.79d → 333.94d |
| 1.3.1.2.3.17 | **Floor 14** | 2025-05-16 → 2025-05-17 (+1d) |  |  |  |
| 1.3.1.2.3.17.1 | **PHE Works** | 2025-05-16 → 2025-05-17 (+1d) |  |  |  |
| PG-11143 | 1st Fix - Piping works | 2025-05-16 → 2025-05-17 (+1d) |  |  | 320.79d → 322.94d |
| PG-11144 | 2nd Fix - diverter fixing & Pressure testing | 2025-05-26 → 2025-05-27 (+1d) |  |  | 320.79d → 322.94d |
| PG-11145 | Final Fix - CP & Sanitary fixtures | 2025-07-25 → 2025-07-26 (+1d) |  |  | 320.79d → 322.94d |
| PG-11147 | 2nd Fix - Sprinkler fixing & Pressure testing | 2025-07-02 → 2025-07-03 (+1d) |  |  | 330.79d → 332.94d |
| PG-11148 | Final Fix - Smoke & heat detectors, FHC , FAS Etc. | 2025-07-25 → 2025-07-26 (+1d) |  |  | 320.79d → 322.94d |
| 1.3.1.2.3.17.3 | **Electrical Works** | 2025-05-16 → 2025-05-17 (+1d) |  |  |  |
| PG-11149 | 1st Fix - GI wire pulling | 2025-05-16 → 2025-05-17 (+1d) |  |  | 366.79d → 368.94d |
| PG-11151 | Final Fix - Electrical Fixtures | 2025-07-30 → 2025-07-31 (+1d) |  |  | 320.79d → 322.94d |

| ID | Task | Start | Finish | Complete | Total float |
| --- | --- | --- | --- | --- | --- |
| 1.3.1.2.3.18 | **Floor 15** | 2025-05-29 → 2025-05-30 (+1d) |  |  |  |
| 1.3.1.2.3.18.1 | **PHE Works** | 2025-05-29 → 2025-05-30 (+1d) |  |  |  |
| PG-11152 | 1st Fix - Piping works | 2025-05-29 → 2025-05-30 (+1d) |  |  | 159.79d → 161.94d |
| PG-11153 | 2nd Fix - diverter fixing & Pressure testing | 2025-06-07 → 2025-06-09 (+2d) |  |  | 159.79d → 161.94d |
| PG-11154 | Final Fix - CP & Sanitary fixtures | 2025-08-06 → 2025-08-07 (+1d) |  |  | 310.79d → 312.94d |
| PG-11156 | 2nd Fix - Sprinkler fixing & Pressure testing | 2025-07-15 → 2025-07-16 (+1d) |  |  | 319.79d → 321.94d |
| PG-11157 | Final Fix - Smoke & heat detectors, FHC , FAS Etc. | 2025-08-06 → 2025-08-07 (+1d) |  |  | 310.79d → 312.94d |
| 1.3.1.2.3.18.3 | **Electrical Works** | 2025-05-29 → 2025-05-30 (+1d) |  |  |  |
| PG-11158 | 1st Fix - GI wire pulling | 2025-05-29 → 2025-05-30 (+1d) |  |  | 357.46d → 359.61d |
| PG-11160 | Final Fix - Electrical Fixtures | 2025-08-11 → 2025-08-12 (+1d) |  |  | 310.79d → 312.94d |
| 1.3.1.2.3.19 | **Floor 16** | 2025-06-11 → 2025-06-12 (+1d) |  |  |  |
| 1.3.1.2.3.19.1 | **PHE Works** | 2025-06-11 → 2025-06-12 (+1d) |  |  |  |
| PG-11161 | 1st Fix - Piping works | 2025-06-11 → 2025-06-12 (+1d) |  |  | 300.46d → 302.61d |
| PG-11162 | 2nd Fix - diverter fixing & Pressure testing | 2025-06-20 → 2025-06-21 (+1d) |  |  | 300.46d → 302.61d |
| PG-11165 | 2nd Fix - Sprinkler fixing & Pressure testing | 2025-07-28 → 2025-07-29 (+1d) |  |  | 307.62d → 309.77d |
| 1.3.1.2.3.19.3 | **Electrical Works** | 2025-06-11 → 2025-06-12 (+1d) |  |  |  |
| PG-11167 | 1st Fix - GI wire pulling | 2025-06-11 → 2025-06-12 (+1d) |  |  | 346.29d → 348.44d |
| PG-11169 | Final Fix - Electrical Fixtures | 2025-08-23 → 2025-08-25 (+2d) |  |  | 300.46d → 302.61d |
| 1.3.1.2.3.20 | **Floor 17** | 2025-06-24 → 2025-06-25 (+1d) |  |  |  |
| 1.3.1.2.3.20.1 | **PHE Works** | 2025-06-24 → 2025-06-25 (+1d) |  |  |  |
| PG-11170 | 1st Fix - Piping works | 2025-06-24 → 2025-06-25 (+1d) |  |  | 289.46d → 291.61d |
| PG-11171 | 2nd Fix - diverter fixing & Pressure testing | 2025-07-03 → 2025-07-04 (+1d) |  |  | 289.46d → 291.61d |
| PG-11174 | 2nd Fix - Sprinkler fixing & Pressure testing | 2025-08-09 → 2025-08-11 (+2d) |  |  | 296.62d → 298.77d |
| 1.3.1.2.3.20.3 | **Electrical Works** | 2025-06-24 → 2025-06-25 (+1d) |  |  |  |
| PG-11176 | 1st Fix - GI wire pulling | 2025-06-24 → 2025-06-25 (+1d) |  |  | 335.29d → 337.44d |
| PG-11178 | Final Fix - Electrical Fixtures | 2025-09-05 → 2025-09-06 (+1d) |  |  | 289.46d → 291.61d |
| 1.3.1.2.3.21 | **Floor 18** | 2025-07-07 → 2025-07-08 (+1d) |  |  |  |
| 1.3.1.2.3.21.1 | **PHE Works** | 2025-07-07 → 2025-07-08 (+1d) |  |  |  |
| PG-11179 | 1st Fix - Piping works | 2025-07-07 → 2025-07-08 (+1d) |  |  | 277.62d → 279.77d |
| PG-11180 | 2nd Fix - diverter fixing & Pressure testing | 2025-07-17 → 2025-07-18 (+1d) |  |  | 277.62d → 279.77d |
| 1.3.1.2.3.21.3 | **Electrical Works** | 2025-07-07 → 2025-07-08 (+1d) |  |  |  |
| PG-11185 | 1st Fix - GI wire pulling | 2025-07-07 → 2025-07-08 (+1d) |  |  | 325.29d → 327.44d |
| 1.3.1.2.3.22 | **Floor 19** | 2025-07-19 → 2025-07-21 (+2d) |  |  |  |
| 1.3.1.2.3.22.1 | **PHE Works** | 2025-07-19 → 2025-07-21 (+2d) |  |  |  |
| PG-11188 | 1st Fix - Piping works | 2025-07-19 → 2025-07-21 (+2d) |  |  | 266.62d → 268.77d |
| PG-11189 | 2nd Fix - diverter fixing & Pressure testing | 2025-07-30 → 2025-07-31 (+1d) |  |  | 266.62d → 268.77d |
| 1.3.1.2.3.22.3 | **Electrical Works** | 2025-07-19 → 2025-07-21 (+2d) |  |  |  |
| PG-11194 | 1st Fix - GI wire pulling | 2025-07-19 → 2025-07-21 (+2d) |  |  | 314.29d → 316.44d |
| 1.3.1.2.3.23 | **Floor 20** | 2025-08-01 → 2025-08-02 (+1d) |  |  |  |
| 1.3.1.2.3.23.1 | **PHE Works** | 2025-08-01 → 2025-08-02 (+1d) |  |  |  |
| PG-11197 | 1st Fix - Piping works | 2025-08-01 → 2025-08-02 (+1d) |  |  | 254.62d → 256.77d |
| PG-11198 | 2nd Fix - diverter fixing & Pressure testing | 2025-08-13 → 2025-08-14 (+1d) |  |  | 254.62d → 256.77d |
| 1.3.1.2.3.23.3 | **Electrical Works** | 2025-08-01 → 2025-08-02 (+1d) |  |  |  |
| PG-11203 | 1st Fix - GI wire pulling | 2025-08-01 → 2025-08-02 (+1d) |  |  | 302.46d → 304.61d |
| 1.3.1.2.3.24 | **Floor 21** | 2025-08-14 → 2025-08-16 (+2d) |  |  |  |
| 1.3.1.2.3.24.1 | **PHE Works** | 2025-08-14 → 2025-08-16 (+2d) |  |  |  |
| PG-11206 | 1st Fix - Piping works | 2025-08-14 → 2025-08-16 (+2d) |  |  | 12.12d → 14.27d |
| PG-11207 | 2nd Fix - diverter fixing & Pressure testing | 2025-08-23 → 2025-08-25 (+2d) |  |  | 244.96d → 247.11d |
| 1.3.1.2.3.24.2 | **Fire Fighting Works** | 2025-08-23 → 2025-08-25 (+2d) |  |  |  |
| PG-11209 | 1st Fix - Piping and Shaft hydrant works | 2025-08-23 → 2025-08-25 (+2d) |  |  | 292.62d → 294.77d |
| 1.3.1.2.3.24.3 | **Electrical Works** | 2025-08-14 → 2025-08-16 (+2d) |  |  |  |
| PG-11212 | 1st Fix - GI wire pulling | 2025-08-14 → 2025-08-16 (+2d) |  |  | 292.62d → 294.77d |
| PG-11219 | 2nd Fix - Sprinkler fixing & Pressure testing | 2025-10-22 → 2025-10-23 (+1d) |  |  | 235.12d → 237.27d |
| PG-11222 | 2nd Fix - Wiring works | 2025-10-15 → 2025-10-16 (+1d) |  |  | 240.12d → 242.27d |
| 1.3.1.2.4.9 | **Floor 6** |  | 2025-04-12 → 2025-04-14 (+2d) |  |  |
| 1.3.1.2.4.9.1 | **Ceiling Finishing works - Civil** |  | 2025-04-12 → 2025-04-14 (+2d) |  |  |
| PG-11359 | Final Coat Painting |  | 2025-04-12 → 2025-04-14 A (+2d) | 92% → 100% | 448.11d → none |
| PG-11373 | Final Coat Painting |  |  | 39% → 70% | 437.83d → 440.01d |
| PG-11378 | Final Coat Painting |  |  | 44% → 76% | 403.59d → 405.77d |
| 1.3.1.2.4.11 | **Floor 8** |  | 2025-05-10 → 2025-05-12 (+2d) |  |  |
| 1.3.1.2.4.11.1 | **Ceiling Finishing works - Civil** |  | 2025-05-10 → 2025-05-12 (+2d) |  |  |
| PG-11385 | Painting Works - Putty, Primer and 1st |  | 2025-04-17 → 2025-04-18 A (+1d) | 13% → 100% | 423.07d → none |
| PG-11387 | Final Coat Painting | 2025-04-17 → 2025-04-18 A (+1d) | 2025-05-10 → 2025-05-12 (+2d) | 0% → 3% | 422.93d → 425.06d |
| PG-11391 | Painting Works - Putty, Primer and 1st |  | 2025-04-17 → 2025-04-18 A (+1d) | 11% → 100% | 389.43d → none |
| PG-11392 | Final Coat Painting | 2025-04-17 → 2025-04-18 A (+1d) |  | 0% → 3% | 389.43d → 391.53d |
| 1.3.1.2.4.11.3 | **Floor Finishing Works - Civil** |  | 2025-04-17 → 2025-04-18 (+1d) |  |  |
| PG-11396 | Wooden doors | 2025-04-11 → 2025-04-12 A (+1d) | 2025-04-17 → 2025-04-18 A (+1d) | 0% → 100% | 389.43d → none |
| 1.3.1.2.4.12 | **Floor 9** |  | 2025-05-21 → 2025-05-22 (+1d) |  |  |
| 1.3.1.2.4.12.1 | **Ceiling Finishing works - Civil** |  | 2025-05-21 → 2025-05-22 (+1d) |  |  |
| PG-11400 | Toilet False ceiling | 2025-04-12 → 2025-04-14 A (+2d) | 2025-04-17 → 2025-04-18 A (+1d) | 0% → 100% | 405.46d → none |

| ID | Task | Start | Finish | Complete | Total float |
| --- | --- | --- | --- | --- | --- |
| PG-11399 | Painting Works - Putty, Primer and 1st | 2025-04-23 → 2025-04-24 (+1d) |  |  | 413.79d → 415.27d |
| PG-11401 | Final Coat Painting | 2025-04-30 → 2025-05-01 (+1d) | 2025-05-21 → 2025-05-22 (+1d) |  | 413.79d → 415.27d |
| 1.3.1.2.4.12.2 | **Wall Finishing works - Civil** |  | 2025-05-21 → 2025-05-22 (+1d) |  |  |
| PG-11403 | UPVC Windows & Sliding doors | 2025-04-17 → 2025-04-18 A (+1d) |  | 0% → 11% | 379.29d → 380.77d |
| PG-11405 | Painting Works - Putty, Primer and 1st | 2025-04-23 → 2025-04-24 (+1d) |  |  | 379.29d → 380.77d |
| PG-11406 | Final Coat Painting | 2025-04-30 → 2025-05-01 (+1d) | 2025-05-21 → 2025-05-22 (+1d) |  | 379.29d → 380.77d |
| PG-11408 | Floor Tiling - Wet area |  | 2025-04-11 → 2025-04-12 A (+1d) | 94% → 100% | 379.29d → none |
| PG-11409 | Floor Tiling - Dry area | 2025-04-11 → 2025-04-12 A (+1d) | 2025-04-17 → 2025-04-18 A (+1d) | 0% → 100% | 379.29d → none |
| PG-11410 | Wooden doors | 2025-04-24 → 2025-04-25 (+1d) |  |  | 379.29d → 380.77d |
| PG-11411 | Gypsum Plastering |  | 2025-04-11 → 2025-04-12 A (+1d) | 92% → 100% | 412.59d → none |
| PG-11412 | Cornice fixing | 2025-04-21 → 2025-04-22 (+1d) | 2025-04-25 → 2025-04-26 (+1d) |  | 412.59d → 413.77d |
| PG-11414 | Toilet False ceiling | 2025-04-30 → 2025-04-29 (-1d) | 2025-05-05 → 2025-05-03 (-2d) |  | 389.34d → 392.12d |
| PG-11413 | Painting Works - Putty, Primer and 1st | 2025-05-10 → 2025-05-09 (-1d) | 2025-05-17 → 2025-05-16 (-1d) |  | 399.84d → 402.62d |
| PG-11415 | Final Coat Painting | 2025-05-17 → 2025-05-16 (-1d) |  |  | 399.84d → 402.62d |
| 1.3.1.2.4.13.2 | **Wall Finishing works - Civil** |  | 2025-06-07 → 2025-06-06 (-1d) |  |  |
| PG-11418 | Dadoing - Wet area | 2025-04-17 A | 2025-04-23 → 2025-04-22 (-1d) | 0% → 27% | 364.51d → 367.29d |
| PG-11417 | UPVC Windows & Sliding doors | 2025-05-05 → 2025-05-03 (-2d) | 2025-05-10 → 2025-05-09 (-1d) |  | 364.51d → 367.29d |
| PG-11419 | Painting Works - Putty, Primer and 1st | 2025-05-10 → 2025-05-09 (-1d) | 2025-05-17 → 2025-05-16 (-1d) |  | 364.51d → 367.29d |
| PG-11420 | Final Coat Painting | 2025-05-17 → 2025-05-16 (-1d) | 2025-06-07 → 2025-06-06 (-1d) |  | 364.51d → 367.29d |
| 1.3.1.2.4.13.3 | **Floor Finishing Works - Civil** |  | 2025-05-17 → 2025-05-16 (-1d) |  |  |
| PG-11422 | Floor Tiling - Wet area | 2025-04-23 → 2025-04-22 (-1d) | 2025-04-29 → 2025-04-28 (-1d) |  | 364.51d → 367.29d |
| PG-11423 | Floor Tiling - Dry area | 2025-04-29 → 2025-04-28 (-1d) | 2025-05-05 → 2025-05-03 (-2d) |  | 364.51d → 367.29d |
| PG-11424 | Wooden doors | 2025-05-12 → 2025-05-10 (-2d) | 2025-05-17 → 2025-05-16 (-1d) |  | 364.51d → 367.29d |
| 1.3.1.2.4.14.1 | **Ceiling Finishing works - Civil** | 2025-04-17 → 2025-04-18 (+1d) |  |  |  |
| PG-11425 | Gypsum Plastering | 2025-04-17 → 2025-04-18 A (+1d) |  | 0% → 3% | 401.55d → 403.45d |
| PG-11430 | Balcony Railing Fixing works |  | 2025-04-12 → 2025-04-14 A (+2d) | 61% → 100% | 383.21d → none |
| PG-11435 | Waterproofing for sunken areas |  | 2025-04-11 → 2025-04-12 A (+1d) | 79% → 100% | 374.12d → none |
| 1.3.1.2.4.15 | **Floor 12** | 2025-04-21 → 2025-04-22 (+1d) |  |  |  |
| PG-11442 | Toilet False ceiling | 2025-05-24 → 2025-05-26 (+2d) |  |  | 368.79d → 370.94d |
| PG-11441 | Painting Works - Putty, Primer and 1st | 2025-06-04 → 2025-06-05 (+1d) |  |  | 378.29d → 380.44d |
| PG-11443 | Final Coat Painting | 2025-06-11 → 2025-06-12 (+1d) |  |  | 378.29d → 380.44d |
| 1.3.1.2.4.15.2 | **Wall Finishing works - Civil** | 2025-04-21 → 2025-04-22 (+1d) |  |  |  |
| PG-11444 | Balcony Railing Fixing works | 2025-04-21 → 2025-04-22 (+1d) |  |  | 371.79d → 373.94d |
| PG-11446 | Dadoing - Wet area | 2025-05-12 → 2025-05-13 (+1d) |  |  | 342.79d → 344.94d |
| PG-11445 | UPVC Windows & Sliding doors | 2025-05-29 → 2025-05-30 (+1d) |  |  | 342.79d → 344.94d |
| PG-11447 | Painting Works - Putty, Primer and 1st | 2025-06-04 → 2025-06-05 (+1d) |  |  | 342.79d → 344.94d |
| PG-11448 | Final Coat Painting | 2025-06-11 → 2025-06-12 (+1d) |  |  | 342.79d → 344.94d |
| 1.3.1.2.4.15.3 | **Floor Finishing Works - Civil** | 2025-04-21 → 2025-04-22 (+1d) |  |  |  |
| PG-11449 | Waterproofing for sunken areas | 2025-04-21 → 2025-04-22 (+1d) |  |  | 362.79d → 364.94d |
| PG-11450 | Floor Tiling - Wet area | 2025-05-17 → 2025-05-19 (+2d) |  |  | 342.79d → 344.94d |
| PG-11451 | Floor Tiling - Dry area | 2025-05-23 → 2025-05-24 (+1d) |  |  | 342.79d → 344.94d |
| PG-11452 | Wooden doors | 2025-06-05 → 2025-06-06 (+1d) |  |  | 342.79d → 344.94d |
| 1.3.1.2.4.16 | **Floor 13** | 2025-05-03 → 2025-05-05 (+2d) |  |  |  |
| PG-11456 | Toilet False ceiling | 2025-06-06 → 2025-06-07 (+1d) |  |  | 357.79d → 359.94d |
| PG-11455 | Painting Works - Putty, Primer and 1st | 2025-06-17 → 2025-06-18 (+1d) |  |  | 366.46d → 368.61d |
| PG-11457 | Final Coat Painting | 2025-06-24 → 2025-06-25 (+1d) |  |  | 366.46d → 368.61d |
| 1.3.1.2.4.16.2 | **Wall Finishing works - Civil** | 2025-05-03 → 2025-05-05 (+2d) |  |  |  |
| PG-11458 | Balcony Railing Fixing works | 2025-05-03 → 2025-05-05 (+2d) |  |  | 360.79d → 362.94d |
| PG-11460 | Dadoing - Wet area | 2025-05-24 → 2025-05-26 (+2d) |  |  | 331.79d → 333.94d |
| PG-11459 | UPVC Windows & Sliding doors | 2025-06-11 → 2025-06-12 (+1d) |  |  | 331.79d → 333.94d |
| PG-11461 | Painting Works - Putty, Primer and 1st | 2025-06-17 → 2025-06-18 (+1d) |  |  | 331.79d → 333.94d |
| PG-11462 | Final Coat Painting | 2025-06-24 → 2025-06-25 (+1d) |  |  | 331.79d → 333.94d |
| 1.3.1.2.4.16.3 | **Floor Finishing Works - Civil** | 2025-05-03 → 2025-05-05 (+2d) |  |  |  |
| PG-11463 | Waterproofing for sunken areas | 2025-05-03 → 2025-05-05 (+2d) |  |  | 351.79d → 353.94d |
| PG-11464 | Floor Tiling - Wet area | 2025-05-30 → 2025-05-31 (+1d) |  |  | 331.79d → 333.94d |
| PG-11465 | Floor Tiling - Dry area | 2025-06-05 → 2025-06-06 (+1d) |  |  | 331.79d → 333.94d |
| PG-11466 | Wooden doors | 2025-06-18 → 2025-06-19 (+1d) |  |  | 331.79d → 333.94d |
| 1.3.1.2.4.17 | **Floor 14** | 2025-05-16 → 2025-05-17 (+1d) |  |  |  |
| PG-11470 | Toilet False ceiling | 2025-06-19 → 2025-06-20 (+1d) |  |  | 347.79d → 349.94d |
| PG-11469 | Painting Works - Putty, Primer and 1st | 2025-06-30 → 2025-07-01 (+1d) |  |  | 355.46d → 357.61d |
| PG-11471 | Final Coat Painting | 2025-07-07 → 2025-07-08 (+1d) |  |  | 355.46d → 357.61d |
| 1.3.1.2.4.17.2 | **Wall Finishing works - Civil** | 2025-05-16 → 2025-05-17 (+1d) |  |  |  |
| PG-11472 | Balcony Railing Fixing works | 2025-05-16 → 2025-05-17 (+1d) |  |  | 349.79d → 351.94d |
| PG-11474 | Dadoing - Wet area | 2025-06-06 → 2025-06-07 (+1d) |  |  | 320.79d → 322.94d |
| PG-11473 | UPVC Windows & Sliding doors | 2025-06-24 → 2025-06-25 (+1d) |  |  | 320.79d → 322.94d |
| PG-11475 | Painting Works - Putty, Primer and 1st | 2025-06-30 → 2025-07-01 (+1d) |  |  | 320.79d → 322.94d |
| PG-11476 | Final Coat Painting | 2025-07-07 → 2025-07-08 (+1d) |  |  | 320.79d → 322.94d |
| 1.3.1.2.4.17.3 | **Floor Finishing Works - Civil** | 2025-05-16 → 2025-05-17 (+1d) |  |  |  |
| PG-11477 | Waterproofing for sunken areas | 2025-05-16 → 2025-05-17 (+1d) |  |  | 340.79d → 342.94d |
| PG-11478 | Floor Tiling - Wet area | 2025-06-12 → 2025-06-13 (+1d) |  |  | 320.79d → 322.94d |

| ID | Task | Start | Total float |
| --- | --- | --- | --- |
| PG-11479 | Floor Tiling - Dry area | 2025-06-18 → 2025-06-19 (+1d) | 320.79d → 322.94d |
| PG-11480 | Wooden doors | 2025-07-01 → 2025-07-02 (+1d) | 320.79d → 322.94d |
| 1.3.1.2.4.18 | **Floor 15** | 2025-05-29 → 2025-05-30 (+1d) |  |
| PG-11484 | Toilet False ceiling | 2025-07-02 → 2025-07-03 (+1d) | 336.79d → 338.94d |
| PG-11483 | Painting Works - Putty, Primer and 1st | 2025-07-12 → 2025-07-14 (+2d) | 345.29d → 347.44d |
| PG-11485 | Final Coat Painting | 2025-07-19 → 2025-07-21 (+2d) | 345.29d → 347.44d |
| 1.3.1.2.4.18.2 | **Wall Finishing works - Civil** | 2025-05-29 → 2025-05-30 (+1d) |  |
| PG-11486 | Balcony Railing Fixing works | 2025-05-29 → 2025-05-30 (+1d) | 188.79d → 190.94d |
| PG-11488 | Dadoing - Wet area | 2025-06-19 → 2025-06-20 (+1d) | 159.79d → 161.94d |
| PG-11487 | UPVC Windows & Sliding doors | 2025-07-07 → 2025-07-08 (+1d) | 159.79d → 161.94d |
| PG-11489 | Painting Works - Putty, Primer and 1st | 2025-07-12 → 2025-07-14 (+2d) | 159.79d → 161.94d |
| PG-11490 | Final Coat Painting | 2025-07-19 → 2025-07-21 (+2d) | 310.79d → 312.94d |
| 1.3.1.2.4.18.3 | **Floor Finishing Works - Civil** | 2025-05-29 → 2025-05-30 (+1d) |  |
| PG-11491 | Waterproofing for sunken areas | 2025-05-29 → 2025-05-30 (+1d) | 179.79d → 181.94d |
| PG-11492 | Floor Tiling - Wet area | 2025-06-25 → 2025-06-26 (+1d) | 159.79d → 161.94d |
| PG-11493 | Floor Tiling - Dry area | 2025-07-01 → 2025-07-02 (+1d) | 159.79d → 161.94d |
| PG-11494 | Wooden doors | 2025-07-14 → 2025-07-15 (+1d) | 159.79d → 161.94d |
| 1.3.1.2.4.19 | **Floor 16** | 2025-06-11 → 2025-06-12 (+1d) |  |
| PG-11498 | Toilet False ceiling | 2025-07-15 → 2025-07-16 (+1d) | 324.62d → 326.77d |
| PG-11497 | Painting Works - Putty, Primer and 1st | 2025-07-25 → 2025-07-26 (+1d) | 334.12d → 336.27d |
| PG-11499 | Final Coat Painting | 2025-08-01 → 2025-08-02 (+1d) | 334.12d → 336.27d |
| 1.3.1.2.4.19.2 | **Wall Finishing works - Civil** | 2025-06-11 → 2025-06-12 (+1d) |  |
| PG-11500 | Balcony Railing Fixing works | 2025-06-11 → 2025-06-12 (+1d) | 329.46d → 331.61d |
| PG-11502 | Dadoing - Wet area | 2025-07-02 → 2025-07-03 (+1d) | 300.46d → 302.61d |
| PG-11501 | UPVC Windows & Sliding doors | 2025-07-19 → 2025-07-21 (+2d) | 300.46d → 302.61d |
| PG-11503 | Painting Works - Putty, Primer and 1st | 2025-07-25 → 2025-07-26 (+1d) | 300.46d → 302.61d |
| PG-11504 | Final Coat Painting | 2025-08-01 → 2025-08-02 (+1d) | 300.46d → 302.61d |
| 1.3.1.2.4.19.3 | **Floor Finishing Works - Civil** | 2025-06-11 → 2025-06-12 (+1d) |  |
| PG-11505 | Waterproofing for sunken areas | 2025-06-11 → 2025-06-12 (+1d) | 320.46d → 322.61d |
| PG-11506 | Floor Tiling - Wet area | 2025-07-08 → 2025-07-09 (+1d) | 300.46d → 302.61d |
| PG-11507 | Floor Tiling - Dry area | 2025-07-14 → 2025-07-15 (+1d) | 300.46d → 302.61d |
| PG-11508 | Wooden doors | 2025-07-26 → 2025-07-28 (+2d) | 300.46d → 302.61d |
| 1.3.1.2.4.20 | **Floor 17** | 2025-06-24 → 2025-06-25 (+1d) |  |
| PG-11512 | Toilet False ceiling | 2025-07-28 → 2025-07-29 (+1d) | 313.62d → 315.77d |
| PG-11511 | Painting Works - Putty, Primer and 1st | 2025-08-07 → 2025-08-08 (+1d) | 323.12d → 325.27d |
| PG-11513 | Final Coat Painting | 2025-08-14 → 2025-08-16 (+2d) | 323.12d → 325.27d |
| 1.3.1.2.4.20.2 | **Wall Finishing works - Civil** | 2025-06-24 → 2025-06-25 (+1d) |  |
| PG-11514 | Balcony Railing Fixing works | 2025-06-24 → 2025-06-25 (+1d) | 318.46d → 320.61d |
| PG-11516 | Dadoing - Wet area | 2025-07-15 → 2025-07-16 (+1d) | 289.46d → 291.61d |
| PG-11515 | UPVC Windows & Sliding doors | 2025-08-01 → 2025-08-02 (+1d) | 289.46d → 291.61d |
| PG-11517 | Painting Works - Putty, Primer and 1st | 2025-08-07 → 2025-08-08 (+1d) | 289.46d → 291.61d |
| PG-11518 | Final Coat Painting | 2025-08-14 → 2025-08-16 (+2d) | 289.46d → 291.61d |
| 1.3.1.2.4.20.3 | **Floor Finishing Works - Civil** | 2025-06-24 → 2025-06-25 (+1d) |  |
| PG-11519 | Waterproofing for sunken areas | 2025-06-24 → 2025-06-25 (+1d) | 309.46d → 311.61d |
| PG-11520 | Floor Tiling - Wet area | 2025-07-21 → 2025-07-22 (+1d) | 289.46d → 291.61d |
| PG-11521 | Floor Tiling - Dry area | 2025-07-26 → 2025-07-28 (+2d) | 289.46d → 291.61d |
| PG-11522 | Wooden doors | 2025-08-08 → 2025-08-09 (+1d) | 289.46d → 291.61d |
| 1.3.1.2.4.21 | **Floor 18** | 2025-07-07 → 2025-07-08 (+1d) |  |
| 1.3.1.2.4.21.2 | **Wall Finishing works - Civil** | 2025-07-07 → 2025-07-08 (+1d) |  |
| PG-11528 | Balcony Railing Fixing works | 2025-07-07 → 2025-07-08 (+1d) | 306.29d → 308.44d |
| 1.3.1.2.4.21.3 | **Floor Finishing Works - Civil** | 2025-07-07 → 2025-07-08 (+1d) |  |
| PG-11533 | Waterproofing for sunken areas | 2025-07-07 → 2025-07-08 (+1d) | 297.29d → 299.44d |
| 1.3.1.2.4.22 | **Floor 19** | 2025-07-19 → 2025-07-21 (+2d) |  |
| 1.3.1.2.4.22.2 | **Wall Finishing works - Civil** | 2025-07-19 → 2025-07-21 (+2d) |  |
| PG-11542 | Balcony Railing Fixing works | 2025-07-19 → 2025-07-21 (+2d) | 295.29d → 297.44d |
| 1.3.1.2.4.22.3 | **Floor Finishing Works - Civil** | 2025-07-19 → 2025-07-21 (+2d) |  |
| PG-11547 | Waterproofing for sunken areas | 2025-07-19 → 2025-07-21 (+2d) | 286.29d → 288.44d |
| 1.3.1.2.4.23 | **Floor 20** | 2025-08-01 → 2025-08-02 (+1d) |  |
| PG-11552 | Cornice fixing | 2025-08-29 → 2025-08-30 (+1d) | 302.46d → 304.61d |
| 1.3.1.2.4.23.2 | **Wall Finishing works - Civil** | 2025-08-01 → 2025-08-02 (+1d) |  |
| PG-11556 | Balcony Railing Fixing works | 2025-08-01 → 2025-08-02 (+1d) | 284.29d → 286.44d |
| 1.3.1.2.4.23.3 | **Floor Finishing Works - Civil** | 2025-08-01 → 2025-08-02 (+1d) |  |
| PG-11561 | Waterproofing for sunken areas | 2025-08-01 → 2025-08-02 (+1d) | 275.29d → 277.44d |
| 1.3.1.2.4.24 | **Floor 21** | 2025-08-14 → 2025-08-16 (+2d) |  |
| PG-11566 | Cornice fixing | 2025-09-09 → 2025-09-10 (+1d) | 292.62d → 294.77d |
| 1.3.1.2.4.24.2 | **Wall Finishing works - Civil** | 2025-08-14 → 2025-08-16 (+2d) |  |
| PG-11570 | Balcony Railing Fixing works | 2025-08-14 → 2025-08-16 (+2d) | 272.62d → 274.77d |
| 1.3.1.2.4.24.3 | **Floor Finishing Works - Civil** | 2025-08-14 → 2025-08-16 (+2d) |  |
| PG-11575 | Waterproofing for sunken areas | 2025-08-14 → 2025-08-16 (+2d) | 263.62d → 265.77d |
| PG-11671 | Shaft door opening finishing | 2025-10-08 → 2025-10-09 (+1d) | 117.62d → 119.77d |

| ID | Task | Start | Finish | Complete | Total float |
| --- | --- | --- | --- | --- | --- |
| PG-11704 | Terrace Ring main & OHT Connection works | 2025-10-27 → 2025-10-28 (+1d) |  |  | 182.96d → 185.11d |
| PG-11705 | Commissioning | 2025-12-13 → 2025-12-15 (+2d) |  |  | 182.96d → 185.11d |
| 1.3.1.2.9 | **Electrical Panel Works** | 2025-07-19 → 2025-07-21 (+2d) |  |  |  |
| 1.3.1.2.9.1 | **Civil Finishing Works** | 2025-07-19 → 2025-07-21 (+2d) |  |  |  |
| PG-11712 | Wall Tie rod hole packing & Grinding works. | 2025-07-19 → 2025-07-21 (+2d) |  |  | 159.79d → 161.94d |
| PG-11715 | Painting works | 2025-08-25 → 2025-08-26 (+1d) |  |  | 159.79d → 161.94d |
| PG-11717 | Electrical Panel installation and cable termination. | 2025-11-11 → 2025-11-12 (+1d) |  |  | 159.79d → 161.94d |
| 1.3.1.3 | **Tower 3 ( 2B+G+29 ) TYP 4 Units - 118 Units** |  | 2026-10-12 → 2026-10-14 (+2d) |  |  |
| 1.3.1.3.2 | **Structure works** |  | 2026-01-05 → 2026-01-07 (+2d) |  |  |
| 1.3.1.3.2.15 | **Floor 12** |  | 2025-04-12 → 2025-04-14 (+2d) |  |  |
| 1.3.1.3.2.15.2 | **Slab, Beams & Staircase** |  | 2025-04-12 → 2025-04-14 (+2d) |  |  |
| PG-11812 | Reinforcement |  | 2025-04-11 → 2025-04-12 A (+1d) | 91% → 100% | 0d → none |
| PG-11813 | Concrete | 2025-04-11 → 2025-04-12 A (+1d) | 2025-04-12 → 2025-04-14 A (+2d) | 0% → 100% | 0d → none |
| 1.3.1.3.2.16 | **Floor 13** | 2025-04-12 → 2025-04-14 (+2d) | 2025-04-28 → 2025-04-30 (+2d) |  |  |
| 1.3.1.3.2.16.1 | **Columns / shear walls** | 2025-04-12 → 2025-04-14 (+2d) | 2025-04-22 → 2025-04-24 (+2d) |  |  |
| PG-11814 | Reinforcement | 2025-04-12 → 2025-04-14 A (+2d) | 2025-04-17 → 2025-04-19 (+2d) | 0% → 64% |  |
| PG-11815 | Formwork | 2025-04-17 → 2025-04-19 (+2d) | 2025-04-22 → 2025-04-24 (+2d) |  |  |
| 1.3.1.3.2.16.2 | **Slab, Beams & Staircase** | 2025-04-21 → 2025-04-23 (+2d) | 2025-04-28 → 2025-04-30 (+2d) |  |  |
| PG-11816 | Formwork | 2025-04-21 → 2025-04-23 (+2d) | 2025-04-24 → 2025-04-26 (+2d) |  |  |
| PG-11817 | Reinforcement | 2025-04-23 → 2025-04-25 (+2d) | 2025-04-26 → 2025-04-29 (+3d) |  |  |
| PG-11818 | Concrete | 2025-04-26 → 2025-04-29 (+3d) | 2025-04-28 → 2025-04-30 (+2d) |  |  |
| 1.3.1.3.2.17 | **Floor 14** | 2025-04-28 → 2025-04-30 (+2d) | 2025-05-13 → 2025-05-15 (+2d) |  |  |
| 1.3.1.3.2.17.1 | **Columns / shear walls** | 2025-04-28 → 2025-04-30 (+2d) | 2025-05-07 → 2025-05-09 (+2d) |  |  |
| PG-11819 | Reinforcement | 2025-04-28 → 2025-04-30 (+2d) | 2025-05-02 → 2025-05-05 (+3d) |  |  |
| PG-11820 | Formwork | 2025-05-02 → 2025-05-05 (+3d) | 2025-05-07 → 2025-05-09 (+2d) |  |  |
| 1.3.1.3.2.17.2 | **Slab, Beams & Staircase** | 2025-05-06 → 2025-05-08 (+2d) | 2025-05-13 → 2025-05-15 (+2d) |  |  |
| PG-11821 | Formwork | 2025-05-06 → 2025-05-08 (+2d) | 2025-05-09 → 2025-05-12 (+3d) |  |  |
| PG-11822 | Reinforcement | 2025-05-08 → 2025-05-10 (+2d) | 2025-05-12 → 2025-05-14 (+2d) |  |  |
| PG-11823 | Concrete | 2025-05-12 → 2025-05-14 (+2d) | 2025-05-13 → 2025-05-15 (+2d) |  |  |
| 1.3.1.3.2.18 | **Floor 15** | 2025-05-13 → 2025-05-15 (+2d) | 2025-05-28 → 2025-05-30 (+2d) |  |  |
| 1.3.1.3.2.18.1 | **Columns / shear walls** | 2025-05-13 → 2025-05-15 (+2d) | 2025-05-22 → 2025-05-24 (+2d) |  |  |
| PG-11824 | Reinforcement | 2025-05-13 → 2025-05-15 (+2d) | 2025-05-17 → 2025-05-20 (+3d) |  |  |
| PG-11825 | Formwork | 2025-05-17 → 2025-05-20 (+3d) | 2025-05-22 → 2025-05-24 (+2d) |  |  |
| 1.3.1.3.2.18.2 | **Slab, Beams & Staircase** | 2025-05-21 → 2025-05-23 (+2d) | 2025-05-28 → 2025-05-30 (+2d) |  |  |
| PG-11826 | Formwork | 2025-05-21 → 2025-05-23 (+2d) | 2025-05-24 → 2025-05-27 (+3d) |  |  |
| PG-11827 | Reinforcement | 2025-05-23 → 2025-05-26 (+3d) | 2025-05-27 → 2025-05-29 (+2d) |  |  |
| PG-11828 | Concrete | 2025-05-27 → 2025-05-29 (+2d) | 2025-05-28 → 2025-05-30 (+2d) |  |  |
| 1.3.1.3.2.19 | **Floor 16** | 2025-05-28 → 2025-05-30 (+2d) | 2025-06-10 → 2025-06-12 (+2d) |  |  |
| 1.3.1.3.2.19.1 | **Columns / shear walls** | 2025-05-28 → 2025-05-30 (+2d) | 2025-06-04 → 2025-06-06 (+2d) |  |  |
| PG-11829 | Reinforcement | 2025-05-28 → 2025-05-30 (+2d) | 2025-06-02 → 2025-06-04 (+2d) |  |  |
| PG-11830 | Formwork | 2025-05-30 → 2025-06-02 (+3d) | 2025-06-04 → 2025-06-06 (+2d) |  |  |
| 1.3.1.3.2.19.2 | **Slab, Beams & Staircase** | 2025-06-03 → 2025-06-05 (+2d) | 2025-06-10 → 2025-06-12 (+2d) |  |  |
| PG-11831 | Formwork | 2025-06-03 → 2025-06-05 (+2d) | 2025-06-06 → 2025-06-09 (+3d) |  |  |
| PG-11832 | Reinforcement | 2025-06-05 → 2025-06-07 (+2d) | 2025-06-09 → 2025-06-11 (+2d) |  |  |
| PG-11833 | Concrete | 2025-06-09 → 2025-06-11 (+2d) | 2025-06-10 → 2025-06-12 (+2d) |  |  |
| 1.3.1.3.2.20 | **Floor 17** | 2025-06-10 → 2025-06-12 (+2d) | 2025-06-23 → 2025-06-25 (+2d) |  |  |
| 1.3.1.3.2.20.1 | **Columns / shear walls** | 2025-06-10 → 2025-06-12 (+2d) | 2025-06-17 → 2025-06-19 (+2d) |  |  |
| PG-11834 | Reinforcement | 2025-06-10 → 2025-06-12 (+2d) | 2025-06-14 → 2025-06-17 (+3d) |  |  |
| PG-11835 | Formwork | 2025-06-12 → 2025-06-14 (+2d) | 2025-06-17 → 2025-06-19 (+2d) |  |  |
| 1.3.1.3.2.20.2 | **Slab, Beams & Staircase** | 2025-06-16 → 2025-06-18 (+2d) | 2025-06-23 → 2025-06-25 (+2d) |  |  |
| PG-11836 | Formwork | 2025-06-16 → 2025-06-18 (+2d) | 2025-06-19 → 2025-06-21 (+2d) |  |  |
| PG-11837 | Reinforcement | 2025-06-18 → 2025-06-20 (+2d) | 2025-06-21 → 2025-06-24 (+3d) |  |  |
| PG-11838 | Concrete | 2025-06-21 → 2025-06-24 (+3d) | 2025-06-23 → 2025-06-25 (+2d) |  |  |
| 1.3.1.3.2.21 | **Floor 18** | 2025-06-23 → 2025-06-25 (+2d) | 2025-07-05 → 2025-07-08 (+3d) |  |  |
| 1.3.1.3.2.21.1 | **Columns / shear walls** | 2025-06-23 → 2025-06-25 (+2d) | 2025-06-30 → 2025-07-02 (+2d) |  |  |
| PG-11839 | Reinforcement | 2025-06-23 → 2025-06-25 (+2d) | 2025-06-27 → 2025-06-30 (+3d) |  |  |
| PG-11840 | Formwork | 2025-06-25 → 2025-06-27 (+2d) | 2025-06-30 → 2025-07-02 (+2d) |  |  |
| 1.3.1.3.2.21.2 | **Slab, Beams & Staircase** | 2025-06-28 → 2025-07-01 (+3d) | 2025-07-05 → 2025-07-08 (+3d) |  |  |
| PG-11841 | Formwork | 2025-06-28 → 2025-07-01 (+3d) | 2025-07-02 → 2025-07-04 (+2d) |  |  |
| PG-11842 | Reinforcement | 2025-07-01 → 2025-07-03 (+2d) | 2025-07-04 → 2025-07-07 (+3d) |  |  |
| PG-11843 | Concrete | 2025-07-04 → 2025-07-07 (+3d) | 2025-07-05 → 2025-07-08 (+3d) |  |  |
| 1.3.1.3.2.22 | **Floor 19** | 2025-07-05 → 2025-07-08 (+3d) | 2025-07-18 → 2025-07-21 (+3d) |  |  |
| 1.3.1.3.2.22.1 | **Columns / shear walls** | 2025-07-05 → 2025-07-08 (+3d) | 2025-07-12 → 2025-07-15 (+3d) |  |  |
| PG-11844 | Reinforcement | 2025-07-05 → 2025-07-08 (+3d) | 2025-07-10 → 2025-07-12 (+2d) |  |  |
| PG-11845 | Formwork | 2025-07-08 → 2025-07-10 (+2d) | 2025-07-12 → 2025-07-15 (+3d) |  |  |
| 1.3.1.3.2.22.2 | **Slab, Beams & Staircase** | 2025-07-11 → 2025-07-14 (+3d) | 2025-07-18 → 2025-07-21 (+3d) |  |  |
| PG-11846 | Formwork | 2025-07-11 → 2025-07-14 (+3d) | 2025-07-15 → 2025-07-17 (+2d) |  |  |
| PG-11847 | Reinforcement | 2025-07-14 → 2025-07-16 (+2d) | 2025-07-17 → 2025-07-19 (+2d) |  |  |
| PG-11848 | Concrete | 2025-07-17 → 2025-07-19 (+2d) | 2025-07-18 → 2025-07-21 (+3d) |  |  |
| 1.3.1.3.2.23 | **Floor 20** | 2025-07-18 → 2025-07-21 (+3d) | 2025-07-31 → 2025-08-02 (+2d) |  |  |

| ID | Task | Start | Finish |
| --- | --- | --- | --- |
| 1.3.1.3.2.23.1 | **Columns / shear walls** | 2025-07-18 → 2025-07-21 (+3d) | 2025-07-25 → 2025-07-28 (+3d) |
| PG-11849 | Reinforcement | 2025-07-18 → 2025-07-21 (+3d) | 2025-07-23 → 2025-07-25 (+2d) |
| PG-11850 | Formwork | 2025-07-21 → 2025-07-23 (+2d) | 2025-07-25 → 2025-07-28 (+3d) |
| 1.3.1.3.2.23.2 | **Slab, Beams & Staircase** | 2025-07-24 → 2025-07-26 (+2d) | 2025-07-31 → 2025-08-02 (+2d) |
| PG-11851 | Formwork | 2025-07-24 → 2025-07-26 (+2d) | 2025-07-28 → 2025-07-30 (+2d) |
| PG-11852 | Reinforcement | 2025-07-26 → 2025-07-29 (+3d) | 2025-07-30 → 2025-08-01 (+2d) |
| PG-11853 | Concrete | 2025-07-30 → 2025-08-01 (+2d) | 2025-07-31 → 2025-08-02 (+2d) |
| 1.3.1.3.2.24 | **Floor 21** | 2025-07-31 → 2025-08-02 (+2d) | 2025-08-13 → 2025-08-16 (+3d) |
| 1.3.1.3.2.24.1 | **Columns / shear walls** | 2025-07-31 → 2025-08-02 (+2d) | 2025-08-07 → 2025-08-09 (+2d) |
| PG-11854 | Reinforcement | 2025-07-31 → 2025-08-02 (+2d) | 2025-08-05 → 2025-08-07 (+2d) |
| PG-11855 | Formwork | 2025-08-02 → 2025-08-05 (+3d) | 2025-08-07 → 2025-08-09 (+2d) |
| 1.3.1.3.2.24.2 | **Slab, Beams & Staircase** | 2025-08-06 → 2025-08-08 (+2d) | 2025-08-13 → 2025-08-16 (+3d) |
| PG-11856 | Formwork | 2025-08-06 → 2025-08-08 (+2d) | 2025-08-09 → 2025-08-12 (+3d) |
| PG-11857 | Reinforcement | 2025-08-08 → 2025-08-11 (+3d) | 2025-08-12 → 2025-08-14 (+2d) |
| PG-11858 | Concrete | 2025-08-12 → 2025-08-14 (+2d) | 2025-08-13 → 2025-08-16 (+3d) |
| 1.3.1.3.2.25 | **Floor 22** | 2025-08-13 → 2025-08-16 (+3d) | 2025-08-27 → 2025-08-29 (+2d) |
| 1.3.1.3.2.25.1 | **Columns / shear walls** | 2025-08-13 → 2025-08-16 (+3d) | 2025-08-21 → 2025-08-23 (+2d) |
| PG-11859 | Reinforcement | 2025-08-13 → 2025-08-16 (+3d) | 2025-08-19 → 2025-08-21 (+2d) |
| PG-11860 | Formwork | 2025-08-16 → 2025-08-19 (+3d) | 2025-08-21 → 2025-08-23 (+2d) |
| 1.3.1.3.2.25.2 | **Slab, Beams & Staircase** | 2025-08-20 → 2025-08-22 (+2d) | 2025-08-27 → 2025-08-29 (+2d) |
| PG-11861 | Formwork | 2025-08-20 → 2025-08-22 (+2d) | 2025-08-23 → 2025-08-26 (+3d) |
| PG-11862 | Reinforcement | 2025-08-22 → 2025-08-25 (+3d) | 2025-08-26 → 2025-08-28 (+2d) |
| PG-11863 | Concrete | 2025-08-26 → 2025-08-28 (+2d) | 2025-08-27 → 2025-08-29 (+2d) |
| 1.3.1.3.2.26 | **Floor 23** | 2025-08-27 → 2025-08-29 (+2d) | 2025-09-09 → 2025-09-11 (+2d) |
| 1.3.1.3.2.26.1 | **Columns / shear walls** | 2025-08-27 → 2025-08-29 (+2d) | 2025-09-03 → 2025-09-05 (+2d) |
| PG-11864 | Reinforcement | 2025-08-27 → 2025-08-29 (+2d) | 2025-09-01 → 2025-09-03 (+2d) |
| PG-11865 | Formwork | 2025-08-29 → 2025-09-01 (+3d) | 2025-09-03 → 2025-09-05 (+2d) |
| 1.3.1.3.2.26.2 | **Slab, Beams & Staircase** | 2025-09-02 → 2025-09-04 (+2d) | 2025-09-09 → 2025-09-11 (+2d) |
| PG-11866 | Formwork | 2025-09-02 → 2025-09-04 (+2d) | 2025-09-05 → 2025-09-08 (+3d) |
| PG-11867 | Reinforcement | 2025-09-04 → 2025-09-06 (+2d) | 2025-09-08 → 2025-09-10 (+2d) |
| PG-11868 | Concrete | 2025-09-08 → 2025-09-10 (+2d) | 2025-09-09 → 2025-09-11 (+2d) |
| 1.3.1.3.2.27 | **Floor 24** | 2025-09-09 → 2025-09-11 (+2d) | 2025-09-22 → 2025-09-24 (+2d) |
| 1.3.1.3.2.27.1 | **Columns / shear walls** | 2025-09-09 → 2025-09-11 (+2d) | 2025-09-16 → 2025-09-18 (+2d) |
| PG-11869 | Reinforcement | 2025-09-09 → 2025-09-11 (+2d) | 2025-09-13 → 2025-09-16 (+3d) |
| PG-11870 | Formwork | 2025-09-11 → 2025-09-13 (+2d) | 2025-09-16 → 2025-09-18 (+2d) |
| 1.3.1.3.2.27.2 | **Slab, Beams & Staircase** | 2025-09-15 → 2025-09-17 (+2d) | 2025-09-22 → 2025-09-24 (+2d) |
| PG-11871 | Formwork | 2025-09-15 → 2025-09-17 (+2d) | 2025-09-18 → 2025-09-20 (+2d) |
| PG-11872 | Reinforcement | 2025-09-17 → 2025-09-19 (+2d) | 2025-09-20 → 2025-09-23 (+3d) |
| PG-11873 | Concrete | 2025-09-20 → 2025-09-23 (+3d) | 2025-09-22 → 2025-09-24 (+2d) |
| 1.3.1.3.2.28 | **Floor 25** | 2025-09-22 → 2025-09-24 (+2d) | 2025-10-06 → 2025-10-08 (+2d) |
| 1.3.1.3.2.28.1 | **Columns / shear walls** | 2025-09-22 → 2025-09-24 (+2d) | 2025-09-29 → 2025-10-01 (+2d) |
| PG-11874 | Reinforcement | 2025-09-22 → 2025-09-24 (+2d) | 2025-09-26 → 2025-09-29 (+3d) |
| PG-11875 | Formwork | 2025-09-24 → 2025-09-26 (+2d) | 2025-09-29 → 2025-10-01 (+2d) |
| 1.3.1.3.2.28.2 | **Slab, Beams & Staircase** | 2025-09-27 → 2025-09-30 (+3d) | 2025-10-06 → 2025-10-08 (+2d) |
| PG-11876 | Formwork | 2025-09-27 → 2025-09-30 (+3d) | 2025-10-01 → 2025-10-04 (+3d) |
| PG-11877 | Reinforcement | 2025-09-30 → 2025-10-03 (+3d) | 2025-10-04 → 2025-10-07 (+3d) |
| PG-11878 | Concrete | 2025-10-04 → 2025-10-07 (+3d) | 2025-10-06 → 2025-10-08 (+2d) |
| 1.3.1.3.2.29 | **Floor 26** | 2025-10-06 → 2025-10-08 (+2d) | 2025-10-18 → 2025-10-21 (+3d) |
| 1.3.1.3.2.29.1 | **Columns / shear walls** | 2025-10-06 → 2025-10-08 (+2d) | 2025-10-13 → 2025-10-15 (+2d) |
| PG-11879 | Reinforcement | 2025-10-06 → 2025-10-08 (+2d) | 2025-10-10 → 2025-10-13 (+3d) |
| PG-11880 | Formwork | 2025-10-08 → 2025-10-10 (+2d) | 2025-10-13 → 2025-10-15 (+2d) |
| 1.3.1.3.2.29.2 | **Slab, Beams & Staircase** | 2025-10-11 → 2025-10-14 (+3d) | 2025-10-18 → 2025-10-21 (+3d) |
| PG-11881 | Formwork | 2025-10-11 → 2025-10-14 (+3d) | 2025-10-15 → 2025-10-17 (+2d) |
| PG-11882 | Reinforcement | 2025-10-14 → 2025-10-16 (+2d) | 2025-10-17 → 2025-10-20 (+3d) |
| PG-11883 | Concrete | 2025-10-17 → 2025-10-20 (+3d) | 2025-10-18 → 2025-10-21 (+3d) |
| 1.3.1.3.2.30 | **Floor 27** | 2025-10-18 → 2025-10-21 (+3d) | 2025-10-31 → 2025-11-04 (+4d) |
| 1.3.1.3.2.30.1 | **Columns / shear walls** | 2025-10-18 → 2025-10-21 (+3d) | 2025-10-25 → 2025-10-28 (+3d) |
| PG-11884 | Reinforcement | 2025-10-18 → 2025-10-21 (+3d) | 2025-10-23 → 2025-10-25 (+2d) |
| PG-11885 | Formwork | 2025-10-21 → 2025-10-23 (+2d) | 2025-10-25 → 2025-10-28 (+3d) |
| 1.3.1.3.2.30.2 | **Slab, Beams & Staircase** | 2025-10-24 → 2025-10-27 (+3d) | 2025-10-31 → 2025-11-04 (+4d) |
| PG-11886 | Formwork | 2025-10-24 → 2025-10-27 (+3d) | 2025-10-28 → 2025-10-30 (+2d) |
| PG-11887 | Reinforcement | 2025-10-27 → 2025-10-29 (+2d) | 2025-10-30 → 2025-11-03 (+4d) |
| PG-11888 | Concrete | 2025-10-30 → 2025-11-03 (+4d) | 2025-10-31 → 2025-11-04 (+4d) |
| 1.3.1.3.2.31 | **Floor 28** | 2025-10-31 → 2025-11-04 (+4d) | 2025-11-14 → 2025-11-17 (+3d) |
| 1.3.1.3.2.31.1 | **Columns / shear walls** | 2025-10-31 → 2025-11-04 (+4d) | 2025-11-08 → 2025-11-11 (+3d) |
| PG-11889 | Reinforcement | 2025-10-31 → 2025-11-04 (+4d) | 2025-11-06 → 2025-11-08 (+2d) |
| PG-11890 | Formwork | 2025-11-04 → 2025-11-06 (+2d) | 2025-11-08 → 2025-11-11 (+3d) |
| 1.3.1.3.2.31.2 | **Slab, Beams & Staircase** | 2025-11-07 → 2025-11-10 (+3d) | 2025-11-14 → 2025-11-17 (+3d) |
| PG-11891 | Formwork | 2025-11-07 → 2025-11-10 (+3d) | 2025-11-11 → 2025-11-13 (+2d) |
| PG-11892 | Reinforcement | 2025-11-10 → 2025-11-12 (+2d) | 2025-11-13 → 2025-11-15 (+2d) |

| ID | Task | Start | Finish | Complete | Total float |
| --- | --- | --- | --- | --- | --- |
| PG-11893 | Concrete | 2025-11-13 → 2025-11-15 (+2d) | 2025-11-14 → 2025-11-17 (+3d) |  |  |
| 1.3.1.3.2.32 | **Floor 29** | 2025-11-14 → 2025-11-17 (+3d) | 2025-11-27 → 2025-11-29 (+2d) |  |  |
| 1.3.1.3.2.32.1 | **Columns / shear walls** | 2025-11-14 → 2025-11-17 (+3d) | 2025-11-21 → 2025-11-24 (+3d) |  |  |
| PG-11894 | Reinforcement | 2025-11-14 → 2025-11-17 (+3d) | 2025-11-19 → 2025-11-21 (+2d) |  |  |
| PG-11895 | Formwork | 2025-11-17 → 2025-11-19 (+2d) | 2025-11-21 → 2025-11-24 (+3d) |  |  |
| 1.3.1.3.2.32.2 | **Slab, Beams & Staircase** | 2025-11-20 → 2025-11-22 (+2d) | 2025-11-27 → 2025-11-29 (+2d) |  |  |
| PG-11896 | Formwork | 2025-11-20 → 2025-11-22 (+2d) | 2025-11-24 → 2025-11-26 (+2d) |  |  |
| PG-11897 | Reinforcement | 2025-11-22 → 2025-11-25 (+3d) | 2025-11-26 → 2025-11-28 (+2d) |  |  |
| PG-11898 | Concrete | 2025-11-26 → 2025-11-28 (+2d) | 2025-11-27 → 2025-11-29 (+2d) |  |  |
| 1.3.1.3.2.33 | **Above Terrace Floor** | 2025-11-27 → 2025-11-29 (+2d) | 2026-01-05 → 2026-01-07 (+2d) |  |  |
| 1.3.1.3.2.33.1 | **Columns / shear walls/Parapet Walls** | 2025-11-27 → 2025-11-29 (+2d) | 2025-12-10 → 2025-12-12 (+2d) |  |  |
| PG-11899 | Reinforcement | 2025-11-27 → 2025-11-29 (+2d) | 2025-12-02 → 2025-12-04 (+2d) |  |  |
| PG-11900 | Formwork | 2025-11-29 → 2025-12-02 (+3d) | 2025-12-05 → 2025-12-08 (+3d) |  |  |
| PG-11901 | Concrete | 2025-12-05 → 2025-12-08 (+3d) | 2025-12-10 → 2025-12-12 (+2d) |  |  |
| 1.3.1.3.2.33.2 | **Slab, Beams & Staircase Head rooms, Lift headroom** | 2025-12-02 → 2025-12-04 (+2d) | 2026-01-05 → 2026-01-07 (+2d) |  |  |
| PG-11905 | Terrace Waterproofing and Protective finishing. | 2025-12-02 → 2025-12-04 (+2d) | 2026-01-05 → 2026-01-07 (+2d) |  |  |
| PG-11902 | Formwork | 2025-12-10 → 2025-12-12 (+2d) | 2025-12-16 → 2025-12-18 (+2d) |  |  |
| PG-11903 | Reinforcement | 2025-12-16 → 2025-12-18 (+2d) | 2025-12-22 → 2025-12-24 (+2d) |  |  |
| PG-11904 | Concrete | 2025-12-22 → 2025-12-24 (+2d) | 2025-12-24 → 2025-12-26 (+2d) |  |  |
| 1.3.1.3.3 | **MEP Internal works** |  | 2026-06-05 → 2026-06-08 (+3d) |  |  |
| 1.3.1.3.3.5 | **Floor 2** |  | 2025-04-15 → 2025-04-16 (+1d) |  |  |
| 1.3.1.3.3.5.1 | **PHE Works** |  | 2025-04-15 → 2025-04-16 (+1d) |  |  |
| PG-11933 | Final Fix - CP & Sanitary fixtures |  | 2025-04-15 → 2025-04-16 A (+1d) | 71% → 100% | 415.18d → none |
| 1.3.1.3.3.5.2 | **Fire Fighting Works** |  | 2025-04-15 → 2025-04-16 (+1d) |  |  |
| PG-11936 | Final Fix - Smoke & heat detectors, FHC , FAS Etc. |  | 2025-04-15 → 2025-04-16 A (+1d) | 69% → 100% | 415.18d → none |
| 1.3.1.3.3.5.3 | **Electrical Works** |  | 2025-04-15 → 2025-04-16 (+1d) |  |  |
| PG-11939 | Final Fix - Electrical Fixtures |  | 2025-04-15 → 2025-04-16 A (+1d) | 45% → 100% | 415.18d → none |
| PG-11951 | Final Fix - CP & Sanitary fixtures | 2025-05-06 → 2025-05-07 (+1d) |  |  | 388.11d → 389.67d |
| PG-11953 | 2nd Fix - Sprinkler fixing & Pressure testing | 2025-04-12 → 2025-04-14 A (+2d) | 2025-04-24 → 2025-04-25 (+1d) | 0% → 30% | 397.94d → 398.98d |
| PG-11954 | Final Fix - Smoke & heat detectors, FHC , FAS Etc. | 2025-05-06 → 2025-05-07 (+1d) |  |  | 388.11d → 389.67d |
| PG-11956 | 2nd Fix - Wiring works |  |  | 24% → 64% | 401.32d → 403.5d |
| PG-11957 | Final Fix - Electrical Fixtures | 2025-05-09 → 2025-05-10 (+1d) |  |  | 388.11d → 389.67d |
| PG-11968 | 2nd Fix - diverter fixing & Pressure testing |  |  | 38% → 98% | 362.57d → 364.75d |
| PG-11970 | 1st Fix - Piping and Shaft hydrant works |  |  | 25% → 77% | 408.71d → 410.89d |
| 1.3.1.3.3.10 | **Floor 7** | 2025-04-12 → 2025-04-14 (+2d) | 2025-07-01 → 2025-07-03 (+2d) |  |  |
| 1.3.1.3.3.10.1 | **PHE Works** | 2025-04-12 → 2025-04-14 (+2d) | 2025-07-01 → 2025-07-03 (+2d) |  |  |
| PG-11976 | 1st Fix - Piping works | 2025-04-12 → 2025-04-14 A (+2d) | 2025-04-26 → 2025-04-28 (+2d) | 0% → 25% | 351.5d → 351.95d |
| PG-11977 | 2nd Fix - diverter fixing & Pressure testing | 2025-04-22 → 2025-04-23 (+1d) | 2025-05-03 → 2025-05-05 (+2d) |  | 351.5d → 351.95d |
| PG-11978 | Final Fix - CP & Sanitary fixtures | 2025-06-21 → 2025-06-23 (+2d) | 2025-07-01 → 2025-07-03 (+2d) |  | 351.5d → 351.95d |
| 1.3.1.3.3.10.2 | **Fire Fighting Works** | 2025-04-21 → 2025-04-22 (+1d) | 2025-07-01 → 2025-07-03 (+2d) |  |  |
| PG-11979 | 1st Fix - Piping and Shaft hydrant works | 2025-04-21 → 2025-04-22 (+1d) | 2025-05-05 → 2025-05-06 (+1d) |  | 397.5d → 398.63d |
| PG-11980 | 2nd Fix - Sprinkler fixing & Pressure testing | 2025-05-29 → 2025-05-30 (+1d) | 2025-06-10 → 2025-06-11 (+1d) |  | 361.5d → 361.95d |
| PG-11981 | Final Fix - Smoke & heat detectors, FHC , FAS Etc. | 2025-06-21 → 2025-06-23 (+2d) | 2025-07-01 → 2025-07-03 (+2d) |  | 351.5d → 351.95d |
| 1.3.1.3.3.10.3 | **Electrical Works** | 2025-04-12 → 2025-04-14 (+2d) | 2025-07-01 → 2025-07-03 (+2d) |  |  |
| PG-11982 | 1st Fix - GI wire pulling | 2025-04-12 → 2025-04-14 A (+2d) | 2025-04-21 → 2025-04-22 (+1d) | 0% → 48% | 397.5d → 398.63d |
| PG-11983 | 2nd Fix - Wiring works | 2025-05-22 → 2025-05-24 (+2d) | 2025-06-09 → 2025-06-10 (+1d) |  | 365.5d → 365.95d |
| PG-11984 | Final Fix - Electrical Fixtures | 2025-06-25 → 2025-06-26 (+1d) | 2025-07-01 → 2025-07-03 (+2d) |  | 351.5d → 351.95d |
| 1.3.1.3.3.11 | **Floor 8** | 2025-04-28 → 2025-04-30 (+2d) | 2025-07-17 → 2025-07-19 (+2d) |  |  |
| 1.3.1.3.3.11.1 | **PHE Works** | 2025-04-28 → 2025-04-30 (+2d) | 2025-07-17 → 2025-07-19 (+2d) |  |  |
| PG-11985 | 1st Fix - Piping works | 2025-04-28 → 2025-04-30 (+2d) | 2025-05-12 → 2025-05-14 (+2d) |  |  |
| PG-11986 | 2nd Fix - diverter fixing & Pressure testing | 2025-05-07 → 2025-05-09 (+2d) | 2025-05-19 → 2025-05-21 (+2d) |  |  |
| PG-11987 | Final Fix - CP & Sanitary fixtures | 2025-07-07 → 2025-07-09 (+2d) | 2025-07-17 → 2025-07-19 (+2d) |  |  |
| 1.3.1.3.3.11.2 | **Fire Fighting Works** | 2025-05-06 → 2025-05-09 (+3d) | 2025-07-17 → 2025-07-19 (+2d) |  |  |
| PG-11988 | 1st Fix - Piping and Shaft hydrant works | 2025-05-06 → 2025-05-09 (+3d) | 2025-05-20 → 2025-05-23 (+3d) |  |  |
| PG-11989 | 2nd Fix - Sprinkler fixing & Pressure testing | 2025-06-13 → 2025-06-16 (+3d) | 2025-06-25 → 2025-06-27 (+2d) |  |  |
| PG-11990 | Final Fix - Smoke & heat detectors, FHC , FAS Etc. | 2025-07-07 → 2025-07-09 (+2d) | 2025-07-17 → 2025-07-19 (+2d) |  |  |
| 1.3.1.3.3.11.3 | **Electrical Works** | 2025-04-28 → 2025-04-30 (+2d) | 2025-07-17 → 2025-07-19 (+2d) |  |  |
| PG-11991 | 1st Fix - GI wire pulling | 2025-04-28 → 2025-04-30 (+2d) | 2025-05-06 → 2025-05-09 (+3d) |  |  |
| PG-11992 | 2nd Fix - Wiring works | 2025-06-07 → 2025-06-10 (+3d) | 2025-06-24 → 2025-06-26 (+2d) |  |  |
| PG-11993 | Final Fix - Electrical Fixtures | 2025-07-11 → 2025-07-14 (+3d) | 2025-07-17 → 2025-07-19 (+2d) |  |  |
| 1.3.1.3.3.12 | **Floor 9** | 2025-05-13 → 2025-05-15 (+2d) | 2025-07-30 → 2025-08-01 (+2d) |  |  |
| 1.3.1.3.3.12.1 | **PHE Works** | 2025-05-13 → 2025-05-15 (+2d) | 2025-07-30 → 2025-08-01 (+2d) |  |  |
| PG-11994 | 1st Fix - Piping works | 2025-05-13 → 2025-05-15 (+2d) | 2025-05-27 → 2025-05-29 (+2d) |  |  |
| PG-11995 | 2nd Fix - diverter fixing & Pressure testing | 2025-05-22 → 2025-05-24 (+2d) | 2025-06-03 → 2025-06-05 (+2d) |  |  |
| PG-11996 | Final Fix - CP & Sanitary fixtures | 2025-07-19 → 2025-07-22 (+3d) | 2025-07-30 → 2025-08-01 (+2d) |  |  |
| 1.3.1.3.3.12.2 | **Fire Fighting Works** | 2025-05-22 → 2025-05-24 (+2d) | 2025-07-30 → 2025-08-01 (+2d) |  |  |
| PG-11997 | 1st Fix - Piping and Shaft hydrant works | 2025-05-22 → 2025-05-24 (+2d) | 2025-06-05 → 2025-06-07 (+2d) |  |  |
| PG-11998 | 2nd Fix - Sprinkler fixing & Pressure testing | 2025-06-28 → 2025-07-01 (+3d) | 2025-07-10 → 2025-07-12 (+2d) |  |  |
| PG-11999 | Final Fix - Smoke & heat detectors, FHC , FAS Etc. | 2025-07-19 → 2025-07-22 (+3d) | 2025-07-30 → 2025-08-01 (+2d) |  |  |
| 1.3.1.3.3.12.3 | **Electrical Works** | 2025-05-13 → 2025-05-15 (+2d) | 2025-07-30 → 2025-08-01 (+2d) |  |  |

| ID | Task | Start | Finish |
| --- | --- | --- | --- |
| PG-12000 | 1st Fix - GI wire pulling | 2025-05-13 → 2025-05-15 (+2d) | 2025-05-22 → 2025-05-24 (+2d) |
| PG-12001 | 2nd Fix - Wiring works | 2025-06-23 → 2025-06-25 (+2d) | 2025-07-09 → 2025-07-11 (+2d) |
| PG-12002 | Final Fix - Electrical Fixtures | 2025-07-24 → 2025-07-26 (+2d) | 2025-07-30 → 2025-08-01 (+2d) |
| 1.3.1.3.3.13 | **Floor 10** | 2025-05-28 → 2025-05-30 (+2d) | 2025-08-16 → 2025-08-19 (+3d) |
| 1.3.1.3.3.13.1 | **PHE Works** | 2025-05-28 → 2025-05-30 (+2d) | 2025-08-16 → 2025-08-19 (+3d) |
| PG-12003 | 1st Fix - Piping works | 2025-05-28 → 2025-05-30 (+2d) | 2025-06-11 → 2025-06-13 (+2d) |
| PG-12004 | 2nd Fix - diverter fixing & Pressure testing | 2025-06-06 → 2025-06-09 (+3d) | 2025-06-18 → 2025-06-20 (+2d) |
| PG-12005 | Final Fix - CP & Sanitary fixtures | 2025-08-05 → 2025-08-07 (+2d) | 2025-08-16 → 2025-08-19 (+3d) |
| 1.3.1.3.3.13.2 | **Fire Fighting Works** | 2025-06-05 → 2025-06-09 (+4d) | 2025-08-16 → 2025-08-19 (+3d) |
| PG-12006 | 1st Fix - Piping and Shaft hydrant works | 2025-06-05 → 2025-06-09 (+4d) | 2025-06-19 → 2025-06-23 (+4d) |
| PG-12007 | 2nd Fix - Sprinkler fixing & Pressure testing | 2025-07-14 → 2025-07-16 (+2d) | 2025-07-25 → 2025-07-28 (+3d) |
| PG-12008 | Final Fix - Smoke & heat detectors, FHC , FAS Etc. | 2025-08-05 → 2025-08-07 (+2d) | 2025-08-16 → 2025-08-19 (+3d) |
| 1.3.1.3.3.13.3 | **Electrical Works** | 2025-05-28 → 2025-05-30 (+2d) | 2025-08-16 → 2025-08-19 (+3d) |
| PG-12009 | 1st Fix - GI wire pulling | 2025-05-28 → 2025-05-30 (+2d) | 2025-06-05 → 2025-06-09 (+4d) |
| PG-12010 | 2nd Fix - Wiring works | 2025-07-09 → 2025-07-11 (+2d) | 2025-07-24 → 2025-07-26 (+2d) |
| PG-12011 | Final Fix - Electrical Fixtures | 2025-08-09 → 2025-08-12 (+3d) | 2025-08-16 → 2025-08-19 (+3d) |
| 1.3.1.3.3.14 | **Floor 11** | 2025-06-10 → 2025-06-12 (+2d) | 2025-08-29 → 2025-09-01 (+3d) |
| 1.3.1.3.3.14.1 | **PHE Works** | 2025-06-10 → 2025-06-12 (+2d) | 2025-08-29 → 2025-09-01 (+3d) |
| PG-12012 | 1st Fix - Piping works | 2025-06-10 → 2025-06-12 (+2d) | 2025-06-24 → 2025-06-26 (+2d) |
| PG-12013 | 2nd Fix - diverter fixing & Pressure testing | 2025-06-19 → 2025-06-21 (+2d) | 2025-07-01 → 2025-07-03 (+2d) |
| PG-12014 | Final Fix - CP & Sanitary fixtures | 2025-08-19 → 2025-08-21 (+2d) | 2025-08-29 → 2025-09-01 (+3d) |
| 1.3.1.3.3.14.2 | **Fire Fighting Works** | 2025-06-19 → 2025-06-21 (+2d) | 2025-08-29 → 2025-09-01 (+3d) |
| PG-12015 | 1st Fix - Piping and Shaft hydrant works | 2025-06-19 → 2025-06-21 (+2d) | 2025-07-03 → 2025-07-05 (+2d) |
| PG-12016 | 2nd Fix - Sprinkler fixing & Pressure testing | 2025-07-26 → 2025-07-29 (+3d) | 2025-08-07 → 2025-08-09 (+2d) |
| PG-12017 | Final Fix - Smoke & heat detectors, FHC , FAS Etc. | 2025-08-19 → 2025-08-21 (+2d) | 2025-08-29 → 2025-09-01 (+3d) |
| 1.3.1.3.3.14.3 | **Electrical Works** | 2025-06-10 → 2025-06-12 (+2d) | 2025-08-29 → 2025-09-01 (+3d) |
| PG-12018 | 1st Fix - GI wire pulling | 2025-06-10 → 2025-06-12 (+2d) | 2025-06-19 → 2025-06-21 (+2d) |
| PG-12019 | 2nd Fix - Wiring works | 2025-07-22 → 2025-07-24 (+2d) | 2025-08-06 → 2025-08-08 (+2d) |
| PG-12020 | Final Fix - Electrical Fixtures | 2025-08-23 → 2025-08-26 (+3d) | 2025-08-29 → 2025-09-01 (+3d) |
| 1.3.1.3.3.15 | **Floor 12** | 2025-06-23 → 2025-06-25 (+2d) | 2025-09-15 → 2025-09-17 (+2d) |
| 1.3.1.3.3.15.1 | **PHE Works** | 2025-06-23 → 2025-06-25 (+2d) | 2025-09-15 → 2025-09-17 (+2d) |
| PG-12021 | 1st Fix - Piping works | 2025-06-23 → 2025-06-25 (+2d) | 2025-07-07 → 2025-07-09 (+2d) |
| PG-12022 | 2nd Fix - diverter fixing & Pressure testing | 2025-07-02 → 2025-07-04 (+2d) | 2025-07-14 → 2025-07-16 (+2d) |
| PG-12023 | Final Fix - CP & Sanitary fixtures | 2025-09-02 → 2025-09-04 (+2d) | 2025-09-15 → 2025-09-17 (+2d) |
| 1.3.1.3.3.15.2 | **Fire Fighting Works** | 2025-07-01 → 2025-07-04 (+3d) | 2025-09-15 → 2025-09-17 (+2d) |
| PG-12024 | 1st Fix - Piping and Shaft hydrant works | 2025-07-01 → 2025-07-04 (+3d) | 2025-07-15 → 2025-07-18 (+3d) |
| PG-12025 | 2nd Fix - Sprinkler fixing & Pressure testing | 2025-08-08 → 2025-08-11 (+3d) | 2025-08-21 → 2025-08-23 (+2d) |
| PG-12026 | Final Fix - Smoke & heat detectors, FHC , FAS Etc. | 2025-09-02 → 2025-09-04 (+2d) | 2025-09-15 → 2025-09-17 (+2d) |
| 1.3.1.3.3.15.3 | **Electrical Works** | 2025-06-23 → 2025-06-25 (+2d) | 2025-09-15 → 2025-09-17 (+2d) |
| PG-12027 | 1st Fix - GI wire pulling | 2025-06-23 → 2025-06-25 (+2d) | 2025-07-01 → 2025-07-04 (+3d) |
| PG-12028 | 2nd Fix - Wiring works | 2025-08-02 → 2025-08-05 (+3d) | 2025-08-20 → 2025-08-22 (+2d) |
| PG-12029 | Final Fix - Electrical Fixtures | 2025-09-09 → 2025-09-11 (+2d) | 2025-09-15 → 2025-09-17 (+2d) |
| 1.3.1.3.3.16 | **Floor 13** | 2025-07-05 → 2025-07-08 (+3d) | 2025-09-27 → 2025-09-30 (+3d) |
| 1.3.1.3.3.16.1 | **PHE Works** | 2025-07-05 → 2025-07-08 (+3d) | 2025-09-27 → 2025-09-30 (+3d) |
| PG-12030 | 1st Fix - Piping works | 2025-07-05 → 2025-07-08 (+3d) | 2025-07-19 → 2025-07-22 (+3d) |
| PG-12031 | 2nd Fix - diverter fixing & Pressure testing | 2025-07-15 → 2025-07-17 (+2d) | 2025-07-26 → 2025-07-29 (+3d) |
| PG-12032 | Final Fix - CP & Sanitary fixtures | 2025-09-16 → 2025-09-18 (+2d) | 2025-09-27 → 2025-09-30 (+3d) |
| 1.3.1.3.3.16.2 | **Fire Fighting Works** | 2025-07-14 → 2025-07-17 (+3d) | 2025-09-27 → 2025-09-30 (+3d) |
| PG-12033 | 1st Fix - Piping and Shaft hydrant works | 2025-07-14 → 2025-07-17 (+3d) | 2025-07-28 → 2025-07-31 (+3d) |
| PG-12034 | 2nd Fix - Sprinkler fixing & Pressure testing | 2025-08-22 → 2025-08-25 (+3d) | 2025-09-03 → 2025-09-05 (+2d) |
| PG-12035 | Final Fix - Smoke & heat detectors, FHC , FAS Etc. | 2025-09-16 → 2025-09-18 (+2d) | 2025-09-27 → 2025-09-30 (+3d) |
| 1.3.1.3.3.16.3 | **Electrical Works** | 2025-07-05 → 2025-07-08 (+3d) | 2025-09-27 → 2025-09-30 (+3d) |
| PG-12036 | 1st Fix - GI wire pulling | 2025-07-05 → 2025-07-08 (+3d) | 2025-07-14 → 2025-07-17 (+3d) |
| PG-12037 | 2nd Fix - Wiring works | 2025-08-16 → 2025-08-19 (+3d) | 2025-09-02 → 2025-09-04 (+2d) |
| PG-12038 | Final Fix - Electrical Fixtures | 2025-09-22 → 2025-09-24 (+2d) | 2025-09-27 → 2025-09-30 (+3d) |
| 1.3.1.3.3.17 | **Floor 14** | 2025-07-18 → 2025-07-21 (+3d) | 2025-10-09 → 2025-10-11 (+2d) |
| 1.3.1.3.3.17.1 | **PHE Works** | 2025-07-18 → 2025-07-21 (+3d) | 2025-10-09 → 2025-10-11 (+2d) |
| PG-12039 | 1st Fix - Piping works | 2025-07-18 → 2025-07-21 (+3d) | 2025-08-01 → 2025-08-04 (+3d) |
| PG-12040 | 2nd Fix - diverter fixing & Pressure testing | 2025-07-28 → 2025-07-30 (+2d) | 2025-08-08 → 2025-08-11 (+3d) |
| PG-12041 | Final Fix - CP & Sanitary fixtures | 2025-09-27 → 2025-09-30 (+3d) | 2025-10-09 → 2025-10-11 (+2d) |
| 1.3.1.3.3.17.2 | **Fire Fighting Works** | 2025-07-26 → 2025-07-30 (+4d) | 2025-10-09 → 2025-10-11 (+2d) |
| PG-12042 | 1st Fix - Piping and Shaft hydrant works | 2025-07-26 → 2025-07-30 (+4d) | 2025-08-09 → 2025-08-13 (+4d) |
| PG-12043 | 2nd Fix - Sprinkler fixing & Pressure testing | 2025-09-04 → 2025-09-06 (+2d) | 2025-09-16 → 2025-09-18 (+2d) |
| PG-12044 | Final Fix - Smoke & heat detectors, FHC , FAS Etc. | 2025-09-27 → 2025-09-30 (+3d) | 2025-10-09 → 2025-10-11 (+2d) |
| 1.3.1.3.3.17.3 | **Electrical Works** | 2025-07-18 → 2025-07-21 (+3d) | 2025-10-09 → 2025-10-11 (+2d) |
| PG-12045 | 1st Fix - GI wire pulling | 2025-07-18 → 2025-07-21 (+3d) | 2025-07-26 → 2025-07-30 (+4d) |
| PG-12046 | 2nd Fix - Wiring works | 2025-08-28 → 2025-08-30 (+2d) | 2025-09-15 → 2025-09-17 (+2d) |
| PG-12047 | Final Fix - Electrical Fixtures | 2025-10-03 → 2025-10-06 (+3d) | 2025-10-09 → 2025-10-11 (+2d) |
| 1.3.1.3.3.18 | **Floor 15** | 2025-07-31 → 2025-08-02 (+2d) |  |
| 1.3.1.3.3.18.1 | **PHE Works** | 2025-07-31 → 2025-08-02 (+2d) |  |

| ID | Task | Start | Finish |
| --- | --- | --- | --- |
| PG-12048 | 1st Fix - Piping works | 2025-07-31 → 2025-08-02 (+2d) | 2025-08-14 → 2025-08-18 (+4d) |
| PG-12049 | 2nd Fix - diverter fixing & Pressure testing | 2025-08-09 → 2025-08-12 (+3d) | 2025-08-22 → 2025-08-25 (+3d) |
| 1.3.1.3.3.18.2 | **Fire Fighting Works** | 2025-08-08 → 2025-08-12 (+4d) |  |
| PG-12051 | 1st Fix - Piping and Shaft hydrant works | 2025-08-08 → 2025-08-12 (+4d) | 2025-08-23 → 2025-08-27 (+4d) |
| 1.3.1.3.3.18.3 | **Electrical Works** | 2025-07-31 → 2025-08-02 (+2d) |  |
| PG-12054 | 1st Fix - GI wire pulling | 2025-07-31 → 2025-08-02 (+2d) | 2025-08-08 → 2025-08-12 (+4d) |
| 1.3.1.3.3.19 | **Floor 16** | 2025-08-13 → 2025-08-16 (+3d) | 2025-11-05 → 2025-11-08 (+3d) |
| 1.3.1.3.3.19.1 | **PHE Works** | 2025-08-13 → 2025-08-16 (+3d) | 2025-11-05 → 2025-11-08 (+3d) |
| PG-12057 | 1st Fix - Piping works | 2025-08-13 → 2025-08-16 (+3d) | 2025-08-28 → 2025-08-30 (+2d) |
| PG-12058 | 2nd Fix - diverter fixing & Pressure testing | 2025-08-23 → 2025-08-26 (+3d) | 2025-09-04 → 2025-09-06 (+2d) |
| PG-12059 | Final Fix - CP & Sanitary fixtures | 2025-10-23 → 2025-10-25 (+2d) | 2025-11-05 → 2025-11-08 (+3d) |
| 1.3.1.3.3.19.2 | **Fire Fighting Works** | 2025-08-22 → 2025-08-26 (+4d) | 2025-11-05 → 2025-11-08 (+3d) |
| PG-12060 | 1st Fix - Piping and Shaft hydrant works | 2025-08-22 → 2025-08-26 (+4d) | 2025-09-05 → 2025-09-09 (+4d) |
| PG-12061 | 2nd Fix - Sprinkler fixing & Pressure testing | 2025-09-30 → 2025-10-03 (+3d) | 2025-10-13 → 2025-10-15 (+2d) |
| PG-12062 | Final Fix - Smoke & heat detectors, FHC , FAS Etc. | 2025-10-23 → 2025-10-25 (+2d) | 2025-11-05 → 2025-11-08 (+3d) |
| 1.3.1.3.3.19.3 | **Electrical Works** | 2025-08-13 → 2025-08-16 (+3d) | 2025-11-05 → 2025-11-08 (+3d) |
| PG-12063 | 1st Fix - GI wire pulling | 2025-08-13 → 2025-08-16 (+3d) | 2025-08-22 → 2025-08-26 (+4d) |
| PG-12064 | 2nd Fix - Wiring works | 2025-09-25 → 2025-09-27 (+2d) | 2025-10-11 → 2025-10-14 (+3d) |
| PG-12065 | Final Fix - Electrical Fixtures | 2025-10-29 → 2025-10-31 (+2d) | 2025-11-05 → 2025-11-08 (+3d) |
| 1.3.1.3.3.20 | **Floor 17** | 2025-08-27 → 2025-08-29 (+2d) | 2025-11-17 → 2025-11-20 (+3d) |
| 1.3.1.3.3.20.1 | **PHE Works** | 2025-08-27 → 2025-08-29 (+2d) | 2025-11-17 → 2025-11-20 (+3d) |
| PG-12066 | 1st Fix - Piping works | 2025-08-27 → 2025-08-29 (+2d) | 2025-09-10 → 2025-09-12 (+2d) |
| PG-12067 | 2nd Fix - diverter fixing & Pressure testing | 2025-09-05 → 2025-09-08 (+3d) | 2025-09-17 → 2025-09-19 (+2d) |
| PG-12068 | Final Fix - CP & Sanitary fixtures | 2025-11-05 → 2025-11-07 (+2d) | 2025-11-17 → 2025-11-20 (+3d) |
| 1.3.1.3.3.20.2 | **Fire Fighting Works** | 2025-09-04 → 2025-09-08 (+4d) | 2025-11-17 → 2025-11-20 (+3d) |
| PG-12069 | 1st Fix - Piping and Shaft hydrant works | 2025-09-04 → 2025-09-08 (+4d) | 2025-09-18 → 2025-09-22 (+4d) |
| PG-12070 | 2nd Fix - Sprinkler fixing & Pressure testing | 2025-10-14 → 2025-10-16 (+2d) | 2025-10-25 → 2025-10-28 (+3d) |
| PG-12071 | Final Fix - Smoke & heat detectors, FHC , FAS Etc. | 2025-11-05 → 2025-11-07 (+2d) | 2025-11-17 → 2025-11-20 (+3d) |
| 1.3.1.3.3.20.3 | **Electrical Works** | 2025-08-27 → 2025-08-29 (+2d) | 2025-11-17 → 2025-11-20 (+3d) |
| PG-12072 | 1st Fix - GI wire pulling | 2025-08-27 → 2025-08-29 (+2d) | 2025-09-04 → 2025-09-08 (+4d) |
| PG-12073 | 2nd Fix - Wiring works | 2025-10-08 → 2025-10-10 (+2d) | 2025-10-24 → 2025-10-27 (+3d) |
| PG-12074 | Final Fix - Electrical Fixtures | 2025-11-11 → 2025-11-13 (+2d) | 2025-11-17 → 2025-11-20 (+3d) |
| 1.3.1.3.3.21 | **Floor 18** | 2025-09-09 → 2025-09-11 (+2d) | 2025-11-29 → 2025-12-03 (+4d) |
| 1.3.1.3.3.21.1 | **PHE Works** | 2025-09-09 → 2025-09-11 (+2d) | 2025-11-29 → 2025-12-03 (+4d) |
| PG-12075 | 1st Fix - Piping works | 2025-09-09 → 2025-09-11 (+2d) | 2025-09-23 → 2025-09-25 (+2d) |
| PG-12076 | 2nd Fix - diverter fixing & Pressure testing | 2025-09-18 → 2025-09-20 (+2d) | 2025-09-30 → 2025-10-03 (+3d) |
| PG-12077 | Final Fix - CP & Sanitary fixtures | 2025-11-18 → 2025-11-20 (+2d) | 2025-11-29 → 2025-12-03 (+4d) |
| 1.3.1.3.3.21.2 | **Fire Fighting Works** | 2025-09-17 → 2025-09-20 (+3d) | 2025-11-29 → 2025-12-03 (+4d) |
| PG-12078 | 1st Fix - Piping and Shaft hydrant works | 2025-09-17 → 2025-09-20 (+3d) | 2025-10-01 → 2025-10-06 (+5d) |
| PG-12079 | 2nd Fix - Sprinkler fixing & Pressure testing | 2025-10-27 → 2025-10-29 (+2d) | 2025-11-08 → 2025-11-11 (+3d) |
| PG-12080 | Final Fix - Smoke & heat detectors, FHC , FAS Etc. | 2025-11-18 → 2025-11-20 (+2d) | 2025-11-29 → 2025-12-03 (+4d) |
| 1.3.1.3.3.21.3 | **Electrical Works** | 2025-09-09 → 2025-09-11 (+2d) | 2025-11-29 → 2025-12-03 (+4d) |
| PG-12081 | 1st Fix - GI wire pulling | 2025-09-09 → 2025-09-11 (+2d) | 2025-09-17 → 2025-09-20 (+3d) |
| PG-12082 | 2nd Fix - Wiring works | 2025-10-21 → 2025-10-23 (+2d) | 2025-11-07 → 2025-11-10 (+3d) |
| PG-12083 | Final Fix - Electrical Fixtures | 2025-11-24 → 2025-11-26 (+2d) | 2025-11-29 → 2025-12-03 (+4d) |
| 1.3.1.3.3.22 | **Floor 19** | 2025-09-22 → 2025-09-24 (+2d) | 2025-12-12 → 2025-12-16 (+4d) |
| 1.3.1.3.3.22.1 | **PHE Works** | 2025-09-22 → 2025-09-24 (+2d) | 2025-12-12 → 2025-12-16 (+4d) |
| PG-12084 | 1st Fix - Piping works | 2025-09-22 → 2025-09-24 (+2d) | 2025-10-07 → 2025-10-09 (+2d) |
| PG-12085 | 2nd Fix - diverter fixing & Pressure testing | 2025-10-01 → 2025-10-04 (+3d) | 2025-10-14 → 2025-10-16 (+2d) |
| PG-12086 | Final Fix - CP & Sanitary fixtures | 2025-12-01 → 2025-12-03 (+2d) | 2025-12-12 → 2025-12-16 (+4d) |
| 1.3.1.3.3.22.2 | **Fire Fighting Works** | 2025-09-30 → 2025-10-04 (+4d) | 2025-12-12 → 2025-12-16 (+4d) |
| PG-12087 | 1st Fix - Piping and Shaft hydrant works | 2025-09-30 → 2025-10-04 (+4d) | 2025-10-15 → 2025-10-18 (+3d) |
| PG-12088 | 2nd Fix - Sprinkler fixing & Pressure testing | 2025-11-10 → 2025-11-12 (+2d) | 2025-11-21 → 2025-11-24 (+3d) |
| PG-12089 | Final Fix - Smoke & heat detectors, FHC , FAS Etc. | 2025-12-01 → 2025-12-03 (+2d) | 2025-12-12 → 2025-12-16 (+4d) |
| 1.3.1.3.3.22.3 | **Electrical Works** | 2025-09-22 → 2025-09-24 (+2d) | 2025-12-12 → 2025-12-16 (+4d) |
| PG-12090 | 1st Fix - GI wire pulling | 2025-09-22 → 2025-09-24 (+2d) | 2025-09-30 → 2025-10-04 (+4d) |
| PG-12091 | 2nd Fix - Wiring works | 2025-11-04 → 2025-11-06 (+2d) | 2025-11-20 → 2025-11-22 (+2d) |
| PG-12092 | Final Fix - Electrical Fixtures | 2025-12-06 → 2025-12-09 (+3d) | 2025-12-12 → 2025-12-16 (+4d) |
| 1.3.1.3.3.23 | **Floor 20** | 2025-10-06 → 2025-10-08 (+2d) | 2025-12-26 → 2025-12-29 (+3d) |
| 1.3.1.3.3.23.1 | **PHE Works** | 2025-10-06 → 2025-10-08 (+2d) | 2025-12-26 → 2025-12-29 (+3d) |
| PG-12093 | 1st Fix - Piping works | 2025-10-06 → 2025-10-08 (+2d) | 2025-10-20 → 2025-10-22 (+2d) |
| PG-12094 | 2nd Fix - diverter fixing & Pressure testing | 2025-10-15 → 2025-10-17 (+2d) | 2025-10-27 → 2025-10-29 (+2d) |
| PG-12095 | Final Fix - CP & Sanitary fixtures | 2025-12-16 → 2025-12-18 (+2d) | 2025-12-26 → 2025-12-29 (+3d) |
| 1.3.1.3.3.23.2 | **Fire Fighting Works** | 2025-10-15 → 2025-10-17 (+2d) | 2025-12-26 → 2025-12-29 (+3d) |
| PG-12096 | 1st Fix - Piping and Shaft hydrant works | 2025-10-15 → 2025-10-17 (+2d) | 2025-10-29 → 2025-10-31 (+2d) |
| PG-12097 | 2nd Fix - Sprinkler fixing & Pressure testing | 2025-11-22 → 2025-11-25 (+3d) | 2025-12-04 → 2025-12-06 (+2d) |
| PG-12098 | Final Fix - Smoke & heat detectors, FHC , FAS Etc. | 2025-12-16 → 2025-12-18 (+2d) | 2025-12-26 → 2025-12-29 (+3d) |
| 1.3.1.3.3.23.3 | **Electrical Works** | 2025-10-06 → 2025-10-08 (+2d) | 2025-12-26 → 2025-12-29 (+3d) |
| PG-12099 | 1st Fix - GI wire pulling | 2025-10-06 → 2025-10-08 (+2d) | 2025-10-15 → 2025-10-17 (+2d) |
| PG-12100 | 2nd Fix - Wiring works | 2025-11-17 → 2025-11-19 (+2d) | 2025-12-03 → 2025-12-05 (+2d) |

| ID | Task | Start | Finish |
| --- | --- | --- | --- |
| PG-12101 | Final Fix - Electrical Fixtures | 2025-12-20 → 2025-12-23 (+3d) | 2025-12-26 → 2025-12-29 (+3d) |
| 1.3.1.3.3.24 | **Floor 21** | 2025-10-18 → 2025-10-21 (+3d) | 2026-01-08 → 2026-01-10 (+2d) |
| 1.3.1.3.3.24.1 | **PHE Works** | 2025-10-18 → 2025-10-21 (+3d) | 2026-01-08 → 2026-01-10 (+2d) |
| PG-12102 | 1st Fix - Piping works | 2025-10-18 → 2025-10-21 (+3d) | 2025-10-31 → 2025-11-05 (+5d) |
| PG-12103 | 2nd Fix - diverter fixing & Pressure testing | 2025-10-29 → 2025-10-31 (+2d) | 2025-11-08 → 2025-11-12 (+4d) |
| PG-12104 | Final Fix - CP & Sanitary fixtures | 2025-12-26 → 2025-12-30 (+4d) | 2026-01-08 → 2026-01-10 (+2d) |
| 1.3.1.3.3.24.2 | **Fire Fighting Works** | 2025-10-28 → 2025-10-30 (+2d) | 2026-01-08 → 2026-01-10 (+2d) |
| PG-12105 | 1st Fix - Piping and Shaft hydrant works | 2025-10-28 → 2025-10-30 (+2d) | 2025-11-12 → 2025-11-14 (+2d) |
| PG-12106 | 2nd Fix - Sprinkler fixing & Pressure testing | 2025-12-05 → 2025-12-08 (+3d) | 2025-12-16 → 2025-12-19 (+3d) |
| PG-12107 | Final Fix - Smoke & heat detectors, FHC , FAS Etc. | 2025-12-26 → 2025-12-30 (+4d) | 2026-01-08 → 2026-01-10 (+2d) |
| 1.3.1.3.3.24.3 | **Electrical Works** | 2025-10-18 → 2025-10-21 (+3d) | 2025-12-26 → 2025-12-29 (+3d) |
| PG-12108 | 1st Fix - GI wire pulling | 2025-10-18 → 2025-10-21 (+3d) | 2025-10-28 → 2025-10-30 (+2d) |
| PG-12109 | 2nd Fix - Wiring works | 2025-11-17 → 2025-11-19 (+2d) | 2025-12-03 → 2025-12-05 (+2d) |
| PG-12110 | Final Fix - Electrical Fixtures | 2025-12-20 → 2025-12-23 (+3d) | 2025-12-26 → 2025-12-29 (+3d) |
| 1.3.1.3.3.25 | **Floor 22** | 2025-10-31 → 2025-11-04 (+4d) | 2026-01-21 → 2026-01-23 (+2d) |
| 1.3.1.3.3.25.1 | **PHE Works** | 2025-10-31 → 2025-11-04 (+4d) | 2026-01-21 → 2026-01-23 (+2d) |
| PG-12111 | 1st Fix - Piping works | 2025-10-31 → 2025-11-04 (+4d) | 2025-11-14 → 2025-11-18 (+4d) |
| PG-12112 | 2nd Fix - diverter fixing & Pressure testing | 2025-11-12 → 2025-11-14 (+2d) | 2025-11-21 → 2025-11-25 (+4d) |
| PG-12113 | Final Fix - CP & Sanitary fixtures | 2026-01-08 → 2026-01-12 (+4d) | 2026-01-21 → 2026-01-23 (+2d) |
| 1.3.1.3.3.25.2 | **Fire Fighting Works** | 2025-11-11 → 2025-11-13 (+2d) | 2026-01-21 → 2026-01-23 (+2d) |
| PG-12114 | 1st Fix - Piping and Shaft hydrant works | 2025-11-11 → 2025-11-13 (+2d) | 2025-11-25 → 2025-11-27 (+2d) |
| PG-12115 | 2nd Fix - Sprinkler fixing & Pressure testing | 2025-12-18 → 2025-12-20 (+2d) | 2025-12-29 → 2026-01-01 (+3d) |
| PG-12116 | Final Fix - Smoke & heat detectors, FHC , FAS Etc. | 2026-01-08 → 2026-01-12 (+4d) | 2026-01-21 → 2026-01-23 (+2d) |
| 1.3.1.3.3.25.3 | **Electrical Works** | 2025-10-31 → 2025-11-04 (+4d) | 2026-01-21 → 2026-01-23 (+2d) |
| PG-12117 | 1st Fix - GI wire pulling | 2025-10-31 → 2025-11-04 (+4d) | 2025-11-11 → 2025-11-13 (+2d) |
| PG-12118 | 2nd Fix - Wiring works | 2025-12-12 → 2025-12-15 (+3d) | 2025-12-27 → 2025-12-31 (+4d) |
| PG-12119 | Final Fix - Electrical Fixtures | 2026-01-14 → 2026-01-17 (+3d) | 2026-01-21 → 2026-01-23 (+2d) |
| 1.3.1.3.3.26 | **Floor 23** | 2025-11-14 → 2025-11-17 (+3d) | 2026-02-04 → 2026-02-06 (+2d) |
| 1.3.1.3.3.26.1 | **PHE Works** | 2025-11-14 → 2025-11-17 (+3d) | 2026-02-04 → 2026-02-06 (+2d) |
| PG-12120 | 1st Fix - Piping works | 2025-11-14 → 2025-11-17 (+3d) | 2025-11-26 → 2025-11-28 (+2d) |
| PG-12121 | 2nd Fix - diverter fixing & Pressure testing | 2025-11-22 → 2025-11-25 (+3d) | 2025-12-03 → 2025-12-05 (+2d) |
| PG-12122 | Final Fix - CP & Sanitary fixtures | 2026-01-22 → 2026-01-24 (+2d) | 2026-02-04 → 2026-02-06 (+2d) |
| 1.3.1.3.3.26.2 | **Fire Fighting Works** | 2025-11-22 → 2025-11-25 (+3d) | 2026-02-04 → 2026-02-06 (+2d) |
| PG-12123 | 1st Fix - Piping and Shaft hydrant works | 2025-11-22 → 2025-11-25 (+3d) | 2025-12-05 → 2025-12-09 (+4d) |
| PG-12124 | 2nd Fix - Sprinkler fixing & Pressure testing | 2025-12-29 → 2025-12-31 (+2d) | 2026-01-09 → 2026-01-12 (+3d) |
| PG-12125 | Final Fix - Smoke & heat detectors, FHC , FAS Etc. | 2026-01-22 → 2026-01-24 (+2d) | 2026-02-04 → 2026-02-06 (+2d) |
| 1.3.1.3.3.26.3 | **Electrical Works** | 2025-11-14 → 2025-11-17 (+3d) | 2026-02-04 → 2026-02-06 (+2d) |
| PG-12126 | 1st Fix - GI wire pulling | 2025-11-14 → 2025-11-17 (+3d) | 2025-11-21 → 2025-11-25 (+4d) |
| PG-12127 | 2nd Fix - Wiring works | 2025-12-23 → 2025-12-25 (+2d) | 2026-01-08 → 2026-01-10 (+2d) |
| PG-12128 | Final Fix - Electrical Fixtures | 2026-01-28 → 2026-01-30 (+2d) | 2026-02-04 → 2026-02-06 (+2d) |
| 1.3.1.3.3.27 | **Floor 24** | 2025-11-27 → 2025-11-29 (+2d) | 2026-02-17 → 2026-02-19 (+2d) |
| 1.3.1.3.3.27.1 | **PHE Works** | 2025-11-27 → 2025-11-29 (+2d) | 2026-02-17 → 2026-02-19 (+2d) |
| PG-12129 | 1st Fix - Piping works | 2025-11-27 → 2025-11-29 (+2d) | 2025-12-10 → 2025-12-12 (+2d) |
| PG-12130 | 2nd Fix - diverter fixing & Pressure testing | 2025-12-06 → 2025-12-09 (+3d) | 2025-12-17 → 2025-12-19 (+2d) |
| PG-12131 | Final Fix - CP & Sanitary fixtures | 2026-02-05 → 2026-02-07 (+2d) | 2026-02-17 → 2026-02-19 (+2d) |
| 1.3.1.3.3.27.2 | **Fire Fighting Works** | 2025-12-06 → 2025-12-09 (+3d) | 2026-02-17 → 2026-02-19 (+2d) |
| PG-12132 | 1st Fix - Piping and Shaft hydrant works | 2025-12-06 → 2025-12-09 (+3d) | 2025-12-19 → 2025-12-23 (+4d) |
| PG-12133 | 2nd Fix - Sprinkler fixing & Pressure testing | 2026-01-12 → 2026-01-14 (+2d) | 2026-01-23 → 2026-01-27 (+4d) |
| PG-12134 | Final Fix - Smoke & heat detectors, FHC , FAS Etc. | 2026-02-05 → 2026-02-07 (+2d) | 2026-02-17 → 2026-02-19 (+2d) |
| 1.3.1.3.3.27.3 | **Electrical Works** | 2025-11-27 → 2025-11-29 (+2d) | 2026-02-17 → 2026-02-19 (+2d) |
| PG-12135 | 1st Fix - GI wire pulling | 2025-11-27 → 2025-11-29 (+2d) | 2025-12-05 → 2025-12-09 (+4d) |
| PG-12136 | 2nd Fix - Wiring works | 2026-01-06 → 2026-01-08 (+2d) | 2026-01-22 → 2026-01-24 (+2d) |
| PG-12137 | Final Fix - Electrical Fixtures | 2026-02-10 → 2026-02-12 (+2d) | 2026-02-17 → 2026-02-19 (+2d) |
| 1.3.1.3.3.28 | **Floor 25** | 2025-12-18 → 2025-12-20 (+2d) | 2026-03-10 → 2026-03-12 (+2d) |
| 1.3.1.3.3.28.1 | **PHE Works** | 2025-12-18 → 2025-12-20 (+2d) | 2026-03-10 → 2026-03-12 (+2d) |
| PG-12138 | 1st Fix - Piping works | 2025-12-18 → 2025-12-20 (+2d) | 2025-12-31 → 2026-01-02 (+2d) |
| PG-12139 | 2nd Fix - diverter fixing & Pressure testing | 2025-12-27 → 2025-12-31 (+4d) | 2026-01-07 → 2026-01-09 (+2d) |
| PG-12140 | Final Fix - CP & Sanitary fixtures | 2026-02-27 → 2026-03-02 (+3d) | 2026-03-10 → 2026-03-12 (+2d) |
| 1.3.1.3.3.28.2 | **Fire Fighting Works** | 2025-12-27 → 2025-12-31 (+4d) | 2026-03-10 → 2026-03-12 (+2d) |
| PG-12141 | 1st Fix - Piping and Shaft hydrant works | 2025-12-27 → 2025-12-31 (+4d) | 2026-01-10 → 2026-01-13 (+3d) |
| PG-12142 | 2nd Fix - Sprinkler fixing & Pressure testing | 2026-02-04 → 2026-02-06 (+2d) | 2026-02-14 → 2026-02-17 (+3d) |
| PG-12143 | Final Fix - Smoke & heat detectors, FHC , FAS Etc. | 2026-02-27 → 2026-03-02 (+3d) | 2026-03-10 → 2026-03-12 (+2d) |
| 1.3.1.3.3.28.3 | **Electrical Works** | 2025-12-18 → 2025-12-20 (+2d) | 2026-03-10 → 2026-03-12 (+2d) |
| PG-12144 | 1st Fix - GI wire pulling | 2025-12-18 → 2025-12-20 (+2d) | 2025-12-27 → 2025-12-30 (+3d) |
| PG-12145 | 2nd Fix - Wiring works | 2026-01-27 → 2026-01-29 (+2d) | 2026-02-13 → 2026-02-16 (+3d) |
| PG-12146 | Final Fix - Electrical Fixtures | 2026-03-04 → 2026-03-06 (+2d) | 2026-03-10 → 2026-03-12 (+2d) |
| 1.3.1.3.3.29 | **Floor 26** | 2026-01-08 → 2026-01-10 (+2d) | 2026-03-31 → 2026-04-02 (+2d) |
| 1.3.1.3.3.29.1 | **PHE Works** | 2026-01-08 → 2026-01-10 (+2d) | 2026-03-31 → 2026-04-02 (+2d) |
| PG-12147 | 1st Fix - Piping works | 2026-01-08 → 2026-01-10 (+2d) | 2026-01-22 → 2026-01-24 (+2d) |
| PG-12148 | 2nd Fix - diverter fixing & Pressure testing | 2026-01-16 → 2026-01-19 (+3d) | 2026-01-30 → 2026-02-02 (+3d) |

| ID | Task | Start | Finish | Complete | Total float |
| --- | --- | --- | --- | --- | --- |
| PG-12149 | Final Fix - CP & Sanitary fixtures | 2026-03-21 → 2026-03-24 (+3d) | 2026-03-31 → 2026-04-02 (+2d) |  |  |
| 1.3.1.3.3.29.2 | **Fire Fighting Works** | 2026-01-17 → 2026-01-20 (+3d) | 2026-03-31 → 2026-04-02 (+2d) |  |  |
| PG-12150 | 1st Fix - Piping and Shaft hydrant works | 2026-01-17 → 2026-01-20 (+3d) | 2026-02-02 → 2026-02-04 (+2d) |  |  |
| PG-12151 | 2nd Fix - Sprinkler fixing & Pressure testing | 2026-02-25 → 2026-02-27 (+2d) | 2026-03-09 → 2026-03-11 (+2d) |  |  |
| PG-12152 | Final Fix - Smoke & heat detectors, FHC , FAS Etc. | 2026-03-21 → 2026-03-24 (+3d) | 2026-03-31 → 2026-04-02 (+2d) |  |  |
| 1.3.1.3.3.29.3 | **Electrical Works** | 2026-01-08 → 2026-01-10 (+2d) | 2026-03-31 → 2026-04-02 (+2d) |  |  |
| PG-12153 | 1st Fix - GI wire pulling | 2026-01-08 → 2026-01-10 (+2d) | 2026-01-17 → 2026-01-20 (+3d) |  |  |
| PG-12154 | 2nd Fix - Wiring works | 2026-02-18 → 2026-02-20 (+2d) | 2026-03-07 → 2026-03-10 (+3d) |  |  |
| PG-12155 | Final Fix - Electrical Fixtures | 2026-03-25 → 2026-03-27 (+2d) | 2026-03-31 → 2026-04-02 (+2d) |  |  |
| 1.3.1.3.3.30 | **Floor 27** | 2026-01-31 → 2026-02-03 (+3d) | 2026-04-22 → 2026-04-24 (+2d) |  |  |
| 1.3.1.3.3.30.1 | **PHE Works** | 2026-01-31 → 2026-02-03 (+3d) | 2026-04-22 → 2026-04-24 (+2d) |  |  |
| PG-12156 | 1st Fix - Piping works | 2026-01-31 → 2026-02-03 (+3d) | 2026-02-14 → 2026-02-17 (+3d) |  |  |
| PG-12157 | 2nd Fix - diverter fixing & Pressure testing | 2026-02-10 → 2026-02-12 (+2d) | 2026-02-21 → 2026-02-24 (+3d) |  |  |
| PG-12158 | Final Fix - CP & Sanitary fixtures | 2026-04-10 → 2026-04-13 (+3d) | 2026-04-22 → 2026-04-24 (+2d) |  |  |
| 1.3.1.3.3.30.2 | **Fire Fighting Works** | 2026-02-10 → 2026-02-12 (+2d) | 2026-04-22 → 2026-04-24 (+2d) |  |  |
| PG-12159 | 1st Fix - Piping and Shaft hydrant works | 2026-02-10 → 2026-02-12 (+2d) | 2026-02-24 → 2026-02-26 (+2d) |  |  |
| PG-12160 | 2nd Fix - Sprinkler fixing & Pressure testing | 2026-03-20 → 2026-03-23 (+3d) | 2026-03-31 → 2026-04-02 (+2d) |  |  |
| PG-12161 | Final Fix - Smoke & heat detectors, FHC , FAS Etc. | 2026-04-10 → 2026-04-13 (+3d) | 2026-04-22 → 2026-04-24 (+2d) |  |  |
| 1.3.1.3.3.30.3 | **Electrical Works** | 2026-01-31 → 2026-02-03 (+3d) | 2026-04-22 → 2026-04-24 (+2d) |  |  |
| PG-12162 | 1st Fix - GI wire pulling | 2026-01-31 → 2026-02-03 (+3d) | 2026-02-10 → 2026-02-12 (+2d) |  |  |
| PG-12163 | 2nd Fix - Wiring works | 2026-03-13 → 2026-03-16 (+3d) | 2026-03-30 → 2026-04-01 (+2d) |  |  |
| PG-12164 | Final Fix - Electrical Fixtures | 2026-04-16 → 2026-04-18 (+2d) | 2026-04-22 → 2026-04-24 (+2d) |  |  |
| 1.3.1.3.3.31 | **Floor 28** | 2026-02-23 → 2026-02-25 (+2d) | 2026-05-14 → 2026-05-16 (+2d) |  |  |
| 1.3.1.3.3.31.1 | **PHE Works** | 2026-02-23 → 2026-02-25 (+2d) | 2026-05-14 → 2026-05-16 (+2d) |  |  |
| PG-12165 | 1st Fix - Piping works | 2026-02-23 → 2026-02-25 (+2d) | 2026-03-07 → 2026-03-10 (+3d) |  |  |
| PG-12166 | 2nd Fix - diverter fixing & Pressure testing | 2026-03-04 → 2026-03-06 (+2d) | 2026-03-14 → 2026-03-17 (+3d) |  |  |
| PG-12167 | Final Fix - CP & Sanitary fixtures | 2026-05-04 → 2026-05-06 (+2d) | 2026-05-14 → 2026-05-16 (+2d) |  |  |
| 1.3.1.3.3.31.2 | **Fire Fighting Works** | 2026-03-04 → 2026-03-06 (+2d) | 2026-05-14 → 2026-05-16 (+2d) |  |  |
| PG-12168 | 1st Fix - Piping and Shaft hydrant works | 2026-03-04 → 2026-03-06 (+2d) | 2026-03-17 → 2026-03-19 (+2d) |  |  |
| PG-12169 | 2nd Fix - Sprinkler fixing & Pressure testing | 2026-04-10 → 2026-04-13 (+3d) | 2026-04-21 → 2026-04-23 (+2d) |  |  |
| PG-12170 | Final Fix - Smoke & heat detectors, FHC , FAS Etc. | 2026-05-04 → 2026-05-06 (+2d) | 2026-05-14 → 2026-05-16 (+2d) |  |  |
| 1.3.1.3.3.31.3 | **Electrical Works** | 2026-02-23 → 2026-02-25 (+2d) | 2026-05-14 → 2026-05-16 (+2d) |  |  |
| PG-12171 | 1st Fix - GI wire pulling | 2026-02-23 → 2026-02-25 (+2d) | 2026-03-03 → 2026-03-05 (+2d) |  |  |
| PG-12172 | 2nd Fix - Wiring works | 2026-04-03 → 2026-04-06 (+3d) | 2026-04-20 → 2026-04-22 (+2d) |  |  |
| PG-12173 | Final Fix - Electrical Fixtures | 2026-05-08 → 2026-05-11 (+3d) | 2026-05-14 → 2026-05-16 (+2d) |  |  |
| 1.3.1.3.3.32 | **Floor 29** | 2026-03-16 → 2026-03-18 (+2d) | 2026-06-05 → 2026-06-08 (+3d) |  |  |
| 1.3.1.3.3.32.1 | **PHE Works** | 2026-03-16 → 2026-03-18 (+2d) | 2026-06-05 → 2026-06-08 (+3d) |  |  |
| PG-12174 | 1st Fix - Piping works | 2026-03-16 → 2026-03-18 (+2d) | 2026-03-30 → 2026-04-01 (+2d) |  |  |
| PG-12175 | 2nd Fix - diverter fixing & Pressure testing | 2026-03-25 → 2026-03-27 (+2d) | 2026-04-06 → 2026-04-08 (+2d) |  |  |
| PG-12176 | Final Fix - CP & Sanitary fixtures | 2026-05-25 → 2026-05-27 (+2d) | 2026-06-05 → 2026-06-08 (+3d) |  |  |
| 1.3.1.3.3.32.2 | **Fire Fighting Works** | 2026-03-24 → 2026-03-27 (+3d) | 2026-06-05 → 2026-06-08 (+3d) |  |  |
| PG-12177 | 1st Fix - Piping and Shaft hydrant works | 2026-03-24 → 2026-03-27 (+3d) | 2026-04-08 → 2026-04-10 (+2d) |  |  |
| PG-12178 | 2nd Fix - Sprinkler fixing & Pressure testing | 2026-05-01 → 2026-05-05 (+4d) | 2026-05-13 → 2026-05-15 (+2d) |  |  |
| PG-12179 | Final Fix - Smoke & heat detectors, FHC , FAS Etc. | 2026-05-25 → 2026-05-27 (+2d) | 2026-06-05 → 2026-06-08 (+3d) |  |  |
| 1.3.1.3.3.32.3 | **Electrical Works** | 2026-03-16 → 2026-03-18 (+2d) | 2026-06-05 → 2026-06-08 (+3d) |  |  |
| PG-12180 | 1st Fix - GI wire pulling | 2026-03-16 → 2026-03-18 (+2d) | 2026-03-25 → 2026-03-27 (+2d) |  |  |
| PG-12181 | 2nd Fix - Wiring works | 2026-04-22 → 2026-04-25 (+3d) | 2026-05-12 → 2026-05-14 (+2d) |  |  |
| PG-12182 | Final Fix - Electrical Fixtures | 2026-05-29 → 2026-06-01 (+3d) | 2026-06-05 → 2026-06-08 (+3d) |  |  |
| 1.3.1.3.4 | **Civil Finishes - Units** |  | 2026-05-29 → 2026-06-01 (+3d) |  |  |
| 1.3.1.3.4.2 | **UBF** |  | 2025-04-11 → 2025-04-12 (+1d) |  |  |
| PG-12193 | Car park marking and column corner beading fixing |  | 2025-04-11 → 2025-04-12 A (+1d) |  | 464.91d → none |
| PG-12240 | Final Coat Painting |  |  | 25% → 56% | 434.44d → 436.62d |
| PG-12245 | Final Coat Painting |  |  | 18% → 49% | 397.37d → 399.55d |
| 1.3.1.3.4.7 | **Floor 4** |  | 2025-05-09 → 2025-05-16 (+7d) |  |  |
| 1.3.1.3.4.7.1 | **Ceiling Finishing works - Civil** |  | 2025-05-09 → 2025-05-16 (+7d) |  |  |
| PG-12252 | Painting Works - Putty, Primer and 1st |  | 2025-04-17 → 2025-04-24 (+7d) |  | 424.77d → 420.95d |
| PG-12254 | Final Coat Painting | 2025-04-17 → 2025-04-24 (+7d) | 2025-05-09 → 2025-05-16 (+7d) |  | 424.77d → 420.95d |
| PG-12258 | Painting Works - Putty, Primer and 1st |  | 2025-04-17 → 2025-04-18 A (+1d) | 3% → 100% | 388.11d → none |
| PG-12259 | Final Coat Painting | 2025-04-17 → 2025-04-18 (+1d) |  |  | 388.11d → 389.67d |
| 1.3.1.3.4.7.3 | **Floor Finishing Works - Civil** |  | 2025-04-17 → 2025-04-18 (+1d) |  |  |
| PG-12263 | Wooden doors | 2025-04-11 → 2025-04-12 A (+1d) | 2025-04-17 → 2025-04-18 (+1d) | 0% → 91% | 388.11d → 389.67d |
| PG-12278 | Gypsum Plastering |  | 2025-04-12 → 2025-04-14 A (+2d) | 76% → 100% | 409.96d → none |
| 1.3.1.3.4.10 | **Floor 7** | 2025-04-12 → 2025-04-14 (+2d) | 2025-06-25 → 2025-06-27 (+2d) |  |  |
| 1.3.1.3.4.10.1 | **Ceiling Finishing works - Civil** | 2025-04-21 → 2025-04-22 (+1d) | 2025-06-25 → 2025-06-27 (+2d) |  |  |
| PG-12292 | Gypsum Plastering | 2025-04-21 → 2025-04-22 (+1d) | 2025-04-28 → 2025-04-29 (+1d) |  | 397.5d → 398.63d |
| PG-12293 | Cornice fixing | 2025-05-07 → 2025-05-08 (+1d) | 2025-05-12 → 2025-05-13 (+1d) |  | 397.5d → 398.63d |
| PG-12295 | Toilet False ceiling | 2025-05-16 → 2025-05-17 (+1d) | 2025-05-21 → 2025-05-22 (+1d) |  | 378.5d → 378.95d |
| PG-12294 | Painting Works - Putty, Primer and 1st | 2025-05-27 → 2025-05-28 (+1d) | 2025-06-03 → 2025-06-04 (+1d) |  | 385.17d → 385.62d |
| PG-12296 | Final Coat Painting | 2025-06-03 → 2025-06-04 (+1d) | 2025-06-25 → 2025-06-27 (+2d) |  | 385.17d → 385.62d |
| 1.3.1.3.4.10.2 | **Wall Finishing works - Civil** | 2025-04-12 → 2025-04-14 (+2d) | 2025-06-24 → 2025-06-26 (+2d) |  |  |

| ID | Task | Start | Finish | Complete | Total float |
| --- | --- | --- | --- | --- | --- |
| PG-12297 | Balcony Railing Fixing works | 2025-04-12 → 2025-04-14 A (+2d) | 2025-04-17 → 2025-04-18 A (+1d) | 0% → 100% | 380.5d → none |
| PG-12299 | Dadoing - Wet area | 2025-05-03 → 2025-05-05 (+2d) | 2025-05-09 → 2025-05-10 (+1d) |  | 351.5d → 351.95d |
| PG-12298 | UPVC Windows & Sliding doors | 2025-05-21 → 2025-05-22 (+1d) | 2025-05-27 → 2025-05-28 (+1d) |  | 351.5d → 351.95d |
| PG-12300 | Painting Works - Putty, Primer and 1st | 2025-05-27 → 2025-05-28 (+1d) | 2025-06-03 → 2025-06-04 (+1d) |  | 351.5d → 351.95d |
| PG-12301 | Final Coat Painting | 2025-06-03 → 2025-06-04 (+1d) | 2025-06-24 → 2025-06-26 (+2d) |  | 351.5d → 351.95d |
| 1.3.1.3.4.10.3 | **Floor Finishing Works - Civil** | 2025-04-12 → 2025-04-14 (+2d) | 2025-06-03 → 2025-06-04 (+1d) |  |  |
| PG-12302 | Waterproofing for sunken areas | 2025-04-12 → 2025-04-14 A (+2d) | 2025-04-16 → 2025-04-17 A (+1d) | 0% → 100% | 371.5d → none |
| PG-12303 | Floor Tiling - Wet area | 2025-05-09 → 2025-05-10 (+1d) | 2025-05-15 → 2025-05-16 (+1d) |  | 351.5d → 351.95d |
| PG-12304 | Floor Tiling - Dry area | 2025-05-15 → 2025-05-16 (+1d) | 2025-05-21 → 2025-05-22 (+1d) |  | 351.5d → 351.95d |
| PG-12305 | Wooden doors | 2025-05-28 → 2025-05-29 (+1d) | 2025-06-03 → 2025-06-04 (+1d) |  | 351.5d → 351.95d |
| 1.3.1.3.4.11 | **Floor 8** | 2025-04-28 → 2025-04-30 (+2d) | 2025-07-11 → 2025-07-14 (+3d) |  |  |
| 1.3.1.3.4.11.1 | **Ceiling Finishing works - Civil** | 2025-05-06 → 2025-05-09 (+3d) | 2025-07-11 → 2025-07-14 (+3d) |  |  |
| PG-12306 | Gypsum Plastering | 2025-05-06 → 2025-05-09 (+3d) | 2025-05-13 → 2025-05-16 (+3d) |  |  |
| PG-12307 | Cornice fixing | 2025-05-22 → 2025-05-26 (+4d) | 2025-05-27 → 2025-05-30 (+3d) |  |  |
| PG-12309 | Toilet False ceiling | 2025-05-31 → 2025-06-03 (+3d) | 2025-06-05 → 2025-06-07 (+2d) |  |  |
| PG-12308 | Painting Works - Putty, Primer and 1st | 2025-06-11 → 2025-06-13 (+2d) | 2025-06-18 → 2025-06-20 (+2d) |  |  |
| PG-12310 | Final Coat Painting | 2025-06-18 → 2025-06-20 (+2d) | 2025-07-11 → 2025-07-14 (+3d) |  |  |
| 1.3.1.3.4.11.2 | **Wall Finishing works - Civil** | 2025-04-28 → 2025-04-30 (+2d) | 2025-07-10 → 2025-07-12 (+2d) |  |  |
| PG-12311 | Balcony Railing Fixing works | 2025-04-28 → 2025-04-30 (+2d) | 2025-05-02 → 2025-05-05 (+3d) |  |  |
| PG-12313 | Dadoing - Wet area | 2025-05-19 → 2025-05-21 (+2d) | 2025-05-24 → 2025-05-27 (+3d) |  |  |
| PG-12312 | UPVC Windows & Sliding doors | 2025-06-05 → 2025-06-07 (+2d) | 2025-06-11 → 2025-06-13 (+2d) |  |  |
| PG-12314 | Painting Works - Putty, Primer and 1st | 2025-06-11 → 2025-06-13 (+2d) | 2025-06-18 → 2025-06-20 (+2d) |  |  |
| PG-12315 | Final Coat Painting | 2025-06-18 → 2025-06-20 (+2d) | 2025-07-10 → 2025-07-12 (+2d) |  |  |
| 1.3.1.3.4.11.3 | **Floor Finishing Works - Civil** | 2025-04-28 → 2025-04-30 (+2d) | 2025-06-18 → 2025-06-20 (+2d) |  |  |
| PG-12316 | Waterproofing for sunken areas | 2025-04-28 → 2025-04-30 (+2d) | 2025-05-01 → 2025-05-03 (+2d) |  |  |
| PG-12317 | Floor Tiling - Wet area | 2025-05-24 → 2025-05-27 (+3d) | 2025-05-30 → 2025-06-02 (+3d) |  |  |
| PG-12318 | Floor Tiling - Dry area | 2025-05-30 → 2025-06-02 (+3d) | 2025-06-05 → 2025-06-07 (+2d) |  |  |
| PG-12319 | Wooden doors | 2025-06-12 → 2025-06-14 (+2d) | 2025-06-18 → 2025-06-20 (+2d) |  |  |
| 1.3.1.3.4.12 | **Floor 9** | 2025-05-13 → 2025-05-15 (+2d) | 2025-07-24 → 2025-07-28 (+4d) |  |  |
| 1.3.1.3.4.12.1 | **Ceiling Finishing works - Civil** | 2025-05-22 → 2025-05-24 (+2d) | 2025-07-24 → 2025-07-28 (+4d) |  |  |
| PG-12320 | Gypsum Plastering | 2025-05-22 → 2025-05-24 (+2d) | 2025-05-29 → 2025-05-31 (+2d) |  |  |
| PG-12321 | Cornice fixing | 2025-06-07 → 2025-06-10 (+3d) | 2025-06-12 → 2025-06-14 (+2d) |  |  |
| PG-12323 | Toilet False ceiling | 2025-06-16 → 2025-06-18 (+2d) | 2025-06-20 → 2025-06-23 (+3d) |  |  |
| PG-12322 | Painting Works - Putty, Primer and 1st | 2025-06-26 → 2025-06-28 (+2d) | 2025-07-03 → 2025-07-05 (+2d) |  |  |
| PG-12324 | Final Coat Painting | 2025-07-03 → 2025-07-05 (+2d) | 2025-07-24 → 2025-07-28 (+4d) |  |  |
| 1.3.1.3.4.12.2 | **Wall Finishing works - Civil** | 2025-05-13 → 2025-05-15 (+2d) | 2025-07-23 → 2025-07-25 (+2d) |  |  |
| PG-12325 | Balcony Railing Fixing works | 2025-05-13 → 2025-05-15 (+2d) | 2025-05-17 → 2025-05-20 (+3d) |  |  |
| PG-12327 | Dadoing - Wet area | 2025-06-03 → 2025-06-05 (+2d) | 2025-06-09 → 2025-06-11 (+2d) |  |  |
| PG-12326 | UPVC Windows & Sliding doors | 2025-06-20 → 2025-06-23 (+3d) | 2025-06-26 → 2025-06-28 (+2d) |  |  |
| PG-12328 | Painting Works - Putty, Primer and 1st | 2025-06-26 → 2025-06-28 (+2d) | 2025-07-03 → 2025-07-05 (+2d) |  |  |
| PG-12329 | Final Coat Painting | 2025-07-03 → 2025-07-05 (+2d) | 2025-07-23 → 2025-07-25 (+2d) |  |  |
| 1.3.1.3.4.12.3 | **Floor Finishing Works - Civil** | 2025-05-13 → 2025-05-15 (+2d) | 2025-07-03 → 2025-07-05 (+2d) |  |  |
| PG-12330 | Waterproofing for sunken areas | 2025-05-13 → 2025-05-15 (+2d) | 2025-05-16 → 2025-05-19 (+3d) |  |  |
| PG-12331 | Floor Tiling - Wet area | 2025-06-09 → 2025-06-11 (+2d) | 2025-06-14 → 2025-06-17 (+3d) |  |  |
| PG-12332 | Floor Tiling - Dry area | 2025-06-14 → 2025-06-17 (+3d) | 2025-06-20 → 2025-06-23 (+3d) |  |  |
| PG-12333 | Wooden doors | 2025-06-27 → 2025-06-30 (+3d) | 2025-07-03 → 2025-07-05 (+2d) |  |  |
| 1.3.1.3.4.13 | **Floor 10** | 2025-05-28 → 2025-05-30 (+2d) | 2025-08-09 → 2025-08-12 (+3d) |  |  |
| 1.3.1.3.4.13.1 | **Ceiling Finishing works - Civil** | 2025-06-05 → 2025-06-09 (+4d) | 2025-08-09 → 2025-08-12 (+3d) |  |  |
| PG-12334 | Gypsum Plastering | 2025-06-05 → 2025-06-09 (+4d) | 2025-06-12 → 2025-06-16 (+4d) |  |  |
| PG-12335 | Cornice fixing | 2025-06-21 → 2025-06-25 (+4d) | 2025-06-26 → 2025-06-30 (+4d) |  |  |
| PG-12337 | Toilet False ceiling | 2025-07-01 → 2025-07-03 (+2d) | 2025-07-05 → 2025-07-08 (+3d) |  |  |
| PG-12336 | Painting Works - Putty, Primer and 1st | 2025-07-11 → 2025-07-14 (+3d) | 2025-07-18 → 2025-07-21 (+3d) |  |  |
| PG-12338 | Final Coat Painting | 2025-07-18 → 2025-07-21 (+3d) | 2025-08-09 → 2025-08-12 (+3d) |  |  |
| 1.3.1.3.4.13.2 | **Wall Finishing works - Civil** | 2025-05-28 → 2025-05-30 (+2d) | 2025-08-08 → 2025-08-11 (+3d) |  |  |
| PG-12339 | Balcony Railing Fixing works | 2025-05-28 → 2025-05-30 (+2d) | 2025-06-02 → 2025-06-04 (+2d) |  |  |
| PG-12341 | Dadoing - Wet area | 2025-06-18 → 2025-06-20 (+2d) | 2025-06-24 → 2025-06-26 (+2d) |  |  |
| PG-12340 | UPVC Windows & Sliding doors | 2025-07-05 → 2025-07-08 (+3d) | 2025-07-11 → 2025-07-14 (+3d) |  |  |
| PG-12342 | Painting Works - Putty, Primer and 1st | 2025-07-11 → 2025-07-14 (+3d) | 2025-07-18 → 2025-07-21 (+3d) |  |  |
| PG-12343 | Final Coat Painting | 2025-07-18 → 2025-07-21 (+3d) | 2025-08-08 → 2025-08-11 (+3d) |  |  |
| 1.3.1.3.4.13.3 | **Floor Finishing Works - Civil** | 2025-05-28 → 2025-05-30 (+2d) | 2025-07-18 → 2025-07-21 (+3d) |  |  |
| PG-12344 | Waterproofing for sunken areas | 2025-05-28 → 2025-05-30 (+2d) | 2025-05-31 → 2025-06-03 (+3d) |  |  |
| PG-12345 | Floor Tiling - Wet area | 2025-06-24 → 2025-06-26 (+2d) | 2025-06-30 → 2025-07-02 (+2d) |  |  |
| PG-12346 | Floor Tiling - Dry area | 2025-06-30 → 2025-07-02 (+2d) | 2025-07-05 → 2025-07-08 (+3d) |  |  |
| PG-12347 | Wooden doors | 2025-07-12 → 2025-07-15 (+3d) | 2025-07-18 → 2025-07-21 (+3d) |  |  |
| 1.3.1.3.4.14 | **Floor 11** | 2025-06-10 → 2025-06-12 (+2d) | 2025-08-23 → 2025-08-27 (+4d) |  |  |
| 1.3.1.3.4.14.1 | **Ceiling Finishing works - Civil** | 2025-06-19 → 2025-06-21 (+2d) | 2025-08-23 → 2025-08-27 (+4d) |  |  |
| PG-12348 | Gypsum Plastering | 2025-06-19 → 2025-06-21 (+2d) | 2025-06-26 → 2025-06-28 (+2d) |  |  |
| PG-12349 | Cornice fixing | 2025-07-05 → 2025-07-08 (+3d) | 2025-07-10 → 2025-07-12 (+2d) |  |  |
| PG-12351 | Toilet False ceiling | 2025-07-14 → 2025-07-16 (+2d) | 2025-07-18 → 2025-07-21 (+3d) |  |  |
| PG-12350 | Painting Works - Putty, Primer and 1st | 2025-07-24 → 2025-07-26 (+2d) | 2025-07-31 → 2025-08-02 (+2d) |  |  |

| ID | Task | Start | Finish |
| --- | --- | --- | --- |
| PG-12352 | Final Coat Painting | 2025-07-31 → 2025-08-02 (+2d) | 2025-08-23 → 2025-08-27 (+4d) |
| 1.3.1.3.4.14.2 | **Wall Finishing works - Civil** | 2025-06-10 → 2025-06-12 (+2d) | 2025-08-22 → 2025-08-25 (+3d) |
| PG-12353 | Balcony Railing Fixing works | 2025-06-10 → 2025-06-12 (+2d) | 2025-06-14 → 2025-06-17 (+3d) |
| PG-12355 | Dadoing - Wet area | 2025-07-01 → 2025-07-03 (+2d) | 2025-07-07 → 2025-07-09 (+2d) |
| PG-12354 | UPVC Windows & Sliding doors | 2025-07-18 → 2025-07-21 (+3d) | 2025-07-24 → 2025-07-26 (+2d) |
| PG-12356 | Painting Works - Putty, Primer and 1st | 2025-07-24 → 2025-07-26 (+2d) | 2025-07-31 → 2025-08-02 (+2d) |
| PG-12357 | Final Coat Painting | 2025-07-31 → 2025-08-02 (+2d) | 2025-08-22 → 2025-08-25 (+3d) |
| 1.3.1.3.4.14.3 | **Floor Finishing Works - Civil** | 2025-06-10 → 2025-06-12 (+2d) | 2025-07-31 → 2025-08-02 (+2d) |
| PG-12358 | Waterproofing for sunken areas | 2025-06-10 → 2025-06-12 (+2d) | 2025-06-13 → 2025-06-16 (+3d) |
| PG-12359 | Floor Tiling - Wet area | 2025-07-07 → 2025-07-09 (+2d) | 2025-07-12 → 2025-07-15 (+3d) |
| PG-12360 | Floor Tiling - Dry area | 2025-07-12 → 2025-07-15 (+3d) | 2025-07-18 → 2025-07-21 (+3d) |
| PG-12361 | Wooden doors | 2025-07-25 → 2025-07-28 (+3d) | 2025-07-31 → 2025-08-02 (+2d) |
| 1.3.1.3.4.15 | **Floor 12** | 2025-06-23 → 2025-06-25 (+2d) | 2025-09-08 → 2025-09-10 (+2d) |
| 1.3.1.3.4.15.1 | **Ceiling Finishing works - Civil** | 2025-07-01 → 2025-07-04 (+3d) | 2025-09-08 → 2025-09-10 (+2d) |
| PG-12362 | Gypsum Plastering | 2025-07-01 → 2025-07-04 (+3d) | 2025-07-08 → 2025-07-11 (+3d) |
| PG-12363 | Cornice fixing | 2025-07-17 → 2025-07-21 (+4d) | 2025-07-22 → 2025-07-25 (+3d) |
| PG-12365 | Toilet False ceiling | 2025-07-26 → 2025-07-29 (+3d) | 2025-07-31 → 2025-08-02 (+2d) |
| PG-12364 | Painting Works - Putty, Primer and 1st | 2025-08-06 → 2025-08-08 (+2d) | 2025-08-13 → 2025-08-16 (+3d) |
| PG-12366 | Final Coat Painting | 2025-08-13 → 2025-08-16 (+3d) | 2025-09-08 → 2025-09-10 (+2d) |
| 1.3.1.3.4.15.2 | **Wall Finishing works - Civil** | 2025-06-23 → 2025-06-25 (+2d) | 2025-09-08 → 2025-09-10 (+2d) |
| PG-12367 | Balcony Railing Fixing works | 2025-06-23 → 2025-06-25 (+2d) | 2025-06-27 → 2025-06-30 (+3d) |
| PG-12369 | Dadoing - Wet area | 2025-07-14 → 2025-07-16 (+2d) | 2025-07-19 → 2025-07-22 (+3d) |
| PG-12368 | UPVC Windows & Sliding doors | 2025-07-31 → 2025-08-02 (+2d) | 2025-08-06 → 2025-08-08 (+2d) |
| PG-12370 | Painting Works - Putty, Primer and 1st | 2025-08-06 → 2025-08-08 (+2d) | 2025-08-13 → 2025-08-16 (+3d) |
| PG-12371 | Final Coat Painting | 2025-08-13 → 2025-08-16 (+3d) | 2025-09-08 → 2025-09-10 (+2d) |
| 1.3.1.3.4.15.3 | **Floor Finishing Works - Civil** | 2025-06-23 → 2025-06-25 (+2d) | 2025-08-13 → 2025-08-16 (+3d) |
| PG-12372 | Waterproofing for sunken areas | 2025-06-23 → 2025-06-25 (+2d) | 2025-06-26 → 2025-06-28 (+2d) |
| PG-12373 | Floor Tiling - Wet area | 2025-07-19 → 2025-07-22 (+3d) | 2025-07-25 → 2025-07-28 (+3d) |
| PG-12374 | Floor Tiling - Dry area | 2025-07-25 → 2025-07-28 (+3d) | 2025-07-31 → 2025-08-02 (+2d) |
| PG-12375 | Wooden doors | 2025-08-07 → 2025-08-09 (+2d) | 2025-08-13 → 2025-08-16 (+3d) |
| 1.3.1.3.4.16 | **Floor 13** | 2025-07-05 → 2025-07-08 (+3d) | 2025-09-20 → 2025-09-23 (+3d) |
| 1.3.1.3.4.16.1 | **Ceiling Finishing works - Civil** | 2025-07-14 → 2025-07-17 (+3d) | 2025-09-20 → 2025-09-23 (+3d) |
| PG-12376 | Gypsum Plastering | 2025-07-14 → 2025-07-17 (+3d) | 2025-07-21 → 2025-07-24 (+3d) |
| PG-12377 | Cornice fixing | 2025-07-30 → 2025-08-02 (+3d) | 2025-08-04 → 2025-08-07 (+3d) |
| PG-12379 | Toilet False ceiling | 2025-08-08 → 2025-08-11 (+3d) | 2025-08-13 → 2025-08-16 (+3d) |
| PG-12378 | Painting Works - Putty, Primer and 1st | 2025-08-20 → 2025-08-22 (+2d) | 2025-08-27 → 2025-08-29 (+2d) |
| PG-12380 | Final Coat Painting | 2025-08-27 → 2025-08-29 (+2d) | 2025-09-20 → 2025-09-23 (+3d) |
| 1.3.1.3.4.16.2 | **Wall Finishing works - Civil** | 2025-07-05 → 2025-07-08 (+3d) | 2025-09-20 → 2025-09-23 (+3d) |
| PG-12381 | Balcony Railing Fixing works | 2025-07-05 → 2025-07-08 (+3d) | 2025-07-10 → 2025-07-12 (+2d) |
| PG-12383 | Dadoing - Wet area | 2025-07-26 → 2025-07-29 (+3d) | 2025-08-01 → 2025-08-04 (+3d) |
| PG-12382 | UPVC Windows & Sliding doors | 2025-08-13 → 2025-08-16 (+3d) | 2025-08-20 → 2025-08-22 (+2d) |
| PG-12384 | Painting Works - Putty, Primer and 1st | 2025-08-20 → 2025-08-22 (+2d) | 2025-08-27 → 2025-08-29 (+2d) |
| PG-12385 | Final Coat Painting | 2025-08-27 → 2025-08-29 (+2d) | 2025-09-20 → 2025-09-23 (+3d) |
| 1.3.1.3.4.16.3 | **Floor Finishing Works - Civil** | 2025-07-05 → 2025-07-08 (+3d) | 2025-08-27 → 2025-08-29 (+2d) |
| PG-12386 | Waterproofing for sunken areas | 2025-07-05 → 2025-07-08 (+3d) | 2025-07-09 → 2025-07-11 (+2d) |
| PG-12387 | Floor Tiling - Wet area | 2025-08-01 → 2025-08-04 (+3d) | 2025-08-07 → 2025-08-09 (+2d) |
| PG-12388 | Floor Tiling - Dry area | 2025-08-07 → 2025-08-09 (+2d) | 2025-08-13 → 2025-08-16 (+3d) |
| PG-12389 | Wooden doors | 2025-08-21 → 2025-08-23 (+2d) | 2025-08-27 → 2025-08-29 (+2d) |
| 1.3.1.3.4.17 | **Floor 14** | 2025-07-18 → 2025-07-21 (+3d) | 2025-10-01 → 2025-10-04 (+3d) |
| 1.3.1.3.4.17.1 | **Ceiling Finishing works - Civil** | 2025-07-26 → 2025-07-30 (+4d) | 2025-10-01 → 2025-10-04 (+3d) |
| PG-12390 | Gypsum Plastering | 2025-07-26 → 2025-07-30 (+4d) | 2025-08-02 → 2025-08-06 (+4d) |
| PG-12391 | Cornice fixing | 2025-08-12 → 2025-08-16 (+4d) | 2025-08-18 → 2025-08-21 (+3d) |
| PG-12393 | Toilet False ceiling | 2025-08-22 → 2025-08-25 (+3d) | 2025-08-27 → 2025-08-29 (+2d) |
| PG-12392 | Painting Works - Putty, Primer and 1st | 2025-09-02 → 2025-09-04 (+2d) | 2025-09-09 → 2025-09-11 (+2d) |
| PG-12394 | Final Coat Painting | 2025-09-09 → 2025-09-11 (+2d) | 2025-10-01 → 2025-10-04 (+3d) |
| 1.3.1.3.4.17.2 | **Wall Finishing works - Civil** | 2025-07-18 → 2025-07-21 (+3d) | 2025-10-01 → 2025-10-04 (+3d) |
| PG-12395 | Balcony Railing Fixing works | 2025-07-18 → 2025-07-21 (+3d) | 2025-07-23 → 2025-07-25 (+2d) |
| PG-12397 | Dadoing - Wet area | 2025-08-08 → 2025-08-11 (+3d) | 2025-08-14 → 2025-08-18 (+4d) |
| PG-12396 | UPVC Windows & Sliding doors | 2025-08-27 → 2025-08-29 (+2d) | 2025-09-02 → 2025-09-04 (+2d) |
| PG-12398 | Painting Works - Putty, Primer and 1st | 2025-09-02 → 2025-09-04 (+2d) | 2025-09-09 → 2025-09-11 (+2d) |
| PG-12399 | Final Coat Painting | 2025-09-09 → 2025-09-11 (+2d) | 2025-10-01 → 2025-10-04 (+3d) |
| 1.3.1.3.4.17.3 | **Floor Finishing Works - Civil** | 2025-07-18 → 2025-07-21 (+3d) | 2025-09-09 → 2025-09-11 (+2d) |
| PG-12400 | Waterproofing for sunken areas | 2025-07-18 → 2025-07-21 (+3d) | 2025-07-22 → 2025-07-24 (+2d) |
| PG-12401 | Floor Tiling - Wet area | 2025-08-14 → 2025-08-18 (+4d) | 2025-08-21 → 2025-08-23 (+2d) |
| PG-12402 | Floor Tiling - Dry area | 2025-08-21 → 2025-08-23 (+2d) | 2025-08-27 → 2025-08-29 (+2d) |
| PG-12403 | Wooden doors | 2025-09-03 → 2025-09-05 (+2d) | 2025-09-09 → 2025-09-11 (+2d) |
| 1.3.1.3.4.18 | **Floor 15** | 2025-07-31 → 2025-08-02 (+2d) |  |
| 1.3.1.3.4.18.1 | **Ceiling Finishing works - Civil** | 2025-08-08 → 2025-08-12 (+4d) |  |
| PG-12404 | Gypsum Plastering | 2025-08-08 → 2025-08-12 (+4d) | 2025-08-16 → 2025-08-20 (+4d) |
| PG-12405 | Cornice fixing | 2025-08-26 → 2025-08-29 (+3d) | 2025-08-30 → 2025-09-03 (+4d) |

| ID | Task | Start | Finish |
| --- | --- | --- | --- |
| 1.3.1.3.4.18.2 | **Wall Finishing works - Civil** | 2025-07-31 → 2025-08-02 (+2d) |  |
| PG-12409 | Balcony Railing Fixing works | 2025-07-31 → 2025-08-02 (+2d) | 2025-08-05 → 2025-08-07 (+2d) |
| 1.3.1.3.4.18.3 | **Floor Finishing Works - Civil** | 2025-07-31 → 2025-08-02 (+2d) |  |
| PG-12414 | Waterproofing for sunken areas | 2025-07-31 → 2025-08-02 (+2d) | 2025-08-04 → 2025-08-06 (+2d) |
| 1.3.1.3.4.19 | **Floor 16** | 2025-08-13 → 2025-08-16 (+3d) | 2025-10-28 → 2025-10-31 (+3d) |
| 1.3.1.3.4.19.1 | **Ceiling Finishing works - Civil** | 2025-08-22 → 2025-08-26 (+4d) | 2025-10-28 → 2025-10-30 (+2d) |
| PG-12418 | Gypsum Plastering | 2025-08-22 → 2025-08-26 (+4d) | 2025-08-29 → 2025-09-02 (+4d) |
| PG-12419 | Cornice fixing | 2025-09-08 → 2025-09-11 (+3d) | 2025-09-12 → 2025-09-16 (+4d) |
| PG-12421 | Toilet False ceiling | 2025-09-17 → 2025-09-19 (+2d) | 2025-09-22 → 2025-09-24 (+2d) |
| PG-12420 | Painting Works - Putty, Primer and 1st | 2025-09-27 → 2025-09-30 (+3d) | 2025-10-06 → 2025-10-08 (+2d) |
| PG-12422 | Final Coat Painting | 2025-10-06 → 2025-10-08 (+2d) | 2025-10-28 → 2025-10-30 (+2d) |
| 1.3.1.3.4.19.2 | **Wall Finishing works - Civil** | 2025-08-13 → 2025-08-16 (+3d) | 2025-10-28 → 2025-10-31 (+3d) |
| PG-12423 | Balcony Railing Fixing works | 2025-08-13 → 2025-08-16 (+3d) | 2025-08-19 → 2025-08-21 (+2d) |
| PG-12425 | Dadoing - Wet area | 2025-09-04 → 2025-09-06 (+2d) | 2025-09-10 → 2025-09-12 (+2d) |
| PG-12424 | UPVC Windows & Sliding doors | 2025-09-22 → 2025-09-24 (+2d) | 2025-09-27 → 2025-09-30 (+3d) |
| PG-12426 | Painting Works - Putty, Primer and 1st | 2025-09-27 → 2025-09-30 (+3d) | 2025-10-06 → 2025-10-08 (+2d) |
| PG-12427 | Final Coat Painting | 2025-10-06 → 2025-10-08 (+2d) | 2025-10-28 → 2025-10-31 (+3d) |
| 1.3.1.3.4.19.3 | **Floor Finishing Works - Civil** | 2025-08-13 → 2025-08-16 (+3d) | 2025-10-06 → 2025-10-08 (+2d) |
| PG-12428 | Waterproofing for sunken areas | 2025-08-13 → 2025-08-16 (+3d) | 2025-08-18 → 2025-08-20 (+2d) |
| PG-12429 | Floor Tiling - Wet area | 2025-09-10 → 2025-09-12 (+2d) | 2025-09-16 → 2025-09-18 (+2d) |
| PG-12430 | Floor Tiling - Dry area | 2025-09-16 → 2025-09-18 (+2d) | 2025-09-22 → 2025-09-24 (+2d) |
| PG-12431 | Wooden doors | 2025-09-29 → 2025-10-01 (+2d) | 2025-10-06 → 2025-10-08 (+2d) |
| 1.3.1.3.4.20 | **Floor 17** | 2025-08-27 → 2025-08-29 (+2d) | 2025-11-10 → 2025-11-13 (+3d) |
| 1.3.1.3.4.20.1 | **Ceiling Finishing works - Civil** | 2025-09-04 → 2025-09-08 (+4d) | 2025-11-10 → 2025-11-13 (+3d) |
| PG-12432 | Gypsum Plastering | 2025-09-04 → 2025-09-08 (+4d) | 2025-09-11 → 2025-09-15 (+4d) |
| PG-12433 | Cornice fixing | 2025-09-20 → 2025-09-24 (+4d) | 2025-09-25 → 2025-09-29 (+4d) |
| PG-12435 | Toilet False ceiling | 2025-09-30 → 2025-10-03 (+3d) | 2025-10-06 → 2025-10-08 (+2d) |
| PG-12434 | Painting Works - Putty, Primer and 1st | 2025-10-11 → 2025-10-14 (+3d) | 2025-10-18 → 2025-10-21 (+3d) |
| PG-12436 | Final Coat Painting | 2025-10-18 → 2025-10-21 (+3d) | 2025-11-10 → 2025-11-13 (+3d) |
| 1.3.1.3.4.20.2 | **Wall Finishing works - Civil** | 2025-08-27 → 2025-08-29 (+2d) | 2025-11-10 → 2025-11-13 (+3d) |
| PG-12437 | Balcony Railing Fixing works | 2025-08-27 → 2025-08-29 (+2d) | 2025-09-01 → 2025-09-03 (+2d) |
| PG-12439 | Dadoing - Wet area | 2025-09-17 → 2025-09-19 (+2d) | 2025-09-23 → 2025-09-25 (+2d) |
| PG-12438 | UPVC Windows & Sliding doors | 2025-10-06 → 2025-10-08 (+2d) | 2025-10-11 → 2025-10-14 (+3d) |
| PG-12440 | Painting Works - Putty, Primer and 1st | 2025-10-11 → 2025-10-14 (+3d) | 2025-10-18 → 2025-10-21 (+3d) |
| PG-12441 | Final Coat Painting | 2025-10-18 → 2025-10-21 (+3d) | 2025-11-10 → 2025-11-13 (+3d) |
| 1.3.1.3.4.20.3 | **Floor Finishing Works - Civil** | 2025-08-27 → 2025-08-29 (+2d) | 2025-10-18 → 2025-10-21 (+3d) |
| PG-12442 | Waterproofing for sunken areas | 2025-08-27 → 2025-08-29 (+2d) | 2025-08-30 → 2025-09-02 (+3d) |
| PG-12443 | Floor Tiling - Wet area | 2025-09-23 → 2025-09-25 (+2d) | 2025-09-29 → 2025-10-01 (+2d) |
| PG-12444 | Floor Tiling - Dry area | 2025-09-29 → 2025-10-01 (+2d) | 2025-10-06 → 2025-10-08 (+2d) |
| PG-12445 | Wooden doors | 2025-10-13 → 2025-10-15 (+2d) | 2025-10-18 → 2025-10-21 (+3d) |
| 1.3.1.3.4.21 | **Floor 18** | 2025-09-09 → 2025-09-11 (+2d) | 2025-11-22 → 2025-11-26 (+4d) |
| 1.3.1.3.4.21.1 | **Ceiling Finishing works - Civil** | 2025-09-17 → 2025-09-20 (+3d) | 2025-11-22 → 2025-11-26 (+4d) |
| PG-12446 | Gypsum Plastering | 2025-09-17 → 2025-09-20 (+3d) | 2025-09-24 → 2025-09-27 (+3d) |
| PG-12447 | Cornice fixing | 2025-10-04 → 2025-10-08 (+4d) | 2025-10-09 → 2025-10-13 (+4d) |
| PG-12449 | Toilet False ceiling | 2025-10-14 → 2025-10-16 (+2d) | 2025-10-18 → 2025-10-21 (+3d) |
| PG-12448 | Painting Works - Putty, Primer and 1st | 2025-10-24 → 2025-10-27 (+3d) | 2025-10-31 → 2025-11-04 (+4d) |
| PG-12450 | Final Coat Painting | 2025-10-31 → 2025-11-04 (+4d) | 2025-11-22 → 2025-11-26 (+4d) |
| 1.3.1.3.4.21.2 | **Wall Finishing works - Civil** | 2025-09-09 → 2025-09-11 (+2d) | 2025-11-22 → 2025-11-26 (+4d) |
| PG-12451 | Balcony Railing Fixing works | 2025-09-09 → 2025-09-11 (+2d) | 2025-09-13 → 2025-09-16 (+3d) |
| PG-12453 | Dadoing - Wet area | 2025-09-30 → 2025-10-03 (+3d) | 2025-10-07 → 2025-10-09 (+2d) |
| PG-12452 | UPVC Windows & Sliding doors | 2025-10-18 → 2025-10-21 (+3d) | 2025-10-24 → 2025-10-27 (+3d) |
| PG-12454 | Painting Works - Putty, Primer and 1st | 2025-10-24 → 2025-10-27 (+3d) | 2025-10-31 → 2025-11-04 (+4d) |
| PG-12455 | Final Coat Painting | 2025-10-31 → 2025-11-04 (+4d) | 2025-11-22 → 2025-11-26 (+4d) |
| 1.3.1.3.4.21.3 | **Floor Finishing Works - Civil** | 2025-09-09 → 2025-09-11 (+2d) | 2025-10-31 → 2025-11-04 (+4d) |
| PG-12456 | Waterproofing for sunken areas | 2025-09-09 → 2025-09-11 (+2d) | 2025-09-12 → 2025-09-15 (+3d) |
| PG-12457 | Floor Tiling - Wet area | 2025-10-07 → 2025-10-09 (+2d) | 2025-10-13 → 2025-10-15 (+2d) |
| PG-12458 | Floor Tiling - Dry area | 2025-10-13 → 2025-10-15 (+2d) | 2025-10-18 → 2025-10-21 (+3d) |
| PG-12459 | Wooden doors | 2025-10-25 → 2025-10-28 (+3d) | 2025-10-31 → 2025-11-04 (+4d) |
| 1.3.1.3.4.22 | **Floor 19** | 2025-09-22 → 2025-09-24 (+2d) | 2025-12-05 → 2025-12-09 (+4d) |
| 1.3.1.3.4.22.1 | **Ceiling Finishing works - Civil** | 2025-09-30 → 2025-10-04 (+4d) | 2025-12-05 → 2025-12-09 (+4d) |
| PG-12460 | Gypsum Plastering | 2025-09-30 → 2025-10-04 (+4d) | 2025-10-08 → 2025-10-11 (+3d) |
| PG-12461 | Cornice fixing | 2025-10-17 → 2025-10-21 (+4d) | 2025-10-22 → 2025-10-25 (+3d) |
| PG-12463 | Toilet False ceiling | 2025-10-27 → 2025-10-29 (+2d) | 2025-10-31 → 2025-11-04 (+4d) |
| PG-12462 | Painting Works - Putty, Primer and 1st | 2025-11-07 → 2025-11-10 (+3d) | 2025-11-14 → 2025-11-17 (+3d) |
| PG-12464 | Final Coat Painting | 2025-11-14 → 2025-11-17 (+3d) | 2025-12-05 → 2025-12-09 (+4d) |
| 1.3.1.3.4.22.2 | **Wall Finishing works - Civil** | 2025-09-22 → 2025-09-24 (+2d) | 2025-12-05 → 2025-12-09 (+4d) |
| PG-12465 | Balcony Railing Fixing works | 2025-09-22 → 2025-09-24 (+2d) | 2025-09-26 → 2025-09-29 (+3d) |
| PG-12467 | Dadoing - Wet area | 2025-10-14 → 2025-10-16 (+2d) | 2025-10-20 → 2025-10-22 (+2d) |
| PG-12466 | UPVC Windows & Sliding doors | 2025-10-31 → 2025-11-04 (+4d) | 2025-11-07 → 2025-11-10 (+3d) |
| PG-12468 | Painting Works - Putty, Primer and 1st | 2025-11-07 → 2025-11-10 (+3d) | 2025-11-14 → 2025-11-17 (+3d) |

| ID | Task | Start | Finish |
| --- | --- | --- | --- |
| PG-12469 | Final Coat Painting | 2025-11-14 → 2025-11-17 (+3d) | 2025-12-05 → 2025-12-09 (+4d) |
| 1.3.1.3.4.22.3 | **Floor Finishing Works - Civil** | 2025-09-22 → 2025-09-24 (+2d) | 2025-11-14 → 2025-11-17 (+3d) |
| PG-12470 | Waterproofing for sunken areas | 2025-09-22 → 2025-09-24 (+2d) | 2025-09-25 → 2025-09-27 (+2d) |
| PG-12471 | Floor Tiling - Wet area | 2025-10-20 → 2025-10-22 (+2d) | 2025-10-25 → 2025-10-28 (+3d) |
| PG-12472 | Floor Tiling - Dry area | 2025-10-25 → 2025-10-28 (+3d) | 2025-10-31 → 2025-11-04 (+4d) |
| PG-12473 | Wooden doors | 2025-11-08 → 2025-11-11 (+3d) | 2025-11-14 → 2025-11-17 (+3d) |
| 1.3.1.3.4.23 | **Floor 20** | 2025-10-06 → 2025-10-08 (+2d) | 2025-12-19 → 2025-12-22 (+3d) |
| 1.3.1.3.4.23.1 | **Ceiling Finishing works - Civil** | 2025-10-15 → 2025-10-17 (+2d) | 2025-12-19 → 2025-12-22 (+3d) |
| PG-12474 | Gypsum Plastering | 2025-10-15 → 2025-10-17 (+2d) | 2025-10-22 → 2025-10-24 (+2d) |
| PG-12475 | Cornice fixing | 2025-10-31 → 2025-11-04 (+4d) | 2025-11-06 → 2025-11-08 (+2d) |
| PG-12477 | Toilet False ceiling | 2025-11-10 → 2025-11-12 (+2d) | 2025-11-14 → 2025-11-17 (+3d) |
| PG-12476 | Painting Works - Putty, Primer and 1st | 2025-11-20 → 2025-11-22 (+2d) | 2025-11-27 → 2025-11-29 (+2d) |
| PG-12478 | Final Coat Painting | 2025-11-27 → 2025-11-29 (+2d) | 2025-12-19 → 2025-12-22 (+3d) |
| 1.3.1.3.4.23.2 | **Wall Finishing works - Civil** | 2025-10-06 → 2025-10-08 (+2d) | 2025-12-19 → 2025-12-22 (+3d) |
| PG-12479 | Balcony Railing Fixing works | 2025-10-06 → 2025-10-08 (+2d) | 2025-10-10 → 2025-10-13 (+3d) |
| PG-12481 | Dadoing - Wet area | 2025-10-27 → 2025-10-29 (+2d) | 2025-11-03 → 2025-11-05 (+2d) |
| PG-12480 | UPVC Windows & Sliding doors | 2025-11-14 → 2025-11-17 (+3d) | 2025-11-20 → 2025-11-22 (+2d) |
| PG-12482 | Painting Works - Putty, Primer and 1st | 2025-11-20 → 2025-11-22 (+2d) | 2025-11-27 → 2025-11-29 (+2d) |
| PG-12483 | Final Coat Painting | 2025-11-27 → 2025-11-29 (+2d) | 2025-12-19 → 2025-12-22 (+3d) |
| 1.3.1.3.4.23.3 | **Floor Finishing Works - Civil** | 2025-10-06 → 2025-10-08 (+2d) | 2025-11-27 → 2025-11-29 (+2d) |
| PG-12484 | Waterproofing for sunken areas | 2025-10-06 → 2025-10-08 (+2d) | 2025-10-09 → 2025-10-11 (+2d) |
| PG-12485 | Floor Tiling - Wet area | 2025-11-03 → 2025-11-05 (+2d) | 2025-11-08 → 2025-11-11 (+3d) |
| PG-12486 | Floor Tiling - Dry area | 2025-11-08 → 2025-11-11 (+3d) | 2025-11-14 → 2025-11-17 (+3d) |
| PG-12487 | Wooden doors | 2025-11-21 → 2025-11-24 (+3d) | 2025-11-27 → 2025-11-29 (+2d) |
| 1.3.1.3.4.24 | **Floor 21** | 2025-10-18 → 2025-10-21 (+3d) | 2026-01-01 → 2026-01-03 (+2d) |
| 1.3.1.3.4.24.1 | **Ceiling Finishing works - Civil** | 2025-10-28 → 2025-10-30 (+2d) | 2026-01-01 → 2026-01-03 (+2d) |
| PG-12488 | Gypsum Plastering | 2025-10-28 → 2025-10-30 (+2d) | 2025-11-05 → 2025-11-07 (+2d) |
| PG-12489 | Cornice fixing | 2025-11-14 → 2025-11-17 (+3d) | 2025-11-19 → 2025-11-21 (+2d) |
| PG-12491 | Toilet False ceiling | 2025-11-21 → 2025-11-25 (+4d) | 2025-11-26 → 2025-11-29 (+3d) |
| PG-12490 | Painting Works - Putty, Primer and 1st | 2025-12-02 → 2025-12-05 (+3d) | 2025-12-09 → 2025-12-12 (+3d) |
| PG-12492 | Final Coat Painting | 2025-12-09 → 2025-12-12 (+3d) | 2026-01-01 → 2026-01-03 (+2d) |
| 1.3.1.3.4.24.2 | **Wall Finishing works - Civil** | 2025-10-18 → 2025-10-21 (+3d) | 2026-01-01 → 2026-01-03 (+2d) |
| PG-12493 | Balcony Railing Fixing works | 2025-10-18 → 2025-10-21 (+3d) | 2025-10-23 → 2025-10-25 (+2d) |
| PG-12495 | Dadoing - Wet area | 2025-11-08 → 2025-11-12 (+4d) | 2025-11-14 → 2025-11-18 (+4d) |
| PG-12494 | UPVC Windows & Sliding doors | 2025-11-26 → 2025-11-29 (+3d) | 2025-12-02 → 2025-12-05 (+3d) |
| PG-12496 | Painting Works - Putty, Primer and 1st | 2025-12-02 → 2025-12-05 (+3d) | 2025-12-09 → 2025-12-12 (+3d) |
| PG-12497 | Final Coat Painting | 2025-12-09 → 2025-12-12 (+3d) | 2026-01-01 → 2026-01-03 (+2d) |
| 1.3.1.3.4.24.3 | **Floor Finishing Works - Civil** | 2025-10-18 → 2025-10-21 (+3d) | 2025-12-09 → 2025-12-12 (+3d) |
| PG-12498 | Waterproofing for sunken areas | 2025-10-18 → 2025-10-21 (+3d) | 2025-10-22 → 2025-10-24 (+2d) |
| PG-12499 | Floor Tiling - Wet area | 2025-11-14 → 2025-11-18 (+4d) | 2025-11-20 → 2025-11-24 (+4d) |
| PG-12500 | Floor Tiling - Dry area | 2025-11-20 → 2025-11-24 (+4d) | 2025-11-26 → 2025-11-29 (+3d) |
| PG-12501 | Wooden doors | 2025-12-03 → 2025-12-06 (+3d) | 2025-12-09 → 2025-12-12 (+3d) |
| 1.3.1.3.4.25 | **Floor 22** | 2025-10-31 → 2025-11-04 (+4d) | 2026-01-14 → 2026-01-16 (+2d) |
| 1.3.1.3.4.25.1 | **Ceiling Finishing works - Civil** | 2025-11-11 → 2025-11-13 (+2d) | 2026-01-14 → 2026-01-16 (+2d) |
| PG-12502 | Gypsum Plastering | 2025-11-11 → 2025-11-13 (+2d) | 2025-11-18 → 2025-11-20 (+2d) |
| PG-12503 | Cornice fixing | 2025-11-27 → 2025-11-29 (+2d) | 2025-12-02 → 2025-12-04 (+2d) |
| PG-12505 | Toilet False ceiling | 2025-12-04 → 2025-12-08 (+4d) | 2025-12-09 → 2025-12-12 (+3d) |
| PG-12504 | Painting Works - Putty, Primer and 1st | 2025-12-15 → 2025-12-18 (+3d) | 2025-12-22 → 2025-12-25 (+3d) |
| PG-12506 | Final Coat Painting | 2025-12-22 → 2025-12-25 (+3d) | 2026-01-14 → 2026-01-16 (+2d) |
| 1.3.1.3.4.25.2 | **Wall Finishing works - Civil** | 2025-10-31 → 2025-11-04 (+4d) | 2026-01-14 → 2026-01-16 (+2d) |
| PG-12507 | Balcony Railing Fixing works | 2025-10-31 → 2025-11-04 (+4d) | 2025-11-06 → 2025-11-08 (+2d) |
| PG-12509 | Dadoing - Wet area | 2025-11-21 → 2025-11-25 (+4d) | 2025-11-27 → 2025-12-01 (+4d) |
| PG-12508 | UPVC Windows & Sliding doors | 2025-12-09 → 2025-12-12 (+3d) | 2025-12-15 → 2025-12-18 (+3d) |
| PG-12510 | Painting Works - Putty, Primer and 1st | 2025-12-15 → 2025-12-18 (+3d) | 2025-12-22 → 2025-12-25 (+3d) |
| PG-12511 | Final Coat Painting | 2025-12-22 → 2025-12-25 (+3d) | 2026-01-14 → 2026-01-16 (+2d) |
| 1.3.1.3.4.25.3 | **Floor Finishing Works - Civil** | 2025-10-31 → 2025-11-04 (+4d) | 2025-12-22 → 2025-12-25 (+3d) |
| PG-12512 | Waterproofing for sunken areas | 2025-10-31 → 2025-11-04 (+4d) | 2025-11-05 → 2025-11-07 (+2d) |
| PG-12513 | Floor Tiling - Wet area | 2025-11-27 → 2025-12-01 (+4d) | 2025-12-03 → 2025-12-06 (+3d) |
| PG-12514 | Floor Tiling - Dry area | 2025-12-03 → 2025-12-06 (+3d) | 2025-12-09 → 2025-12-12 (+3d) |
| PG-12515 | Wooden doors | 2025-12-16 → 2025-12-19 (+3d) | 2025-12-22 → 2025-12-25 (+3d) |
| 1.3.1.3.4.26 | **Floor 23** | 2025-11-14 → 2025-11-17 (+3d) | 2026-01-28 → 2026-01-30 (+2d) |
| 1.3.1.3.4.26.1 | **Ceiling Finishing works - Civil** | 2025-11-21 → 2025-11-25 (+4d) | 2026-01-28 → 2026-01-30 (+2d) |
| PG-12516 | Gypsum Plastering | 2025-11-21 → 2025-11-25 (+4d) | 2025-11-28 → 2025-12-02 (+4d) |
| PG-12517 | Cornice fixing | 2025-12-08 → 2025-12-11 (+3d) | 2025-12-12 → 2025-12-16 (+4d) |
| PG-12519 | Toilet False ceiling | 2025-12-16 → 2025-12-18 (+2d) | 2025-12-20 → 2025-12-23 (+3d) |
| PG-12518 | Painting Works - Putty, Primer and 1st | 2025-12-26 → 2025-12-29 (+3d) | 2026-01-02 → 2026-01-05 (+3d) |
| PG-12520 | Final Coat Painting | 2026-01-02 → 2026-01-05 (+3d) | 2026-01-28 → 2026-01-30 (+2d) |
| 1.3.1.3.4.26.2 | **Wall Finishing works - Civil** | 2025-11-14 → 2025-11-17 (+3d) | 2026-01-28 → 2026-01-30 (+2d) |
| PG-12521 | Balcony Railing Fixing works | 2025-11-14 → 2025-11-17 (+3d) | 2025-11-19 → 2025-11-21 (+2d) |
| PG-12523 | Dadoing - Wet area | 2025-12-03 → 2025-12-05 (+2d) | 2025-12-09 → 2025-12-11 (+2d) |

| ID | Task | Start | Finish |
| --- | --- | --- | --- |
| PG-12522 | UPVC Windows & Sliding doors | 2025-12-20 → 2025-12-23 (+3d) | 2025-12-26 → 2025-12-29 (+3d) |
| PG-12524 | Painting Works - Putty, Primer and 1st | 2025-12-26 → 2025-12-29 (+3d) | 2026-01-02 → 2026-01-05 (+3d) |
| PG-12525 | Final Coat Painting | 2026-01-02 → 2026-01-05 (+3d) | 2026-01-28 → 2026-01-30 (+2d) |
| 1.3.1.3.4.26.3 | **Floor Finishing Works - Civil** | 2025-11-14 → 2025-11-17 (+3d) | 2026-01-02 → 2026-01-05 (+3d) |
| PG-12526 | Waterproofing for sunken areas | 2025-11-14 → 2025-11-17 (+3d) | 2025-11-18 → 2025-11-20 (+2d) |
| PG-12527 | Floor Tiling - Wet area | 2025-12-09 → 2025-12-11 (+2d) | 2025-12-15 → 2025-12-17 (+2d) |
| PG-12528 | Floor Tiling - Dry area | 2025-12-15 → 2025-12-17 (+2d) | 2025-12-20 → 2025-12-23 (+3d) |
| PG-12529 | Wooden doors | 2025-12-27 → 2025-12-30 (+3d) | 2026-01-02 → 2026-01-05 (+3d) |
| 1.3.1.3.4.27 | **Floor 24** | 2025-11-27 → 2025-11-29 (+2d) | 2026-02-10 → 2026-02-12 (+2d) |
| 1.3.1.3.4.27.1 | **Ceiling Finishing works - Civil** | 2025-12-05 → 2025-12-09 (+4d) | 2026-02-10 → 2026-02-12 (+2d) |
| PG-12530 | Gypsum Plastering | 2025-12-05 → 2025-12-09 (+4d) | 2025-12-12 → 2025-12-16 (+4d) |
| PG-12531 | Cornice fixing | 2025-12-22 → 2025-12-25 (+3d) | 2025-12-26 → 2025-12-30 (+4d) |
| PG-12533 | Toilet False ceiling | 2025-12-30 → 2026-01-01 (+2d) | 2026-01-03 → 2026-01-06 (+3d) |
| PG-12532 | Painting Works - Putty, Primer and 1st | 2026-01-09 → 2026-01-12 (+3d) | 2026-01-16 → 2026-01-19 (+3d) |
| PG-12534 | Final Coat Painting | 2026-01-16 → 2026-01-19 (+3d) | 2026-02-10 → 2026-02-12 (+2d) |
| 1.3.1.3.4.27.2 | **Wall Finishing works - Civil** | 2025-11-27 → 2025-11-29 (+2d) | 2026-02-10 → 2026-02-12 (+2d) |
| PG-12535 | Balcony Railing Fixing works | 2025-11-27 → 2025-11-29 (+2d) | 2025-12-02 → 2025-12-04 (+2d) |
| PG-12537 | Dadoing - Wet area | 2025-12-17 → 2025-12-19 (+2d) | 2025-12-23 → 2025-12-25 (+2d) |
| PG-12536 | UPVC Windows & Sliding doors | 2026-01-03 → 2026-01-06 (+3d) | 2026-01-09 → 2026-01-12 (+3d) |
| PG-12538 | Painting Works - Putty, Primer and 1st | 2026-01-09 → 2026-01-12 (+3d) | 2026-01-16 → 2026-01-19 (+3d) |
| PG-12539 | Final Coat Painting | 2026-01-16 → 2026-01-19 (+3d) | 2026-02-10 → 2026-02-12 (+2d) |
| 1.3.1.3.4.27.3 | **Floor Finishing Works - Civil** | 2025-11-27 → 2025-11-29 (+2d) | 2026-01-16 → 2026-01-19 (+3d) |
| PG-12540 | Waterproofing for sunken areas | 2025-11-27 → 2025-11-29 (+2d) | 2025-12-01 → 2025-12-03 (+2d) |
| PG-12541 | Floor Tiling - Wet area | 2025-12-23 → 2025-12-25 (+2d) | 2025-12-29 → 2025-12-31 (+2d) |
| PG-12542 | Floor Tiling - Dry area | 2025-12-29 → 2025-12-31 (+2d) | 2026-01-03 → 2026-01-06 (+3d) |
| PG-12543 | Wooden doors | 2026-01-10 → 2026-01-13 (+3d) | 2026-01-16 → 2026-01-19 (+3d) |
| 1.3.1.3.4.28 | **Floor 25** | 2025-12-18 → 2025-12-20 (+2d) | 2026-03-03 → 2026-03-05 (+2d) |
| 1.3.1.3.4.28.1 | **Ceiling Finishing works - Civil** | 2025-12-27 → 2025-12-30 (+3d) | 2026-03-03 → 2026-03-05 (+2d) |
| PG-12544 | Gypsum Plastering | 2025-12-27 → 2025-12-30 (+3d) | 2026-01-03 → 2026-01-06 (+3d) |
| PG-12545 | Cornice fixing | 2026-01-13 → 2026-01-15 (+2d) | 2026-01-17 → 2026-01-20 (+3d) |
| PG-12547 | Toilet False ceiling | 2026-01-20 → 2026-01-22 (+2d) | 2026-01-24 → 2026-01-28 (+4d) |
| PG-12546 | Painting Works - Putty, Primer and 1st | 2026-01-31 → 2026-02-03 (+3d) | 2026-02-07 → 2026-02-10 (+3d) |
| PG-12548 | Final Coat Painting | 2026-02-07 → 2026-02-10 (+3d) | 2026-03-03 → 2026-03-05 (+2d) |
| 1.3.1.3.4.28.2 | **Wall Finishing works - Civil** | 2025-12-18 → 2025-12-20 (+2d) | 2026-03-03 → 2026-03-05 (+2d) |
| PG-12549 | Balcony Railing Fixing works | 2025-12-18 → 2025-12-20 (+2d) | 2025-12-23 → 2025-12-25 (+2d) |
| PG-12551 | Dadoing - Wet area | 2026-01-07 → 2026-01-09 (+2d) | 2026-01-13 → 2026-01-15 (+2d) |
| PG-12550 | UPVC Windows & Sliding doors | 2026-01-24 → 2026-01-28 (+4d) | 2026-01-31 → 2026-02-03 (+3d) |
| PG-12552 | Painting Works - Putty, Primer and 1st | 2026-01-31 → 2026-02-03 (+3d) | 2026-02-07 → 2026-02-10 (+3d) |
| PG-12553 | Final Coat Painting | 2026-02-07 → 2026-02-10 (+3d) | 2026-03-03 → 2026-03-05 (+2d) |
| 1.3.1.3.4.28.3 | **Floor Finishing Works - Civil** | 2025-12-18 → 2025-12-20 (+2d) | 2026-02-07 → 2026-02-10 (+3d) |
| PG-12554 | Waterproofing for sunken areas | 2025-12-18 → 2025-12-20 (+2d) | 2025-12-22 → 2025-12-24 (+2d) |
| PG-12555 | Floor Tiling - Wet area | 2026-01-13 → 2026-01-15 (+2d) | 2026-01-19 → 2026-01-21 (+2d) |
| PG-12556 | Floor Tiling - Dry area | 2026-01-19 → 2026-01-21 (+2d) | 2026-01-24 → 2026-01-28 (+4d) |
| PG-12557 | Wooden doors | 2026-02-02 → 2026-02-04 (+2d) | 2026-02-07 → 2026-02-10 (+3d) |
| 1.3.1.3.4.29 | **Floor 26** | 2026-01-08 → 2026-01-10 (+2d) | 2026-03-25 → 2026-03-27 (+2d) |
| 1.3.1.3.4.29.1 | **Ceiling Finishing works - Civil** | 2026-01-17 → 2026-01-20 (+3d) | 2026-03-25 → 2026-03-27 (+2d) |
| PG-12558 | Gypsum Plastering | 2026-01-17 → 2026-01-20 (+3d) | 2026-01-24 → 2026-01-28 (+4d) |
| PG-12559 | Cornice fixing | 2026-02-04 → 2026-02-06 (+2d) | 2026-02-09 → 2026-02-11 (+2d) |
| PG-12561 | Toilet False ceiling | 2026-02-12 → 2026-02-14 (+2d) | 2026-02-17 → 2026-02-19 (+2d) |
| PG-12560 | Painting Works - Putty, Primer and 1st | 2026-02-23 → 2026-02-25 (+2d) | 2026-03-02 → 2026-03-04 (+2d) |
| PG-12562 | Final Coat Painting | 2026-03-02 → 2026-03-04 (+2d) | 2026-03-25 → 2026-03-27 (+2d) |
| 1.3.1.3.4.29.2 | **Wall Finishing works - Civil** | 2026-01-08 → 2026-01-10 (+2d) | 2026-03-24 → 2026-03-26 (+2d) |
| PG-12563 | Balcony Railing Fixing works | 2026-01-08 → 2026-01-10 (+2d) | 2026-01-13 → 2026-01-15 (+2d) |
| PG-12565 | Dadoing - Wet area | 2026-01-30 → 2026-02-02 (+3d) | 2026-02-05 → 2026-02-07 (+2d) |
| PG-12564 | UPVC Windows & Sliding doors | 2026-02-17 → 2026-02-19 (+2d) | 2026-02-23 → 2026-02-25 (+2d) |
| PG-12566 | Painting Works - Putty, Primer and 1st | 2026-02-23 → 2026-02-25 (+2d) | 2026-03-02 → 2026-03-04 (+2d) |
| PG-12567 | Final Coat Painting | 2026-03-02 → 2026-03-04 (+2d) | 2026-03-24 → 2026-03-26 (+2d) |
| 1.3.1.3.4.29.3 | **Floor Finishing Works - Civil** | 2026-01-08 → 2026-01-10 (+2d) | 2026-03-02 → 2026-03-04 (+2d) |
| PG-12568 | Waterproofing for sunken areas | 2026-01-08 → 2026-01-10 (+2d) | 2026-01-12 → 2026-01-14 (+2d) |
| PG-12569 | Floor Tiling - Wet area | 2026-02-05 → 2026-02-07 (+2d) | 2026-02-11 → 2026-02-13 (+2d) |
| PG-12570 | Floor Tiling - Dry area | 2026-02-11 → 2026-02-13 (+2d) | 2026-02-17 → 2026-02-19 (+2d) |
| PG-12571 | Wooden doors | 2026-02-24 → 2026-02-26 (+2d) | 2026-03-02 → 2026-03-04 (+2d) |
| 1.3.1.3.4.30 | **Floor 27** | 2026-01-31 → 2026-02-03 (+3d) | 2026-04-15 → 2026-04-17 (+2d) |
| 1.3.1.3.4.30.1 | **Ceiling Finishing works - Civil** | 2026-02-10 → 2026-02-12 (+2d) | 2026-04-15 → 2026-04-17 (+2d) |
| PG-12572 | Gypsum Plastering | 2026-02-10 → 2026-02-12 (+2d) | 2026-02-17 → 2026-02-19 (+2d) |
| PG-12573 | Cornice fixing | 2026-02-26 → 2026-02-28 (+2d) | 2026-03-03 → 2026-03-05 (+2d) |
| PG-12575 | Toilet False ceiling | 2026-03-06 → 2026-03-09 (+3d) | 2026-03-11 → 2026-03-13 (+2d) |
| PG-12574 | Painting Works - Putty, Primer and 1st | 2026-03-17 → 2026-03-19 (+2d) | 2026-03-24 → 2026-03-26 (+2d) |
| PG-12576 | Final Coat Painting | 2026-03-24 → 2026-03-26 (+2d) | 2026-04-15 → 2026-04-17 (+2d) |
| 1.3.1.3.4.30.2 | **Wall Finishing works - Civil** | 2026-01-31 → 2026-02-03 (+3d) | 2026-04-15 → 2026-04-17 (+2d) |

| ID | Task | Start | Finish |
| --- | --- | --- | --- |
| PG-12577 | Balcony Railing Fixing works | 2026-01-31 → 2026-02-03 (+3d) | 2026-02-05 → 2026-02-07 (+2d) |
| PG-12579 | Dadoing - Wet area | 2026-02-21 → 2026-02-24 (+3d) | 2026-02-27 → 2026-03-02 (+3d) |
| PG-12578 | UPVC Windows & Sliding doors | 2026-03-11 → 2026-03-13 (+2d) | 2026-03-17 → 2026-03-19 (+2d) |
| PG-12580 | Painting Works - Putty, Primer and 1st | 2026-03-17 → 2026-03-19 (+2d) | 2026-03-24 → 2026-03-26 (+2d) |
| PG-12581 | Final Coat Painting | 2026-03-24 → 2026-03-26 (+2d) | 2026-04-15 → 2026-04-17 (+2d) |
| 1.3.1.3.4.30.3 | **Floor Finishing Works - Civil** | 2026-01-31 → 2026-02-03 (+3d) | 2026-03-24 → 2026-03-26 (+2d) |
| PG-12582 | Waterproofing for sunken areas | 2026-01-31 → 2026-02-03 (+3d) | 2026-02-04 → 2026-02-06 (+2d) |
| PG-12583 | Floor Tiling - Wet area | 2026-02-27 → 2026-03-02 (+3d) | 2026-03-05 → 2026-03-07 (+2d) |
| PG-12584 | Floor Tiling - Dry area | 2026-03-05 → 2026-03-07 (+2d) | 2026-03-11 → 2026-03-13 (+2d) |
| PG-12585 | Wooden doors | 2026-03-18 → 2026-03-20 (+2d) | 2026-03-24 → 2026-03-26 (+2d) |
| 1.3.1.3.4.31 | **Floor 28** | 2026-02-23 → 2026-02-25 (+2d) | 2026-05-07 → 2026-05-09 (+2d) |
| 1.3.1.3.4.31.1 | **Ceiling Finishing works - Civil** | 2026-03-03 → 2026-03-05 (+2d) | 2026-05-07 → 2026-05-09 (+2d) |
| PG-12586 | Gypsum Plastering | 2026-03-03 → 2026-03-05 (+2d) | 2026-03-10 → 2026-03-12 (+2d) |
| PG-12587 | Cornice fixing | 2026-03-20 → 2026-03-23 (+3d) | 2026-03-24 → 2026-03-26 (+2d) |
| PG-12589 | Toilet False ceiling | 2026-03-27 → 2026-03-30 (+3d) | 2026-04-01 → 2026-04-03 (+2d) |
| PG-12588 | Painting Works - Putty, Primer and 1st | 2026-04-07 → 2026-04-09 (+2d) | 2026-04-14 → 2026-04-16 (+2d) |
| PG-12590 | Final Coat Painting | 2026-04-14 → 2026-04-16 (+2d) | 2026-05-07 → 2026-05-09 (+2d) |
| 1.3.1.3.4.31.2 | **Wall Finishing works - Civil** | 2026-02-23 → 2026-02-25 (+2d) | 2026-05-07 → 2026-05-09 (+2d) |
| PG-12591 | Balcony Railing Fixing works | 2026-02-23 → 2026-02-25 (+2d) | 2026-02-27 → 2026-03-02 (+3d) |
| PG-12593 | Dadoing - Wet area | 2026-03-14 → 2026-03-17 (+3d) | 2026-03-20 → 2026-03-23 (+3d) |
| PG-12592 | UPVC Windows & Sliding doors | 2026-04-01 → 2026-04-03 (+2d) | 2026-04-07 → 2026-04-09 (+2d) |
| PG-12594 | Painting Works - Putty, Primer and 1st | 2026-04-07 → 2026-04-09 (+2d) | 2026-04-14 → 2026-04-16 (+2d) |
| PG-12595 | Final Coat Painting | 2026-04-14 → 2026-04-16 (+2d) | 2026-05-07 → 2026-05-09 (+2d) |
| 1.3.1.3.4.31.3 | **Floor Finishing Works - Civil** | 2026-02-23 → 2026-02-25 (+2d) | 2026-04-14 → 2026-04-16 (+2d) |
| PG-12596 | Waterproofing for sunken areas | 2026-02-23 → 2026-02-25 (+2d) | 2026-02-26 → 2026-02-28 (+2d) |
| PG-12597 | Floor Tiling - Wet area | 2026-03-20 → 2026-03-23 (+3d) | 2026-03-26 → 2026-03-28 (+2d) |
| PG-12598 | Floor Tiling - Dry area | 2026-03-26 → 2026-03-28 (+2d) | 2026-04-01 → 2026-04-03 (+2d) |
| PG-12599 | Wooden doors | 2026-04-08 → 2026-04-10 (+2d) | 2026-04-14 → 2026-04-16 (+2d) |
| 1.3.1.3.4.32 | **Floor 29** | 2026-03-16 → 2026-03-18 (+2d) | 2026-05-29 → 2026-06-01 (+3d) |
| 1.3.1.3.4.32.1 | **Ceiling Finishing works - Civil** | 2026-03-25 → 2026-03-27 (+2d) | 2026-05-29 → 2026-06-01 (+3d) |
| PG-12600 | Gypsum Plastering | 2026-03-25 → 2026-03-27 (+2d) | 2026-04-01 → 2026-04-03 (+2d) |
| PG-12601 | Cornice fixing | 2026-04-17 → 2026-04-20 (+3d) | 2026-04-22 → 2026-04-24 (+2d) |
| PG-12603 | Toilet False ceiling | 2026-04-18 → 2026-04-21 (+3d) | 2026-04-23 → 2026-04-25 (+2d) |
| PG-12602 | Painting Works - Putty, Primer and 1st | 2026-04-29 → 2026-05-01 (+2d) | 2026-05-06 → 2026-05-08 (+2d) |
| PG-12604 | Final Coat Painting | 2026-05-06 → 2026-05-08 (+2d) | 2026-05-29 → 2026-06-01 (+3d) |
| 1.3.1.3.4.32.2 | **Wall Finishing works - Civil** | 2026-03-16 → 2026-03-18 (+2d) | 2026-05-29 → 2026-06-01 (+3d) |
| PG-12605 | Balcony Railing Fixing works | 2026-03-16 → 2026-03-18 (+2d) | 2026-03-20 → 2026-03-23 (+3d) |
| PG-12607 | Dadoing - Wet area | 2026-04-06 → 2026-04-08 (+2d) | 2026-04-11 → 2026-04-14 (+3d) |
| PG-12606 | UPVC Windows & Sliding doors | 2026-04-23 → 2026-04-25 (+2d) | 2026-04-29 → 2026-05-01 (+2d) |
| PG-12608 | Painting Works - Putty, Primer and 1st | 2026-04-29 → 2026-05-01 (+2d) | 2026-05-06 → 2026-05-08 (+2d) |
| PG-12609 | Final Coat Painting | 2026-05-06 → 2026-05-08 (+2d) | 2026-05-29 → 2026-06-01 (+3d) |
| 1.3.1.3.4.32.3 | **Floor Finishing Works - Civil** | 2026-03-16 → 2026-03-18 (+2d) | 2026-05-06 → 2026-05-08 (+2d) |
| PG-12610 | Waterproofing for sunken areas | 2026-03-16 → 2026-03-18 (+2d) | 2026-03-19 → 2026-03-21 (+2d) |
| PG-12611 | Floor Tiling - Wet area | 2026-04-11 → 2026-04-14 (+3d) | 2026-04-17 → 2026-04-20 (+3d) |
| PG-12612 | Floor Tiling - Dry area | 2026-04-17 → 2026-04-20 (+3d) | 2026-04-23 → 2026-04-25 (+2d) |
| PG-12613 | Wooden doors | 2026-04-30 → 2026-05-02 (+2d) | 2026-05-06 → 2026-05-08 (+2d) |
| 1.3.1.3.4.33 | **External Finishing works** | 2025-12-24 → 2025-12-26 (+2d) | 2026-04-21 → 2026-04-23 (+2d) |
| PG-12614 | External walls tie rod hole plugging with GP2 | 2025-12-24 → 2025-12-26 (+2d) | 2026-01-29 → 2026-01-31 (+2d) |
| PG-12615 | External walls grinding works | 2026-01-16 → 2026-01-19 (+3d) | 2026-03-05 → 2026-03-07 (+2d) |
| PG-12616 | Texture and painting works | 2026-02-27 → 2026-03-02 (+3d) | 2026-04-21 → 2026-04-23 (+2d) |
| 1.3.1.3.5 | **Corridor & Fire Staircase Finishing works** | 2026-03-02 → 2026-03-04 (+2d) | 2026-06-27 → 2026-06-30 (+3d) |
| 1.3.1.3.5.1 | **Ceiling Finishing works - Civil** | 2026-03-02 → 2026-03-04 (+2d) | 2026-05-23 → 2026-05-26 (+3d) |
| PG-12617 | Gypsum Plastering | 2026-03-02 → 2026-03-04 (+2d) | 2026-03-09 → 2026-03-11 (+2d) |
| PG-12618 | Cornice fixing | 2026-03-07 → 2026-03-10 (+3d) | 2026-03-12 → 2026-03-14 (+2d) |
| PG-12619 | Painting Works - Putty, Primer and 1st | 2026-03-25 → 2026-03-27 (+2d) | 2026-04-01 → 2026-04-03 (+2d) |
| PG-12620 | False ceiling | 2026-04-01 → 2026-04-03 (+2d) | 2026-05-06 → 2026-05-08 (+2d) |
| PG-12621 | Final Coat Painting | 2026-04-17 → 2026-04-21 (+4d) | 2026-05-23 → 2026-05-26 (+3d) |
| 1.3.1.3.5.2 | **Wall Finishing works - Civil** | 2026-04-06 → 2026-04-08 (+2d) | 2026-06-27 → 2026-06-30 (+3d) |
| PG-12622 | UPVC Windows & Sliding doors | 2026-04-06 → 2026-04-08 (+2d) | 2026-04-11 → 2026-04-14 (+3d) |
| PG-12623 | Wall Cladding Upto 1.2 Mts | 2026-04-23 → 2026-04-25 (+2d) | 2026-05-16 → 2026-05-19 (+3d) |
| PG-12624 | Painting Works - Texture & one coat Painting works | 2026-05-23 → 2026-05-26 (+3d) | 2026-06-10 → 2026-06-12 (+2d) |
| PG-12625 | Final Coat Painting | 2026-06-04 → 2026-06-08 (+4d) | 2026-06-27 → 2026-06-30 (+3d) |
| 1.3.1.3.5.3 | **Floor Finishing Works - Civil** | 2026-03-09 → 2026-03-11 (+2d) | 2026-04-07 → 2026-04-09 (+2d) |
| PG-12626 | Fire Doors installation | 2026-03-09 → 2026-03-11 (+2d) | 2026-03-20 → 2026-03-23 (+3d) |
| PG-12627 | Vitrified tile flooring works | 2026-03-20 → 2026-03-23 (+3d) | 2026-04-07 → 2026-04-09 (+2d) |
| 1.3.1.3.5.4 | **Fire Staircase Finishing Works - Civil** | 2026-03-09 → 2026-03-11 (+2d) | 2026-06-27 → 2026-06-30 (+3d) |
| PG-12628 | Staircase Railing Fixing works | 2026-03-09 → 2026-03-11 (+2d) | 2026-04-01 → 2026-04-03 (+2d) |
| PG-12629 | Wall and ceiling Gypsum plastering | 2026-03-18 → 2026-03-21 (+3d) | 2026-04-24 → 2026-04-27 (+3d) |
| PG-12630 | Staircase Flooring and Skirting Works | 2026-04-07 → 2026-04-10 (+3d) | 2026-05-23 → 2026-05-26 (+3d) |
| PG-12631 | UPVC Window fixing works | 2026-05-22 → 2026-05-26 (+4d) | 2026-06-10 → 2026-06-12 (+2d) |

| ID | Task | Start | Finish |
| --- | --- | --- | --- |
| PG-12632 | Staircase Painting works | 2026-06-04 → 2026-06-06 (+2d) | 2026-06-27 → 2026-06-30 (+3d) |
| 1.3.1.3.6 | **MEP Civil Works (Shaft, Lift Shaft & OHT )** | 2025-12-10 → 2025-12-12 (+2d) | 2026-05-09 → 2026-05-13 (+4d) |
| 1.3.1.3.6.1 | **Lift Shaft Works** | 2025-12-10 → 2025-12-12 (+2d) | 2026-05-09 → 2026-05-13 (+4d) |
| PG-12633 | Tie rod hole packing | 2025-12-10 → 2025-12-12 (+2d) | 2025-12-19 → 2025-12-22 (+3d) |
| PG-12634 | Grinding works | 2025-12-19 → 2025-12-22 (+3d) | 2025-12-25 → 2025-12-27 (+2d) |
| PG-12635 | Lift pit water proofing works | 2025-12-25 → 2025-12-27 (+2d) | 2026-01-19 → 2026-01-21 (+2d) |
| PG-12636 | Shaft door opening finishing | 2026-01-19 → 2026-01-21 (+2d) | 2026-01-28 → 2026-01-30 (+2d) |
| PG-12637 | Painting works | 2026-01-28 → 2026-01-30 (+2d) | 2026-02-06 → 2026-02-09 (+3d) |
| PG-12638 | Lift Wall Cladding Works | 2026-04-22 → 2026-04-24 (+2d) | 2026-05-09 → 2026-05-13 (+4d) |
| 1.3.1.3.6.2 | **Electrical Shaft works** | 2025-12-10 → 2025-12-12 (+2d) | 2026-01-12 → 2026-01-14 (+2d) |
| PG-12639 | Tie rod hole packing | 2025-12-10 → 2025-12-12 (+2d) | 2025-12-19 → 2025-12-22 (+3d) |
| PG-12640 | Grinding works | 2025-12-19 → 2025-12-22 (+3d) | 2025-12-25 → 2025-12-27 (+2d) |
| PG-12641 | Shaft door opening finishing | 2025-12-25 → 2025-12-27 (+2d) | 2026-01-02 → 2026-01-05 (+3d) |
| PG-12642 | Painting works | 2026-01-02 → 2026-01-05 (+3d) | 2026-01-12 → 2026-01-14 (+2d) |
| 1.3.1.3.6.3 | **FPS Shaft works** | 2025-12-10 → 2025-12-12 (+2d) | 2026-01-12 → 2026-01-14 (+2d) |
| PG-12643 | Tie rod hole packing | 2025-12-10 → 2025-12-12 (+2d) | 2025-12-19 → 2025-12-22 (+3d) |
| PG-12644 | Grinding works | 2025-12-19 → 2025-12-22 (+3d) | 2025-12-25 → 2025-12-27 (+2d) |
| PG-12645 | Shaft door opening finishing | 2025-12-25 → 2025-12-27 (+2d) | 2026-01-02 → 2026-01-05 (+3d) |
| PG-12646 | Painting works | 2026-01-02 → 2026-01-05 (+3d) | 2026-01-12 → 2026-01-14 (+2d) |
| 1.3.1.3.6.4 | **PHE Shaft works** | 2025-12-10 → 2025-12-12 (+2d) | 2026-01-12 → 2026-01-14 (+2d) |
| PG-12647 | Tie rod hole packing | 2025-12-10 → 2025-12-12 (+2d) | 2025-12-19 → 2025-12-22 (+3d) |
| PG-12648 | Grinding works | 2025-12-19 → 2025-12-22 (+3d) | 2025-12-25 → 2025-12-27 (+2d) |
| PG-12649 | Shaft door opening finishing | 2025-12-25 → 2025-12-27 (+2d) | 2026-01-02 → 2026-01-05 (+3d) |
| PG-12650 | Painting works | 2026-01-02 → 2026-01-05 (+3d) | 2026-01-12 → 2026-01-14 (+2d) |
| 1.3.1.3.6.5 | **Data & Communication Shaft** | 2025-12-10 → 2025-12-12 (+2d) | 2026-01-09 → 2026-01-12 (+3d) |
| PG-12651 | Tie rod hole packing | 2025-12-10 → 2025-12-12 (+2d) | 2025-12-19 → 2025-12-22 (+3d) |
| PG-12652 | Grinding works | 2025-12-19 → 2025-12-22 (+3d) | 2025-12-25 → 2025-12-27 (+2d) |
| PG-12653 | Shaft door opening finishing | 2025-12-25 → 2025-12-27 (+2d) | 2025-12-31 → 2026-01-02 (+2d) |
| PG-12654 | Painting works | 2025-12-31 → 2026-01-02 (+2d) | 2026-01-09 → 2026-01-12 (+3d) |
| 1.3.1.3.6.6 | **OHT Works** | 2025-12-10 → 2025-12-12 (+2d) | 2026-01-29 → 2026-01-31 (+2d) |
| PG-12655 | Tank materials Supply & Shifting | 2025-12-10 → 2025-12-12 (+2d) | 2025-12-22 → 2025-12-24 (+2d) |
| PG-12656 | Assembling OHT FRP Tank | 2025-12-22 → 2025-12-24 (+2d) | 2026-01-02 → 2026-01-05 (+3d) |
| PG-12657 | Installation of OHT Tank | 2026-01-02 → 2026-01-05 (+3d) | 2026-01-20 → 2026-01-22 (+2d) |
| PG-12658 | Water tightness works and checking | 2026-01-20 → 2026-01-22 (+2d) | 2026-01-29 → 2026-01-31 (+2d) |
| 1.3.1.3.7 | **MEP Shaft works** | 2026-01-09 → 2026-01-12 (+3d) | 2026-04-02 → 2026-04-04 (+2d) |
| 1.3.1.3.7.1 | **Electrical** | 2026-01-12 → 2026-01-14 (+2d) | 2026-02-21 → 2026-02-24 (+3d) |
| PG-12659 | Tray Works | 2026-01-12 → 2026-01-14 (+2d) | 2026-01-23 → 2026-01-27 (+4d) |
| PG-12660 | Cable & Conducting works | 2026-01-23 → 2026-01-27 (+4d) | 2026-02-04 → 2026-02-07 (+3d) |
| PG-12661 | Wiring/DB/connector box installation and termination works | 2026-02-04 → 2026-02-07 (+3d) | 2026-02-21 → 2026-02-24 (+3d) |
| 1.3.1.3.7.2 | **FPS** | 2026-01-12 → 2026-01-14 (+2d) | 2026-02-21 → 2026-02-24 (+3d) |
| PG-12662 | Shaft MS Piping & fixtures installation | 2026-01-12 → 2026-01-14 (+2d) | 2026-02-05 → 2026-02-07 (+2d) |
| PG-12663 | Tray / cabling / conducting & wiring works | 2026-02-05 → 2026-02-07 (+2d) | 2026-02-21 → 2026-02-24 (+3d) |
| 1.3.1.3.7.3 | **Data & Communication** | 2026-01-09 → 2026-01-12 (+3d) | 2026-02-27 → 2026-03-02 (+3d) |
| PG-12664 | Tray Works | 2026-01-09 → 2026-01-12 (+3d) | 2026-01-23 → 2026-01-27 (+4d) |
| PG-12665 | Tray / cabling / conducting & wiring works | 2026-01-23 → 2026-01-27 (+4d) | 2026-02-11 → 2026-02-13 (+2d) |
| PG-12666 | Wiring/DB/connector box installation and termination works | 2026-02-11 → 2026-02-13 (+2d) | 2026-02-27 → 2026-03-02 (+3d) |
| 1.3.1.3.7.4 | **PHE** | 2026-01-12 → 2026-01-14 (+2d) | 2026-04-02 → 2026-04-04 (+2d) |
| PG-12667 | Bracket fixing works | 2026-01-12 → 2026-01-14 (+2d) | 2026-01-20 → 2026-01-22 (+2d) |
| PG-12668 | Piping Works | 2026-01-20 → 2026-01-22 (+2d) | 2026-02-06 → 2026-02-09 (+3d) |
| PG-12669 | Terrace Ring main & OHT Connection works | 2026-02-06 → 2026-02-09 (+3d) | 2026-03-25 → 2026-03-27 (+2d) |
| PG-12670 | Commissioning | 2026-03-25 → 2026-03-27 (+2d) | 2026-04-02 → 2026-04-04 (+2d) |
| 1.3.1.3.8 | **Lift Installation and Testing works** | 2025-12-25 → 2025-12-27 (+2d) | 2026-07-23 → 2026-07-27 (+4d) |
| PG-12671 | Lift Shaft Survey works | 2025-12-25 → 2025-12-27 (+2d) | 2026-01-06 → 2026-01-08 (+2d) |
| PG-12672 | Guide Rails fixing works | 2026-02-06 → 2026-02-09 (+3d) | 2026-03-25 → 2026-03-28 (+3d) |
| PG-12673 | Lift Frame fixing works | 2026-03-25 → 2026-03-28 (+3d) | 2026-04-22 → 2026-04-24 (+2d) |
| PG-12674 | CAR Assembly works | 2026-04-22 → 2026-04-24 (+2d) | 2026-05-15 → 2026-05-19 (+4d) |
| PG-12675 | Lift Machine Room Works | 2026-05-15 → 2026-05-19 (+4d) | 2026-06-19 → 2026-06-22 (+3d) |
| PG-12676 | Slow Speed & High Speed Testing works | 2026-06-19 → 2026-06-22 (+3d) | 2026-07-23 → 2026-07-27 (+4d) |
| 1.3.1.3.10 | **Entrance Lobby works** | 2026-06-27 → 2026-06-30 (+3d) | 2026-10-12 → 2026-10-14 (+2d) |
| PG-12684 | Flooring Works | 2026-06-27 → 2026-06-30 (+3d) | 2026-07-14 → 2026-07-17 (+3d) |
| PG-12685 | Glass Door and installation Works | 2026-07-14 → 2026-07-17 (+3d) | 2026-08-06 → 2026-08-08 (+2d) |
| PG-12687 | Canopy Works | 2026-07-14 → 2026-07-17 (+3d) | 2026-08-12 → 2026-08-14 (+2d) |
| PG-12686 | Painting Works | 2026-08-06 → 2026-08-08 (+2d) | 2026-08-19 → 2026-08-21 (+2d) |
| PG-12688 | Interior Works | 2026-08-19 → 2026-08-21 (+2d) | 2026-10-12 → 2026-10-14 (+2d) |
| 1.3.1.3.11 | **Lightening Arrester works** | 2026-04-21 → 2026-04-23 (+2d) | 2026-05-02 → 2026-05-05 (+3d) |
| PG-12689 | Conductor will be lifted with RCC Works, But Terrace works will be done once Parapet Painting done | 2026-04-21 → 2026-04-23 (+2d) | 2026-05-02 → 2026-05-05 (+3d) |
| 1.3.1.5 | **Landscape and Hardscape works** | 2026-04-21 → 2026-04-23 (+2d) | 2026-08-04 → 2026-08-06 (+2d) |
| PG-12715 | Hardscape ( Granite, Planter, Walkways Etc..) | 2026-04-21 → 2026-04-23 (+2d) | 2026-06-12 → 2026-06-15 (+3d) |
| PG-12716 | Filter media and soil filling works | 2026-06-06 → 2026-06-10 (+4d) | 2026-06-30 → 2026-07-02 (+2d) |
| PG-12717 | Irrigation piping works | 2026-06-18 → 2026-06-22 (+4d) | 2026-07-11 → 2026-07-14 (+3d) |

| ID | Task | Start | Finish | Complete | Total float |
| --- | --- | --- | --- | --- | --- |
| PG-12718 | Planting works | 2026-07-11 → 2026-07-14 (+3d) | 2026-08-04 → 2026-08-06 (+2d) |  |  |
| 1.3.9 | **Project Infrastructure Works ( Services/MEP )** |  | 2026-09-21 → 2026-09-23 (+2d) |  |  |
| 1.3.9.1 | **Civil & Services Works ( Transformer, DG,STP )** |  | 2026-09-21 → 2026-09-23 (+2d) |  |  |
| 1.3.9.1.1 | **Transformer Yard Civil Works** | 2026-03-16 → 2026-03-19 (+3d) | 2026-05-26 → 2026-05-28 (+2d) |  |  |
| 1.3.9.1.1.1 | **Transformer 01** | 2026-03-16 → 2026-03-19 (+3d) | 2026-05-26 → 2026-05-28 (+2d) |  |  |
| PG-30428 | Footing and Pedestal Excavation Works | 2026-03-16 → 2026-03-19 (+3d) | 2026-03-28 → 2026-03-31 (+3d) |  |  |
| PG-30429 | Footing and Pedestal Reinforcement works | 2026-03-31 → 2026-04-02 (+2d) | 2026-04-03 → 2026-04-06 (+3d) |  |  |
| PG-30430 | Footing and Pedestal Concrete works | 2026-04-03 → 2026-04-06 (+3d) | 2026-04-15 → 2026-04-17 (+2d) |  |  |
| PG-30431 | Fencing Retaining wall footing reinforcement works | 2026-04-15 → 2026-04-17 (+2d) | 2026-04-22 → 2026-04-24 (+2d) |  |  |
| PG-30432 | Fencing Retaining wall footing formwork and concrete works | 2026-04-22 → 2026-04-24 (+2d) | 2026-04-29 → 2026-05-01 (+2d) |  |  |
| PG-30434 | Fencing works MS/GRC | 2026-04-27 → 2026-04-29 (+2d) | 2026-05-21 → 2026-05-23 (+2d) |  |  |
| PG-30433 | Retaining wall upto low level concrete works | 2026-04-29 → 2026-05-01 (+2d) | 2026-05-04 → 2026-05-06 (+2d) |  |  |
| PG-30435 | Floor Aggregates spreading works | 2026-05-21 → 2026-05-23 (+2d) | 2026-05-26 → 2026-05-28 (+2d) |  |  |
| 1.3.9.1.2 | **Transformer Yard Electrical works** | 2026-08-04 → 2026-08-06 (+2d) | 2026-09-21 → 2026-09-23 (+2d) |  |  |
| 1.3.9.1.2.1 | **Transformer 01** | 2026-08-04 → 2026-08-06 (+2d) | 2026-09-21 → 2026-09-23 (+2d) |  |  |
| PG-30460 | Cable Trench works | 2026-08-04 → 2026-08-06 (+2d) | 2026-08-14 → 2026-08-18 (+4d) |  |  |
| PG-30461 | LTQS Installation Works | 2026-08-14 → 2026-08-18 (+4d) | 2026-08-25 → 2026-08-27 (+2d) |  |  |
| PG-30462 | Cable laying works | 2026-08-25 → 2026-08-27 (+2d) | 2026-09-09 → 2026-09-12 (+3d) |  |  |
| PG-30463 | Cable Termination works | 2026-09-09 → 2026-09-12 (+3d) | 2026-09-14 → 2026-09-16 (+2d) |  |  |
| PG-30464 | Testing and commissioning works | 2026-09-14 → 2026-09-16 (+2d) | 2026-09-21 → 2026-09-23 (+2d) |  |  |
| PG-30542 | piping for Excess Treated water discharge | 2025-11-29 → 2025-12-01 (+2d) | 2025-12-06 → 2025-12-08 (+2d) |  | 212.91d → 214.36d |
| PG-30543 | Equipment installation and Pump Fixing Works | 2025-12-06 → 2025-12-08 (+2d) |  |  | 212.91d → 214.36d |
| PG-30544 | Electrical Cabling works for Pumps |  | 2026-01-05 → 2026-01-06 (+1d) |  | 212.91d → 214.36d |
| PG-30545 | Electrical Conducting/Wiring and fixture installation | 2026-01-05 → 2026-01-06 (+1d) |  |  | 212.91d → 214.36d |
| 1.4.6.2 | **MEP Works** |  | 2025-06-18 → 2025-06-17 (-1d) |  |  |
| 1.4.6.2.1 | **Plumbing Works** |  | 2025-06-02 → 2025-05-31 (-2d) |  |  |
| PG-30697 | CP and Sanitary fixture works |  | 2025-06-02 → 2025-05-31 (-2d) |  | 540.23d → 542.83d |
| 1.4.6.2.2 | **FPS Works** |  | 2025-06-18 → 2025-06-17 (-1d) |  |  |
| PG-30700 | Sprinkler fixing and Testing Works |  | 2025-06-18 → 2025-06-17 (-1d) |  | 300.4d → 303d |
| PG-30710 | Glazing / Façade /Wall Cladding Works |  | 2025-04-16 → 2025-04-17 A (+1d) | 94% → 100% | 300.4d → none |
| PG-30709 | Painting Works | 2025-04-16 → 2025-04-17 A (+1d) |  | 0% → 8% | 300.4d → 303d |
| 1.6 | **Testing And Commissioning Works** |  | 2026-10-26 → 2026-10-28 (+2d) |  |  |
| 1.6.1.1 | **Tower 1** |  | 2026-04-18 → 2026-04-20 (+2d) |  |  |
| 1.6.1.1.1 | **Units** |  | 2026-02-20 → 2026-02-21 (+1d) |  |  |
| PG-30735 | T&C - Floor 4 |  | 2025-04-17 → 2025-04-18 A (+1d) | 81% → 100% | 443.44d → none |
| PG-30736 | T&C - Floor 5 |  |  | 21% → 42% | 426.41d → 428.59d |
| PG-30737 | T&C - Floor 6 | 2025-04-17 A | 2025-05-22 → 2025-05-21 (-1d) | 0% → 3% | 414.68d → 417.24d |
| PG-30739 | T&C - Floor 8 | 2025-05-14 → 2025-05-15 (+1d) | 2025-06-17 → 2025-06-18 (+1d) |  | 390.37d → 391.49d |
| PG-30740 | T&C - Floor 9 | 2025-05-29 → 2025-05-30 (+1d) | 2025-07-02 → 2025-07-03 (+1d) |  | 378.75d → 379.94d |
| PG-30741 | T&C - Floor 10 | 2025-06-13 → 2025-06-12 (-1d) | 2025-07-19 → 2025-07-18 (-1d) |  | 364.68d → 367.45d |
| PG-30743 | T&C - Floor 12 | 2025-07-09 → 2025-07-10 (+1d) | 2025-08-12 → 2025-08-13 (+1d) |  | 344.24d → 345.69d |
| PG-30744 | T&C - Floor 13 | 2025-07-24 → 2025-07-25 (+1d) |  |  | 331.74d → 333.19d |
| PG-30745 | T&C - Floor 14 | 2025-08-06 → 2025-08-07 (+1d) |  |  | 320.74d → 322.19d |
| PG-30746 | T&C - Floor 15 | 2025-08-19 → 2025-08-20 (+1d) |  |  | 310.74d → 312.19d |
| PG-30747 | T&C - Floor 16 | 2025-09-01 → 2025-09-02 (+1d) |  |  | 299.74d → 301.19d |
| PG-30748 | T&C - Floor 17 | 2025-09-13 → 2025-09-15 (+2d) |  |  | 288.74d → 290.19d |
| PG-30749 | T&C - Floor 18 | 2025-09-26 → 2025-09-27 (+1d) |  |  | 277.74d → 279.19d |
| PG-30750 | T&C - Floor 19 | 2025-10-22 → 2025-10-23 (+1d) |  |  | 256.74d → 258.19d |
| PG-30751 | T&C - Floor 20 | 2025-11-13 → 2025-11-14 (+1d) | 2025-12-17 → 2025-12-18 (+1d) |  | 237.57d → 239.02d |
| PG-30752 | T&C - Floor 21 | 2025-12-05 → 2025-12-06 (+1d) | 2026-01-08 → 2026-01-09 (+1d) |  | 218.57d → 220.02d |
| PG-30753 | T&C - Floor 22 | 2025-12-27 → 2025-12-29 (+2d) |  |  | 198.57d → 200.02d |
| PG-30754 | T&C - Floor 23 | 2026-01-16 → 2026-01-17 (+1d) | 2026-02-20 → 2026-02-21 (+1d) |  | 182.57d → 184.02d |
| 1.6.1.1.2 | **Common Areas** |  | 2026-04-18 → 2026-04-20 (+2d) |  |  |
| PG-30755 | T&C - Internal Electrical Works |  | 2025-10-20 → 2025-10-21 (+1d) |  | 258.24d → 259.69d |
| PG-30756 | T&C - Internal FPS Works |  | 2025-10-20 → 2025-10-21 (+1d) |  | 257.91d → 259.36d |
| PG-30757 | T&C - Data & Communication Works |  | 2025-10-25 → 2025-10-27 (+2d) |  | 252.91d → 254.36d |
| PG-30758 | T&C - Internal PHE Works including OHT |  | 2025-12-08 → 2025-12-09 (+1d) |  | 214.91d → 216.36d |
| PG-30761 | T&C - Lightining Arrestor works | 2025-12-15 → 2025-12-16 (+1d) |  |  | 246.74d → 248.19d |
| PG-30760 | T&C - Electrical Panel Works |  | 2026-03-21 → 2026-03-23 (+2d) |  | 128.24d → 129.69d |
| PG-30759 | T&C - Lift Works | 2026-03-27 → 2026-03-28 (+1d) | 2026-04-18 → 2026-04-20 (+2d) |  | 104.41d → 105.86d |
| PG-30766 | T&C - Floor 4 |  |  | 58% → 78% | 436.36d → 438.54d |
| PG-30767 | T&C - Floor 5 |  |  | 28% → 48% | 427.52d → 429.7d |
| PG-30768 | T&C - Floor 6 | 2025-04-17 A |  | 0% → 3% | 414.84d → 417.16d |
| PG-30771 | T&C - Floor 9 | 2025-05-28 → 2025-05-29 (+1d) | 2025-07-01 → 2025-07-02 (+1d) |  | 379.29d → 380.77d |
| PG-30772 | T&C - Floor 10 | 2025-06-14 → 2025-06-13 (-1d) | 2025-07-19 → 2025-07-18 (-1d) |  | 364.51d → 367.29d |
| PG-30795 | T&C - Lightining Arrestor works | 2026-01-21 → 2026-01-22 (+1d) |  |  | 217.12d → 219.27d |
| PG-30793 | T&C - Lift Works | 2026-04-15 → 2026-04-16 (+1d) |  |  | 117.62d → 119.77d |
| 1.6.1.3.1 | **Units** |  | 2026-07-09 → 2026-07-11 (+2d) |  |  |
| PG-30796 | T&C - Ground Floor |  |  | 69% → 90% | 440.87d → 443.05d |
| PG-30797 | T&C - Floor 1 |  |  | 24% → 45% | 426.49d → 428.67d |

| ID | Task | Start | Finish | Complete | Total float |
| --- | --- | --- | --- | --- | --- |
| PG-30798 | T&C - Floor 2 | 2025-04-15 → 2025-04-16 A (+1d) | 2025-05-19 → 2025-05-20 (+1d) | 0% → 4% | 415.18d → 416.39d |
| PG-30800 | T&C - Floor 4 |  | 2025-06-20 → 2025-06-21 (+1d) |  | 388.11d → 389.67d |
| PG-30803 | T&C - Floor 7 | 2025-07-01 → 2025-07-03 (+2d) | 2025-08-04 → 2025-08-06 (+2d) |  | 351.5d → 351.95d |
| PG-30804 | T&C - Floor 8 | 2025-07-17 → 2025-07-19 (+2d) | 2025-08-21 → 2025-08-23 (+2d) |  |  |
| PG-30805 | T&C - Floor 9 | 2025-07-30 → 2025-08-01 (+2d) | 2025-09-03 → 2025-09-05 (+2d) |  |  |
| PG-30806 | T&C - Floor 10 | 2025-08-16 → 2025-08-19 (+3d) | 2025-09-20 → 2025-09-23 (+3d) |  |  |
| PG-30807 | T&C - Floor 11 | 2025-08-29 → 2025-09-01 (+3d) | 2025-10-04 → 2025-10-07 (+3d) |  |  |
| PG-30808 | T&C - Floor 12 | 2025-09-15 → 2025-09-17 (+2d) | 2025-10-20 → 2025-10-22 (+2d) |  |  |
| PG-30809 | T&C - Floor 13 | 2025-09-27 → 2025-09-30 (+3d) | 2025-11-03 → 2025-11-05 (+2d) |  |  |
| PG-30810 | T&C - Floor 14 | 2025-10-09 → 2025-10-11 (+2d) | 2025-11-13 → 2025-11-15 (+2d) |  |  |
| PG-30812 | T&C - Floor 16 | 2025-11-05 → 2025-11-08 (+3d) | 2025-12-09 → 2025-12-11 (+2d) |  |  |
| PG-30813 | T&C - Floor 17 | 2025-11-17 → 2025-11-20 (+3d) | 2025-12-22 → 2025-12-24 (+2d) |  |  |
| PG-30814 | T&C - Floor 18 | 2025-11-29 → 2025-12-03 (+4d) | 2026-01-03 → 2026-01-06 (+3d) |  |  |
| PG-30815 | T&C - Floor 19 | 2025-12-12 → 2025-12-16 (+4d) | 2026-01-16 → 2026-01-19 (+3d) |  |  |
| PG-30816 | T&C - Floor 20 | 2025-12-26 → 2025-12-29 (+3d) | 2026-01-31 → 2026-02-03 (+3d) |  |  |
| PG-30817 | T&C - Floor 21 | 2026-01-08 → 2026-01-10 (+2d) | 2026-02-13 → 2026-02-16 (+3d) |  |  |
| PG-30818 | T&C - Floor 22 | 2026-01-21 → 2026-01-23 (+2d) | 2026-02-26 → 2026-02-28 (+2d) |  |  |
| PG-30819 | T&C - Floor 23 | 2026-02-04 → 2026-02-06 (+2d) | 2026-03-10 → 2026-03-12 (+2d) |  |  |
| PG-30820 | T&C - Floor 24 | 2026-02-17 → 2026-02-19 (+2d) | 2026-03-24 → 2026-03-26 (+2d) |  |  |
| PG-30821 | T&C - Floor 25 | 2026-03-10 → 2026-03-12 (+2d) | 2026-04-14 → 2026-04-16 (+2d) |  |  |
| PG-30822 | T&C - Floor 26 | 2026-03-31 → 2026-04-02 (+2d) | 2026-05-07 → 2026-05-09 (+2d) |  |  |
| PG-30823 | T&C - Floor 27 | 2026-04-22 → 2026-04-24 (+2d) | 2026-05-28 → 2026-05-30 (+2d) |  |  |
| PG-30824 | T&C - Floor 28 | 2026-05-14 → 2026-05-16 (+2d) | 2026-06-18 → 2026-06-20 (+2d) |  |  |
| PG-30825 | T&C - Floor 29 | 2026-06-05 → 2026-06-08 (+3d) | 2026-07-09 → 2026-07-11 (+2d) |  |  |
| 1.6.1.3.2 | **Common Areas** | 2026-02-21 → 2026-02-24 (+3d) |  |  |  |
| PG-30826 | T&C - Internal Electrical Works | 2026-02-21 → 2026-02-24 (+3d) | 2026-03-11 → 2026-03-13 (+2d) |  |  |
| PG-30827 | T&C - Internal FPS Works | 2026-02-21 → 2026-02-24 (+3d) | 2026-03-11 → 2026-03-13 (+2d) |  |  |
| PG-30828 | T&C - Data & Communication Works | 2026-02-27 → 2026-03-02 (+3d) | 2026-03-17 → 2026-03-19 (+2d) |  |  |
| PG-30829 | T&C - Internal PHE Works including OHT | 2026-04-02 → 2026-04-04 (+2d) | 2026-04-25 → 2026-04-28 (+3d) |  |  |
| PG-30832 | T&C - Lightining Arrestor works | 2026-05-02 → 2026-05-05 (+3d) | 2026-05-09 → 2026-05-12 (+3d) |  |  |
| PG-30830 | T&C - Lift Works | 2026-07-23 → 2026-07-27 (+4d) | 2026-08-04 → 2026-08-06 (+2d) |  |  |
| 1.6.9 | **Project InfraStructure Works ( Services & MEP )** |  | 2026-10-26 → 2026-10-28 (+2d) |  |  |
| 1.6.9.1 | **Transformer Works** | 2026-09-21 → 2026-09-23 (+2d) | 2026-10-26 → 2026-10-28 (+2d) |  |  |
| PG-31514 | T&C - Transformer 01 ( Building 01 & 02 ) | 2026-09-21 → 2026-09-23 (+2d) | 2026-10-26 → 2026-10-28 (+2d) |  |  |
| 1.7 | **Snagging De Snagging** |  | 2026-11-28 → 2026-12-02 (+4d) |  |  |
| PG-32377 | Project Signage & Carpark / Driveway marking works | 2026-02-12 → 2026-02-11 (-1d) | 2026-02-25 → 2026-02-24 (-1d) |  | 309.4d → 312d |
| 1.7.1 | **Building 1** |  | 2026-10-29 → 2026-10-31 (+2d) |  |  |
| PG-31535 | Floor 1 |  | 2025-04-11 → 2025-04-12 A (+1d) | 99% → 100% | 479.14d → none |
| PG-31536 | Floor 2 |  |  | 52% → 71% | 464.73d → 466.91d |
| PG-31537 | Floor 3 |  |  | 24% → 43% | 456.14d → 458.32d |
| PG-31538 | Floor 4 | 2025-04-17 → 2025-04-18 A (+1d) | 2025-05-23 → 2025-05-22 (-1d) | 0% → 3% | 443.44d → 446.02d |
| PG-31540 | Floor 6 | 2025-05-22 → 2025-05-21 (-1d) |  |  | 414.68d → 417.24d |
| PG-31542 | Floor 8 | 2025-06-17 → 2025-06-18 (+1d) | 2025-07-24 → 2025-07-25 (+1d) |  | 390.37d → 391.49d |
| PG-31543 | Floor 9 | 2025-07-02 → 2025-07-03 (+1d) | 2025-08-06 → 2025-08-07 (+1d) |  | 378.75d → 379.94d |
| PG-31544 | Floor 10 | 2025-07-19 → 2025-07-18 (-1d) |  |  | 364.68d → 367.45d |
| PG-31546 | Floor 12 | 2025-08-12 → 2025-08-13 (+1d) | 2025-09-17 → 2025-09-18 (+1d) |  | 344.24d → 345.69d |
| PG-31547 | Floor 13 |  | 2025-10-01 → 2025-10-03 (+2d) |  | 331.74d → 333.19d |
| PG-31548 | Floor 14 |  | 2025-10-15 → 2025-10-16 (+1d) |  | 320.74d → 322.19d |
| PG-31549 | Floor 15 |  | 2025-10-27 → 2025-10-28 (+1d) |  | 310.74d → 312.19d |
| PG-31550 | Floor 16 |  | 2025-11-10 → 2025-11-11 (+1d) |  | 299.74d → 301.19d |
| PG-31551 | Floor 17 |  | 2025-11-22 → 2025-11-24 (+2d) |  | 288.74d → 290.19d |
| PG-31552 | Floor 18 |  | 2025-12-05 → 2025-12-06 (+1d) |  | 277.74d → 279.19d |
| PG-31553 | Floor 19 |  | 2025-12-30 → 2025-12-31 (+1d) |  | 256.74d → 258.19d |
| PG-31554 | Floor 20 | 2025-12-17 → 2025-12-18 (+1d) |  |  | 237.57d → 239.02d |
| PG-31555 | Floor 21 | 2026-01-08 → 2026-01-09 (+1d) |  |  | 218.57d → 220.02d |
| PG-31557 | Floor 23 | 2026-02-20 → 2026-02-21 (+1d) |  |  | 182.57d → 184.02d |
| 1.7.1.1.2 | **Common Areas** | 2025-10-20 → 2025-10-21 (+1d) |  |  |  |
| PG-31559 | Internal Electrical Works | 2025-10-20 → 2025-10-21 (+1d) | 2025-12-29 → 2025-12-30 (+1d) |  | 258.24d → 259.69d |
| PG-31560 | Internal FPS Works | 2025-10-20 → 2025-10-21 (+1d) | 2025-12-29 → 2025-12-30 (+1d) |  | 257.91d → 259.36d |
| PG-31561 | Data & Communication Works | 2025-10-25 → 2025-10-27 (+2d) | 2026-01-03 → 2026-01-05 (+2d) |  | 252.91d → 254.36d |
| PG-31562 | Internal PHE Works including OHT | 2025-12-08 → 2025-12-09 (+1d) | 2026-02-18 → 2026-02-19 (+1d) |  | 214.91d → 216.36d |
| PG-31565 | Lightining Arrestor works |  | 2026-01-10 → 2026-01-12 (+2d) |  | 246.74d → 248.19d |
| PG-31564 | Electrical Panel Works | 2026-03-21 → 2026-03-23 (+2d) | 2026-05-30 → 2026-06-01 (+2d) |  | 128.24d → 129.69d |
| PG-31563 | Lift Works | 2026-04-18 → 2026-04-20 (+2d) |  |  | 104.41d → 105.86d |
| PG-31568 | Floor 2 |  |  | 66% → 85% | 469.03d → 471.21d |
| PG-31569 | Floor 3 |  |  | 18% → 38% | 454.59d → 456.77d |
| PG-31575 | Floor 9 | 2025-07-01 → 2025-07-02 (+1d) |  |  | 379.29d → 380.77d |
| PG-31576 | Floor 10 | 2025-07-19 → 2025-07-18 (-1d) | 2025-08-25 → 2025-08-23 (-2d) |  | 364.51d → 367.29d |
| PG-31587 | Floor 21 | 2025-12-10 → 2025-12-11 (+1d) |  |  | 244.96d → 247.11d |
| PG-31590 | Floor 24 | 2026-02-13 → 2026-02-14 (+1d) |  |  | 187.96d → 190.11d |

| ID | Task | Start | Finish | Complete | Total float |
| --- | --- | --- | --- | --- | --- |
| 1.7.1.3 | **Tower 3** |  | 2026-10-29 → 2026-10-31 (+2d) |  |  |
| 1.7.1.3.1 | **Units** |  | 2026-08-13 → 2026-08-17 (+4d) |  |  |
| PG-31603 | Floor 2 | 2025-05-19 → 2025-05-20 (+1d) | 2025-06-25 → 2025-06-26 (+1d) |  | 415.18d → 416.39d |
| PG-31605 | Floor 4 | 2025-06-20 → 2025-06-21 (+1d) | 2025-07-26 → 2025-07-28 (+2d) |  | 388.11d → 389.67d |
| PG-31608 | Floor 7 | 2025-08-04 → 2025-08-06 (+2d) | 2025-09-09 → 2025-09-10 (+1d) |  | 351.5d → 351.95d |
| PG-31609 | Floor 8 | 2025-08-21 → 2025-08-23 (+2d) | 2025-09-26 → 2025-09-29 (+3d) |  |  |
| PG-31610 | Floor 9 | 2025-09-03 → 2025-09-05 (+2d) | 2025-10-10 → 2025-10-13 (+3d) |  |  |
| PG-31611 | Floor 10 | 2025-09-20 → 2025-09-23 (+3d) | 2025-10-27 → 2025-10-29 (+2d) |  |  |
| PG-31612 | Floor 11 | 2025-10-04 → 2025-10-07 (+3d) | 2025-11-10 → 2025-11-12 (+2d) |  |  |
| PG-31613 | Floor 12 | 2025-10-20 → 2025-10-22 (+2d) | 2025-11-25 → 2025-11-27 (+2d) |  |  |
| PG-31614 | Floor 13 | 2025-11-03 → 2025-11-05 (+2d) | 2025-12-08 → 2025-12-10 (+2d) |  |  |
| PG-31615 | Floor 14 | 2025-11-13 → 2025-11-15 (+2d) | 2025-12-18 → 2025-12-20 (+2d) |  |  |
| PG-31617 | Floor 16 | 2025-12-09 → 2025-12-11 (+2d) | 2026-01-13 → 2026-01-15 (+2d) |  |  |
| PG-31618 | Floor 17 | 2025-12-22 → 2025-12-24 (+2d) | 2026-01-27 → 2026-01-29 (+2d) |  |  |
| PG-31619 | Floor 18 | 2026-01-03 → 2026-01-06 (+3d) | 2026-02-09 → 2026-02-11 (+2d) |  |  |
| PG-31620 | Floor 19 | 2026-01-16 → 2026-01-19 (+3d) | 2026-02-21 → 2026-02-24 (+3d) |  |  |
| PG-31621 | Floor 20 | 2026-01-31 → 2026-02-03 (+3d) | 2026-03-06 → 2026-03-10 (+4d) |  |  |
| PG-31622 | Floor 21 | 2026-02-13 → 2026-02-16 (+3d) | 2026-03-19 → 2026-03-21 (+2d) |  |  |
| PG-31623 | Floor 22 | 2026-02-26 → 2026-02-28 (+2d) | 2026-04-01 → 2026-04-03 (+2d) |  |  |
| PG-31624 | Floor 23 | 2026-03-10 → 2026-03-12 (+2d) | 2026-04-14 → 2026-04-16 (+2d) |  |  |
| PG-31625 | Floor 24 | 2026-03-24 → 2026-03-26 (+2d) | 2026-04-27 → 2026-04-29 (+2d) |  |  |
| PG-31626 | Floor 25 | 2026-04-14 → 2026-04-16 (+2d) | 2026-05-19 → 2026-05-22 (+3d) |  |  |
| PG-31627 | Floor 26 | 2026-05-07 → 2026-05-09 (+2d) | 2026-06-11 → 2026-06-13 (+2d) |  |  |
| PG-31628 | Floor 27 | 2026-05-28 → 2026-05-30 (+2d) | 2026-07-02 → 2026-07-04 (+2d) |  |  |
| PG-31629 | Floor 28 | 2026-06-18 → 2026-06-20 (+2d) | 2026-07-23 → 2026-07-25 (+2d) |  |  |
| PG-31630 | Floor 29 | 2026-07-09 → 2026-07-11 (+2d) | 2026-08-13 → 2026-08-17 (+4d) |  |  |
| 1.7.1.3.2 | **Common Areas** | 2026-03-11 → 2026-03-13 (+2d) | 2026-10-29 → 2026-10-31 (+2d) |  |  |
| PG-31632 | Internal Electrical Works | 2026-03-11 → 2026-03-13 (+2d) | 2026-03-28 → 2026-03-31 (+3d) |  |  |
| PG-31633 | Internal FPS Works | 2026-03-11 → 2026-03-13 (+2d) | 2026-03-30 → 2026-04-01 (+2d) |  |  |
| PG-31634 | Data & Communication Works | 2026-03-17 → 2026-03-19 (+2d) | 2026-04-02 → 2026-04-06 (+4d) |  |  |
| PG-31635 | Internal PHE Works including OHT | 2026-04-25 → 2026-04-28 (+3d) | 2026-05-19 → 2026-05-21 (+2d) |  |  |
| PG-31638 | Lightining Arrestor works | 2026-05-09 → 2026-05-12 (+3d) | 2026-05-18 → 2026-05-20 (+2d) |  |  |
| PG-31636 | Lift Works | 2026-08-04 → 2026-08-06 (+2d) | 2026-08-28 → 2026-09-01 (+4d) |  |  |
| PG-31631 | Common Area Civil Works | 2026-10-12 → 2026-10-14 (+2d) | 2026-10-29 → 2026-10-31 (+2d) |  |  |
| 1.7.1.4 | **Basements** |  | 2025-04-28 → 2025-04-26 (-2d) |  |  |
| PG-31639 | LBF |  |  | 54% → 95% | 472.79d → 474.97d |
| PG-31640 | UBF | 2025-04-11 → 2025-04-12 A (+1d) | 2025-04-28 → 2025-04-26 (-2d) | 0% → 46% | 464.91d → 467.86d |
| 1.7.9 | **Project InfraStructure Works ( Services & MEP )** |  | 2026-11-28 → 2026-12-02 (+4d) |  |  |
| PG-32348 | FPS & FA works ( External & Plant Room ) |  | 2025-10-13 → 2025-10-11 (-2d) |  | 408.56d → 411.17d |
| 1.7.9.1 | **Transformer Works** | 2026-10-26 → 2026-10-28 (+2d) | 2026-11-28 → 2026-12-02 (+4d) |  |  |
| PG-32336 | Transformer 01 ( Building 01 & 02 ) | 2026-10-26 → 2026-10-28 (+2d) | 2026-11-28 → 2026-12-02 (+4d) |  |  |
| 1.7.10 | **External Development Works** |  | 2026-02-12 → 2026-02-11 (-1d) |  |  |
| PG-32370 | Clubhouse |  | 2026-02-12 → 2026-02-11 (-1d) |  | 300.4d → 303d |
| 1.8 | **Handing Over** | 2026-02-12 → 2026-02-11 (-1d) | 2027-02-06 → 2027-02-09 (+3d) |  |  |
| PG-32387 | External Development Works | 2026-02-12 → 2026-02-11 (-1d) | 2026-03-07 → 2026-03-06 (-1d) |  | 300.4d → 303d |
| PG-32378 | Building 1 | 2026-10-29 → 2026-10-31 (+2d) | 2026-11-10 → 2026-11-12 (+2d) |  |  |
| PG-32386 | Project InfraStructure Works ( Services & MEP ) | 2027-01-19 → 2027-01-21 (+2d) | 2027-02-06 → 2027-02-09 (+3d) |  |  |
| 1.10 | **Post Construction Statutory Approvals** |  | 2027-02-24 → 2027-02-26 (+2d) |  |  |
| PG-32391 | Fire NOC | 2025-06-18 → 2025-06-17 (-1d) |  |  | 408.56d → 411.17d |
| PG-32396 | Pollution Control board clearance for STP |  | 2026-05-30 → 2026-06-01 (+2d) |  | 212.91d → 214.36d |
| PG-32394 | CEIG Approval - Lift | 2026-11-10 → 2026-11-12 (+2d) | 2026-12-14 → 2026-12-16 (+2d) |  |  |
| PG-32395 | Pollution Control board CFO | 2026-12-14 → 2026-12-16 (+2d) | 2027-01-19 → 2027-01-21 (+2d) |  |  |
| PG-32397 | Occupation Certificate | 2026-12-14 → 2026-12-16 (+2d) | 2027-02-24 → 2027-02-26 (+2d) |  |  |
| 2 | **Milestone** |  | 2027-02-24 → 2027-02-26 (+2d) |  |  |
| MS-0105 | Electrical Panels Delivered | 2025-08-23 → 2025-08-25 (+2d) | 2025-08-23 → 2025-08-25 (+2d) |  | 469.74d → 471.19d |
| MS-0107 | FRP Water Tanks Delivered | 2025-11-29 → 2025-12-01 (+2d) | 2025-11-29 → 2025-12-01 (+2d) |  | 387.74d → 389.19d |
| MS-3001 | Tower 3 - Structure Complete | 2026-01-05 → 2026-01-07 (+2d) | 2026-01-05 → 2026-01-07 (+2d) |  |  |
| MS-1005 | Tower 1 - MEP Final Fix Complete | 2026-01-16 → 2026-01-17 (+1d) | 2026-01-16 → 2026-01-17 (+1d) |  | 346.91d → 348.36d |
| MS-9008 | External Development Complete | 2026-02-12 → 2026-02-11 (-1d) | 2026-02-12 → 2026-02-11 (-1d) |  | 325.06d → 327.67d |
| MS-1006 | Tower 1 - Lifts Commissioned | 2026-03-27 → 2026-03-28 (+1d) | 2026-03-27 → 2026-03-28 (+1d) |  | 288.07d → 289.52d |
| MS-3002 | Tower 3 - MEP 1st Fix Complete | 2026-04-08 → 2026-04-10 (+2d) | 2026-04-08 → 2026-04-10 (+2d) |  |  |
| MS-1007 | Tower 1 - T&C Complete | 2026-04-18 → 2026-04-20 (+2d) | 2026-04-18 → 2026-04-20 (+2d) |  | 268.74d → 270.19d |
| MS-3003 | Tower 3 - MEP 2nd Fix Complete | 2026-05-13 → 2026-05-15 (+2d) | 2026-05-13 → 2026-05-15 (+2d) |  |  |
| MS-3005 | Tower 3 - MEP Final Fix Complete | 2026-06-05 → 2026-06-08 (+3d) | 2026-06-05 → 2026-06-08 (+3d) |  |  |
| MS-3004 | Tower 3 - Internal Finishes Complete | 2026-06-27 → 2026-06-30 (+3d) | 2026-06-27 → 2026-06-30 (+3d) |  |  |
| MS-0103 | Transformer Delivered to Site | 2026-07-23 → 2026-07-25 (+2d) | 2026-07-23 → 2026-07-25 (+2d) |  |  |
| MS-3006 | Tower 3 - Lifts Commissioned | 2026-07-23 → 2026-07-27 (+4d) | 2026-07-23 → 2026-07-27 (+4d) |  |  |
| MS-9007 | Landscape Complete | 2026-08-04 → 2026-08-06 (+2d) | 2026-08-04 → 2026-08-06 (+2d) |  |  |
| MS-9002 | Transformer Charged | 2026-10-26 → 2026-10-28 (+2d) | 2026-10-26 → 2026-10-28 (+2d) |  |  |
| MS-9990 | Snagging Complete | 2026-11-28 → 2026-12-02 (+4d) | 2026-11-28 → 2026-12-02 (+4d) |  |  |

| ID | Task | Start | Finish |
| --- | --- | --- | --- |
| MS-9999 | Project Finish / Handover | 2027-02-06 → 2027-02-09 (+3d) | 2027-02-06 → 2027-02-09 (+3d) |
| MS-9991 | Statutory Approvals Obtained | 2027-02-24 → 2027-02-26 (+2d) | 2027-02-24 → 2027-02-26 (+2d) |

## Version 7 (data date 2025-04-25, saved 2026-09-20, file APX_2025-04-25.xer)

Last finish 2027-03-04 → 2027-03-05 (+1d). Complete tasks 1066 → 1105.

Changed:

| ID | Task | Start | Finish | Complete | Total float |
| --- | --- | --- | --- | --- | --- |
| 1 | **Project Genisis** |  | 2027-03-04 → 2027-03-05 (+1d) |  |  |
| PG-32433 | Project Close Out | 2027-02-26 → 2027-02-27 (+1d) | 2027-03-04 → 2027-03-05 (+1d) |  |  |
| 1.2.4 | **FRP Tanks Supply** | 2025-05-05 → 2025-05-03 (-2d) | 2025-12-01 → 2025-11-29 (-2d) |  |  |
| PG-10024 | Purchase Order works | 2025-05-05 → 2025-05-03 (-2d) | 2025-05-13 → 2025-05-12 (-1d) |  | 214.36d → 215.83d |
| PG-10025 | Materials Supply to site ( Tower - 1, 2, 3, 9, 14, 18 & 19 ) | 2025-06-30 → 2025-06-28 (-2d) | 2025-08-02 → 2025-08-01 (-1d) |  | 214.36d → 215.83d |
| PG-10026 | Materials Supply to site ( Tower - 4, 8, 10 & 13 ) | 2025-08-01 → 2025-07-31 (-1d) | 2025-09-08 → 2025-09-06 (-2d) |  | 214.36d → 215.83d |
| PG-10027 | Materials Supply to site ( Tower - 5, 6, 7, 11, 12, 15, 16 & 17 ) | 2025-10-27 → 2025-10-25 (-2d) | 2025-12-01 → 2025-11-29 (-2d) |  | 214.36d → 215.83d |
| PG-10028 | Purchase Order works | 2025-04-22 A |  | 0% → 40% | 105.86d → 106.97d |
| 1.2.6 | **Electrical Panel Supply** |  | 2025-08-25 → 2025-08-23 (-2d) |  |  |
| PG-10031 | Purchase Order works |  | 2025-04-22 → 2025-04-23 A (+1d) | 59% → 100% | 215.14d → none |
| PG-10032 | Materials Supply to site | 2025-07-21 → 2025-07-19 (-2d) | 2025-08-25 → 2025-08-23 (-2d) |  | 138.36d → 139.83d |
| 1.2.8 | **Transformer Supply** | 2026-02-24 → 2026-02-25 (+1d) |  |  |  |
| PG-10035 | Purchase Order works | 2026-02-24 → 2026-02-25 (+1d) |  |  |  |
| PG-10036 | Materials Supply to site | 2026-06-20 → 2026-06-22 (+2d) |  |  |  |
| 1.3 | **Construction** |  | 2026-10-14 → 2026-10-15 (+1d) |  |  |
| 1.3.1 | **Building 1** |  | 2026-10-14 → 2026-10-15 (+1d) |  |  |
| 1.3.1.1.2 | **Structure works** |  | 2025-08-18 → 2025-08-16 (-2d) |  |  |
| PG-10158 | Formwork |  | 2025-04-18 → 2025-04-19 A (+1d) | 99% → 100% | 43.36d → none |
| PG-10159 | Reinforcement |  | 2025-04-21 A | 37% → 100% | 43.36d → none |
| PG-10160 | Concrete | 2025-04-21 A | 2025-04-22 A | 0% → 100% | 43.36d → none |
| 1.3.1.1.2.21 | **Floor 18** |  | 2025-05-05 → 2025-05-03 (-2d) |  |  |
| 1.3.1.1.2.21.1 | **Columns / shear walls** |  | 2025-04-29 → 2025-04-28 (-1d) |  |  |
| PG-10161 | Reinforcement | 2025-04-22 A | 2025-04-26 → 2025-04-25 (-1d) | 0% → 79% | 43.36d → 44.83d |
| PG-10162 | Formwork | 2025-04-24 A | 2025-04-29 → 2025-04-28 (-1d) | 0% → 31% | 43.36d → 44.83d |
| 1.3.1.1.2.21.2 | **Slab, Beams & Staircase** | 2025-04-28 → 2025-04-26 (-2d) | 2025-05-05 → 2025-05-03 (-2d) |  |  |
| PG-10163 | Formwork | 2025-04-28 → 2025-04-26 (-2d) | 2025-05-01 → 2025-04-30 (-1d) |  | 43.36d → 44.83d |
| PG-10164 | Reinforcement | 2025-04-30 → 2025-04-29 (-1d) | 2025-05-03 → 2025-05-02 (-1d) |  | 43.36d → 44.83d |
| PG-10165 | Concrete | 2025-05-03 → 2025-05-02 (-1d) | 2025-05-05 → 2025-05-03 (-2d) |  | 43.36d → 44.83d |
| 1.3.1.1.2.22 | **Floor 19** | 2025-05-05 → 2025-05-03 (-2d) | 2025-05-17 → 2025-05-16 (-1d) |  |  |
| 1.3.1.1.2.22.1 | **Columns / shear walls** | 2025-05-05 → 2025-05-03 (-2d) | 2025-05-12 → 2025-05-10 (-2d) |  |  |
| PG-10166 | Reinforcement | 2025-05-05 → 2025-05-03 (-2d) | 2025-05-09 → 2025-05-08 (-1d) |  | 43.36d → 44.83d |
| PG-10167 | Formwork | 2025-05-07 → 2025-05-06 (-1d) | 2025-05-12 → 2025-05-10 (-2d) |  | 43.36d → 44.83d |
| 1.3.1.1.2.22.2 | **Slab, Beams & Staircase** | 2025-05-10 → 2025-05-09 (-1d) | 2025-05-17 → 2025-05-16 (-1d) |  |  |
| PG-10168 | Formwork | 2025-05-10 → 2025-05-09 (-1d) | 2025-05-14 → 2025-05-13 (-1d) |  | 43.36d → 44.83d |
| PG-10169 | Reinforcement | 2025-05-13 → 2025-05-12 (-1d) | 2025-05-16 → 2025-05-15 (-1d) |  | 43.36d → 44.83d |
| PG-10170 | Concrete | 2025-05-16 → 2025-05-15 (-1d) | 2025-05-17 → 2025-05-16 (-1d) |  | 43.36d → 44.83d |
| 1.3.1.1.2.23 | **Floor 20** | 2025-05-17 → 2025-05-16 (-1d) | 2025-05-30 → 2025-05-29 (-1d) |  |  |
| 1.3.1.1.2.23.1 | **Columns / shear walls** | 2025-05-17 → 2025-05-16 (-1d) | 2025-05-24 → 2025-05-23 (-1d) |  |  |
| PG-10171 | Reinforcement | 2025-05-17 → 2025-05-16 (-1d) | 2025-05-22 → 2025-05-21 (-1d) |  | 43.36d → 44.83d |
| PG-10172 | Formwork | 2025-05-20 → 2025-05-19 (-1d) | 2025-05-24 → 2025-05-23 (-1d) |  | 43.36d → 44.83d |
| 1.3.1.1.2.23.2 | **Slab, Beams & Staircase** | 2025-05-23 → 2025-05-22 (-1d) | 2025-05-30 → 2025-05-29 (-1d) |  |  |
| PG-10173 | Formwork | 2025-05-23 → 2025-05-22 (-1d) | 2025-05-27 → 2025-05-26 (-1d) |  | 43.36d → 44.83d |
| PG-10174 | Reinforcement | 2025-05-26 → 2025-05-24 (-2d) | 2025-05-29 → 2025-05-28 (-1d) |  | 43.36d → 44.83d |
| PG-10175 | Concrete | 2025-05-29 → 2025-05-28 (-1d) | 2025-05-30 → 2025-05-29 (-1d) |  | 43.36d → 44.83d |
| 1.3.1.1.2.24 | **Floor 21** | 2025-05-30 → 2025-05-29 (-1d) | 2025-06-12 → 2025-06-11 (-1d) |  |  |
| 1.3.1.1.2.24.1 | **Columns / shear walls** | 2025-05-30 → 2025-05-29 (-1d) | 2025-06-06 → 2025-06-05 (-1d) |  |  |
| PG-10176 | Reinforcement | 2025-05-30 → 2025-05-29 (-1d) | 2025-06-04 → 2025-06-03 (-1d) |  | 43.36d → 44.83d |
| PG-10177 | Formwork | 2025-06-02 → 2025-05-31 (-2d) | 2025-06-06 → 2025-06-05 (-1d) |  | 43.36d → 44.83d |
| 1.3.1.1.2.24.2 | **Slab, Beams & Staircase** | 2025-06-05 → 2025-06-04 (-1d) | 2025-06-12 → 2025-06-11 (-1d) |  |  |
| PG-10178 | Formwork | 2025-06-05 → 2025-06-04 (-1d) | 2025-06-09 → 2025-06-07 (-2d) |  | 43.36d → 44.83d |
| PG-10179 | Reinforcement | 2025-06-07 → 2025-06-06 (-1d) | 2025-06-11 → 2025-06-10 (-1d) |  | 43.36d → 44.83d |
| PG-10180 | Concrete | 2025-06-11 → 2025-06-10 (-1d) | 2025-06-12 → 2025-06-11 (-1d) |  | 43.36d → 44.83d |
| 1.3.1.1.2.25 | **Floor 22** | 2025-06-12 → 2025-06-11 (-1d) | 2025-06-25 → 2025-06-24 (-1d) |  |  |
| 1.3.1.1.2.25.1 | **Columns / shear walls** | 2025-06-12 → 2025-06-11 (-1d) | 2025-06-19 → 2025-06-18 (-1d) |  |  |
| PG-10181 | Reinforcement | 2025-06-12 → 2025-06-11 (-1d) | 2025-06-17 → 2025-06-16 (-1d) |  | 43.36d → 44.83d |
| PG-10182 | Formwork | 2025-06-14 → 2025-06-13 (-1d) | 2025-06-19 → 2025-06-18 (-1d) |  | 43.36d → 44.83d |
| 1.3.1.1.2.25.2 | **Slab, Beams & Staircase** | 2025-06-18 → 2025-06-17 (-1d) | 2025-06-25 → 2025-06-24 (-1d) |  |  |
| PG-10183 | Formwork | 2025-06-18 → 2025-06-17 (-1d) | 2025-06-21 → 2025-06-20 (-1d) |  | 43.36d → 44.83d |
| PG-10184 | Reinforcement | 2025-06-20 → 2025-06-19 (-1d) | 2025-06-24 → 2025-06-23 (-1d) |  | 43.36d → 44.83d |
| PG-10185 | Concrete | 2025-06-24 → 2025-06-23 (-1d) | 2025-06-25 → 2025-06-24 (-1d) |  | 43.36d → 44.83d |
| 1.3.1.1.2.26 | **Floor 23** | 2025-06-25 → 2025-06-24 (-1d) | 2025-07-08 → 2025-07-07 (-1d) |  |  |
| 1.3.1.1.2.26.1 | **Columns / shear walls** | 2025-06-25 → 2025-06-24 (-1d) | 2025-07-02 → 2025-07-01 (-1d) |  |  |
| PG-10186 | Reinforcement | 2025-06-25 → 2025-06-24 (-1d) | 2025-06-30 → 2025-06-28 (-2d) |  | 43.36d → 44.83d |
| PG-10187 | Formwork | 2025-06-27 → 2025-06-26 (-1d) | 2025-07-02 → 2025-07-01 (-1d) |  | 43.36d → 44.83d |
| 1.3.1.1.2.26.2 | **Slab, Beams & Staircase** | 2025-07-01 → 2025-06-30 (-1d) | 2025-07-08 → 2025-07-07 (-1d) |  |  |
| PG-10188 | Formwork | 2025-07-01 → 2025-06-30 (-1d) | 2025-07-04 → 2025-07-03 (-1d) |  | 43.36d → 44.83d |
| PG-10189 | Reinforcement | 2025-07-03 → 2025-07-02 (-1d) | 2025-07-07 → 2025-07-05 (-2d) |  | 43.36d → 44.83d |
| PG-10190 | Concrete | 2025-07-07 → 2025-07-05 (-2d) | 2025-07-08 → 2025-07-07 (-1d) |  | 43.36d → 44.83d |
| 1.3.1.1.2.27 | **Above Terrace Floor** | 2025-07-08 → 2025-07-07 (-1d) | 2025-08-18 → 2025-08-16 (-2d) |  |  |
| 1.3.1.1.2.27.1 | **Columns / shear walls/Parapet Walls** | 2025-07-08 → 2025-07-07 (-1d) | 2025-07-22 → 2025-07-21 (-1d) |  |  |

| ID | Task | Start | Finish | Complete | Total float |
| --- | --- | --- | --- | --- | --- |
| PG-10191 | Reinforcement | 2025-07-08 → 2025-07-07 (-1d) | 2025-07-12 → 2025-07-11 (-1d) |  | 120.86d → 122.33d |
| PG-10192 | Formwork | 2025-07-10 → 2025-07-09 (-1d) | 2025-07-16 → 2025-07-15 (-1d) |  | 120.86d → 122.33d |
| PG-10193 | Concrete | 2025-07-16 → 2025-07-15 (-1d) | 2025-07-22 → 2025-07-21 (-1d) |  | 120.86d → 122.33d |
| 1.3.1.1.2.27.2 | **Slab, Beams & Staircase Head rooms, Lift headroom** | 2025-07-12 → 2025-07-11 (-1d) | 2025-08-18 → 2025-08-16 (-2d) |  |  |
| PG-10197 | Terrace Waterproofing and Protective finishing. | 2025-07-12 → 2025-07-11 (-1d) | 2025-08-18 → 2025-08-16 (-2d) |  | 246.02d → 247.49d |
| PG-10194 | Formwork | 2025-07-22 → 2025-07-21 (-1d) | 2025-07-28 → 2025-07-26 (-2d) |  | 246.02d → 247.49d |
| PG-10195 | Reinforcement | 2025-07-28 → 2025-07-26 (-2d) | 2025-08-02 → 2025-08-01 (-1d) |  | 246.02d → 247.49d |
| PG-10196 | Concrete | 2025-08-02 → 2025-08-01 (-1d) | 2025-08-05 → 2025-08-04 (-1d) |  | 246.02d → 247.49d |
| 1.3.1.1.3 | **MEP Internal works** |  | 2026-01-17 → 2026-01-16 (-1d) |  |  |
| 1.3.1.1.3.10 | **Floor 7** |  | 2025-05-01 → 2025-05-02 (+1d) |  |  |
| 1.3.1.1.3.10.1 | **PHE Works** |  | 2025-05-01 → 2025-05-02 (+1d) |  |  |
| PG-10270 | Final Fix - CP & Sanitary fixtures | 2025-04-19 → 2025-04-21 A (+2d) | 2025-05-01 → 2025-05-02 (+1d) | 0% → 33% | 405.7d → 405.43d |
| PG-10273 | Final Fix - Smoke & heat detectors, FHC , FAS Etc. | 2025-04-19 → 2025-04-21 A (+2d) |  | 0% → 46% | 405.7d → 406d |
| 1.3.1.1.3.11 | **Floor 8** |  | 2025-05-15 → 2025-05-16 (+1d) |  |  |
| 1.3.1.1.3.11.1 | **PHE Works** |  | 2025-05-15 → 2025-05-16 (+1d) |  |  |
| PG-10279 | Final Fix - CP & Sanitary fixtures | 2025-05-03 → 2025-05-05 (+2d) | 2025-05-15 → 2025-05-16 (+1d) |  | 391.49d → 391.64d |
| 1.3.1.1.3.11.2 | **Fire Fighting Works** |  | 2025-05-15 → 2025-05-16 (+1d) |  |  |
| PG-10281 | 2nd Fix - Sprinkler fixing & Pressure testing |  | 2025-04-24 A | 57% → 100% | 400.19d → none |
| PG-10282 | Final Fix - Smoke & heat detectors, FHC , FAS Etc. | 2025-05-03 → 2025-05-05 (+2d) | 2025-05-15 → 2025-05-16 (+1d) |  | 391.49d → 391.64d |
| 1.3.1.1.3.11.3 | **Electrical Works** |  | 2025-05-15 → 2025-05-16 (+1d) |  |  |
| PG-10284 | 2nd Fix - Wiring works |  | 2025-04-23 → 2025-04-22 A (-1d) | 86% → 100% | 405.69d → none |
| PG-10285 | Final Fix - Electrical Fixtures |  | 2025-05-15 → 2025-05-16 (+1d) |  | 391.49d → 391.64d |
| 1.3.1.1.3.12 | **Floor 9** |  | 2025-05-30 → 2025-05-29 (-1d) |  |  |
| 1.3.1.1.3.12.1 | **PHE Works** |  | 2025-05-30 → 2025-05-29 (-1d) |  |  |
| PG-10288 | Final Fix - CP & Sanitary fixtures | 2025-05-19 → 2025-05-17 (-2d) | 2025-05-30 → 2025-05-29 (-1d) |  | 379.94d → 381.52d |
| 1.3.1.1.3.12.2 | **Fire Fighting Works** |  | 2025-05-30 → 2025-05-29 (-1d) |  |  |
| PG-10290 | 2nd Fix - Sprinkler fixing & Pressure testing | 2025-04-28 → 2025-04-26 (-2d) | 2025-05-09 → 2025-05-08 (-1d) |  | 388.27d → 389.85d |
| PG-10291 | Final Fix - Smoke & heat detectors, FHC , FAS Etc. | 2025-05-19 → 2025-05-17 (-2d) | 2025-05-30 → 2025-05-29 (-1d) |  | 379.94d → 381.52d |
| 1.3.1.1.3.12.3 | **Electrical Works** |  | 2025-05-30 → 2025-05-29 (-1d) |  |  |
| PG-10293 | 2nd Fix - Wiring works | 2025-04-21 A | 2025-05-08 → 2025-05-07 (-1d) | 0% → 39% | 393.77d → 395.35d |
| PG-10294 | Final Fix - Electrical Fixtures | 2025-05-24 → 2025-05-22 (-2d) | 2025-05-30 → 2025-05-29 (-1d) |  | 379.94d → 381.52d |
| PG-10298 | 1st Fix - Piping and Shaft hydrant works |  | 2025-04-19 A | 93% → 100% | 415.61d → none |
| 1.3.1.1.3.14 | **Floor 11** |  | 2025-06-26 → 2025-06-27 (+1d) |  |  |
| 1.3.1.1.3.14.1 | **PHE Works** |  | 2025-06-26 → 2025-06-27 (+1d) |  |  |
| PG-10304 | 1st Fix - Piping works |  | 2025-04-23 → 2025-04-24 A (+1d) | 63% → 100% | 355.55d → none |
| PG-10305 | 2nd Fix - diverter fixing & Pressure testing | 2025-04-18 → 2025-04-19 A (+1d) | 2025-04-30 → 2025-05-01 (+1d) | 0% → 49% | 355.55d → 355.08d |
| PG-10306 | Final Fix - CP & Sanitary fixtures | 2025-06-16 → 2025-06-17 (+1d) | 2025-06-26 → 2025-06-27 (+1d) |  | 355.55d → 355.08d |
| 1.3.1.1.3.14.2 | **Fire Fighting Works** |  | 2025-06-26 → 2025-06-27 (+1d) |  |  |
| PG-10307 | 1st Fix - Piping and Shaft hydrant works |  |  | 3% → 52% | 404.79d → 405.17d |
| PG-10308 | 2nd Fix - Sprinkler fixing & Pressure testing | 2025-05-26 → 2025-05-27 (+1d) | 2025-06-06 → 2025-06-07 (+1d) |  | 363.55d → 363.08d |
| PG-10309 | Final Fix - Smoke & heat detectors, FHC , FAS Etc. | 2025-06-16 → 2025-06-17 (+1d) | 2025-06-26 → 2025-06-27 (+1d) |  | 355.55d → 355.08d |
| 1.3.1.1.3.14.3 | **Electrical Works** |  | 2025-06-26 → 2025-06-27 (+1d) |  |  |
| PG-10311 | 2nd Fix - Wiring works | 2025-05-19 → 2025-05-20 (+1d) | 2025-06-05 → 2025-06-06 (+1d) |  | 368.38d → 367.92d |
| PG-10312 | Final Fix - Electrical Fixtures | 2025-06-20 → 2025-06-21 (+1d) | 2025-06-26 → 2025-06-27 (+1d) |  | 355.55d → 355.08d |
| 1.3.1.1.3.15 | **Floor 12** |  | 2025-07-10 → 2025-07-09 (-1d) |  |  |
| 1.3.1.1.3.15.1 | **PHE Works** |  | 2025-07-10 → 2025-07-09 (-1d) |  |  |
| PG-10313 | 1st Fix - Piping works | 2025-04-22 A | 2025-05-06 → 2025-05-05 (-1d) | 0% → 26% | 345.69d → 347.08d |
| PG-10314 | 2nd Fix - diverter fixing & Pressure testing | 2025-05-01 → 2025-04-30 (-1d) | 2025-05-13 → 2025-05-12 (-1d) |  | 345.69d → 347.08d |
| PG-10315 | Final Fix - CP & Sanitary fixtures | 2025-06-28 → 2025-06-27 (-1d) | 2025-07-10 → 2025-07-09 (-1d) |  | 345.69d → 347.08d |
| 1.3.1.1.3.15.2 | **Fire Fighting Works** | 2025-05-01 → 2025-04-30 (-1d) | 2025-07-10 → 2025-07-09 (-1d) |  |  |
| PG-10316 | 1st Fix - Piping and Shaft hydrant works | 2025-05-01 → 2025-04-30 (-1d) | 2025-05-15 → 2025-05-14 (-1d) |  | 392.52d → 394.61d |
| PG-10317 | 2nd Fix - Sprinkler fixing & Pressure testing | 2025-06-07 → 2025-06-06 (-1d) | 2025-06-19 → 2025-06-18 (-1d) |  | 353.36d → 354.75d |
| PG-10318 | Final Fix - Smoke & heat detectors, FHC , FAS Etc. | 2025-06-28 → 2025-06-27 (-1d) | 2025-07-10 → 2025-07-09 (-1d) |  | 345.69d → 347.08d |
| 1.3.1.1.3.15.3 | **Electrical Works** |  | 2025-07-10 → 2025-07-09 (-1d) |  |  |
| PG-10319 | 1st Fix - GI wire pulling | 2025-04-22 A | 2025-05-01 → 2025-04-30 (-1d) | 0% → 47% | 392.52d → 394.61d |
| PG-10320 | 2nd Fix - Wiring works | 2025-05-31 → 2025-05-30 (-1d) | 2025-06-18 → 2025-06-17 (-1d) |  | 358.36d → 359.75d |
| PG-10321 | Final Fix - Electrical Fixtures | 2025-07-03 → 2025-07-02 (-1d) | 2025-07-10 → 2025-07-09 (-1d) |  | 345.69d → 347.08d |
| 1.3.1.1.3.16 | **Floor 13** | 2025-05-05 → 2025-05-03 (-2d) | 2025-07-25 → 2025-07-24 (-1d) |  |  |
| 1.3.1.1.3.16.1 | **PHE Works** | 2025-05-05 → 2025-05-03 (-2d) | 2025-07-25 → 2025-07-24 (-1d) |  |  |
| PG-10322 | 1st Fix - Piping works | 2025-05-05 → 2025-05-03 (-2d) | 2025-05-19 → 2025-05-17 (-2d) |  | 333.19d → 334.66d |
| PG-10323 | 2nd Fix - diverter fixing & Pressure testing | 2025-05-14 → 2025-05-13 (-1d) | 2025-05-26 → 2025-05-24 (-2d) |  | 333.19d → 334.66d |
| PG-10324 | Final Fix - CP & Sanitary fixtures | 2025-07-14 → 2025-07-12 (-2d) | 2025-07-25 → 2025-07-24 (-1d) |  | 333.19d → 334.66d |
| 1.3.1.1.3.16.2 | **Fire Fighting Works** | 2025-05-14 → 2025-05-13 (-1d) | 2025-07-25 → 2025-07-24 (-1d) |  |  |
| PG-10325 | 1st Fix - Piping and Shaft hydrant works | 2025-05-14 → 2025-05-13 (-1d) | 2025-05-28 → 2025-05-27 (-1d) |  | 377.86d → 379.33d |
| PG-10326 | 2nd Fix - Sprinkler fixing & Pressure testing | 2025-06-20 → 2025-06-19 (-1d) | 2025-07-02 → 2025-07-01 (-1d) |  | 343.19d → 344.66d |
| PG-10327 | Final Fix - Smoke & heat detectors, FHC , FAS Etc. | 2025-07-14 → 2025-07-12 (-2d) | 2025-07-25 → 2025-07-24 (-1d) |  | 333.19d → 334.66d |
| 1.3.1.1.3.16.3 | **Electrical Works** | 2025-05-05 → 2025-05-03 (-2d) | 2025-07-25 → 2025-07-24 (-1d) |  |  |
| PG-10328 | 1st Fix - GI wire pulling | 2025-05-05 → 2025-05-03 (-2d) | 2025-05-14 → 2025-05-13 (-1d) |  | 377.86d → 379.33d |
| PG-10329 | 2nd Fix - Wiring works | 2025-06-13 → 2025-06-12 (-1d) | 2025-07-01 → 2025-06-30 (-1d) |  | 348.19d → 349.66d |
| PG-10330 | Final Fix - Electrical Fixtures | 2025-07-18 → 2025-07-17 (-1d) | 2025-07-25 → 2025-07-24 (-1d) |  | 333.19d → 334.66d |

| ID | Task | Start | Finish | Total float |
| --- | --- | --- | --- | --- |
| 1.3.1.1.3.17 | **Floor 14** | 2025-05-17 → 2025-05-16 (-1d) | 2025-08-07 → 2025-08-06 (-1d) |  |
| 1.3.1.1.3.17.1 | **PHE Works** | 2025-05-17 → 2025-05-16 (-1d) | 2025-08-07 → 2025-08-06 (-1d) |  |
| PG-10331 | 1st Fix - Piping works | 2025-05-17 → 2025-05-16 (-1d) | 2025-05-31 → 2025-05-30 (-1d) | 322.19d → 323.66d |
| PG-10332 | 2nd Fix - diverter fixing & Pressure testing | 2025-05-27 → 2025-05-26 (-1d) | 2025-06-07 → 2025-06-06 (-1d) | 322.19d → 323.66d |
| PG-10333 | Final Fix - CP & Sanitary fixtures | 2025-07-26 → 2025-07-25 (-1d) | 2025-08-07 → 2025-08-06 (-1d) | 322.19d → 323.66d |
| 1.3.1.1.3.17.2 | **Fire Fighting Works** | 2025-05-27 → 2025-05-26 (-1d) | 2025-08-07 → 2025-08-06 (-1d) |  |
| PG-10334 | 1st Fix - Piping and Shaft hydrant works | 2025-05-27 → 2025-05-26 (-1d) | 2025-06-10 → 2025-06-09 (-1d) | 368.86d → 370.33d |
| PG-10335 | 2nd Fix - Sprinkler fixing & Pressure testing | 2025-07-03 → 2025-07-02 (-1d) | 2025-07-15 → 2025-07-14 (-1d) | 332.19d → 333.66d |
| PG-10336 | Final Fix - Smoke & heat detectors, FHC , FAS Etc. | 2025-07-26 → 2025-07-25 (-1d) | 2025-08-07 → 2025-08-06 (-1d) | 322.19d → 323.66d |
| 1.3.1.1.3.17.3 | **Electrical Works** | 2025-05-17 → 2025-05-16 (-1d) | 2025-08-07 → 2025-08-06 (-1d) |  |
| PG-10337 | 1st Fix - GI wire pulling | 2025-05-17 → 2025-05-16 (-1d) | 2025-05-27 → 2025-05-26 (-1d) | 368.86d → 370.33d |
| PG-10338 | 2nd Fix - Wiring works | 2025-06-26 → 2025-06-25 (-1d) | 2025-07-14 → 2025-07-12 (-2d) | 337.19d → 338.66d |
| PG-10339 | Final Fix - Electrical Fixtures | 2025-07-31 → 2025-07-30 (-1d) | 2025-08-07 → 2025-08-06 (-1d) | 322.19d → 323.66d |
| 1.3.1.1.3.18 | **Floor 15** | 2025-05-30 → 2025-05-29 (-1d) | 2025-08-20 → 2025-08-19 (-1d) |  |
| 1.3.1.1.3.18.1 | **PHE Works** | 2025-05-30 → 2025-05-29 (-1d) | 2025-08-20 → 2025-08-19 (-1d) |  |
| PG-10340 | 1st Fix - Piping works | 2025-05-30 → 2025-05-29 (-1d) | 2025-06-13 → 2025-06-12 (-1d) | 129.69d → 131.16d |
| PG-10341 | 2nd Fix - diverter fixing & Pressure testing | 2025-06-09 → 2025-06-07 (-2d) | 2025-06-20 → 2025-06-19 (-1d) | 129.69d → 131.16d |
| PG-10342 | Final Fix - CP & Sanitary fixtures | 2025-08-07 → 2025-08-06 (-1d) | 2025-08-20 → 2025-08-19 (-1d) | 312.19d → 313.66d |
| 1.3.1.1.3.18.2 | **Fire Fighting Works** | 2025-06-09 → 2025-06-07 (-2d) | 2025-08-20 → 2025-08-19 (-1d) |  |
| PG-10343 | 1st Fix - Piping and Shaft hydrant works | 2025-06-09 → 2025-06-07 (-2d) | 2025-06-23 → 2025-06-21 (-2d) | 358.86d → 360.33d |
| PG-10344 | 2nd Fix - Sprinkler fixing & Pressure testing | 2025-07-16 → 2025-07-15 (-1d) | 2025-07-28 → 2025-07-26 (-2d) | 321.19d → 322.66d |
| PG-10345 | Final Fix - Smoke & heat detectors, FHC , FAS Etc. | 2025-08-07 → 2025-08-06 (-1d) | 2025-08-20 → 2025-08-19 (-1d) | 312.19d → 313.66d |
| 1.3.1.1.3.18.3 | **Electrical Works** | 2025-05-30 → 2025-05-29 (-1d) | 2025-08-20 → 2025-08-19 (-1d) |  |
| PG-10346 | 1st Fix - GI wire pulling | 2025-05-30 → 2025-05-29 (-1d) | 2025-06-09 → 2025-06-07 (-2d) | 358.86d → 360.33d |
| PG-10347 | 2nd Fix - Wiring works | 2025-07-09 → 2025-07-08 (-1d) | 2025-07-26 → 2025-07-25 (-1d) | 326.19d → 327.66d |
| PG-10348 | Final Fix - Electrical Fixtures | 2025-08-12 → 2025-08-11 (-1d) | 2025-08-20 → 2025-08-19 (-1d) | 312.19d → 313.66d |
| 1.3.1.1.3.19 | **Floor 16** | 2025-06-12 → 2025-06-11 (-1d) | 2025-09-02 → 2025-09-01 (-1d) |  |
| 1.3.1.1.3.19.1 | **PHE Works** | 2025-06-12 → 2025-06-11 (-1d) | 2025-09-02 → 2025-09-01 (-1d) |  |
| PG-10349 | 1st Fix - Piping works | 2025-06-12 → 2025-06-11 (-1d) | 2025-06-26 → 2025-06-25 (-1d) | 301.19d → 302.66d |
| PG-10350 | 2nd Fix - diverter fixing & Pressure testing | 2025-06-21 → 2025-06-20 (-1d) | 2025-07-03 → 2025-07-02 (-1d) | 301.19d → 302.66d |
| PG-10351 | Final Fix - CP & Sanitary fixtures | 2025-08-21 → 2025-08-20 (-1d) | 2025-09-02 → 2025-09-01 (-1d) | 301.19d → 302.66d |
| 1.3.1.1.3.19.2 | **Fire Fighting Works** | 2025-06-21 → 2025-06-20 (-1d) | 2025-09-02 → 2025-09-01 (-1d) |  |
| PG-10352 | 1st Fix - Piping and Shaft hydrant works | 2025-06-21 → 2025-06-20 (-1d) | 2025-07-05 → 2025-07-04 (-1d) | 347.86d → 349.33d |
| PG-10353 | 2nd Fix - Sprinkler fixing & Pressure testing | 2025-07-29 → 2025-07-28 (-1d) | 2025-08-09 → 2025-08-08 (-1d) | 310.19d → 311.66d |
| PG-10354 | Final Fix - Smoke & heat detectors, FHC , FAS Etc. | 2025-08-21 → 2025-08-20 (-1d) | 2025-09-02 → 2025-09-01 (-1d) | 301.19d → 302.66d |
| 1.3.1.1.3.19.3 | **Electrical Works** | 2025-06-12 → 2025-06-11 (-1d) | 2025-09-02 → 2025-09-01 (-1d) |  |
| PG-10355 | 1st Fix - GI wire pulling | 2025-06-12 → 2025-06-11 (-1d) | 2025-06-21 → 2025-06-20 (-1d) | 347.86d → 349.33d |
| PG-10356 | 2nd Fix - Wiring works | 2025-07-22 → 2025-07-21 (-1d) | 2025-08-08 → 2025-08-07 (-1d) | 315.19d → 316.66d |
| PG-10357 | Final Fix - Electrical Fixtures | 2025-08-26 → 2025-08-25 (-1d) | 2025-09-02 → 2025-09-01 (-1d) | 301.19d → 302.66d |
| 1.3.1.1.3.20 | **Floor 17** | 2025-06-25 → 2025-06-24 (-1d) | 2025-09-15 → 2025-09-13 (-2d) |  |
| 1.3.1.1.3.20.1 | **PHE Works** | 2025-06-25 → 2025-06-24 (-1d) | 2025-09-15 → 2025-09-13 (-2d) |  |
| PG-10358 | 1st Fix - Piping works | 2025-06-25 → 2025-06-24 (-1d) | 2025-07-09 → 2025-07-08 (-1d) | 290.19d → 291.66d |
| PG-10359 | 2nd Fix - diverter fixing & Pressure testing | 2025-07-04 → 2025-07-03 (-1d) | 2025-07-16 → 2025-07-15 (-1d) | 290.19d → 291.66d |
| PG-10360 | Final Fix - CP & Sanitary fixtures | 2025-09-03 → 2025-09-02 (-1d) | 2025-09-15 → 2025-09-13 (-2d) | 290.19d → 291.66d |
| 1.3.1.1.3.20.2 | **Fire Fighting Works** | 2025-07-04 → 2025-07-03 (-1d) | 2025-09-15 → 2025-09-13 (-2d) |  |
| PG-10361 | 1st Fix - Piping and Shaft hydrant works | 2025-07-04 → 2025-07-03 (-1d) | 2025-07-18 → 2025-07-17 (-1d) | 336.86d → 338.33d |
| PG-10362 | 2nd Fix - Sprinkler fixing & Pressure testing | 2025-08-11 → 2025-08-09 (-2d) | 2025-08-23 → 2025-08-22 (-1d) | 299.19d → 300.66d |
| PG-10363 | Final Fix - Smoke & heat detectors, FHC , FAS Etc. | 2025-09-03 → 2025-09-02 (-1d) | 2025-09-15 → 2025-09-13 (-2d) | 290.19d → 291.66d |
| 1.3.1.1.3.20.3 | **Electrical Works** | 2025-06-25 → 2025-06-24 (-1d) | 2025-09-15 → 2025-09-13 (-2d) |  |
| PG-10364 | 1st Fix - GI wire pulling | 2025-06-25 → 2025-06-24 (-1d) | 2025-07-04 → 2025-07-03 (-1d) | 336.86d → 338.33d |
| PG-10365 | 2nd Fix - Wiring works | 2025-08-04 → 2025-08-02 (-2d) | 2025-08-22 → 2025-08-21 (-1d) | 304.19d → 305.66d |
| PG-10366 | Final Fix - Electrical Fixtures | 2025-09-08 → 2025-09-06 (-2d) | 2025-09-15 → 2025-09-13 (-2d) | 290.19d → 291.66d |
| 1.3.1.1.3.21 | **Floor 18** | 2025-07-08 → 2025-07-07 (-1d) | 2025-09-27 → 2025-09-26 (-1d) |  |
| 1.3.1.1.3.21.1 | **PHE Works** | 2025-07-08 → 2025-07-07 (-1d) | 2025-09-27 → 2025-09-26 (-1d) |  |
| PG-10367 | 1st Fix - Piping works | 2025-07-08 → 2025-07-07 (-1d) | 2025-07-22 → 2025-07-21 (-1d) | 43.36d → 44.83d |
| PG-10368 | 2nd Fix - diverter fixing & Pressure testing | 2025-07-17 → 2025-07-16 (-1d) | 2025-07-29 → 2025-07-28 (-1d) | 279.19d → 280.66d |
| PG-10369 | Final Fix - CP & Sanitary fixtures | 2025-09-16 → 2025-09-15 (-1d) | 2025-09-27 → 2025-09-26 (-1d) | 279.19d → 280.66d |
| 1.3.1.1.3.21.2 | **Fire Fighting Works** | 2025-07-17 → 2025-07-16 (-1d) | 2025-09-27 → 2025-09-26 (-1d) |  |
| PG-10370 | 1st Fix - Piping and Shaft hydrant works | 2025-07-17 → 2025-07-16 (-1d) | 2025-07-31 → 2025-07-30 (-1d) | 325.86d → 327.33d |
| PG-10371 | 2nd Fix - Sprinkler fixing & Pressure testing | 2025-08-25 → 2025-08-23 (-2d) | 2025-09-05 → 2025-09-04 (-1d) | 288.19d → 289.66d |
| PG-10372 | Final Fix - Smoke & heat detectors, FHC , FAS Etc. | 2025-09-16 → 2025-09-15 (-1d) | 2025-09-27 → 2025-09-26 (-1d) | 279.19d → 280.66d |
| 1.3.1.1.3.21.3 | **Electrical Works** | 2025-07-08 → 2025-07-07 (-1d) | 2025-09-27 → 2025-09-26 (-1d) |  |
| PG-10373 | 1st Fix - GI wire pulling | 2025-07-08 → 2025-07-07 (-1d) | 2025-07-17 → 2025-07-16 (-1d) | 325.86d → 327.33d |
| PG-10374 | 2nd Fix - Wiring works | 2025-08-18 → 2025-08-16 (-2d) | 2025-09-04 → 2025-09-03 (-1d) | 293.19d → 294.66d |
| PG-10375 | Final Fix - Electrical Fixtures | 2025-09-20 → 2025-09-19 (-1d) | 2025-09-27 → 2025-09-26 (-1d) | 279.19d → 280.66d |
| 1.3.1.1.3.22 | **Floor 19** | 2025-07-30 → 2025-07-29 (-1d) | 2025-10-23 → 2025-10-22 (-1d) |  |
| 1.3.1.1.3.22.1 | **PHE Works** | 2025-07-30 → 2025-07-29 (-1d) | 2025-10-23 → 2025-10-22 (-1d) |  |
| PG-10376 | 1st Fix - Piping works | 2025-07-30 → 2025-07-29 (-1d) | 2025-08-13 → 2025-08-12 (-1d) | 162.36d → 163.83d |
| PG-10377 | 2nd Fix - diverter fixing & Pressure testing | 2025-08-08 → 2025-08-07 (-1d) | 2025-08-21 → 2025-08-20 (-1d) | 162.36d → 163.83d |
| PG-10378 | Final Fix - CP & Sanitary fixtures | 2025-10-11 → 2025-10-10 (-1d) | 2025-10-23 → 2025-10-22 (-1d) | 258.19d → 259.66d |

| ID | Task | Start | Finish | Complete | Total float |
| --- | --- | --- | --- | --- | --- |
| 1.3.1.1.3.22.2 | **Fire Fighting Works** | 2025-08-08 → 2025-08-07 (-1d) | 2025-10-23 → 2025-10-22 (-1d) |  |  |
| PG-10379 | 1st Fix - Piping and Shaft hydrant works | 2025-08-08 → 2025-08-07 (-1d) | 2025-08-23 → 2025-08-22 (-1d) |  | 174.36d → 175.83d |
| PG-10380 | 2nd Fix - Sprinkler fixing & Pressure testing | 2025-09-16 → 2025-09-15 (-1d) | 2025-09-27 → 2025-09-26 (-1d) |  | 269.19d → 270.66d |
| PG-10381 | Final Fix - Smoke & heat detectors, FHC , FAS Etc. | 2025-10-11 → 2025-10-10 (-1d) | 2025-10-23 → 2025-10-22 (-1d) |  | 258.19d → 259.66d |
| 1.3.1.1.3.22.3 | **Electrical Works** | 2025-07-30 → 2025-07-29 (-1d) | 2025-10-23 → 2025-10-22 (-1d) |  |  |
| PG-10382 | 1st Fix - GI wire pulling | 2025-07-30 → 2025-07-29 (-1d) | 2025-08-08 → 2025-08-07 (-1d) |  | 43.36d → 44.83d |
| PG-10383 | 2nd Fix - Wiring works | 2025-09-09 → 2025-09-08 (-1d) | 2025-09-26 → 2025-09-25 (-1d) |  | 274.19d → 275.66d |
| PG-10384 | Final Fix - Electrical Fixtures | 2025-10-16 → 2025-10-15 (-1d) | 2025-10-23 → 2025-10-22 (-1d) |  | 258.19d → 259.66d |
| 1.3.1.1.3.23 | **Floor 20** | 2025-08-22 → 2025-08-21 (-1d) | 2025-11-14 → 2025-11-13 (-1d) |  |  |
| 1.3.1.1.3.23.1 | **PHE Works** | 2025-08-22 → 2025-08-21 (-1d) | 2025-11-14 → 2025-11-13 (-1d) |  |  |
| PG-10385 | 1st Fix - Piping works | 2025-08-22 → 2025-08-21 (-1d) | 2025-09-05 → 2025-09-04 (-1d) |  | 184.02d → 185.49d |
| PG-10386 | 2nd Fix - diverter fixing & Pressure testing | 2025-09-01 → 2025-08-30 (-2d) | 2025-09-12 → 2025-09-11 (-1d) |  | 239.02d → 240.49d |
| PG-10387 | Final Fix - CP & Sanitary fixtures | 2025-11-03 → 2025-10-31 (-3d) | 2025-11-14 → 2025-11-13 (-1d) |  | 239.02d → 240.49d |
| 1.3.1.1.3.23.2 | **Fire Fighting Works** | 2025-09-01 → 2025-08-30 (-2d) | 2025-11-14 → 2025-11-13 (-1d) |  |  |
| PG-10388 | 1st Fix - Piping and Shaft hydrant works | 2025-09-01 → 2025-08-30 (-2d) | 2025-09-15 → 2025-09-13 (-2d) |  | 285.69d → 287.16d |
| PG-10389 | 2nd Fix - Sprinkler fixing & Pressure testing | 2025-10-09 → 2025-10-08 (-1d) | 2025-10-21 → 2025-10-20 (-1d) |  | 248.69d → 250.16d |
| PG-10390 | Final Fix - Smoke & heat detectors, FHC , FAS Etc. | 2025-11-03 → 2025-10-31 (-3d) | 2025-11-14 → 2025-11-13 (-1d) |  | 239.02d → 240.49d |
| 1.3.1.1.3.23.3 | **Electrical Works** | 2025-08-22 → 2025-08-21 (-1d) | 2025-11-14 → 2025-11-13 (-1d) |  |  |
| PG-10391 | 1st Fix - GI wire pulling | 2025-08-22 → 2025-08-21 (-1d) | 2025-09-01 → 2025-08-30 (-2d) |  | 285.69d → 287.16d |
| PG-10392 | 2nd Fix - Wiring works | 2025-10-01 → 2025-09-30 (-1d) | 2025-10-20 → 2025-10-18 (-2d) |  | 254.02d → 255.49d |
| PG-10393 | Final Fix - Electrical Fixtures | 2025-11-07 → 2025-11-06 (-1d) | 2025-11-14 → 2025-11-13 (-1d) |  | 239.02d → 240.49d |
| 1.3.1.1.3.24 | **Floor 21** | 2025-09-13 → 2025-09-12 (-1d) | 2025-12-06 → 2025-12-05 (-1d) |  |  |
| 1.3.1.1.3.24.1 | **PHE Works** | 2025-09-13 → 2025-09-12 (-1d) | 2025-12-06 → 2025-12-05 (-1d) |  |  |
| PG-10394 | 1st Fix - Piping works | 2025-09-13 → 2025-09-12 (-1d) | 2025-09-27 → 2025-09-26 (-1d) |  | 184.02d → 185.49d |
| PG-10395 | 2nd Fix - diverter fixing & Pressure testing | 2025-09-23 → 2025-09-22 (-1d) | 2025-10-06 → 2025-10-04 (-2d) |  | 220.02d → 221.49d |
| PG-10396 | Final Fix - CP & Sanitary fixtures | 2025-11-25 → 2025-11-24 (-1d) | 2025-12-06 → 2025-12-05 (-1d) |  | 220.02d → 221.49d |
| 1.3.1.1.3.24.2 | **Fire Fighting Works** | 2025-09-23 → 2025-09-22 (-1d) | 2025-12-06 → 2025-12-05 (-1d) |  |  |
| PG-10397 | 1st Fix - Piping and Shaft hydrant works | 2025-09-23 → 2025-09-22 (-1d) | 2025-10-08 → 2025-10-07 (-1d) |  | 266.69d → 268.16d |
| PG-10398 | 2nd Fix - Sprinkler fixing & Pressure testing | 2025-10-31 → 2025-10-30 (-1d) | 2025-11-13 → 2025-11-12 (-1d) |  | 230.02d → 231.49d |
| PG-10399 | Final Fix - Smoke & heat detectors, FHC , FAS Etc. | 2025-11-25 → 2025-11-24 (-1d) | 2025-12-06 → 2025-12-05 (-1d) |  | 220.02d → 221.49d |
| 1.3.1.1.3.24.3 | **Electrical Works** | 2025-09-13 → 2025-09-12 (-1d) | 2025-12-06 → 2025-12-05 (-1d) |  |  |
| PG-10400 | 1st Fix - GI wire pulling | 2025-09-13 → 2025-09-12 (-1d) | 2025-09-23 → 2025-09-22 (-1d) |  | 266.69d → 268.16d |
| PG-10401 | 2nd Fix - Wiring works | 2025-10-24 → 2025-10-23 (-1d) | 2025-11-12 → 2025-11-11 (-1d) |  | 235.02d → 236.49d |
| PG-10402 | Final Fix - Electrical Fixtures | 2025-11-29 → 2025-11-28 (-1d) | 2025-12-06 → 2025-12-05 (-1d) |  | 220.02d → 221.49d |
| 1.3.1.1.3.25 | **Floor 22** | 2025-10-07 → 2025-10-06 (-1d) | 2025-12-29 → 2025-12-27 (-2d) |  |  |
| 1.3.1.1.3.25.1 | **PHE Works** | 2025-10-07 → 2025-10-06 (-1d) | 2025-12-29 → 2025-12-27 (-2d) |  |  |
| PG-10403 | 1st Fix - Piping works | 2025-10-07 → 2025-10-06 (-1d) | 2025-10-21 → 2025-10-20 (-1d) |  | 184.02d → 185.49d |
| PG-10404 | 2nd Fix - diverter fixing & Pressure testing | 2025-10-16 → 2025-10-15 (-1d) | 2025-10-28 → 2025-10-27 (-1d) |  | 200.02d → 201.49d |
| PG-10405 | Final Fix - CP & Sanitary fixtures | 2025-12-17 → 2025-12-16 (-1d) | 2025-12-29 → 2025-12-27 (-2d) |  | 200.02d → 201.49d |
| 1.3.1.1.3.25.2 | **Fire Fighting Works** | 2025-10-16 → 2025-10-15 (-1d) | 2025-12-29 → 2025-12-27 (-2d) |  |  |
| PG-10406 | 1st Fix - Piping and Shaft hydrant works | 2025-10-16 → 2025-10-15 (-1d) | 2025-10-30 → 2025-10-29 (-1d) |  | 247.69d → 249.16d |
| PG-10407 | 2nd Fix - Sprinkler fixing & Pressure testing | 2025-11-24 → 2025-11-22 (-2d) | 2025-12-05 → 2025-12-04 (-1d) |  | 210.02d → 211.49d |
| PG-10408 | Final Fix - Smoke & heat detectors, FHC , FAS Etc. | 2025-12-17 → 2025-12-16 (-1d) | 2025-12-29 → 2025-12-27 (-2d) |  | 200.02d → 201.49d |
| 1.3.1.1.3.25.3 | **Electrical Works** | 2025-10-07 → 2025-10-06 (-1d) | 2025-12-29 → 2025-12-27 (-2d) |  |  |
| PG-10409 | 1st Fix - GI wire pulling | 2025-10-07 → 2025-10-06 (-1d) | 2025-10-16 → 2025-10-15 (-1d) |  | 247.69d → 249.16d |
| PG-10410 | 2nd Fix - Wiring works | 2025-11-17 → 2025-11-15 (-2d) | 2025-12-04 → 2025-12-03 (-1d) |  | 215.02d → 216.49d |
| PG-10411 | Final Fix - Electrical Fixtures | 2025-12-22 → 2025-12-20 (-2d) | 2025-12-29 → 2025-12-27 (-2d) |  | 200.02d → 201.49d |
| 1.3.1.1.3.26 | **Floor 23** | 2025-10-29 → 2025-10-28 (-1d) | 2026-01-17 → 2026-01-16 (-1d) |  |  |
| 1.3.1.1.3.26.1 | **PHE Works** | 2025-10-29 → 2025-10-28 (-1d) | 2026-01-17 → 2026-01-16 (-1d) |  |  |
| PG-10412 | 1st Fix - Piping works | 2025-10-29 → 2025-10-28 (-1d) | 2025-11-13 → 2025-11-12 (-1d) |  | 184.02d → 185.49d |
| PG-10413 | 2nd Fix - diverter fixing & Pressure testing | 2025-11-08 → 2025-11-07 (-1d) | 2025-11-20 → 2025-11-19 (-1d) |  | 184.02d → 185.49d |
| PG-10414 | Final Fix - CP & Sanitary fixtures | 2026-01-06 → 2026-01-05 (-1d) | 2026-01-17 → 2026-01-16 (-1d) |  | 184.02d → 185.49d |
| 1.3.1.1.3.26.2 | **Fire Fighting Works** | 2025-11-08 → 2025-11-07 (-1d) | 2026-01-17 → 2026-01-16 (-1d) |  |  |
| PG-10415 | 1st Fix - Piping and Shaft hydrant works | 2025-11-08 → 2025-11-07 (-1d) | 2025-11-22 → 2025-11-21 (-1d) |  | 228.86d → 230.33d |
| PG-10416 | 2nd Fix - Sprinkler fixing & Pressure testing | 2025-12-16 → 2025-12-15 (-1d) | 2025-12-27 → 2025-12-26 (-1d) |  | 191.52d → 192.99d |
| PG-10417 | Final Fix - Smoke & heat detectors, FHC , FAS Etc. | 2026-01-06 → 2026-01-05 (-1d) | 2026-01-17 → 2026-01-16 (-1d) |  | 184.02d → 185.49d |
| 1.3.1.1.3.26.3 | **Electrical Works** | 2025-10-29 → 2025-10-28 (-1d) | 2026-01-17 → 2026-01-16 (-1d) |  |  |
| PG-10418 | 1st Fix - GI wire pulling | 2025-10-29 → 2025-10-28 (-1d) | 2025-11-08 → 2025-11-07 (-1d) |  | 228.86d → 230.33d |
| PG-10419 | 2nd Fix - Wiring works | 2025-12-09 → 2025-12-08 (-1d) | 2025-12-26 → 2025-12-25 (-1d) |  | 196.52d → 197.99d |
| PG-10420 | Final Fix - Electrical Fixtures | 2026-01-10 → 2026-01-09 (-1d) | 2026-01-17 → 2026-01-16 (-1d) |  | 184.02d → 185.49d |
| 1.3.1.1.4 | **Civil Finishes - Units** |  | 2026-01-13 → 2026-01-12 (-1d) |  |  |
| 1.3.1.1.4.10 | **Floor 7** |  | 2025-04-24 → 2025-04-25 (+1d) |  |  |
| 1.3.1.1.4.10.1 | **Ceiling Finishing works - Civil** |  | 2025-04-24 → 2025-04-25 (+1d) |  |  |
| PG-10534 | Final Coat Painting |  | 2025-04-24 → 2025-04-25 A (+1d) | 71% → 100% | 440.45d → none |
| 1.3.1.1.4.10.2 | **Wall Finishing works - Civil** |  | 2025-04-24 → 2025-04-25 (+1d) |  |  |
| PG-10539 | Final Coat Painting |  | 2025-04-24 → 2025-04-25 A (+1d) | 71% → 100% | 405.7d → none |
| 1.3.1.1.4.11 | **Floor 8** |  | 2025-05-08 → 2025-05-09 (+1d) |  |  |
| PG-10548 | Final Coat Painting |  |  | 8% → 41% | 427.11d → 427.67d |
| 1.3.1.1.4.11.2 | **Wall Finishing works - Civil** |  | 2025-05-08 → 2025-05-09 (+1d) |  |  |
| PG-10553 | Final Coat Painting |  | 2025-05-08 → 2025-05-09 (+1d) | 3% → 33% | 391.49d → 391.64d |

| ID | Task | Start | Finish | Complete | Total float |
| --- | --- | --- | --- | --- | --- |
| 1.3.1.1.4.12 | **Floor 9** |  | 2025-05-23 → 2025-05-22 (-1d) |  |  |
| 1.3.1.1.4.12.1 | **Ceiling Finishing works - Civil** |  | 2025-05-23 → 2025-05-22 (-1d) |  |  |
| PG-10561 | Toilet False ceiling |  | 2025-04-19 A | 96% → 100% | 405.27d → none |
| PG-10560 | Painting Works - Putty, Primer and 1st | 2025-04-25 A | 2025-05-02 → 2025-04-30 (-2d) | 0% → 18% | 414.61d → 416.42d |
| PG-10562 | Final Coat Painting | 2025-05-02 → 2025-05-01 (-1d) | 2025-05-23 → 2025-05-22 (-1d) |  | 414.61d → 416.18d |
| 1.3.1.1.4.12.2 | **Wall Finishing works - Civil** |  | 2025-05-23 → 2025-05-22 (-1d) |  |  |
| PG-10564 | UPVC Windows & Sliding doors | 2025-04-19 A | 2025-04-25 A | 0% → 100% | 379.94d → none |
| PG-10566 | Painting Works - Putty, Primer and 1st | 2025-04-25 A | 2025-05-02 → 2025-05-01 (-1d) | 0% → 14% | 379.94d → 381.52d |
| PG-10567 | Final Coat Painting | 2025-05-02 → 2025-05-01 (-1d) | 2025-05-23 → 2025-05-22 (-1d) |  | 379.94d → 381.52d |
| 1.3.1.1.4.12.3 | **Floor Finishing Works - Civil** |  | 2025-05-02 → 2025-05-01 (-1d) |  |  |
| PG-10570 | Floor Tiling - Dry area |  | 2025-04-19 A | 95% → 100% | 379.94d → none |
| PG-10571 | Wooden doors | 2025-04-26 → 2025-04-25 (-1d) | 2025-05-02 → 2025-05-01 (-1d) |  | 379.94d → 381.52d |
| PG-10573 | Cornice fixing | 2025-04-22 A |  | 0% → 85% | 415.61d → 415.5d |
| PG-10579 | Dadoing - Wet area |  | 2025-04-22 → 2025-04-23 A (+1d) | 27% → 100% | 367.45d → none |
| PG-10583 | Floor Tiling - Wet area | 2025-04-22 → 2025-04-23 A (+1d) |  | 0% → 52% | 367.45d → 368.27d |
| 1.3.1.1.4.14 | **Floor 11** |  | 2025-06-19 → 2025-06-20 (+1d) |  |  |
| 1.3.1.1.4.14.1 | **Ceiling Finishing works - Civil** |  | 2025-06-19 → 2025-06-20 (+1d) |  |  |
| PG-10586 | Gypsum Plastering |  | 2025-04-24 → 2025-04-25 A (+1d) | 3% → 100% | 404.79d → none |
| PG-10587 | Cornice fixing | 2025-05-03 → 2025-05-05 (+2d) |  |  | 404.79d → 405.17d |
| PG-10589 | Toilet False ceiling | 2025-05-13 → 2025-05-14 (+1d) | 2025-05-17 → 2025-05-19 (+2d) |  | 380.55d → 380.08d |
| PG-10588 | Painting Works - Putty, Primer and 1st | 2025-05-23 → 2025-05-24 (+1d) | 2025-05-30 → 2025-05-31 (+1d) |  | 392.22d → 391.75d |
| PG-10590 | Final Coat Painting | 2025-05-30 → 2025-05-31 (+1d) | 2025-06-19 → 2025-06-20 (+1d) |  | 392.22d → 391.75d |
| 1.3.1.1.4.14.2 | **Wall Finishing works - Civil** |  | 2025-06-19 → 2025-06-20 (+1d) |  |  |
| PG-10593 | Dadoing - Wet area | 2025-04-30 → 2025-05-01 (+1d) | 2025-05-06 → 2025-05-07 (+1d) |  | 355.55d → 355.08d |
| PG-10592 | UPVC Windows & Sliding doors | 2025-05-17 → 2025-05-19 (+2d) | 2025-05-23 → 2025-05-24 (+1d) |  | 355.55d → 355.08d |
| PG-10594 | Painting Works - Putty, Primer and 1st | 2025-05-23 → 2025-05-24 (+1d) | 2025-05-30 → 2025-05-31 (+1d) |  | 355.55d → 355.08d |
| PG-10595 | Final Coat Painting | 2025-05-30 → 2025-05-31 (+1d) | 2025-06-19 → 2025-06-20 (+1d) |  | 355.55d → 355.08d |
| 1.3.1.1.4.14.3 | **Floor Finishing Works - Civil** |  | 2025-05-30 → 2025-05-31 (+1d) |  |  |
| PG-10597 | Floor Tiling - Wet area | 2025-05-06 → 2025-05-07 (+1d) | 2025-05-12 → 2025-05-13 (+1d) |  | 355.55d → 355.08d |
| PG-10598 | Floor Tiling - Dry area | 2025-05-12 → 2025-05-13 (+1d) | 2025-05-17 → 2025-05-19 (+2d) |  | 355.55d → 355.08d |
| PG-10599 | Wooden doors | 2025-05-24 → 2025-05-26 (+2d) | 2025-05-30 → 2025-05-31 (+1d) |  | 355.55d → 355.08d |
| 1.3.1.1.4.15 | **Floor 12** |  | 2025-07-03 → 2025-07-02 (-1d) |  |  |
| 1.3.1.1.4.15.1 | **Ceiling Finishing works - Civil** | 2025-05-01 → 2025-04-30 (-1d) | 2025-07-03 → 2025-07-02 (-1d) |  |  |
| PG-10600 | Gypsum Plastering | 2025-05-01 → 2025-04-30 (-1d) | 2025-05-08 → 2025-05-07 (-1d) |  | 392.52d → 394.61d |
| PG-10601 | Cornice fixing | 2025-05-17 → 2025-05-16 (-1d) | 2025-05-22 → 2025-05-21 (-1d) |  | 392.52d → 394.61d |
| PG-10603 | Toilet False ceiling | 2025-05-26 → 2025-05-24 (-2d) | 2025-05-30 → 2025-05-29 (-1d) |  | 370.36d → 371.75d |
| PG-10602 | Painting Works - Putty, Primer and 1st | 2025-06-05 → 2025-06-04 (-1d) | 2025-06-12 → 2025-06-11 (-1d) |  | 380.52d → 381.91d |
| PG-10604 | Final Coat Painting | 2025-06-12 → 2025-06-11 (-1d) | 2025-07-03 → 2025-07-02 (-1d) |  | 380.52d → 381.91d |
| 1.3.1.1.4.15.2 | **Wall Finishing works - Civil** |  | 2025-07-03 → 2025-07-02 (-1d) |  |  |
| PG-10605 | Balcony Railing Fixing works | 2025-04-22 A | 2025-04-26 → 2025-04-25 (-1d) | 0% → 81% | 374.69d → 376.24d |
| PG-10607 | Dadoing - Wet area | 2025-05-13 → 2025-05-12 (-1d) | 2025-05-19 → 2025-05-17 (-2d) |  | 345.69d → 347.08d |
| PG-10606 | UPVC Windows & Sliding doors | 2025-05-30 → 2025-05-29 (-1d) | 2025-06-05 → 2025-06-04 (-1d) |  | 345.69d → 347.08d |
| PG-10608 | Painting Works - Putty, Primer and 1st | 2025-06-05 → 2025-06-04 (-1d) | 2025-06-12 → 2025-06-11 (-1d) |  | 345.69d → 347.08d |
| PG-10609 | Final Coat Painting | 2025-06-12 → 2025-06-11 (-1d) | 2025-07-03 → 2025-07-02 (-1d) |  | 345.69d → 347.08d |
| 1.3.1.1.4.15.3 | **Floor Finishing Works - Civil** |  | 2025-06-12 → 2025-06-11 (-1d) |  |  |
| PG-10610 | Waterproofing for sunken areas | 2025-04-22 A |  | 0% → 97% | 365.69d → 366.92d |
| PG-10611 | Floor Tiling - Wet area | 2025-05-19 → 2025-05-17 (-2d) | 2025-05-24 → 2025-05-23 (-1d) |  | 345.69d → 347.08d |
| PG-10612 | Floor Tiling - Dry area | 2025-05-24 → 2025-05-23 (-1d) | 2025-05-30 → 2025-05-29 (-1d) |  | 345.69d → 347.08d |
| PG-10613 | Wooden doors | 2025-06-06 → 2025-06-05 (-1d) | 2025-06-12 → 2025-06-11 (-1d) |  | 345.69d → 347.08d |
| 1.3.1.1.4.16 | **Floor 13** | 2025-05-05 → 2025-05-03 (-2d) | 2025-07-21 → 2025-07-19 (-2d) |  |  |
| 1.3.1.1.4.16.1 | **Ceiling Finishing works - Civil** | 2025-05-14 → 2025-05-13 (-1d) | 2025-07-21 → 2025-07-19 (-2d) |  |  |
| PG-10614 | Gypsum Plastering | 2025-05-14 → 2025-05-13 (-1d) | 2025-05-21 → 2025-05-20 (-1d) |  | 377.86d → 379.33d |
| PG-10615 | Cornice fixing | 2025-05-30 → 2025-05-29 (-1d) | 2025-06-04 → 2025-06-03 (-1d) |  | 377.86d → 379.33d |
| PG-10617 | Toilet False ceiling | 2025-06-07 → 2025-06-06 (-1d) | 2025-06-12 → 2025-06-11 (-1d) |  | 359.69d → 361.16d |
| PG-10616 | Painting Works - Putty, Primer and 1st | 2025-06-18 → 2025-06-17 (-1d) | 2025-06-25 → 2025-06-24 (-1d) |  | 365.86d → 367.33d |
| PG-10618 | Final Coat Painting | 2025-06-25 → 2025-06-24 (-1d) | 2025-07-21 → 2025-07-19 (-2d) |  | 365.86d → 367.33d |
| 1.3.1.1.4.16.2 | **Wall Finishing works - Civil** | 2025-05-05 → 2025-05-03 (-2d) | 2025-07-18 → 2025-07-17 (-1d) |  |  |
| PG-10619 | Balcony Railing Fixing works | 2025-05-05 → 2025-05-03 (-2d) | 2025-05-09 → 2025-05-08 (-1d) |  | 362.19d → 363.66d |
| PG-10621 | Dadoing - Wet area | 2025-05-26 → 2025-05-24 (-2d) | 2025-05-31 → 2025-05-30 (-1d) |  | 333.19d → 334.66d |
| PG-10620 | UPVC Windows & Sliding doors | 2025-06-12 → 2025-06-11 (-1d) | 2025-06-18 → 2025-06-17 (-1d) |  | 333.19d → 334.66d |
| PG-10622 | Painting Works - Putty, Primer and 1st | 2025-06-18 → 2025-06-17 (-1d) | 2025-06-25 → 2025-06-24 (-1d) |  | 333.19d → 334.66d |
| PG-10623 | Final Coat Painting | 2025-06-25 → 2025-06-24 (-1d) | 2025-07-18 → 2025-07-17 (-1d) |  | 333.19d → 334.66d |
| 1.3.1.1.4.16.3 | **Floor Finishing Works - Civil** | 2025-05-05 → 2025-05-03 (-2d) | 2025-06-25 → 2025-06-24 (-1d) |  |  |
| PG-10624 | Waterproofing for sunken areas | 2025-05-05 → 2025-05-03 (-2d) | 2025-05-08 → 2025-05-07 (-1d) |  | 353.19d → 354.66d |
| PG-10625 | Floor Tiling - Wet area | 2025-05-31 → 2025-05-30 (-1d) | 2025-06-06 → 2025-06-05 (-1d) |  | 333.19d → 334.66d |
| PG-10626 | Floor Tiling - Dry area | 2025-06-06 → 2025-06-05 (-1d) | 2025-06-12 → 2025-06-11 (-1d) |  | 333.19d → 334.66d |
| PG-10627 | Wooden doors | 2025-06-19 → 2025-06-18 (-1d) | 2025-06-25 → 2025-06-24 (-1d) |  | 333.19d → 334.66d |
| 1.3.1.1.4.17 | **Floor 14** | 2025-05-17 → 2025-05-16 (-1d) | 2025-07-31 → 2025-07-30 (-1d) |  |  |
| 1.3.1.1.4.17.1 | **Ceiling Finishing works - Civil** | 2025-05-27 → 2025-05-26 (-1d) | 2025-07-31 → 2025-07-30 (-1d) |  |  |
| PG-10628 | Gypsum Plastering | 2025-05-27 → 2025-05-26 (-1d) | 2025-06-03 → 2025-06-02 (-1d) |  | 368.86d → 370.33d |

| ID | Task | Start | Finish | Total float |
| --- | --- | --- | --- | --- |
| PG-10629 | Cornice fixing | 2025-06-12 → 2025-06-11 (-1d) | 2025-06-17 → 2025-06-16 (-1d) | 368.86d → 370.33d |
| PG-10631 | Toilet False ceiling | 2025-06-20 → 2025-06-19 (-1d) | 2025-06-25 → 2025-06-24 (-1d) | 349.19d → 350.66d |
| PG-10630 | Painting Works - Putty, Primer and 1st | 2025-07-01 → 2025-06-30 (-1d) | 2025-07-08 → 2025-07-07 (-1d) | 356.86d → 358.33d |
| PG-10632 | Final Coat Painting | 2025-07-08 → 2025-07-07 (-1d) | 2025-07-31 → 2025-07-30 (-1d) | 356.86d → 358.33d |
| 1.3.1.1.4.17.2 | **Wall Finishing works - Civil** | 2025-05-17 → 2025-05-16 (-1d) | 2025-07-31 → 2025-07-30 (-1d) |  |
| PG-10633 | Balcony Railing Fixing works | 2025-05-17 → 2025-05-16 (-1d) | 2025-05-22 → 2025-05-21 (-1d) | 351.19d → 352.66d |
| PG-10635 | Dadoing - Wet area | 2025-06-07 → 2025-06-06 (-1d) | 2025-06-13 → 2025-06-12 (-1d) | 322.19d → 323.66d |
| PG-10634 | UPVC Windows & Sliding doors | 2025-06-25 → 2025-06-24 (-1d) | 2025-07-01 → 2025-06-30 (-1d) | 322.19d → 323.66d |
| PG-10636 | Painting Works - Putty, Primer and 1st | 2025-07-01 → 2025-06-30 (-1d) | 2025-07-08 → 2025-07-07 (-1d) | 322.19d → 323.66d |
| PG-10637 | Final Coat Painting | 2025-07-08 → 2025-07-07 (-1d) | 2025-07-31 → 2025-07-30 (-1d) | 322.19d → 323.66d |
| 1.3.1.1.4.17.3 | **Floor Finishing Works - Civil** | 2025-05-17 → 2025-05-16 (-1d) | 2025-07-08 → 2025-07-07 (-1d) |  |
| PG-10638 | Waterproofing for sunken areas | 2025-05-17 → 2025-05-16 (-1d) | 2025-05-21 → 2025-05-20 (-1d) | 342.19d → 343.66d |
| PG-10639 | Floor Tiling - Wet area | 2025-06-13 → 2025-06-12 (-1d) | 2025-06-19 → 2025-06-18 (-1d) | 322.19d → 323.66d |
| PG-10640 | Floor Tiling - Dry area | 2025-06-19 → 2025-06-18 (-1d) | 2025-06-25 → 2025-06-24 (-1d) | 322.19d → 323.66d |
| PG-10641 | Wooden doors | 2025-07-02 → 2025-07-01 (-1d) | 2025-07-08 → 2025-07-07 (-1d) | 322.19d → 323.66d |
| 1.3.1.1.4.18 | **Floor 15** | 2025-05-30 → 2025-05-29 (-1d) | 2025-08-12 → 2025-08-11 (-1d) |  |
| 1.3.1.1.4.18.1 | **Ceiling Finishing works - Civil** | 2025-06-09 → 2025-06-07 (-2d) | 2025-08-12 → 2025-08-11 (-1d) |  |
| PG-10642 | Gypsum Plastering | 2025-06-09 → 2025-06-07 (-2d) | 2025-06-16 → 2025-06-14 (-2d) | 358.86d → 360.33d |
| PG-10643 | Cornice fixing | 2025-06-25 → 2025-06-24 (-1d) | 2025-06-30 → 2025-06-28 (-2d) | 358.86d → 360.33d |
| PG-10645 | Toilet False ceiling | 2025-07-03 → 2025-07-02 (-1d) | 2025-07-08 → 2025-07-07 (-1d) | 338.19d → 339.66d |
| PG-10644 | Painting Works - Putty, Primer and 1st | 2025-07-14 → 2025-07-12 (-2d) | 2025-07-21 → 2025-07-19 (-2d) | 346.86d → 348.33d |
| PG-10646 | Final Coat Painting | 2025-07-21 → 2025-07-19 (-2d) | 2025-08-12 → 2025-08-11 (-1d) | 346.86d → 348.33d |
| 1.3.1.1.4.18.2 | **Wall Finishing works - Civil** | 2025-05-30 → 2025-05-29 (-1d) | 2025-08-12 → 2025-08-11 (-1d) |  |
| PG-10647 | Balcony Railing Fixing works | 2025-05-30 → 2025-05-29 (-1d) | 2025-06-04 → 2025-06-03 (-1d) | 158.69d → 160.16d |
| PG-10649 | Dadoing - Wet area | 2025-06-20 → 2025-06-19 (-1d) | 2025-06-26 → 2025-06-25 (-1d) | 129.69d → 131.16d |
| PG-10648 | UPVC Windows & Sliding doors | 2025-07-08 → 2025-07-07 (-1d) | 2025-07-14 → 2025-07-12 (-2d) | 129.69d → 131.16d |
| PG-10650 | Painting Works - Putty, Primer and 1st | 2025-07-14 → 2025-07-12 (-2d) | 2025-07-21 → 2025-07-19 (-2d) | 129.69d → 131.16d |
| PG-10651 | Final Coat Painting | 2025-07-21 → 2025-07-19 (-2d) | 2025-08-12 → 2025-08-11 (-1d) | 312.19d → 313.66d |
| 1.3.1.1.4.18.3 | **Floor Finishing Works - Civil** | 2025-05-30 → 2025-05-29 (-1d) | 2025-07-21 → 2025-07-19 (-2d) |  |
| PG-10652 | Waterproofing for sunken areas | 2025-05-30 → 2025-05-29 (-1d) | 2025-06-03 → 2025-06-02 (-1d) | 149.69d → 151.16d |
| PG-10653 | Floor Tiling - Wet area | 2025-06-26 → 2025-06-25 (-1d) | 2025-07-02 → 2025-07-01 (-1d) | 129.69d → 131.16d |
| PG-10654 | Floor Tiling - Dry area | 2025-07-02 → 2025-07-01 (-1d) | 2025-07-08 → 2025-07-07 (-1d) | 129.69d → 131.16d |
| PG-10655 | Wooden doors | 2025-07-15 → 2025-07-14 (-1d) | 2025-07-21 → 2025-07-19 (-2d) | 129.69d → 131.16d |
| 1.3.1.1.4.19 | **Floor 16** | 2025-06-12 → 2025-06-11 (-1d) | 2025-08-26 → 2025-08-25 (-1d) |  |
| 1.3.1.1.4.19.1 | **Ceiling Finishing works - Civil** | 2025-06-21 → 2025-06-20 (-1d) | 2025-08-26 → 2025-08-25 (-1d) |  |
| PG-10656 | Gypsum Plastering | 2025-06-21 → 2025-06-20 (-1d) | 2025-06-28 → 2025-06-27 (-1d) | 347.86d → 349.33d |
| PG-10657 | Cornice fixing | 2025-07-08 → 2025-07-07 (-1d) | 2025-07-12 → 2025-07-11 (-1d) | 347.86d → 349.33d |
| PG-10659 | Toilet False ceiling | 2025-07-16 → 2025-07-15 (-1d) | 2025-07-21 → 2025-07-19 (-2d) | 327.19d → 328.66d |
| PG-10658 | Painting Works - Putty, Primer and 1st | 2025-07-26 → 2025-07-25 (-1d) | 2025-08-02 → 2025-08-01 (-1d) | 335.86d → 337.33d |
| PG-10660 | Final Coat Painting | 2025-08-02 → 2025-08-01 (-1d) | 2025-08-26 → 2025-08-25 (-1d) | 335.86d → 337.33d |
| 1.3.1.1.4.19.2 | **Wall Finishing works - Civil** | 2025-06-12 → 2025-06-11 (-1d) | 2025-08-26 → 2025-08-25 (-1d) |  |
| PG-10661 | Balcony Railing Fixing works | 2025-06-12 → 2025-06-11 (-1d) | 2025-06-17 → 2025-06-16 (-1d) | 330.19d → 331.66d |
| PG-10663 | Dadoing - Wet area | 2025-07-03 → 2025-07-02 (-1d) | 2025-07-09 → 2025-07-08 (-1d) | 301.19d → 302.66d |
| PG-10662 | UPVC Windows & Sliding doors | 2025-07-21 → 2025-07-19 (-2d) | 2025-07-26 → 2025-07-25 (-1d) | 301.19d → 302.66d |
| PG-10664 | Painting Works - Putty, Primer and 1st | 2025-07-26 → 2025-07-25 (-1d) | 2025-08-02 → 2025-08-01 (-1d) | 301.19d → 302.66d |
| PG-10665 | Final Coat Painting | 2025-08-02 → 2025-08-01 (-1d) | 2025-08-26 → 2025-08-25 (-1d) | 301.19d → 302.66d |
| 1.3.1.1.4.19.3 | **Floor Finishing Works - Civil** | 2025-06-12 → 2025-06-11 (-1d) | 2025-08-02 → 2025-08-01 (-1d) |  |
| PG-10666 | Waterproofing for sunken areas | 2025-06-12 → 2025-06-11 (-1d) | 2025-06-16 → 2025-06-14 (-2d) | 321.19d → 322.66d |
| PG-10667 | Floor Tiling - Wet area | 2025-07-09 → 2025-07-08 (-1d) | 2025-07-15 → 2025-07-14 (-1d) | 301.19d → 302.66d |
| PG-10668 | Floor Tiling - Dry area | 2025-07-15 → 2025-07-14 (-1d) | 2025-07-21 → 2025-07-19 (-2d) | 301.19d → 302.66d |
| PG-10669 | Wooden doors | 2025-07-28 → 2025-07-26 (-2d) | 2025-08-02 → 2025-08-01 (-1d) | 301.19d → 302.66d |
| 1.3.1.1.4.20 | **Floor 17** | 2025-06-25 → 2025-06-24 (-1d) | 2025-09-08 → 2025-09-06 (-2d) |  |
| 1.3.1.1.4.20.1 | **Ceiling Finishing works - Civil** | 2025-07-04 → 2025-07-03 (-1d) | 2025-09-08 → 2025-09-06 (-2d) |  |
| PG-10670 | Gypsum Plastering | 2025-07-04 → 2025-07-03 (-1d) | 2025-07-11 → 2025-07-10 (-1d) | 336.86d → 338.33d |
| PG-10671 | Cornice fixing | 2025-07-21 → 2025-07-19 (-2d) | 2025-07-25 → 2025-07-24 (-1d) | 336.86d → 338.33d |
| PG-10673 | Toilet False ceiling | 2025-07-29 → 2025-07-28 (-1d) | 2025-08-02 → 2025-08-01 (-1d) | 316.19d → 317.66d |
| PG-10672 | Painting Works - Putty, Primer and 1st | 2025-08-08 → 2025-08-07 (-1d) | 2025-08-16 → 2025-08-14 (-2d) | 324.86d → 326.33d |
| PG-10674 | Final Coat Painting | 2025-08-16 → 2025-08-14 (-2d) | 2025-09-08 → 2025-09-06 (-2d) | 324.86d → 326.33d |
| 1.3.1.1.4.20.2 | **Wall Finishing works - Civil** | 2025-06-25 → 2025-06-24 (-1d) | 2025-09-08 → 2025-09-06 (-2d) |  |
| PG-10675 | Balcony Railing Fixing works | 2025-06-25 → 2025-06-24 (-1d) | 2025-06-30 → 2025-06-28 (-2d) | 319.19d → 320.66d |
| PG-10677 | Dadoing - Wet area | 2025-07-16 → 2025-07-15 (-1d) | 2025-07-22 → 2025-07-21 (-1d) | 290.19d → 291.66d |
| PG-10676 | UPVC Windows & Sliding doors | 2025-08-02 → 2025-08-01 (-1d) | 2025-08-08 → 2025-08-07 (-1d) | 290.19d → 291.66d |
| PG-10678 | Painting Works - Putty, Primer and 1st | 2025-08-08 → 2025-08-07 (-1d) | 2025-08-16 → 2025-08-14 (-2d) | 290.19d → 291.66d |
| PG-10679 | Final Coat Painting | 2025-08-16 → 2025-08-14 (-2d) | 2025-09-08 → 2025-09-06 (-2d) | 290.19d → 291.66d |
| 1.3.1.1.4.20.3 | **Floor Finishing Works - Civil** | 2025-06-25 → 2025-06-24 (-1d) | 2025-08-16 → 2025-08-14 (-2d) |  |
| PG-10680 | Waterproofing for sunken areas | 2025-06-25 → 2025-06-24 (-1d) | 2025-06-28 → 2025-06-27 (-1d) | 310.19d → 311.66d |
| PG-10681 | Floor Tiling - Wet area | 2025-07-22 → 2025-07-21 (-1d) | 2025-07-28 → 2025-07-26 (-2d) | 290.19d → 291.66d |
| PG-10682 | Floor Tiling - Dry area | 2025-07-28 → 2025-07-26 (-2d) | 2025-08-02 → 2025-08-01 (-1d) | 290.19d → 291.66d |
| PG-10683 | Wooden doors | 2025-08-09 → 2025-08-08 (-1d) | 2025-08-16 → 2025-08-14 (-2d) | 290.19d → 291.66d |
| 1.3.1.1.4.21 | **Floor 18** | 2025-07-08 → 2025-07-07 (-1d) | 2025-09-20 → 2025-09-19 (-1d) |  |

| ID | Task | Start | Finish | Total float |
| --- | --- | --- | --- | --- |
| 1.3.1.1.4.21.1 | **Ceiling Finishing works - Civil** | 2025-07-17 → 2025-07-16 (-1d) | 2025-09-20 → 2025-09-19 (-1d) |  |
| PG-10684 | Gypsum Plastering | 2025-07-17 → 2025-07-16 (-1d) | 2025-07-24 → 2025-07-23 (-1d) | 325.86d → 327.33d |
| PG-10685 | Cornice fixing | 2025-08-02 → 2025-08-01 (-1d) | 2025-08-07 → 2025-08-06 (-1d) | 325.86d → 327.33d |
| PG-10687 | Toilet False ceiling | 2025-08-11 → 2025-08-09 (-2d) | 2025-08-16 → 2025-08-14 (-2d) | 305.19d → 306.66d |
| PG-10686 | Painting Works - Putty, Primer and 1st | 2025-08-22 → 2025-08-21 (-1d) | 2025-08-29 → 2025-08-28 (-1d) | 313.86d → 315.33d |
| PG-10688 | Final Coat Painting | 2025-08-29 → 2025-08-28 (-1d) | 2025-09-20 → 2025-09-19 (-1d) | 313.86d → 315.33d |
| 1.3.1.1.4.21.2 | **Wall Finishing works - Civil** | 2025-07-08 → 2025-07-07 (-1d) | 2025-09-20 → 2025-09-19 (-1d) |  |
| PG-10689 | Balcony Railing Fixing works | 2025-07-08 → 2025-07-07 (-1d) | 2025-07-12 → 2025-07-11 (-1d) | 308.19d → 309.66d |
| PG-10691 | Dadoing - Wet area | 2025-07-29 → 2025-07-28 (-1d) | 2025-08-04 → 2025-08-02 (-2d) | 279.19d → 280.66d |
| PG-10690 | UPVC Windows & Sliding doors | 2025-08-16 → 2025-08-14 (-2d) | 2025-08-22 → 2025-08-21 (-1d) | 279.19d → 280.66d |
| PG-10692 | Painting Works - Putty, Primer and 1st | 2025-08-22 → 2025-08-21 (-1d) | 2025-08-29 → 2025-08-28 (-1d) | 279.19d → 280.66d |
| PG-10693 | Final Coat Painting | 2025-08-29 → 2025-08-28 (-1d) | 2025-09-20 → 2025-09-19 (-1d) | 279.19d → 280.66d |
| 1.3.1.1.4.21.3 | **Floor Finishing Works - Civil** | 2025-07-08 → 2025-07-07 (-1d) | 2025-08-29 → 2025-08-28 (-1d) |  |
| PG-10694 | Waterproofing for sunken areas | 2025-07-08 → 2025-07-07 (-1d) | 2025-07-11 → 2025-07-10 (-1d) | 299.19d → 300.66d |
| PG-10695 | Floor Tiling - Wet area | 2025-08-04 → 2025-08-02 (-2d) | 2025-08-09 → 2025-08-08 (-1d) | 279.19d → 280.66d |
| PG-10696 | Floor Tiling - Dry area | 2025-08-09 → 2025-08-08 (-1d) | 2025-08-16 → 2025-08-14 (-2d) | 279.19d → 280.66d |
| PG-10697 | Wooden doors | 2025-08-23 → 2025-08-22 (-1d) | 2025-08-29 → 2025-08-28 (-1d) | 279.19d → 280.66d |
| 1.3.1.1.4.22 | **Floor 19** | 2025-07-30 → 2025-07-29 (-1d) | 2025-10-16 → 2025-10-15 (-1d) |  |
| 1.3.1.1.4.22.1 | **Ceiling Finishing works - Civil** | 2025-08-08 → 2025-08-07 (-1d) | 2025-10-16 → 2025-10-15 (-1d) |  |
| PG-10698 | Gypsum Plastering | 2025-08-08 → 2025-08-07 (-1d) | 2025-08-16 → 2025-08-14 (-2d) | 174.36d → 175.83d |
| PG-10699 | Cornice fixing | 2025-08-26 → 2025-08-25 (-1d) | 2025-08-30 → 2025-08-29 (-1d) | 174.36d → 175.83d |
| PG-10701 | Toilet False ceiling | 2025-09-03 → 2025-09-02 (-1d) | 2025-09-08 → 2025-09-06 (-2d) | 286.19d → 287.66d |
| PG-10700 | Painting Works - Putty, Primer and 1st | 2025-09-13 → 2025-09-12 (-1d) | 2025-09-20 → 2025-09-19 (-1d) | 162.36d → 163.83d |
| PG-10702 | Final Coat Painting | 2025-09-20 → 2025-09-19 (-1d) | 2025-10-16 → 2025-10-15 (-1d) | 292.86d → 294.33d |
| 1.3.1.1.4.22.2 | **Wall Finishing works - Civil** | 2025-07-30 → 2025-07-29 (-1d) | 2025-10-16 → 2025-10-15 (-1d) |  |
| PG-10703 | Balcony Railing Fixing works | 2025-07-30 → 2025-07-29 (-1d) | 2025-08-04 → 2025-08-02 (-2d) | 191.36d → 192.83d |
| PG-10705 | Dadoing - Wet area | 2025-08-21 → 2025-08-20 (-1d) | 2025-08-27 → 2025-08-26 (-1d) | 162.36d → 163.83d |
| PG-10704 | UPVC Windows & Sliding doors | 2025-09-08 → 2025-09-06 (-2d) | 2025-09-13 → 2025-09-12 (-1d) | 162.36d → 163.83d |
| PG-10706 | Painting Works - Putty, Primer and 1st | 2025-09-13 → 2025-09-12 (-1d) | 2025-09-20 → 2025-09-19 (-1d) | 258.19d → 259.66d |
| PG-10707 | Final Coat Painting | 2025-09-20 → 2025-09-19 (-1d) | 2025-10-16 → 2025-10-15 (-1d) | 258.19d → 259.66d |
| 1.3.1.1.4.22.3 | **Floor Finishing Works - Civil** | 2025-07-30 → 2025-07-29 (-1d) | 2025-09-20 → 2025-09-19 (-1d) |  |
| PG-10708 | Waterproofing for sunken areas | 2025-07-30 → 2025-07-29 (-1d) | 2025-08-02 → 2025-08-01 (-1d) | 182.36d → 183.83d |
| PG-10709 | Floor Tiling - Wet area | 2025-08-27 → 2025-08-26 (-1d) | 2025-09-02 → 2025-09-01 (-1d) | 162.36d → 163.83d |
| PG-10710 | Floor Tiling - Dry area | 2025-09-02 → 2025-09-01 (-1d) | 2025-09-08 → 2025-09-06 (-2d) | 162.36d → 163.83d |
| PG-10711 | Wooden doors | 2025-09-15 → 2025-09-13 (-2d) | 2025-09-20 → 2025-09-19 (-1d) | 258.19d → 259.66d |
| 1.3.1.1.4.23 | **Floor 20** | 2025-08-22 → 2025-08-21 (-1d) | 2025-11-07 → 2025-11-06 (-1d) |  |
| 1.3.1.1.4.23.1 | **Ceiling Finishing works - Civil** | 2025-09-01 → 2025-08-30 (-2d) | 2025-11-07 → 2025-11-06 (-1d) |  |
| PG-10712 | Gypsum Plastering | 2025-09-01 → 2025-08-30 (-2d) | 2025-09-08 → 2025-09-06 (-2d) | 285.69d → 287.16d |
| PG-10713 | Cornice fixing | 2025-09-17 → 2025-09-16 (-1d) | 2025-09-22 → 2025-09-20 (-2d) | 285.69d → 287.16d |
| PG-10715 | Toilet False ceiling | 2025-09-25 → 2025-09-24 (-1d) | 2025-09-30 → 2025-09-29 (-1d) | 265.69d → 267.16d |
| PG-10714 | Painting Works - Putty, Primer and 1st | 2025-10-07 → 2025-10-06 (-1d) | 2025-10-14 → 2025-10-13 (-1d) | 273.69d → 275.16d |
| PG-10716 | Final Coat Painting | 2025-10-14 → 2025-10-13 (-1d) | 2025-11-07 → 2025-11-06 (-1d) | 273.69d → 275.16d |
| 1.3.1.1.4.23.2 | **Wall Finishing works - Civil** | 2025-08-22 → 2025-08-21 (-1d) | 2025-11-07 → 2025-11-06 (-1d) |  |
| PG-10717 | Balcony Railing Fixing works | 2025-08-22 → 2025-08-21 (-1d) | 2025-08-27 → 2025-08-26 (-1d) | 268.02d → 269.49d |
| PG-10719 | Dadoing - Wet area | 2025-09-12 → 2025-09-11 (-1d) | 2025-09-18 → 2025-09-17 (-1d) | 239.02d → 240.49d |
| PG-10718 | UPVC Windows & Sliding doors | 2025-09-30 → 2025-09-29 (-1d) | 2025-10-07 → 2025-10-06 (-1d) | 239.02d → 240.49d |
| PG-10720 | Painting Works - Putty, Primer and 1st | 2025-10-07 → 2025-10-06 (-1d) | 2025-10-14 → 2025-10-13 (-1d) | 239.02d → 240.49d |
| PG-10721 | Final Coat Painting | 2025-10-14 → 2025-10-13 (-1d) | 2025-11-07 → 2025-11-06 (-1d) | 239.02d → 240.49d |
| 1.3.1.1.4.23.3 | **Floor Finishing Works - Civil** | 2025-08-22 → 2025-08-21 (-1d) | 2025-10-14 → 2025-10-13 (-1d) |  |
| PG-10722 | Waterproofing for sunken areas | 2025-08-22 → 2025-08-21 (-1d) | 2025-08-26 → 2025-08-25 (-1d) | 259.02d → 260.49d |
| PG-10723 | Floor Tiling - Wet area | 2025-09-18 → 2025-09-17 (-1d) | 2025-09-24 → 2025-09-23 (-1d) | 239.02d → 240.49d |
| PG-10724 | Floor Tiling - Dry area | 2025-09-24 → 2025-09-23 (-1d) | 2025-09-30 → 2025-09-29 (-1d) | 239.02d → 240.49d |
| PG-10725 | Wooden doors | 2025-10-08 → 2025-10-07 (-1d) | 2025-10-14 → 2025-10-13 (-1d) | 239.02d → 240.49d |
| 1.3.1.1.4.24 | **Floor 21** | 2025-09-13 → 2025-09-12 (-1d) | 2025-11-29 → 2025-11-28 (-1d) |  |
| 1.3.1.1.4.24.1 | **Ceiling Finishing works - Civil** | 2025-09-23 → 2025-09-22 (-1d) | 2025-11-29 → 2025-11-28 (-1d) |  |
| PG-10726 | Gypsum Plastering | 2025-09-23 → 2025-09-22 (-1d) | 2025-09-30 → 2025-09-29 (-1d) | 266.69d → 268.16d |
| PG-10727 | Cornice fixing | 2025-10-10 → 2025-10-09 (-1d) | 2025-10-15 → 2025-10-14 (-1d) | 266.69d → 268.16d |
| PG-10729 | Toilet False ceiling | 2025-10-18 → 2025-10-17 (-1d) | 2025-10-23 → 2025-10-22 (-1d) | 247.02d → 248.49d |
| PG-10728 | Painting Works - Putty, Primer and 1st | 2025-10-29 → 2025-10-28 (-1d) | 2025-11-06 → 2025-11-05 (-1d) | 254.69d → 256.16d |
| PG-10730 | Final Coat Painting | 2025-11-06 → 2025-11-05 (-1d) | 2025-11-29 → 2025-11-28 (-1d) | 254.69d → 256.16d |
| 1.3.1.1.4.24.2 | **Wall Finishing works - Civil** | 2025-09-13 → 2025-09-12 (-1d) | 2025-11-29 → 2025-11-28 (-1d) |  |
| PG-10731 | Balcony Railing Fixing works | 2025-09-13 → 2025-09-12 (-1d) | 2025-09-18 → 2025-09-17 (-1d) | 249.02d → 250.49d |
| PG-10733 | Dadoing - Wet area | 2025-10-06 → 2025-10-04 (-2d) | 2025-10-11 → 2025-10-10 (-1d) | 220.02d → 221.49d |
| PG-10732 | UPVC Windows & Sliding doors | 2025-10-23 → 2025-10-22 (-1d) | 2025-10-29 → 2025-10-28 (-1d) | 220.02d → 221.49d |
| PG-10734 | Painting Works - Putty, Primer and 1st | 2025-10-29 → 2025-10-28 (-1d) | 2025-11-06 → 2025-11-05 (-1d) | 220.02d → 221.49d |
| PG-10735 | Final Coat Painting | 2025-11-06 → 2025-11-05 (-1d) | 2025-11-29 → 2025-11-28 (-1d) | 220.02d → 221.49d |
| 1.3.1.1.4.24.3 | **Floor Finishing Works - Civil** | 2025-09-13 → 2025-09-12 (-1d) | 2025-11-06 → 2025-11-05 (-1d) |  |
| PG-10736 | Waterproofing for sunken areas | 2025-09-13 → 2025-09-12 (-1d) | 2025-09-17 → 2025-09-16 (-1d) | 240.02d → 241.49d |
| PG-10737 | Floor Tiling - Wet area | 2025-10-11 → 2025-10-10 (-1d) | 2025-10-17 → 2025-10-16 (-1d) | 220.02d → 221.49d |
| PG-10738 | Floor Tiling - Dry area | 2025-10-17 → 2025-10-16 (-1d) | 2025-10-23 → 2025-10-22 (-1d) | 220.02d → 221.49d |

| ID | Task | Start | Finish | Total float |
| --- | --- | --- | --- | --- |
| PG-10739 | Wooden doors | 2025-10-30 → 2025-10-29 (-1d) | 2025-11-06 → 2025-11-05 (-1d) | 220.02d → 221.49d |
| 1.3.1.1.4.25 | **Floor 22** | 2025-10-07 → 2025-10-06 (-1d) | 2025-12-22 → 2025-12-20 (-2d) |  |
| 1.3.1.1.4.25.1 | **Ceiling Finishing works - Civil** | 2025-10-16 → 2025-10-15 (-1d) | 2025-12-22 → 2025-12-20 (-2d) |  |
| PG-10740 | Gypsum Plastering | 2025-10-16 → 2025-10-15 (-1d) | 2025-10-23 → 2025-10-22 (-1d) | 247.69d → 249.16d |
| PG-10741 | Cornice fixing | 2025-11-03 → 2025-10-31 (-3d) | 2025-11-07 → 2025-11-06 (-1d) | 247.69d → 249.16d |
| PG-10743 | Toilet False ceiling | 2025-11-11 → 2025-11-10 (-1d) | 2025-11-15 → 2025-11-14 (-1d) | 227.02d → 228.49d |
| PG-10742 | Painting Works - Putty, Primer and 1st | 2025-11-21 → 2025-11-20 (-1d) | 2025-11-28 → 2025-11-27 (-1d) | 235.69d → 237.16d |
| PG-10744 | Final Coat Painting | 2025-11-28 → 2025-11-27 (-1d) | 2025-12-22 → 2025-12-20 (-2d) | 235.69d → 237.16d |
| 1.3.1.1.4.25.2 | **Wall Finishing works - Civil** | 2025-10-07 → 2025-10-06 (-1d) | 2025-12-22 → 2025-12-20 (-2d) |  |
| PG-10745 | Balcony Railing Fixing works | 2025-10-07 → 2025-10-06 (-1d) | 2025-10-11 → 2025-10-10 (-1d) | 229.02d → 230.49d |
| PG-10747 | Dadoing - Wet area | 2025-10-28 → 2025-10-27 (-1d) | 2025-11-04 → 2025-11-03 (-1d) | 200.02d → 201.49d |
| PG-10746 | UPVC Windows & Sliding doors | 2025-11-15 → 2025-11-14 (-1d) | 2025-11-21 → 2025-11-20 (-1d) | 200.02d → 201.49d |
| PG-10748 | Painting Works - Putty, Primer and 1st | 2025-11-21 → 2025-11-20 (-1d) | 2025-11-28 → 2025-11-27 (-1d) | 200.02d → 201.49d |
| PG-10749 | Final Coat Painting | 2025-11-28 → 2025-11-27 (-1d) | 2025-12-22 → 2025-12-20 (-2d) | 200.02d → 201.49d |
| 1.3.1.1.4.25.3 | **Floor Finishing Works - Civil** | 2025-10-07 → 2025-10-06 (-1d) | 2025-11-28 → 2025-11-27 (-1d) |  |
| PG-10750 | Waterproofing for sunken areas | 2025-10-07 → 2025-10-06 (-1d) | 2025-10-10 → 2025-10-09 (-1d) | 220.02d → 221.49d |
| PG-10751 | Floor Tiling - Wet area | 2025-11-04 → 2025-11-03 (-1d) | 2025-11-10 → 2025-11-08 (-2d) | 200.02d → 201.49d |
| PG-10752 | Floor Tiling - Dry area | 2025-11-10 → 2025-11-08 (-2d) | 2025-11-15 → 2025-11-14 (-1d) | 200.02d → 201.49d |
| PG-10753 | Wooden doors | 2025-11-22 → 2025-11-21 (-1d) | 2025-11-28 → 2025-11-27 (-1d) | 200.02d → 201.49d |
| 1.3.1.1.4.26 | **Floor 23** | 2025-10-29 → 2025-10-28 (-1d) | 2026-01-13 → 2026-01-12 (-1d) |  |
| 1.3.1.1.4.26.1 | **Ceiling Finishing works - Civil** | 2025-11-08 → 2025-11-07 (-1d) | 2026-01-13 → 2026-01-12 (-1d) |  |
| PG-10754 | Gypsum Plastering | 2025-11-08 → 2025-11-07 (-1d) | 2025-11-15 → 2025-11-14 (-1d) | 228.86d → 230.33d |
| PG-10755 | Cornice fixing | 2025-11-25 → 2025-11-24 (-1d) | 2025-11-29 → 2025-11-28 (-1d) | 228.86d → 230.33d |
| PG-10757 | Toilet False ceiling | 2025-12-03 → 2025-12-02 (-1d) | 2025-12-08 → 2025-12-06 (-2d) | 208.52d → 209.99d |
| PG-10756 | Painting Works - Putty, Primer and 1st | 2025-12-13 → 2025-12-12 (-1d) | 2025-12-20 → 2025-12-19 (-1d) | 216.86d → 218.33d |
| PG-10758 | Final Coat Painting | 2025-12-20 → 2025-12-19 (-1d) | 2026-01-13 → 2026-01-12 (-1d) | 216.86d → 218.33d |
| 1.3.1.1.4.26.2 | **Wall Finishing works - Civil** | 2025-10-29 → 2025-10-28 (-1d) | 2026-01-10 → 2026-01-09 (-1d) |  |
| PG-10759 | Balcony Railing Fixing works | 2025-10-29 → 2025-10-28 (-1d) | 2025-11-04 → 2025-11-03 (-1d) | 213.02d → 214.49d |
| PG-10761 | Dadoing - Wet area | 2025-11-20 → 2025-11-19 (-1d) | 2025-11-26 → 2025-11-25 (-1d) | 184.02d → 185.49d |
| PG-10760 | UPVC Windows & Sliding doors | 2025-12-08 → 2025-12-06 (-2d) | 2025-12-13 → 2025-12-12 (-1d) | 184.02d → 185.49d |
| PG-10762 | Painting Works - Putty, Primer and 1st | 2025-12-13 → 2025-12-12 (-1d) | 2025-12-20 → 2025-12-19 (-1d) | 184.02d → 185.49d |
| PG-10763 | Final Coat Painting | 2025-12-20 → 2025-12-19 (-1d) | 2026-01-10 → 2026-01-09 (-1d) | 184.02d → 185.49d |
| 1.3.1.1.4.26.3 | **Floor Finishing Works - Civil** | 2025-10-29 → 2025-10-28 (-1d) | 2025-12-20 → 2025-12-19 (-1d) |  |
| PG-10764 | Waterproofing for sunken areas | 2025-10-29 → 2025-10-28 (-1d) | 2025-11-03 → 2025-10-31 (-3d) | 204.02d → 205.49d |
| PG-10765 | Floor Tiling - Wet area | 2025-11-26 → 2025-11-25 (-1d) | 2025-12-02 → 2025-12-01 (-1d) | 184.02d → 185.49d |
| PG-10766 | Floor Tiling - Dry area | 2025-12-02 → 2025-12-01 (-1d) | 2025-12-08 → 2025-12-06 (-2d) | 184.02d → 185.49d |
| PG-10767 | Wooden doors | 2025-12-15 → 2025-12-13 (-2d) | 2025-12-20 → 2025-12-19 (-1d) | 184.02d → 185.49d |
| 1.3.1.1.4.27 | **External Finishing works** | 2025-08-05 → 2025-08-04 (-1d) | 2025-12-03 → 2025-12-02 (-1d) |  |
| PG-10768 | External walls tie rod hole plugging with GP2 | 2025-08-05 → 2025-08-04 (-1d) | 2025-09-10 → 2025-09-09 (-1d) | 248.19d → 249.66d |
| PG-10769 | External walls grinding works | 2025-08-29 → 2025-08-28 (-1d) | 2025-10-16 → 2025-10-15 (-1d) | 248.19d → 249.66d |
| PG-10770 | Texture and painting works | 2025-10-10 → 2025-10-09 (-1d) | 2025-12-03 → 2025-12-02 (-1d) | 248.19d → 249.66d |
| 1.3.1.1.5 | **Corridor & Fire Staircase Finishing works** | 2025-10-13 → 2025-10-11 (-2d) |  |  |
| 1.3.1.1.5.1 | **Ceiling Finishing works - Civil** | 2025-10-13 → 2025-10-11 (-2d) | 2026-01-23 → 2026-01-22 (-1d) |  |
| PG-10771 | Gypsum Plastering | 2025-10-13 → 2025-10-11 (-2d) | 2025-10-20 → 2025-10-18 (-2d) | 43.36d → 44.83d |
| PG-10772 | Cornice fixing | 2025-10-18 → 2025-10-17 (-1d) | 2025-10-23 → 2025-10-22 (-1d) | 174.36d → 175.83d |
| PG-10773 | Painting Works - Putty, Primer and 1st | 2025-11-07 → 2025-11-06 (-1d) | 2025-11-14 → 2025-11-13 (-1d) | 162.36d → 163.83d |
| PG-10774 | False ceiling | 2025-11-14 → 2025-11-13 (-1d) | 2025-12-19 → 2025-12-18 (-1d) | 162.36d → 163.83d |
| PG-10775 | Final Coat Painting | 2025-12-19 → 2025-12-18 (-1d) | 2026-01-23 → 2026-01-22 (-1d) | 177.36d → 178.83d |
| 1.3.1.1.5.2 | **Wall Finishing works - Civil** | 2025-11-19 → 2025-11-18 (-1d) |  |  |
| PG-10776 | UPVC Windows & Sliding doors | 2025-11-19 → 2025-11-18 (-1d) | 2025-11-25 → 2025-11-24 (-1d) | 168.36d → 169.83d |
| PG-10777 | Wall Cladding Upto 1.2 Mts | 2025-12-06 → 2025-12-05 (-1d) | 2025-12-30 → 2025-12-29 (-1d) | 168.36d → 169.83d |
| PG-10778 | Painting Works - Texture & one coat Painting works | 2026-01-06 → 2026-01-05 (-1d) | 2026-01-23 → 2026-01-22 (-1d) | 162.36d → 163.83d |
| 1.3.1.1.5.3 | **Floor Finishing Works - Civil** | 2025-10-20 → 2025-10-18 (-2d) | 2025-11-19 → 2025-11-18 (-1d) |  |
| PG-10780 | Fire Doors installation | 2025-10-20 → 2025-10-18 (-2d) | 2025-10-31 → 2025-10-30 (-1d) | 213.02d → 214.49d |
| PG-10781 | Verified tile flooring works | 2025-10-31 → 2025-10-30 (-1d) | 2025-11-19 → 2025-11-18 (-1d) | 213.02d → 214.49d |
| 1.3.1.1.5.4 | **Fire Staircase Finishing Works - Civil** | 2025-10-20 → 2025-10-18 (-2d) | 2026-02-10 → 2026-02-09 (-1d) |  |
| PG-10782 | Staircase Railing Fixing works | 2025-10-20 → 2025-10-18 (-2d) | 2025-11-13 → 2025-11-12 (-1d) | 43.36d → 44.83d |
| PG-10783 | Wall and ceiling Gypsum plastering | 2025-10-31 → 2025-10-30 (-1d) | 2025-12-06 → 2025-12-05 (-1d) | 43.36d → 44.83d |
| PG-10784 | Staircase Flooring and Skirting Works | 2025-11-19 → 2025-11-18 (-1d) | 2026-01-05 → 2026-01-03 (-2d) | 43.36d → 44.83d |
| PG-10785 | UPVC Window fixing works | 2026-01-05 → 2026-01-03 (-2d) | 2026-01-22 → 2026-01-21 (-1d) | 43.36d → 44.83d |
| PG-10786 | Staircase Painting works | 2026-01-16 → 2026-01-15 (-1d) | 2026-02-10 → 2026-02-09 (-1d) | 43.36d → 44.83d |
| 1.3.1.1.6 | **MEP Civil Works (Shaft, Lift Shaft & OHT )** | 2025-07-22 → 2025-07-21 (-1d) | 2026-01-10 → 2026-01-09 (-1d) |  |
| 1.3.1.1.6.1 | **Lift Shaft Works** | 2025-07-22 → 2025-07-21 (-1d) | 2026-01-10 → 2026-01-09 (-1d) |  |
| PG-10787 | Tie rod hole packing | 2025-07-22 → 2025-07-21 (-1d) | 2025-07-31 → 2025-07-30 (-1d) | 120.86d → 122.33d |
| PG-10788 | Grinding works | 2025-07-31 → 2025-07-30 (-1d) | 2025-08-06 → 2025-08-05 (-1d) | 120.86d → 122.33d |
| PG-10789 | Lift pit waterproofing works | 2025-08-06 → 2025-08-05 (-1d) | 2025-09-01 → 2025-08-30 (-2d) | 120.86d → 122.33d |
| PG-10790 | Shaft door opening finishing | 2025-09-01 → 2025-08-30 (-2d) | 2025-09-09 → 2025-09-08 (-1d) | 120.86d → 122.33d |
| PG-10791 | Painting works | 2025-09-09 → 2025-09-08 (-1d) | 2025-09-18 → 2025-09-17 (-1d) | 120.86d → 122.33d |
| PG-10792 | Lift Wall Cladding Works |  | 2026-01-10 → 2026-01-09 (-1d) | 140.86d → 141.97d |
| 1.3.1.1.6.2 | **Electrical Shaft works** | 2025-07-22 → 2025-07-21 (-1d) | 2025-08-25 → 2025-08-23 (-2d) |  |

| ID | Task | Start | Finish | Complete | Total float |
| --- | --- | --- | --- | --- | --- |
| PG-10793 | Tie rod hole packing | 2025-07-22 → 2025-07-21 (-1d) | 2025-07-31 → 2025-07-30 (-1d) |  | 259.69d → 261.16d |
| PG-10794 | Grinding works | 2025-07-31 → 2025-07-30 (-1d) | 2025-08-06 → 2025-08-05 (-1d) |  | 259.69d → 261.16d |
| PG-10795 | Shaft door opening finishing | 2025-08-06 → 2025-08-05 (-1d) | 2025-08-14 → 2025-08-13 (-1d) |  | 259.69d → 261.16d |
| PG-10796 | Painting works | 2025-08-14 → 2025-08-13 (-1d) | 2025-08-25 → 2025-08-23 (-2d) |  | 259.69d → 261.16d |
| 1.3.1.1.6.3 | **FPS Shaft works** | 2025-07-22 → 2025-07-21 (-1d) | 2025-08-25 → 2025-08-23 (-2d) |  |  |
| PG-10797 | Tie rod hole packing | 2025-07-22 → 2025-07-21 (-1d) | 2025-07-31 → 2025-07-30 (-1d) |  | 259.36d → 260.83d |
| PG-10798 | Grinding works | 2025-07-31 → 2025-07-30 (-1d) | 2025-08-06 → 2025-08-05 (-1d) |  | 259.36d → 260.83d |
| PG-10799 | Shaft door opening finishing | 2025-08-06 → 2025-08-05 (-1d) | 2025-08-14 → 2025-08-13 (-1d) |  | 259.36d → 260.83d |
| PG-10800 | Painting works | 2025-08-14 → 2025-08-13 (-1d) | 2025-08-25 → 2025-08-23 (-2d) |  | 259.36d → 260.83d |
| 1.3.1.1.6.4 | **PHE Shaft works** | 2025-07-22 → 2025-07-21 (-1d) | 2025-08-25 → 2025-08-23 (-2d) |  |  |
| PG-10801 | Tie rod hole packing | 2025-07-22 → 2025-07-21 (-1d) | 2025-07-31 → 2025-07-30 (-1d) |  | 218.02d → 219.49d |
| PG-10802 | Grinding works | 2025-07-31 → 2025-07-30 (-1d) | 2025-08-06 → 2025-08-05 (-1d) |  | 218.02d → 219.49d |
| PG-10803 | Shaft door opening finishing | 2025-08-06 → 2025-08-05 (-1d) | 2025-08-14 → 2025-08-13 (-1d) |  | 218.02d → 219.49d |
| PG-10804 | Painting works | 2025-08-14 → 2025-08-13 (-1d) | 2025-08-25 → 2025-08-23 (-2d) |  | 218.02d → 219.49d |
| 1.3.1.1.6.5 | **Data & Communication Shaft** | 2025-07-22 → 2025-07-21 (-1d) | 2025-08-22 → 2025-08-21 (-1d) |  |  |
| PG-10805 | Tie rod hole packing | 2025-07-22 → 2025-07-21 (-1d) | 2025-07-31 → 2025-07-30 (-1d) |  | 254.36d → 255.83d |
| PG-10806 | Grinding works | 2025-07-31 → 2025-07-30 (-1d) | 2025-08-06 → 2025-08-05 (-1d) |  | 254.36d → 255.83d |
| PG-10807 | Shaft door opening finishing | 2025-08-06 → 2025-08-05 (-1d) | 2025-08-12 → 2025-08-11 (-1d) |  | 254.36d → 255.83d |
| PG-10808 | Painting works | 2025-08-12 → 2025-08-11 (-1d) | 2025-08-22 → 2025-08-21 (-1d) |  | 254.36d → 255.83d |
| 1.3.1.1.6.6 | **OHT Works** | 2025-08-02 → 2025-08-01 (-1d) | 2025-09-22 → 2025-09-20 (-2d) |  |  |
| PG-10809 | Tank materials Supply & Shifting | 2025-08-02 → 2025-08-01 (-1d) | 2025-08-14 → 2025-08-13 (-1d) |  | 216.36d → 217.83d |
| PG-10810 | Assembling OHT FRP Tank | 2025-08-14 → 2025-08-13 (-1d) | 2025-08-27 → 2025-08-26 (-1d) |  | 216.36d → 217.83d |
| PG-10811 | Installation of OHT Tank | 2025-08-27 → 2025-08-26 (-1d) | 2025-09-13 → 2025-09-12 (-1d) |  | 216.36d → 217.83d |
| PG-10812 | Water tightness works and checking | 2025-09-13 → 2025-09-12 (-1d) | 2025-09-22 → 2025-09-20 (-2d) |  | 216.36d → 217.83d |
| 1.3.1.1.7 | **MEP Shaft works** | 2025-08-22 → 2025-08-21 (-1d) | 2025-11-15 → 2025-11-14 (-1d) |  |  |
| 1.3.1.1.7.1 | **Electrical** | 2025-08-25 → 2025-08-23 (-2d) | 2025-10-06 → 2025-10-04 (-2d) |  |  |
| PG-10813 | Tray Works | 2025-08-25 → 2025-08-23 (-2d) | 2025-09-05 → 2025-09-04 (-1d) |  | 259.69d → 261.16d |
| PG-10814 | Cable & Conducting works | 2025-09-05 → 2025-09-04 (-1d) | 2025-09-17 → 2025-09-16 (-1d) |  | 259.69d → 261.16d |
| PG-10815 | Wiring/DB/connector box installation and termination works | 2025-09-17 → 2025-09-16 (-1d) | 2025-10-06 → 2025-10-04 (-2d) |  | 259.69d → 261.16d |
| 1.3.1.1.7.2 | **FPS** | 2025-08-25 → 2025-08-23 (-2d) | 2025-10-06 → 2025-10-04 (-2d) |  |  |
| PG-10816 | Shaft MS Piping & fixtures installation | 2025-08-25 → 2025-08-23 (-2d) | 2025-09-17 → 2025-09-16 (-1d) |  | 259.36d → 260.83d |
| PG-10817 | Tray / cabling / conducting & wiring works | 2025-09-17 → 2025-09-16 (-1d) | 2025-10-06 → 2025-10-04 (-2d) |  | 259.36d → 260.83d |
| 1.3.1.1.7.3 | **Data & Communication** | 2025-08-22 → 2025-08-21 (-1d) | 2025-10-11 → 2025-10-10 (-1d) |  |  |
| PG-10818 | Tray Works | 2025-08-22 → 2025-08-21 (-1d) | 2025-09-05 → 2025-09-04 (-1d) |  | 254.36d → 255.83d |
| PG-10819 | Tray / cabling / conducting & wiring works | 2025-09-05 → 2025-09-04 (-1d) | 2025-09-23 → 2025-09-22 (-1d) |  | 254.36d → 255.83d |
| PG-10820 | Wiring/DB/connector box installation and termination works | 2025-09-23 → 2025-09-22 (-1d) | 2025-10-11 → 2025-10-10 (-1d) |  | 254.36d → 255.83d |
| 1.3.1.1.7.4 | **PHE** | 2025-08-25 → 2025-08-23 (-2d) | 2025-11-15 → 2025-11-14 (-1d) |  |  |
| PG-10821 | Bracket fixing works | 2025-08-25 → 2025-08-23 (-2d) | 2025-09-02 → 2025-09-01 (-1d) |  | 218.02d → 219.49d |
| PG-10822 | Piping Works | 2025-09-02 → 2025-09-01 (-1d) | 2025-09-19 → 2025-09-18 (-1d) |  | 218.02d → 219.49d |
| PG-10823 | Terrace Ring main & OHT Connection works | 2025-09-22 → 2025-09-20 (-2d) | 2025-11-10 → 2025-11-08 (-2d) |  | 216.36d → 217.83d |
| PG-10824 | Commissioning | 2025-11-10 → 2025-11-08 (-2d) | 2025-11-15 → 2025-11-14 (-1d) |  | 216.36d → 217.83d |
| 1.3.1.1.8 | **Lift Installation and Testing works** | 2025-08-06 → 2025-08-05 (-1d) | 2026-03-28 → 2026-03-27 (-1d) |  |  |
| PG-10825 | Lift Shaft Survey works | 2025-08-06 → 2025-08-05 (-1d) | 2025-08-19 → 2025-08-18 (-1d) |  | 147.36d → 148.83d |
| PG-10826 | Guide Rails fixing works | 2025-09-18 → 2025-09-17 (-1d) | 2025-11-06 → 2025-11-05 (-1d) |  | 120.86d → 122.33d |
| PG-10829 | Lift Machine Room Works |  | 2026-02-21 → 2026-02-20 (-1d) |  | 105.86d → 106.97d |
| PG-10830 | Slow Speed & High Speed Testing works | 2026-02-21 → 2026-02-20 (-1d) | 2026-03-28 → 2026-03-27 (-1d) |  | 105.86d → 106.97d |
| 1.3.1.1.9 | **Electrical Panel Works** | 2025-07-21 → 2025-07-19 (-2d) | 2026-02-26 → 2026-02-25 (-1d) |  |  |
| 1.3.1.1.9.1 | **Civil Finishing Works** | 2025-07-21 → 2025-07-19 (-2d) | 2025-09-04 → 2025-09-03 (-1d) |  |  |
| PG-10831 | Wall Tie rod hole packing & Grinding works. | 2025-07-21 → 2025-07-19 (-2d) | 2025-08-07 → 2025-08-06 (-1d) |  | 129.69d → 131.16d |
| PG-10832 | Window, Louver and Door fixing works | 2025-08-07 → 2025-08-06 (-1d) | 2025-08-16 → 2025-08-14 (-2d) |  | 129.69d → 131.16d |
| PG-10833 | Pedestal works | 2025-08-16 → 2025-08-14 (-2d) | 2025-08-28 → 2025-08-27 (-1d) |  | 129.69d → 131.16d |
| PG-10834 | Painting works | 2025-08-28 → 2025-08-27 (-1d) | 2025-09-04 → 2025-09-03 (-1d) |  | 129.69d → 131.16d |
| 1.3.1.1.9.2 | **Electrical Panel works** | 2025-09-04 → 2025-09-03 (-1d) | 2026-02-26 → 2026-02-25 (-1d) |  |  |
| PG-10835 | Electrical Panel assembly works | 2025-09-04 → 2025-09-03 (-1d) | 2025-11-13 → 2025-11-12 (-1d) |  | 129.69d → 131.16d |
| PG-10836 | Electrical Panel installation and cable termination. | 2025-11-13 → 2025-11-12 (-1d) | 2026-01-22 → 2026-01-21 (-1d) |  | 129.69d → 131.16d |
| PG-10837 | Electrical Panel Testing and commissioning works | 2026-01-22 → 2026-01-21 (-1d) | 2026-02-26 → 2026-02-25 (-1d) |  | 129.69d → 131.16d |
| 1.3.1.1.10 | **Entrance Lobby works** | 2026-02-10 → 2026-02-09 (-1d) | 2026-06-30 → 2026-06-29 (-1d) |  |  |
| PG-10838 | Flooring Works | 2026-02-10 → 2026-02-09 (-1d) | 2026-03-18 → 2026-03-17 (-1d) |  | 43.36d → 44.83d |
| PG-10839 | Glass Door and False ceiling Works | 2026-03-18 → 2026-03-17 (-1d) | 2026-04-22 → 2026-04-21 (-1d) |  | 43.36d → 44.83d |
| PG-10841 | Canopy Works | 2026-03-18 → 2026-03-17 (-1d) | 2026-04-17 → 2026-04-16 (-1d) |  | 62.19d → 63.66d |
| PG-10840 | Painting Works | 2026-04-22 → 2026-04-21 (-1d) |  |  | 43.36d → 44.83d |
| PG-10842 | Interior Works |  | 2026-06-30 → 2026-06-29 (-1d) |  | 43.36d → 44.83d |
| 1.3.1.1.11 | **Lightening Arrester works** | 2025-12-03 → 2025-12-02 (-1d) | 2025-12-16 → 2025-12-15 (-1d) |  |  |
| PG-10843 | Conductor will be lifted with RCC Works, But Terrace works will be done once Parapet Painting done | 2025-12-03 → 2025-12-02 (-1d) | 2025-12-16 → 2025-12-15 (-1d) |  | 248.19d → 249.66d |
| 1.3.1.2.2.20 | **Floor 17** |  | 2025-04-21 → 2025-04-22 (+1d) |  |  |
| 1.3.1.2.2.20.2 | **Slab, Beams & Staircase** |  | 2025-04-21 → 2025-04-22 (+1d) |  |  |
| PG-10956 | Reinforcement |  | 2025-04-19 → 2025-04-21 A (+2d) | 40% → 100% | 14.27d → none |
| PG-10957 | Concrete | 2025-04-21 A | 2025-04-21 → 2025-04-22 A (+1d) | 0% → 100% | 14.27d → none |
| PG-10958 | Reinforcement | 2025-04-22 A |  | 0% → 84% | 14.27d → 15.18d |
| PG-10959 | Formwork | 2025-04-24 A |  | 0% → 27% | 14.27d → 14.9d |

| ID | Task | Start | Total float |
| --- | --- | --- | --- |
| 1.3.1.2.2.21.2 | **Slab, Beams & Staircase** | 2025-04-28 → 2025-04-26 (-2d) |  |
| PG-10960 | Formwork | 2025-04-28 → 2025-04-26 (-2d) | 14.27d → 14.9d |
| PG-10961 | Reinforcement | 2025-04-30 → 2025-04-29 (-1d) | 14.27d → 14.9d |
| PG-10962 | Concrete | 2025-05-03 → 2025-05-02 (-1d) | 14.27d → 14.9d |
| 1.3.1.2.2.22 | **Floor 19** | 2025-05-05 → 2025-05-03 (-2d) |  |
| 1.3.1.2.2.22.1 | **Columns / shear walls** | 2025-05-05 → 2025-05-03 (-2d) |  |
| PG-10963 | Reinforcement | 2025-05-05 → 2025-05-03 (-2d) | 14.27d → 14.9d |
| PG-10964 | Formwork | 2025-05-07 → 2025-05-06 (-1d) | 14.27d → 14.9d |
| 1.3.1.2.2.22.2 | **Slab, Beams & Staircase** | 2025-05-10 → 2025-05-09 (-1d) |  |
| PG-10965 | Formwork | 2025-05-10 → 2025-05-09 (-1d) | 14.27d → 14.9d |
| PG-10966 | Reinforcement | 2025-05-13 → 2025-05-12 (-1d) | 14.27d → 14.9d |
| PG-10967 | Concrete | 2025-05-16 → 2025-05-15 (-1d) | 14.27d → 14.9d |
| 1.3.1.2.2.23 | **Floor 20** | 2025-05-17 → 2025-05-16 (-1d) |  |
| 1.3.1.2.2.23.1 | **Columns / shear walls** | 2025-05-17 → 2025-05-16 (-1d) |  |
| PG-10968 | Reinforcement | 2025-05-17 → 2025-05-16 (-1d) | 14.27d → 14.9d |
| PG-10969 | Formwork | 2025-05-20 → 2025-05-19 (-1d) | 14.27d → 14.9d |
| 1.3.1.2.2.23.2 | **Slab, Beams & Staircase** | 2025-05-23 → 2025-05-22 (-1d) |  |
| PG-10970 | Formwork | 2025-05-23 → 2025-05-22 (-1d) | 14.27d → 14.9d |
| PG-10971 | Reinforcement | 2025-05-26 → 2025-05-24 (-2d) | 14.27d → 14.9d |
| PG-10972 | Concrete | 2025-05-29 → 2025-05-28 (-1d) | 14.27d → 14.9d |
| 1.3.1.2.2.24 | **Floor 21** | 2025-05-30 → 2025-05-29 (-1d) |  |
| 1.3.1.2.2.24.1 | **Columns / shear walls** | 2025-05-30 → 2025-05-29 (-1d) |  |
| PG-10973 | Reinforcement | 2025-05-30 → 2025-05-29 (-1d) | 14.27d → 14.9d |
| PG-10974 | Formwork | 2025-06-02 → 2025-05-31 (-2d) | 14.27d → 14.9d |
| 1.3.1.2.2.24.2 | **Slab, Beams & Staircase** | 2025-06-05 → 2025-06-04 (-1d) |  |
| PG-10975 | Formwork | 2025-06-05 → 2025-06-04 (-1d) | 14.27d → 14.9d |
| PG-10976 | Reinforcement | 2025-06-07 → 2025-06-06 (-1d) | 14.27d → 14.9d |
| PG-10977 | Concrete | 2025-06-11 → 2025-06-10 (-1d) | 14.27d → 14.9d |
| 1.3.1.2.2.25 | **Floor 22** | 2025-06-12 → 2025-06-11 (-1d) |  |
| 1.3.1.2.2.25.1 | **Columns / shear walls** | 2025-06-12 → 2025-06-11 (-1d) |  |
| PG-10978 | Reinforcement | 2025-06-12 → 2025-06-11 (-1d) | 14.27d → 14.9d |
| PG-10979 | Formwork | 2025-06-14 → 2025-06-13 (-1d) | 14.27d → 14.9d |
| 1.3.1.2.2.25.2 | **Slab, Beams & Staircase** | 2025-06-18 → 2025-06-17 (-1d) |  |
| PG-10980 | Formwork | 2025-06-18 → 2025-06-17 (-1d) | 14.27d → 14.9d |
| PG-10981 | Reinforcement | 2025-06-20 → 2025-06-19 (-1d) | 14.27d → 14.9d |
| PG-10982 | Concrete | 2025-06-24 → 2025-06-23 (-1d) | 14.27d → 14.9d |
| 1.3.1.2.2.26 | **Floor 23** | 2025-06-25 → 2025-06-24 (-1d) |  |
| 1.3.1.2.2.26.1 | **Columns / shear walls** | 2025-06-25 → 2025-06-24 (-1d) |  |
| PG-10983 | Reinforcement | 2025-06-25 → 2025-06-24 (-1d) | 14.27d → 14.9d |
| PG-10984 | Formwork | 2025-06-27 → 2025-06-26 (-1d) | 14.27d → 14.9d |
| 1.3.1.2.2.26.2 | **Slab, Beams & Staircase** | 2025-07-01 → 2025-06-30 (-1d) |  |
| PG-10985 | Formwork | 2025-07-01 → 2025-06-30 (-1d) | 14.27d → 14.9d |
| PG-10986 | Reinforcement | 2025-07-03 → 2025-07-02 (-1d) | 14.27d → 14.9d |
| PG-10987 | Concrete | 2025-07-07 → 2025-07-05 (-2d) | 14.27d → 14.9d |
| 1.3.1.2.2.27 | **Floor 24** | 2025-07-08 → 2025-07-07 (-1d) |  |
| 1.3.1.2.2.27.1 | **Columns / shear walls** | 2025-07-08 → 2025-07-07 (-1d) |  |
| PG-10988 | Reinforcement | 2025-07-08 → 2025-07-07 (-1d) | 14.27d → 14.9d |
| PG-10989 | Formwork | 2025-07-10 → 2025-07-09 (-1d) | 14.27d → 14.9d |
| 1.3.1.2.2.27.2 | **Slab, Beams & Staircase** | 2025-07-14 → 2025-07-12 (-2d) |  |
| PG-10990 | Formwork | 2025-07-14 → 2025-07-12 (-2d) | 14.27d → 14.9d |
| PG-10991 | Reinforcement | 2025-07-16 → 2025-07-15 (-1d) | 14.27d → 14.9d |
| PG-10992 | Concrete | 2025-07-19 → 2025-07-18 (-1d) | 14.27d → 14.9d |
| 1.3.1.2.2.28 | **Floor 25** | 2025-07-21 → 2025-07-19 (-2d) |  |
| 1.3.1.2.2.28.1 | **Columns / shear walls** | 2025-07-21 → 2025-07-19 (-2d) |  |
| PG-10993 | Reinforcement | 2025-07-21 → 2025-07-19 (-2d) | 14.27d → 14.9d |
| PG-10994 | Formwork | 2025-07-23 → 2025-07-22 (-1d) | 14.27d → 14.9d |
| 1.3.1.2.2.28.2 | **Slab, Beams & Staircase** | 2025-07-26 → 2025-07-25 (-1d) |  |
| PG-10995 | Formwork | 2025-07-26 → 2025-07-25 (-1d) | 14.27d → 14.9d |
| PG-10996 | Reinforcement | 2025-07-29 → 2025-07-28 (-1d) | 14.27d → 14.9d |
| PG-10997 | Concrete | 2025-08-01 → 2025-07-31 (-1d) | 14.27d → 14.9d |
| 1.3.1.2.2.29 | **Floor 26** | 2025-08-02 → 2025-08-01 (-1d) |  |
| 1.3.1.2.2.29.1 | **Columns / shear walls** | 2025-08-02 → 2025-08-01 (-1d) |  |
| PG-10998 | Reinforcement | 2025-08-02 → 2025-08-01 (-1d) | 14.27d → 14.9d |
| PG-10999 | Formwork | 2025-08-05 → 2025-08-04 (-1d) | 14.27d → 14.9d |
| 1.3.1.2.2.29.2 | **Slab, Beams & Staircase** | 2025-08-08 → 2025-08-07 (-1d) |  |
| PG-11000 | Formwork | 2025-08-08 → 2025-08-07 (-1d) | 14.27d → 14.9d |
| PG-11001 | Reinforcement | 2025-08-11 → 2025-08-09 (-2d) | 14.27d → 14.9d |
| PG-11002 | Concrete | 2025-08-14 → 2025-08-13 (-1d) | 14.27d → 14.9d |
| 1.3.1.2.2.30 | **Above Terrace Floor** | 2025-08-16 → 2025-08-14 (-2d) |  |
| 1.3.1.2.2.30.1 | **Columns / shear walls/Parapet Walls** | 2025-08-16 → 2025-08-14 (-2d) |  |

| ID | Task | Start | Finish | Complete | Total float |
| --- | --- | --- | --- | --- | --- |
| PG-11003 | Reinforcement | 2025-08-16 → 2025-08-14 (-2d) |  |  | 119.77d → 120.4d |
| PG-11004 | Formwork | 2025-08-19 → 2025-08-18 (-1d) |  |  | 119.77d → 120.4d |
| PG-11005 | Concrete | 2025-08-25 → 2025-08-23 (-2d) |  |  | 119.77d → 120.4d |
| 1.3.1.2.2.30.2 | **Slab, Beams & Staircase Head rooms, Lift headroom** | 2025-08-22 → 2025-08-21 (-1d) |  |  |  |
| PG-11009 | Terrace Waterproofing and Protective finishing. | 2025-08-22 → 2025-08-21 (-1d) |  |  | 212.44d → 213.07d |
| 1.3.1.2.3.10 | **Floor 7** |  | 2025-04-30 → 2025-05-01 (+1d) |  |  |
| 1.3.1.2.3.10.1 | **PHE Works** |  | 2025-04-30 → 2025-05-01 (+1d) |  |  |
| PG-11082 | Final Fix - CP & Sanitary fixtures | 2025-04-18 → 2025-04-19 A (+1d) | 2025-04-30 → 2025-05-01 (+1d) | 0% → 56% | 405.77d → 405.33d |
| 1.3.1.2.3.10.2 | **Fire Fighting Works** |  | 2025-04-30 → 2025-05-01 (+1d) |  |  |
| PG-11085 | Final Fix - Smoke & heat detectors, FHC , FAS Etc. | 2025-04-18 → 2025-04-19 A (+1d) | 2025-04-30 → 2025-05-01 (+1d) | 0% → 52% | 405.77d → 405.33d |
| 1.3.1.2.3.10.3 | **Electrical Works** |  | 2025-04-30 → 2025-05-01 (+1d) |  |  |
| PG-11088 | Final Fix - Electrical Fixtures | 2025-04-23 → 2025-04-24 A (+1d) | 2025-04-30 → 2025-05-01 (+1d) | 0% → 17% | 405.77d → 405.33d |
| 1.3.1.2.3.11 | **Floor 8** |  | 2025-05-16 → 2025-05-20 (+4d) |  |  |
| 1.3.1.2.3.11.1 | **PHE Works** |  | 2025-05-16 → 2025-05-20 (+4d) |  |  |
| PG-11091 | Final Fix - CP & Sanitary fixtures | 2025-05-05 → 2025-05-08 (+3d) | 2025-05-16 → 2025-05-20 (+4d) |  | 391.53d → 389.34d |
| 1.3.1.2.3.11.2 | **Fire Fighting Works** |  | 2025-05-16 → 2025-05-20 (+4d) |  |  |
| PG-11093 | 2nd Fix - Sprinkler fixing & Pressure testing |  | 2025-04-24 → 2025-04-25 A (+1d) | 47% → 100% | 400.94d → none |
| PG-11094 | Final Fix - Smoke & heat detectors, FHC , FAS Etc. | 2025-05-06 → 2025-05-09 (+3d) | 2025-05-16 → 2025-05-20 (+4d) |  | 391.53d → 389.34d |
| 1.3.1.2.3.11.3 | **Electrical Works** |  | 2025-05-16 → 2025-05-20 (+4d) |  |  |
| PG-11096 | 2nd Fix - Wiring works |  | 2025-04-23 → 2025-04-24 A (+1d) | 61% → 100% | 405.94d → none |
| PG-11097 | Final Fix - Electrical Fixtures | 2025-05-10 → 2025-05-14 (+4d) | 2025-05-16 → 2025-05-20 (+4d) |  | 391.53d → 389.34d |
| PG-11102 | 2nd Fix - Sprinkler fixing & Pressure testing | 2025-04-26 → 2025-04-25 (-1d) |  |  | 389.94d → 390.52d |
| PG-11105 | 2nd Fix - Wiring works | 2025-04-19 → 2025-04-21 A (+2d) | 2025-05-06 → 2025-05-08 (+2d) | 0% → 22% | 394.77d → 394.02d |
| PG-11106 | Final Fix - Electrical Fixtures | 2025-05-23 → 2025-05-22 (-1d) |  |  | 380.77d → 381.35d |
| PG-11110 | 1st Fix - Piping and Shaft hydrant works |  | 2025-04-19 A | 98% → 100% | 413.77d → none |
| 1.3.1.2.3.14 | **Floor 11** |  | 2025-06-27 → 2025-06-28 (+1d) |  |  |
| 1.3.1.2.3.14.1 | **PHE Works** |  | 2025-06-27 → 2025-06-28 (+1d) |  |  |
| PG-11116 | 1st Fix - Piping works |  | 2025-04-22 → 2025-04-23 A (+1d) | 69% → 100% | 356.22d → none |
| PG-11117 | 2nd Fix - diverter fixing & Pressure testing |  | 2025-04-29 → 2025-04-30 (+1d) | 3% → 63% | 356.22d → 355.75d |
| PG-11118 | Final Fix - CP & Sanitary fixtures | 2025-06-14 → 2025-06-16 (+2d) | 2025-06-27 → 2025-06-28 (+1d) |  | 356.22d → 355.75d |
| 1.3.1.2.3.14.2 | **Fire Fighting Works** |  | 2025-06-27 → 2025-06-28 (+1d) |  |  |
| PG-11119 | 1st Fix - Piping and Shaft hydrant works |  |  | 3% → 53% | 403.45d → 403.83d |
| PG-11120 | 2nd Fix - Sprinkler fixing & Pressure testing | 2025-05-24 → 2025-05-26 (+2d) | 2025-06-05 → 2025-06-06 (+1d) |  | 364.05d → 363.58d |
| PG-11121 | Final Fix - Smoke & heat detectors, FHC , FAS Etc. | 2025-06-14 → 2025-06-16 (+2d) | 2025-06-27 → 2025-06-28 (+1d) |  | 356.22d → 355.75d |
| 1.3.1.2.3.14.3 | **Electrical Works** |  | 2025-06-27 → 2025-06-28 (+1d) |  |  |
| PG-11123 | 2nd Fix - Wiring works | 2025-05-21 → 2025-05-22 (+1d) | 2025-06-04 → 2025-06-05 (+1d) |  | 369.89d → 369.42d |
| PG-11124 | Final Fix - Electrical Fixtures | 2025-06-20 → 2025-06-21 (+1d) | 2025-06-27 → 2025-06-28 (+1d) |  | 356.22d → 355.75d |
| PG-11125 | 1st Fix - Piping works | 2025-04-22 A | 2025-05-05 → 2025-05-06 (+1d) | 0% → 23% | 344.94d → 345.27d |
| PG-11126 | 2nd Fix - diverter fixing & Pressure testing |  | 2025-05-12 → 2025-05-13 (+1d) |  | 344.94d → 345.27d |
| PG-11129 | 2nd Fix - Sprinkler fixing & Pressure testing |  | 2025-06-18 → 2025-06-19 (+1d) |  | 353.94d → 354.27d |
| PG-11131 | 1st Fix - GI wire pulling | 2025-04-22 A |  | 0% → 38% | 392.61d → 393.14d |
| PG-11132 | 2nd Fix - Wiring works |  | 2025-06-17 → 2025-06-18 (+1d) |  | 358.94d → 359.27d |
| 1.3.1.2.3.16 | **Floor 13** | 2025-05-05 → 2025-05-03 (-2d) |  |  |  |
| 1.3.1.2.3.16.1 | **PHE Works** | 2025-05-05 → 2025-05-03 (-2d) |  |  |  |
| PG-11134 | 1st Fix - Piping works | 2025-05-05 → 2025-05-03 (-2d) |  |  | 333.94d → 334.57d |
| PG-11135 | 2nd Fix - diverter fixing & Pressure testing | 2025-05-14 → 2025-05-13 (-1d) |  |  | 333.94d → 334.57d |
| PG-11136 | Final Fix - CP & Sanitary fixtures | 2025-07-12 → 2025-07-11 (-1d) |  |  | 333.94d → 334.57d |
| PG-11138 | 2nd Fix - Sprinkler fixing & Pressure testing | 2025-06-20 → 2025-06-19 (-1d) |  |  | 342.94d → 343.57d |
| PG-11139 | Final Fix - Smoke & heat detectors, FHC , FAS Etc. | 2025-07-12 → 2025-07-11 (-1d) |  |  | 333.94d → 334.57d |
| 1.3.1.2.3.16.3 | **Electrical Works** | 2025-05-05 → 2025-05-03 (-2d) |  |  |  |
| PG-11140 | 1st Fix - GI wire pulling | 2025-05-05 → 2025-05-03 (-2d) |  |  | 380.94d → 381.57d |
| PG-11142 | Final Fix - Electrical Fixtures | 2025-07-18 → 2025-07-17 (-1d) |  |  | 333.94d → 334.57d |
| 1.3.1.2.3.17 | **Floor 14** | 2025-05-17 → 2025-05-16 (-1d) |  |  |  |
| 1.3.1.2.3.17.1 | **PHE Works** | 2025-05-17 → 2025-05-16 (-1d) |  |  |  |
| PG-11143 | 1st Fix - Piping works | 2025-05-17 → 2025-05-16 (-1d) |  |  | 322.94d → 323.57d |
| PG-11144 | 2nd Fix - diverter fixing & Pressure testing | 2025-05-27 → 2025-05-26 (-1d) |  |  | 322.94d → 323.57d |
| PG-11145 | Final Fix - CP & Sanitary fixtures | 2025-07-26 → 2025-07-25 (-1d) |  |  | 322.94d → 323.57d |
| PG-11147 | 2nd Fix - Sprinkler fixing & Pressure testing | 2025-07-03 → 2025-07-02 (-1d) |  |  | 332.94d → 333.57d |
| PG-11148 | Final Fix - Smoke & heat detectors, FHC , FAS Etc. | 2025-07-26 → 2025-07-25 (-1d) |  |  | 322.94d → 323.57d |
| 1.3.1.2.3.17.3 | **Electrical Works** | 2025-05-17 → 2025-05-16 (-1d) |  |  |  |
| PG-11149 | 1st Fix - GI wire pulling | 2025-05-17 → 2025-05-16 (-1d) |  |  | 368.94d → 369.57d |
| PG-11151 | Final Fix - Electrical Fixtures | 2025-07-31 → 2025-07-30 (-1d) |  |  | 322.94d → 323.57d |
| 1.3.1.2.3.18 | **Floor 15** | 2025-05-30 → 2025-05-29 (-1d) |  |  |  |
| 1.3.1.2.3.18.1 | **PHE Works** | 2025-05-30 → 2025-05-29 (-1d) |  |  |  |
| PG-11152 | 1st Fix - Piping works | 2025-05-30 → 2025-05-29 (-1d) |  |  | 161.94d → 162.57d |
| PG-11153 | 2nd Fix - diverter fixing & Pressure testing | 2025-06-09 → 2025-06-07 (-2d) |  |  | 161.94d → 162.57d |
| PG-11154 | Final Fix - CP & Sanitary fixtures | 2025-08-07 → 2025-08-06 (-1d) |  |  | 312.94d → 313.57d |
| PG-11156 | 2nd Fix - Sprinkler fixing & Pressure testing | 2025-07-16 → 2025-07-15 (-1d) |  |  | 321.94d → 322.57d |
| PG-11157 | Final Fix - Smoke & heat detectors, FHC , FAS Etc. | 2025-08-07 → 2025-08-06 (-1d) |  |  | 312.94d → 313.57d |
| 1.3.1.2.3.18.3 | **Electrical Works** | 2025-05-30 → 2025-05-29 (-1d) |  |  |  |

| ID | Task | Start | Finish | Complete | Total float |
| --- | --- | --- | --- | --- | --- |
| PG-11158 | 1st Fix - GI wire pulling | 2025-05-30 → 2025-05-29 (-1d) |  |  | 359.61d → 360.24d |
| PG-11160 | Final Fix - Electrical Fixtures | 2025-08-12 → 2025-08-11 (-1d) |  |  | 312.94d → 313.57d |
| 1.3.1.2.3.19 | **Floor 16** | 2025-06-12 → 2025-06-11 (-1d) |  |  |  |
| 1.3.1.2.3.19.1 | **PHE Works** | 2025-06-12 → 2025-06-11 (-1d) |  |  |  |
| PG-11161 | 1st Fix - Piping works | 2025-06-12 → 2025-06-11 (-1d) |  |  | 302.61d → 303.24d |
| PG-11162 | 2nd Fix - diverter fixing & Pressure testing | 2025-06-21 → 2025-06-20 (-1d) |  |  | 302.61d → 303.24d |
| PG-11165 | 2nd Fix - Sprinkler fixing & Pressure testing | 2025-07-29 → 2025-07-28 (-1d) |  |  | 309.77d → 310.4d |
| 1.3.1.2.3.19.3 | **Electrical Works** | 2025-06-12 → 2025-06-11 (-1d) |  |  |  |
| PG-11167 | 1st Fix - GI wire pulling | 2025-06-12 → 2025-06-11 (-1d) |  |  | 348.44d → 349.07d |
| PG-11169 | Final Fix - Electrical Fixtures | 2025-08-25 → 2025-08-23 (-2d) |  |  | 302.61d → 303.24d |
| 1.3.1.2.3.20 | **Floor 17** | 2025-06-25 → 2025-06-24 (-1d) |  |  |  |
| 1.3.1.2.3.20.1 | **PHE Works** | 2025-06-25 → 2025-06-24 (-1d) |  |  |  |
| PG-11170 | 1st Fix - Piping works | 2025-06-25 → 2025-06-24 (-1d) |  |  | 291.61d → 292.24d |
| PG-11171 | 2nd Fix - diverter fixing & Pressure testing | 2025-07-04 → 2025-07-03 (-1d) |  |  | 291.61d → 292.24d |
| PG-11174 | 2nd Fix - Sprinkler fixing & Pressure testing | 2025-08-11 → 2025-08-09 (-2d) |  |  | 298.77d → 299.4d |
| 1.3.1.2.3.20.3 | **Electrical Works** | 2025-06-25 → 2025-06-24 (-1d) |  |  |  |
| PG-11176 | 1st Fix - GI wire pulling | 2025-06-25 → 2025-06-24 (-1d) |  |  | 337.44d → 338.07d |
| PG-11178 | Final Fix - Electrical Fixtures | 2025-09-06 → 2025-09-05 (-1d) |  |  | 291.61d → 292.24d |
| 1.3.1.2.3.21 | **Floor 18** | 2025-07-08 → 2025-07-07 (-1d) |  |  |  |
| 1.3.1.2.3.21.1 | **PHE Works** | 2025-07-08 → 2025-07-07 (-1d) |  |  |  |
| PG-11179 | 1st Fix - Piping works | 2025-07-08 → 2025-07-07 (-1d) |  |  | 279.77d → 280.4d |
| PG-11180 | 2nd Fix - diverter fixing & Pressure testing | 2025-07-18 → 2025-07-17 (-1d) |  |  | 279.77d → 280.4d |
| 1.3.1.2.3.21.3 | **Electrical Works** | 2025-07-08 → 2025-07-07 (-1d) |  |  |  |
| PG-11185 | 1st Fix - GI wire pulling | 2025-07-08 → 2025-07-07 (-1d) |  |  | 327.44d → 328.07d |
| 1.3.1.2.3.22 | **Floor 19** | 2025-07-21 → 2025-07-19 (-2d) |  |  |  |
| 1.3.1.2.3.22.1 | **PHE Works** | 2025-07-21 → 2025-07-19 (-2d) |  |  |  |
| PG-11188 | 1st Fix - Piping works | 2025-07-21 → 2025-07-19 (-2d) |  |  | 268.77d → 269.4d |
| PG-11189 | 2nd Fix - diverter fixing & Pressure testing | 2025-07-31 → 2025-07-30 (-1d) |  |  | 268.77d → 269.4d |
| 1.3.1.2.3.22.3 | **Electrical Works** | 2025-07-21 → 2025-07-19 (-2d) |  |  |  |
| PG-11194 | 1st Fix - GI wire pulling | 2025-07-21 → 2025-07-19 (-2d) |  |  | 316.44d → 317.07d |
| 1.3.1.2.3.23 | **Floor 20** | 2025-08-02 → 2025-08-01 (-1d) |  |  |  |
| 1.3.1.2.3.23.1 | **PHE Works** | 2025-08-02 → 2025-08-01 (-1d) |  |  |  |
| PG-11197 | 1st Fix - Piping works | 2025-08-02 → 2025-08-01 (-1d) |  |  | 256.77d → 257.4d |
| PG-11198 | 2nd Fix - diverter fixing & Pressure testing | 2025-08-14 → 2025-08-13 (-1d) |  |  | 256.77d → 257.4d |
| 1.3.1.2.3.23.3 | **Electrical Works** | 2025-08-02 → 2025-08-01 (-1d) |  |  |  |
| PG-11203 | 1st Fix - GI wire pulling | 2025-08-02 → 2025-08-01 (-1d) |  |  | 304.61d → 305.24d |
| 1.3.1.2.3.24 | **Floor 21** | 2025-08-16 → 2025-08-14 (-2d) |  |  |  |
| 1.3.1.2.3.24.1 | **PHE Works** | 2025-08-16 → 2025-08-14 (-2d) |  |  |  |
| PG-11206 | 1st Fix - Piping works | 2025-08-16 → 2025-08-14 (-2d) |  |  | 14.27d → 14.9d |
| PG-11207 | 2nd Fix - diverter fixing & Pressure testing | 2025-08-25 → 2025-08-23 (-2d) |  |  | 247.11d → 247.74d |
| 1.3.1.2.3.24.2 | **Fire Fighting Works** | 2025-08-25 → 2025-08-23 (-2d) |  |  |  |
| PG-11209 | 1st Fix - Piping and Shaft hydrant works | 2025-08-25 → 2025-08-23 (-2d) |  |  | 294.77d → 295.4d |
| 1.3.1.2.3.24.3 | **Electrical Works** | 2025-08-16 → 2025-08-14 (-2d) |  |  |  |
| PG-11212 | 1st Fix - GI wire pulling | 2025-08-16 → 2025-08-14 (-2d) |  |  | 294.77d → 295.4d |
| PG-11219 | 2nd Fix - Sprinkler fixing & Pressure testing | 2025-10-23 → 2025-10-22 (-1d) |  |  | 237.27d → 237.9d |
| PG-11222 | 2nd Fix - Wiring works | 2025-10-16 → 2025-10-15 (-1d) |  |  | 242.27d → 242.9d |
| 1.3.1.2.4.10 | **Floor 7** |  | 2025-04-24 → 2025-04-25 (+1d) |  |  |
| 1.3.1.2.4.10.1 | **Ceiling Finishing works - Civil** |  | 2025-04-24 → 2025-04-25 (+1d) |  |  |
| PG-11373 | Final Coat Painting |  | 2025-04-24 → 2025-04-25 A (+1d) | 70% → 100% | 440.01d → none |
| 1.3.1.2.4.10.2 | **Wall Finishing works - Civil** |  | 2025-04-23 → 2025-04-24 (+1d) |  |  |
| PG-11378 | Final Coat Painting |  | 2025-04-23 → 2025-04-24 A (+1d) | 76% → 100% | 405.77d → none |
| 1.3.1.2.4.11 | **Floor 8** |  | 2025-05-12 → 2025-05-15 (+3d) |  |  |
| 1.3.1.2.4.11.1 | **Ceiling Finishing works - Civil** |  | 2025-05-12 → 2025-05-15 (+3d) |  |  |
| PG-11387 | Final Coat Painting |  | 2025-05-12 → 2025-05-15 (+3d) | 3% → 17% | 425.06d → 422.53d |
| 1.3.1.2.4.11.2 | **Wall Finishing works - Civil** |  | 2025-05-09 → 2025-05-13 (+4d) |  |  |
| PG-11392 | Final Coat Painting |  | 2025-05-09 → 2025-05-13 (+4d) | 3% → 20% | 391.53d → 389.34d |
| PG-11399 | Painting Works - Putty, Primer and 1st | 2025-04-24 A |  | 0% → 21% | 415.27d → 416.08d |
| PG-11401 | Final Coat Painting | 2025-05-01 → 2025-04-30 (-1d) |  |  | 415.27d → 415.85d |
| PG-11403 | UPVC Windows & Sliding doors |  | 2025-04-23 → 2025-04-24 A (+1d) | 11% → 100% | 380.77d → none |
| PG-11405 | Painting Works - Putty, Primer and 1st | 2025-04-24 A |  | 0% → 17% | 380.77d → 381.35d |
| PG-11406 | Final Coat Painting | 2025-05-01 → 2025-04-30 (-1d) |  |  | 380.77d → 381.35d |
| PG-11410 | Wooden doors | 2025-04-25 A |  | 0% → 3% | 380.77d → 381.35d |
| PG-11412 | Cornice fixing | 2025-04-22 A |  | 0% → 84% | 413.77d → 414.67d |
| PG-11418 | Dadoing - Wet area |  | 2025-04-22 → 2025-04-23 A (+1d) | 27% → 100% | 367.29d → none |
| PG-11422 | Floor Tiling - Wet area | 2025-04-22 → 2025-04-23 A (+1d) |  | 0% → 49% | 367.29d → 367.93d |
| 1.3.1.2.4.14 | **Floor 11** |  | 2025-06-20 → 2025-06-21 (+1d) |  |  |
| 1.3.1.2.4.14.1 | **Ceiling Finishing works - Civil** |  | 2025-06-20 → 2025-06-21 (+1d) |  |  |
| PG-11425 | Gypsum Plastering |  | 2025-04-24 → 2025-04-25 A (+1d) | 3% → 100% | 403.45d → none |
| PG-11426 | Cornice fixing | 2025-05-03 → 2025-05-05 (+2d) |  |  | 403.45d → 403.83d |
| PG-11428 | Toilet False ceiling | 2025-05-12 → 2025-05-13 (+1d) | 2025-05-16 → 2025-05-17 (+1d) |  | 381.05d → 380.58d |

| ID | Task | Start | Finish | Complete | Total float |
| --- | --- | --- | --- | --- | --- |
| PG-11427 | Painting Works - Putty, Primer and 1st | 2025-05-22 → 2025-05-23 (+1d) | 2025-05-29 → 2025-05-30 (+1d) |  | 391.55d → 391.08d |
| PG-11429 | Final Coat Painting | 2025-05-29 → 2025-05-30 (+1d) | 2025-06-20 → 2025-06-21 (+1d) |  | 391.55d → 391.08d |
| 1.3.1.2.4.14.2 | **Wall Finishing works - Civil** |  | 2025-06-20 → 2025-06-21 (+1d) |  |  |
| PG-11432 | Dadoing - Wet area | 2025-04-29 → 2025-04-30 (+1d) | 2025-05-05 → 2025-05-06 (+1d) |  | 356.22d → 355.75d |
| PG-11431 | UPVC Windows & Sliding doors | 2025-05-16 → 2025-05-17 (+1d) | 2025-05-22 → 2025-05-23 (+1d) |  | 356.22d → 355.75d |
| PG-11433 | Painting Works - Putty, Primer and 1st | 2025-05-22 → 2025-05-23 (+1d) | 2025-05-29 → 2025-05-30 (+1d) |  | 356.22d → 355.75d |
| PG-11434 | Final Coat Painting | 2025-05-29 → 2025-05-30 (+1d) | 2025-06-20 → 2025-06-21 (+1d) |  | 356.22d → 355.75d |
| 1.3.1.2.4.14.3 | **Floor Finishing Works - Civil** |  | 2025-05-29 → 2025-05-30 (+1d) |  |  |
| PG-11436 | Floor Tiling - Wet area | 2025-05-05 → 2025-05-06 (+1d) | 2025-05-10 → 2025-05-12 (+2d) |  | 356.22d → 355.75d |
| PG-11437 | Floor Tiling - Dry area | 2025-05-10 → 2025-05-12 (+2d) | 2025-05-16 → 2025-05-17 (+1d) |  | 356.22d → 355.75d |
| PG-11438 | Wooden doors | 2025-05-23 → 2025-05-24 (+1d) | 2025-05-29 → 2025-05-30 (+1d) |  | 356.22d → 355.75d |
| PG-11442 | Toilet False ceiling |  | 2025-05-29 → 2025-05-30 (+1d) |  | 370.94d → 371.27d |
| PG-11441 | Painting Works - Putty, Primer and 1st |  | 2025-06-11 → 2025-06-12 (+1d) |  | 380.44d → 380.77d |
| PG-11444 | Balcony Railing Fixing works | 2025-04-22 A | 2025-04-25 → 2025-04-26 (+1d) | 0% → 74% | 373.94d → 374.46d |
| PG-11446 | Dadoing - Wet area |  | 2025-05-17 → 2025-05-19 (+2d) |  | 344.94d → 345.27d |
| PG-11445 | UPVC Windows & Sliding doors |  | 2025-06-04 → 2025-06-05 (+1d) |  | 344.94d → 345.27d |
| PG-11447 | Painting Works - Putty, Primer and 1st |  | 2025-06-11 → 2025-06-12 (+1d) |  | 344.94d → 345.27d |
| 1.3.1.2.4.15.3 | **Floor Finishing Works - Civil** |  | 2025-06-11 → 2025-06-12 (+1d) |  |  |
| PG-11449 | Waterproofing for sunken areas | 2025-04-22 A | 2025-04-24 → 2025-04-25 A (+1d) | 0% → 100% | 364.94d → none |
| PG-11450 | Floor Tiling - Wet area |  | 2025-05-23 → 2025-05-24 (+1d) |  | 344.94d → 345.27d |
| PG-11451 | Floor Tiling - Dry area |  | 2025-05-29 → 2025-05-30 (+1d) |  | 344.94d → 345.27d |
| PG-11452 | Wooden doors |  | 2025-06-11 → 2025-06-12 (+1d) |  | 344.94d → 345.27d |
| 1.3.1.2.4.16 | **Floor 13** | 2025-05-05 → 2025-05-03 (-2d) |  |  |  |
| PG-11456 | Toilet False ceiling | 2025-06-07 → 2025-06-06 (-1d) |  |  | 359.94d → 360.57d |
| PG-11455 | Painting Works - Putty, Primer and 1st | 2025-06-18 → 2025-06-17 (-1d) |  |  | 368.61d → 369.24d |
| PG-11457 | Final Coat Painting | 2025-06-25 → 2025-06-24 (-1d) |  |  | 368.61d → 369.24d |
| 1.3.1.2.4.16.2 | **Wall Finishing works - Civil** | 2025-05-05 → 2025-05-03 (-2d) |  |  |  |
| PG-11458 | Balcony Railing Fixing works | 2025-05-05 → 2025-05-03 (-2d) |  |  | 362.94d → 363.57d |
| PG-11460 | Dadoing - Wet area | 2025-05-26 → 2025-05-24 (-2d) |  |  | 333.94d → 334.57d |
| PG-11459 | UPVC Windows & Sliding doors | 2025-06-12 → 2025-06-11 (-1d) |  |  | 333.94d → 334.57d |
| PG-11461 | Painting Works - Putty, Primer and 1st | 2025-06-18 → 2025-06-17 (-1d) |  |  | 333.94d → 334.57d |
| PG-11462 | Final Coat Painting | 2025-06-25 → 2025-06-24 (-1d) |  |  | 333.94d → 334.57d |
| 1.3.1.2.4.16.3 | **Floor Finishing Works - Civil** | 2025-05-05 → 2025-05-03 (-2d) |  |  |  |
| PG-11463 | Waterproofing for sunken areas | 2025-05-05 → 2025-05-03 (-2d) |  |  | 353.94d → 354.57d |
| PG-11464 | Floor Tiling - Wet area | 2025-05-31 → 2025-05-30 (-1d) |  |  | 333.94d → 334.57d |
| PG-11465 | Floor Tiling - Dry area | 2025-06-06 → 2025-06-05 (-1d) |  |  | 333.94d → 334.57d |
| PG-11466 | Wooden doors | 2025-06-19 → 2025-06-18 (-1d) |  |  | 333.94d → 334.57d |
| 1.3.1.2.4.17 | **Floor 14** | 2025-05-17 → 2025-05-16 (-1d) |  |  |  |
| PG-11470 | Toilet False ceiling | 2025-06-20 → 2025-06-19 (-1d) |  |  | 349.94d → 350.57d |
| PG-11469 | Painting Works - Putty, Primer and 1st | 2025-07-01 → 2025-06-30 (-1d) |  |  | 357.61d → 358.24d |
| PG-11471 | Final Coat Painting | 2025-07-08 → 2025-07-07 (-1d) |  |  | 357.61d → 358.24d |
| 1.3.1.2.4.17.2 | **Wall Finishing works - Civil** | 2025-05-17 → 2025-05-16 (-1d) |  |  |  |
| PG-11472 | Balcony Railing Fixing works | 2025-05-17 → 2025-05-16 (-1d) |  |  | 351.94d → 352.57d |
| PG-11474 | Dadoing - Wet area | 2025-06-07 → 2025-06-06 (-1d) |  |  | 322.94d → 323.57d |
| PG-11473 | UPVC Windows & Sliding doors | 2025-06-25 → 2025-06-24 (-1d) |  |  | 322.94d → 323.57d |
| PG-11475 | Painting Works - Putty, Primer and 1st | 2025-07-01 → 2025-06-30 (-1d) |  |  | 322.94d → 323.57d |
| PG-11476 | Final Coat Painting | 2025-07-08 → 2025-07-07 (-1d) |  |  | 322.94d → 323.57d |
| 1.3.1.2.4.17.3 | **Floor Finishing Works - Civil** | 2025-05-17 → 2025-05-16 (-1d) |  |  |  |
| PG-11477 | Waterproofing for sunken areas | 2025-05-17 → 2025-05-16 (-1d) |  |  | 342.94d → 343.57d |
| PG-11478 | Floor Tiling - Wet area | 2025-06-13 → 2025-06-12 (-1d) |  |  | 322.94d → 323.57d |
| PG-11479 | Floor Tiling - Dry area | 2025-06-19 → 2025-06-18 (-1d) |  |  | 322.94d → 323.57d |
| PG-11480 | Wooden doors | 2025-07-02 → 2025-07-01 (-1d) |  |  | 322.94d → 323.57d |
| 1.3.1.2.4.18 | **Floor 15** | 2025-05-30 → 2025-05-29 (-1d) |  |  |  |
| PG-11484 | Toilet False ceiling | 2025-07-03 → 2025-07-02 (-1d) |  |  | 338.94d → 339.57d |
| PG-11483 | Painting Works - Putty, Primer and 1st | 2025-07-14 → 2025-07-12 (-2d) |  |  | 347.44d → 348.07d |
| PG-11485 | Final Coat Painting | 2025-07-21 → 2025-07-19 (-2d) |  |  | 347.44d → 348.07d |
| 1.3.1.2.4.18.2 | **Wall Finishing works - Civil** | 2025-05-30 → 2025-05-29 (-1d) |  |  |  |
| PG-11486 | Balcony Railing Fixing works | 2025-05-30 → 2025-05-29 (-1d) |  |  | 190.94d → 191.57d |
| PG-11488 | Dadoing - Wet area | 2025-06-20 → 2025-06-19 (-1d) |  |  | 161.94d → 162.57d |
| PG-11487 | UPVC Windows & Sliding doors | 2025-07-08 → 2025-07-07 (-1d) |  |  | 161.94d → 162.57d |
| PG-11489 | Painting Works - Putty, Primer and 1st | 2025-07-14 → 2025-07-12 (-2d) |  |  | 161.94d → 162.57d |
| PG-11490 | Final Coat Painting | 2025-07-21 → 2025-07-19 (-2d) |  |  | 312.94d → 313.57d |
| 1.3.1.2.4.18.3 | **Floor Finishing Works - Civil** | 2025-05-30 → 2025-05-29 (-1d) |  |  |  |
| PG-11491 | Waterproofing for sunken areas | 2025-05-30 → 2025-05-29 (-1d) |  |  | 181.94d → 182.57d |
| PG-11492 | Floor Tiling - Wet area | 2025-06-26 → 2025-06-25 (-1d) |  |  | 161.94d → 162.57d |
| PG-11493 | Floor Tiling - Dry area | 2025-07-02 → 2025-07-01 (-1d) |  |  | 161.94d → 162.57d |
| PG-11494 | Wooden doors | 2025-07-15 → 2025-07-14 (-1d) |  |  | 161.94d → 162.57d |
| 1.3.1.2.4.19 | **Floor 16** | 2025-06-12 → 2025-06-11 (-1d) |  |  |  |
| PG-11498 | Toilet False ceiling | 2025-07-16 → 2025-07-15 (-1d) |  |  | 326.77d → 327.4d |
| PG-11497 | Painting Works - Putty, Primer and 1st | 2025-07-26 → 2025-07-25 (-1d) |  |  | 336.27d → 336.9d |

| ID | Task | Start | Finish | Complete | Total float |
| --- | --- | --- | --- | --- | --- |
| PG-11499 | Final Coat Painting | 2025-08-02 → 2025-08-01 (-1d) |  |  | 336.27d → 336.9d |
| 1.3.1.2.4.19.2 | **Wall Finishing works - Civil** | 2025-06-12 → 2025-06-11 (-1d) |  |  |  |
| PG-11500 | Balcony Railing Fixing works | 2025-06-12 → 2025-06-11 (-1d) |  |  | 331.61d → 332.24d |
| PG-11502 | Dadoing - Wet area | 2025-07-03 → 2025-07-02 (-1d) |  |  | 302.61d → 303.24d |
| PG-11501 | UPVC Windows & Sliding doors | 2025-07-21 → 2025-07-19 (-2d) |  |  | 302.61d → 303.24d |
| PG-11503 | Painting Works - Putty, Primer and 1st | 2025-07-26 → 2025-07-25 (-1d) |  |  | 302.61d → 303.24d |
| PG-11504 | Final Coat Painting | 2025-08-02 → 2025-08-01 (-1d) |  |  | 302.61d → 303.24d |
| 1.3.1.2.4.19.3 | **Floor Finishing Works - Civil** | 2025-06-12 → 2025-06-11 (-1d) |  |  |  |
| PG-11505 | Waterproofing for sunken areas | 2025-06-12 → 2025-06-11 (-1d) |  |  | 322.61d → 323.24d |
| PG-11506 | Floor Tiling - Wet area | 2025-07-09 → 2025-07-08 (-1d) |  |  | 302.61d → 303.24d |
| PG-11507 | Floor Tiling - Dry area | 2025-07-15 → 2025-07-14 (-1d) |  |  | 302.61d → 303.24d |
| PG-11508 | Wooden doors | 2025-07-28 → 2025-07-26 (-2d) |  |  | 302.61d → 303.24d |
| 1.3.1.2.4.20 | **Floor 17** | 2025-06-25 → 2025-06-24 (-1d) |  |  |  |
| PG-11512 | Toilet False ceiling | 2025-07-29 → 2025-07-28 (-1d) |  |  | 315.77d → 316.4d |
| PG-11511 | Painting Works - Putty, Primer and 1st | 2025-08-08 → 2025-08-07 (-1d) |  |  | 325.27d → 325.9d |
| PG-11513 | Final Coat Painting | 2025-08-16 → 2025-08-14 (-2d) |  |  | 325.27d → 325.9d |
| 1.3.1.2.4.20.2 | **Wall Finishing works - Civil** | 2025-06-25 → 2025-06-24 (-1d) |  |  |  |
| PG-11514 | Balcony Railing Fixing works | 2025-06-25 → 2025-06-24 (-1d) |  |  | 320.61d → 321.24d |
| PG-11516 | Dadoing - Wet area | 2025-07-16 → 2025-07-15 (-1d) |  |  | 291.61d → 292.24d |
| PG-11515 | UPVC Windows & Sliding doors | 2025-08-02 → 2025-08-01 (-1d) |  |  | 291.61d → 292.24d |
| PG-11517 | Painting Works - Putty, Primer and 1st | 2025-08-08 → 2025-08-07 (-1d) |  |  | 291.61d → 292.24d |
| PG-11518 | Final Coat Painting | 2025-08-16 → 2025-08-14 (-2d) |  |  | 291.61d → 292.24d |
| 1.3.1.2.4.20.3 | **Floor Finishing Works - Civil** | 2025-06-25 → 2025-06-24 (-1d) |  |  |  |
| PG-11519 | Waterproofing for sunken areas | 2025-06-25 → 2025-06-24 (-1d) |  |  | 311.61d → 312.24d |
| PG-11520 | Floor Tiling - Wet area | 2025-07-22 → 2025-07-21 (-1d) |  |  | 291.61d → 292.24d |
| PG-11521 | Floor Tiling - Dry area | 2025-07-28 → 2025-07-26 (-2d) |  |  | 291.61d → 292.24d |
| PG-11522 | Wooden doors | 2025-08-09 → 2025-08-08 (-1d) |  |  | 291.61d → 292.24d |
| 1.3.1.2.4.21 | **Floor 18** | 2025-07-08 → 2025-07-07 (-1d) |  |  |  |
| 1.3.1.2.4.21.2 | **Wall Finishing works - Civil** | 2025-07-08 → 2025-07-07 (-1d) |  |  |  |
| PG-11528 | Balcony Railing Fixing works | 2025-07-08 → 2025-07-07 (-1d) |  |  | 308.44d → 309.07d |
| 1.3.1.2.4.21.3 | **Floor Finishing Works - Civil** | 2025-07-08 → 2025-07-07 (-1d) |  |  |  |
| PG-11533 | Waterproofing for sunken areas | 2025-07-08 → 2025-07-07 (-1d) |  |  | 299.44d → 300.07d |
| 1.3.1.2.4.22 | **Floor 19** | 2025-07-21 → 2025-07-19 (-2d) |  |  |  |
| 1.3.1.2.4.22.2 | **Wall Finishing works - Civil** | 2025-07-21 → 2025-07-19 (-2d) |  |  |  |
| PG-11542 | Balcony Railing Fixing works | 2025-07-21 → 2025-07-19 (-2d) |  |  | 297.44d → 298.07d |
| 1.3.1.2.4.22.3 | **Floor Finishing Works - Civil** | 2025-07-21 → 2025-07-19 (-2d) |  |  |  |
| PG-11547 | Waterproofing for sunken areas | 2025-07-21 → 2025-07-19 (-2d) |  |  | 288.44d → 289.07d |
| 1.3.1.2.4.23 | **Floor 20** | 2025-08-02 → 2025-08-01 (-1d) |  |  |  |
| PG-11552 | Cornice fixing | 2025-08-30 → 2025-08-29 (-1d) |  |  | 304.61d → 305.24d |
| 1.3.1.2.4.23.2 | **Wall Finishing works - Civil** | 2025-08-02 → 2025-08-01 (-1d) |  |  |  |
| PG-11556 | Balcony Railing Fixing works | 2025-08-02 → 2025-08-01 (-1d) |  |  | 286.44d → 287.07d |
| 1.3.1.2.4.23.3 | **Floor Finishing Works - Civil** | 2025-08-02 → 2025-08-01 (-1d) |  |  |  |
| PG-11561 | Waterproofing for sunken areas | 2025-08-02 → 2025-08-01 (-1d) |  |  | 277.44d → 278.07d |
| 1.3.1.2.4.24 | **Floor 21** | 2025-08-16 → 2025-08-14 (-2d) |  |  |  |
| PG-11566 | Cornice fixing | 2025-09-10 → 2025-09-09 (-1d) |  |  | 294.77d → 295.4d |
| 1.3.1.2.4.24.2 | **Wall Finishing works - Civil** | 2025-08-16 → 2025-08-14 (-2d) |  |  |  |
| PG-11570 | Balcony Railing Fixing works | 2025-08-16 → 2025-08-14 (-2d) |  |  | 274.77d → 275.4d |
| 1.3.1.2.4.24.3 | **Floor Finishing Works - Civil** | 2025-08-16 → 2025-08-14 (-2d) |  |  |  |
| PG-11575 | Waterproofing for sunken areas | 2025-08-16 → 2025-08-14 (-2d) |  |  | 265.77d → 266.4d |
| PG-11671 | Shaft door opening finishing | 2025-10-09 → 2025-10-08 (-1d) |  |  | 119.77d → 120.4d |
| PG-11704 | Terrace Ring main & OHT Connection works | 2025-10-28 → 2025-10-27 (-1d) |  |  | 185.11d → 185.74d |
| PG-11705 | Commissioning | 2025-12-15 → 2025-12-13 (-2d) |  |  | 185.11d → 185.74d |
| 1.3.1.2.9 | **Electrical Panel Works** | 2025-07-21 → 2025-07-19 (-2d) |  |  |  |
| 1.3.1.2.9.1 | **Civil Finishing Works** | 2025-07-21 → 2025-07-19 (-2d) |  |  |  |
| PG-11712 | Wall Tie rod hole packing & Grinding works. | 2025-07-21 → 2025-07-19 (-2d) |  |  | 161.94d → 162.57d |
| PG-11715 | Painting works | 2025-08-26 → 2025-08-25 (-1d) |  |  | 161.94d → 162.57d |
| PG-11717 | Electrical Panel installation and cable termination. | 2025-11-12 → 2025-11-11 (-1d) |  |  | 161.94d → 162.57d |
| 1.3.1.3 | **Tower 3 ( 2B+G+29 ) TYP 4 Units - 118 Units** |  | 2026-10-14 → 2026-10-15 (+1d) |  |  |
| 1.3.1.3.2 | **Structure works** |  | 2026-01-07 → 2026-01-08 (+1d) |  |  |
| 1.3.1.3.2.16.1 | **Columns / shear walls** |  | 2025-04-24 → 2025-04-25 (+1d) |  |  |
| PG-11814 | Reinforcement |  | 2025-04-19 → 2025-04-21 A (+2d) | 64% → 100% | 0d → none |
| PG-11815 | Formwork | 2025-04-19 → 2025-04-21 A (+2d) | 2025-04-24 → 2025-04-25 A (+1d) | 0% → 100% | 0d → none |
| 1.3.1.3.2.16.2 | **Slab, Beams & Staircase** | 2025-04-23 → 2025-04-24 (+1d) |  |  |  |
| PG-11816 | Formwork | 2025-04-23 → 2025-04-24 A (+1d) |  | 0% → 51% |  |
| PG-11817 | Reinforcement | 2025-04-25 → 2025-04-26 (+1d) |  |  |  |
| PG-11818 | Concrete | 2025-04-29 → 2025-04-30 (+1d) |  |  |  |
| 1.3.1.3.2.17 | **Floor 14** | 2025-04-30 → 2025-05-01 (+1d) |  |  |  |
| 1.3.1.3.2.17.1 | **Columns / shear walls** | 2025-04-30 → 2025-05-01 (+1d) |  |  |  |
| PG-11819 | Reinforcement | 2025-04-30 → 2025-05-01 (+1d) |  |  |  |
| PG-11820 | Formwork | 2025-05-05 → 2025-05-06 (+1d) |  |  |  |

| ID | Task | Start |
| --- | --- | --- |
| 1.3.1.3.2.17.2 | **Slab, Beams & Staircase** | 2025-05-08 → 2025-05-09 (+1d) |
| PG-11821 | Formwork | 2025-05-08 → 2025-05-09 (+1d) |
| PG-11822 | Reinforcement | 2025-05-10 → 2025-05-12 (+2d) |
| PG-11823 | Concrete | 2025-05-14 → 2025-05-15 (+1d) |
| 1.3.1.3.2.18 | **Floor 15** | 2025-05-15 → 2025-05-16 (+1d) |
| 1.3.1.3.2.18.1 | **Columns / shear walls** | 2025-05-15 → 2025-05-16 (+1d) |
| PG-11824 | Reinforcement | 2025-05-15 → 2025-05-16 (+1d) |
| PG-11825 | Formwork | 2025-05-20 → 2025-05-21 (+1d) |
| 1.3.1.3.2.18.2 | **Slab, Beams & Staircase** | 2025-05-23 → 2025-05-24 (+1d) |
| PG-11826 | Formwork | 2025-05-23 → 2025-05-24 (+1d) |
| PG-11827 | Reinforcement | 2025-05-26 → 2025-05-27 (+1d) |
| PG-11828 | Concrete | 2025-05-29 → 2025-05-30 (+1d) |
| 1.3.1.3.2.19 | **Floor 16** | 2025-05-30 → 2025-05-31 (+1d) |
| 1.3.1.3.2.19.1 | **Columns / shear walls** | 2025-05-30 → 2025-05-31 (+1d) |
| PG-11829 | Reinforcement | 2025-05-30 → 2025-05-31 (+1d) |
| PG-11830 | Formwork | 2025-06-02 → 2025-06-03 (+1d) |
| 1.3.1.3.2.19.2 | **Slab, Beams & Staircase** | 2025-06-05 → 2025-06-06 (+1d) |
| PG-11831 | Formwork | 2025-06-05 → 2025-06-06 (+1d) |
| PG-11832 | Reinforcement | 2025-06-07 → 2025-06-09 (+2d) |
| PG-11833 | Concrete | 2025-06-11 → 2025-06-12 (+1d) |
| 1.3.1.3.2.20 | **Floor 17** | 2025-06-12 → 2025-06-13 (+1d) |
| 1.3.1.3.2.20.1 | **Columns / shear walls** | 2025-06-12 → 2025-06-13 (+1d) |
| PG-11834 | Reinforcement | 2025-06-12 → 2025-06-13 (+1d) |
| PG-11835 | Formwork | 2025-06-14 → 2025-06-16 (+2d) |
| 1.3.1.3.2.20.2 | **Slab, Beams & Staircase** | 2025-06-18 → 2025-06-19 (+1d) |
| PG-11836 | Formwork | 2025-06-18 → 2025-06-19 (+1d) |
| PG-11837 | Reinforcement | 2025-06-20 → 2025-06-21 (+1d) |
| PG-11838 | Concrete | 2025-06-24 → 2025-06-25 (+1d) |
| 1.3.1.3.2.21 | **Floor 18** | 2025-06-25 → 2025-06-26 (+1d) |
| 1.3.1.3.2.21.1 | **Columns / shear walls** | 2025-06-25 → 2025-06-26 (+1d) |
| PG-11839 | Reinforcement | 2025-06-25 → 2025-06-26 (+1d) |
| PG-11840 | Formwork | 2025-06-27 → 2025-06-28 (+1d) |
| 1.3.1.3.2.21.2 | **Slab, Beams & Staircase** | 2025-07-01 → 2025-07-02 (+1d) |
| PG-11841 | Formwork | 2025-07-01 → 2025-07-02 (+1d) |
| PG-11842 | Reinforcement | 2025-07-03 → 2025-07-04 (+1d) |
| PG-11843 | Concrete | 2025-07-07 → 2025-07-08 (+1d) |
| 1.3.1.3.2.22 | **Floor 19** | 2025-07-08 → 2025-07-09 (+1d) |
| 1.3.1.3.2.22.1 | **Columns / shear walls** | 2025-07-08 → 2025-07-09 (+1d) |
| PG-11844 | Reinforcement | 2025-07-08 → 2025-07-09 (+1d) |
| PG-11845 | Formwork | 2025-07-10 → 2025-07-11 (+1d) |
| 1.3.1.3.2.22.2 | **Slab, Beams & Staircase** | 2025-07-14 → 2025-07-15 (+1d) |
| PG-11846 | Formwork | 2025-07-14 → 2025-07-15 (+1d) |
| PG-11847 | Reinforcement | 2025-07-16 → 2025-07-17 (+1d) |
| PG-11848 | Concrete | 2025-07-19 → 2025-07-21 (+2d) |
| 1.3.1.3.2.23 | **Floor 20** | 2025-07-21 → 2025-07-22 (+1d) |
| 1.3.1.3.2.23.1 | **Columns / shear walls** | 2025-07-21 → 2025-07-22 (+1d) |
| PG-11849 | Reinforcement | 2025-07-21 → 2025-07-22 (+1d) |
| PG-11850 | Formwork | 2025-07-23 → 2025-07-24 (+1d) |
| 1.3.1.3.2.23.2 | **Slab, Beams & Staircase** | 2025-07-26 → 2025-07-28 (+2d) |
| PG-11851 | Formwork | 2025-07-26 → 2025-07-28 (+2d) |
| PG-11852 | Reinforcement | 2025-07-29 → 2025-07-30 (+1d) |
| PG-11853 | Concrete | 2025-08-01 → 2025-08-02 (+1d) |
| 1.3.1.3.2.24 | **Floor 21** | 2025-08-02 → 2025-08-04 (+2d) |
| 1.3.1.3.2.24.1 | **Columns / shear walls** | 2025-08-02 → 2025-08-04 (+2d) |
| PG-11854 | Reinforcement | 2025-08-02 → 2025-08-04 (+2d) |
| PG-11855 | Formwork | 2025-08-05 → 2025-08-06 (+1d) |
| 1.3.1.3.2.24.2 | **Slab, Beams & Staircase** | 2025-08-08 → 2025-08-09 (+1d) |
| PG-11856 | Formwork | 2025-08-08 → 2025-08-09 (+1d) |
| PG-11857 | Reinforcement | 2025-08-11 → 2025-08-12 (+1d) |
| PG-11858 | Concrete | 2025-08-14 → 2025-08-16 (+2d) |
| 1.3.1.3.2.25 | **Floor 22** | 2025-08-16 → 2025-08-18 (+2d) |
| 1.3.1.3.2.25.1 | **Columns / shear walls** | 2025-08-16 → 2025-08-18 (+2d) |
| PG-11859 | Reinforcement | 2025-08-16 → 2025-08-18 (+2d) |
| PG-11860 | Formwork | 2025-08-19 → 2025-08-20 (+1d) |
| 1.3.1.3.2.25.2 | **Slab, Beams & Staircase** | 2025-08-22 → 2025-08-23 (+1d) |
| PG-11861 | Formwork | 2025-08-22 → 2025-08-23 (+1d) |
| PG-11862 | Reinforcement | 2025-08-25 → 2025-08-26 (+1d) |
| PG-11863 | Concrete | 2025-08-28 → 2025-08-29 (+1d) |
| 1.3.1.3.2.26 | **Floor 23** | 2025-08-29 → 2025-08-30 (+1d) |
| 1.3.1.3.2.26.1 | **Columns / shear walls** | 2025-08-29 → 2025-08-30 (+1d) |

| ID | Task | Start | Finish | Complete | Total float |
| --- | --- | --- | --- | --- | --- |
| PG-11864 | Reinforcement | 2025-08-29 → 2025-08-30 (+1d) |  |  |  |
| PG-11865 | Formwork | 2025-09-01 → 2025-09-02 (+1d) |  |  |  |
| 1.3.1.3.2.26.2 | **Slab, Beams & Staircase** | 2025-09-04 → 2025-09-05 (+1d) |  |  |  |
| PG-11866 | Formwork | 2025-09-04 → 2025-09-05 (+1d) |  |  |  |
| PG-11867 | Reinforcement | 2025-09-06 → 2025-09-08 (+2d) |  |  |  |
| PG-11868 | Concrete | 2025-09-10 → 2025-09-11 (+1d) |  |  |  |
| 1.3.1.3.2.27 | **Floor 24** | 2025-09-11 → 2025-09-12 (+1d) |  |  |  |
| 1.3.1.3.2.27.1 | **Columns / shear walls** | 2025-09-11 → 2025-09-12 (+1d) |  |  |  |
| PG-11869 | Reinforcement | 2025-09-11 → 2025-09-12 (+1d) |  |  |  |
| PG-11870 | Formwork | 2025-09-13 → 2025-09-15 (+2d) |  |  |  |
| 1.3.1.3.2.27.2 | **Slab, Beams & Staircase** | 2025-09-17 → 2025-09-18 (+1d) |  |  |  |
| PG-11871 | Formwork | 2025-09-17 → 2025-09-18 (+1d) |  |  |  |
| PG-11872 | Reinforcement | 2025-09-19 → 2025-09-20 (+1d) |  |  |  |
| PG-11873 | Concrete | 2025-09-23 → 2025-09-24 (+1d) |  |  |  |
| 1.3.1.3.2.28 | **Floor 25** | 2025-09-24 → 2025-09-25 (+1d) |  |  |  |
| 1.3.1.3.2.28.1 | **Columns / shear walls** | 2025-09-24 → 2025-09-25 (+1d) |  |  |  |
| PG-11874 | Reinforcement | 2025-09-24 → 2025-09-25 (+1d) |  |  |  |
| PG-11875 | Formwork | 2025-09-26 → 2025-09-27 (+1d) |  |  |  |
| 1.3.1.3.2.28.2 | **Slab, Beams & Staircase** | 2025-09-30 → 2025-10-01 (+1d) |  |  |  |
| PG-11876 | Formwork | 2025-09-30 → 2025-10-01 (+1d) |  |  |  |
| PG-11877 | Reinforcement | 2025-10-03 → 2025-10-04 (+1d) |  |  |  |
| PG-11878 | Concrete | 2025-10-07 → 2025-10-08 (+1d) |  |  |  |
| 1.3.1.3.2.29 | **Floor 26** | 2025-10-08 → 2025-10-09 (+1d) |  |  |  |
| 1.3.1.3.2.29.1 | **Columns / shear walls** | 2025-10-08 → 2025-10-09 (+1d) |  |  |  |
| PG-11879 | Reinforcement | 2025-10-08 → 2025-10-09 (+1d) |  |  |  |
| PG-11880 | Formwork | 2025-10-10 → 2025-10-11 (+1d) |  |  |  |
| 1.3.1.3.2.29.2 | **Slab, Beams & Staircase** | 2025-10-14 → 2025-10-15 (+1d) |  |  |  |
| PG-11881 | Formwork | 2025-10-14 → 2025-10-15 (+1d) |  |  |  |
| PG-11882 | Reinforcement | 2025-10-16 → 2025-10-17 (+1d) |  |  |  |
| PG-11883 | Concrete | 2025-10-20 → 2025-10-21 (+1d) |  |  |  |
| 1.3.1.3.2.30 | **Floor 27** | 2025-10-21 → 2025-10-22 (+1d) |  |  |  |
| 1.3.1.3.2.30.1 | **Columns / shear walls** | 2025-10-21 → 2025-10-22 (+1d) |  |  |  |
| PG-11884 | Reinforcement | 2025-10-21 → 2025-10-22 (+1d) |  |  |  |
| PG-11885 | Formwork | 2025-10-23 → 2025-10-24 (+1d) |  |  |  |
| 1.3.1.3.2.30.2 | **Slab, Beams & Staircase** | 2025-10-27 → 2025-10-28 (+1d) |  |  |  |
| PG-11886 | Formwork | 2025-10-27 → 2025-10-28 (+1d) |  |  |  |
| PG-11887 | Reinforcement | 2025-10-29 → 2025-10-30 (+1d) |  |  |  |
| PG-11888 | Concrete | 2025-11-03 → 2025-11-04 (+1d) |  |  |  |
| 1.3.1.3.2.31 | **Floor 28** | 2025-11-04 → 2025-11-05 (+1d) |  |  |  |
| 1.3.1.3.2.31.1 | **Columns / shear walls** | 2025-11-04 → 2025-11-05 (+1d) |  |  |  |
| PG-11889 | Reinforcement | 2025-11-04 → 2025-11-05 (+1d) |  |  |  |
| PG-11890 | Formwork | 2025-11-06 → 2025-11-07 (+1d) |  |  |  |
| 1.3.1.3.2.31.2 | **Slab, Beams & Staircase** | 2025-11-10 → 2025-11-11 (+1d) |  |  |  |
| PG-11891 | Formwork | 2025-11-10 → 2025-11-11 (+1d) |  |  |  |
| PG-11892 | Reinforcement | 2025-11-12 → 2025-11-13 (+1d) |  |  |  |
| PG-11893 | Concrete | 2025-11-15 → 2025-11-17 (+2d) |  |  |  |
| 1.3.1.3.2.33 | **Above Terrace Floor** |  | 2026-01-07 → 2026-01-08 (+1d) |  |  |
| 1.3.1.3.2.33.1 | **Columns / shear walls/Parapet Walls** |  | 2025-12-12 → 2025-12-13 (+1d) |  |  |
| PG-11901 | Concrete |  | 2025-12-12 → 2025-12-13 (+1d) |  |  |
| 1.3.1.3.2.33.2 | **Slab, Beams & Staircase Head rooms, Lift headroom** |  | 2026-01-07 → 2026-01-08 (+1d) |  |  |
| PG-11905 | Terrace Waterproofing and Protective finishing. |  | 2026-01-07 → 2026-01-08 (+1d) |  |  |
| PG-11902 | Formwork | 2025-12-12 → 2025-12-13 (+1d) | 2025-12-18 → 2025-12-19 (+1d) |  |  |
| PG-11903 | Reinforcement | 2025-12-18 → 2025-12-19 (+1d) | 2025-12-24 → 2025-12-25 (+1d) |  |  |
| PG-11904 | Concrete | 2025-12-24 → 2025-12-25 (+1d) | 2025-12-26 → 2025-12-27 (+1d) |  |  |
| 1.3.1.3.3.7 | **Floor 4** |  | 2025-05-16 → 2025-05-20 (+4d) |  |  |
| 1.3.1.3.3.7.1 | **PHE Works** |  | 2025-05-16 → 2025-05-20 (+4d) |  |  |
| PG-11951 | Final Fix - CP & Sanitary fixtures | 2025-05-07 → 2025-05-09 (+2d) | 2025-05-16 → 2025-05-20 (+4d) |  | 389.67d → 387.62d |
| 1.3.1.3.3.7.2 | **Fire Fighting Works** |  | 2025-05-16 → 2025-05-20 (+4d) |  |  |
| PG-11953 | 2nd Fix - Sprinkler fixing & Pressure testing |  |  | 30% → 90% | 398.98d → 399.54d |
| PG-11954 | Final Fix - Smoke & heat detectors, FHC , FAS Etc. | 2025-05-07 → 2025-05-09 (+2d) | 2025-05-16 → 2025-05-20 (+4d) |  | 389.67d → 387.62d |
| 1.3.1.3.3.7.3 | **Electrical Works** |  | 2025-05-16 → 2025-05-20 (+4d) |  |  |
| PG-11956 | 2nd Fix - Wiring works |  | 2025-04-24 → 2025-04-25 A (+1d) | 64% → 100% | 403.5d → none |
| PG-11957 | Final Fix - Electrical Fixtures | 2025-05-10 → 2025-05-13 (+3d) | 2025-05-16 → 2025-05-20 (+4d) |  | 389.67d → 387.62d |
| PG-11968 | 2nd Fix - diverter fixing & Pressure testing |  | 2025-04-18 → 2025-04-19 A (+1d) | 98% → 100% | 364.75d → none |
| PG-11970 | 1st Fix - Piping and Shaft hydrant works |  | 2025-04-21 → 2025-04-22 A (+1d) | 77% → 100% | 410.89d → none |
| 1.3.1.3.3.10 | **Floor 7** |  | 2025-07-03 → 2025-07-04 (+1d) |  |  |
| 1.3.1.3.3.10.1 | **PHE Works** |  | 2025-07-03 → 2025-07-04 (+1d) |  |  |
| PG-11976 | 1st Fix - Piping works |  |  | 25% → 75% | 351.95d → 352.51d |
| PG-11977 | 2nd Fix - diverter fixing & Pressure testing | 2025-04-23 → 2025-04-24 A (+1d) | 2025-05-05 → 2025-05-06 (+1d) | 0% → 3% | 351.95d → 351.8d |
| PG-11978 | Final Fix - CP & Sanitary fixtures | 2025-06-23 → 2025-06-24 (+1d) | 2025-07-03 → 2025-07-04 (+1d) |  | 351.95d → 351.8d |

| ID | Task | Start | Finish | Complete | Total float |
| --- | --- | --- | --- | --- | --- |
| 1.3.1.3.3.10.2 | **Fire Fighting Works** | 2025-04-22 → 2025-04-24 (+2d) | 2025-07-03 → 2025-07-04 (+1d) |  |  |
| PG-11979 | 1st Fix - Piping and Shaft hydrant works | 2025-04-22 → 2025-04-24 A (+2d) | 2025-05-06 → 2025-05-08 (+2d) | 0% → 3% | 398.63d → 397.85d |
| PG-11980 | 2nd Fix - Sprinkler fixing & Pressure testing | 2025-05-30 → 2025-05-31 (+1d) | 2025-06-11 → 2025-06-12 (+1d) |  | 361.95d → 361.8d |
| PG-11981 | Final Fix - Smoke & heat detectors, FHC , FAS Etc. | 2025-06-23 → 2025-06-24 (+1d) | 2025-07-03 → 2025-07-04 (+1d) |  | 351.95d → 351.8d |
| 1.3.1.3.3.10.3 | **Electrical Works** |  | 2025-07-03 → 2025-07-04 (+1d) |  |  |
| PG-11982 | 1st Fix - GI wire pulling |  | 2025-04-22 → 2025-04-23 A (+1d) | 48% → 100% | 398.63d → none |
| PG-11983 | 2nd Fix - Wiring works | 2025-05-24 → 2025-05-26 (+2d) | 2025-06-10 → 2025-06-11 (+1d) |  | 365.95d → 365.8d |
| PG-11984 | Final Fix - Electrical Fixtures | 2025-06-26 → 2025-06-27 (+1d) | 2025-07-03 → 2025-07-04 (+1d) |  | 351.95d → 351.8d |
| 1.3.1.3.3.11 | **Floor 8** | 2025-04-30 → 2025-05-01 (+1d) | 2025-07-19 → 2025-07-21 (+2d) |  |  |
| 1.3.1.3.3.11.1 | **PHE Works** | 2025-04-30 → 2025-05-01 (+1d) | 2025-07-19 → 2025-07-21 (+2d) |  |  |
| PG-11985 | 1st Fix - Piping works | 2025-04-30 → 2025-05-01 (+1d) |  |  |  |
| PG-11986 | 2nd Fix - diverter fixing & Pressure testing | 2025-05-09 → 2025-05-10 (+1d) |  |  |  |
| PG-11987 | Final Fix - CP & Sanitary fixtures | 2025-07-09 → 2025-07-10 (+1d) | 2025-07-19 → 2025-07-21 (+2d) |  |  |
| 1.3.1.3.3.11.2 | **Fire Fighting Works** |  | 2025-07-19 → 2025-07-21 (+2d) |  |  |
| PG-11989 | 2nd Fix - Sprinkler fixing & Pressure testing | 2025-06-16 → 2025-06-17 (+1d) |  |  |  |
| PG-11990 | Final Fix - Smoke & heat detectors, FHC , FAS Etc. | 2025-07-09 → 2025-07-10 (+1d) | 2025-07-19 → 2025-07-21 (+2d) |  |  |
| 1.3.1.3.3.11.3 | **Electrical Works** | 2025-04-30 → 2025-05-01 (+1d) | 2025-07-19 → 2025-07-21 (+2d) |  |  |
| PG-11991 | 1st Fix - GI wire pulling | 2025-04-30 → 2025-05-01 (+1d) |  |  |  |
| PG-11992 | 2nd Fix - Wiring works | 2025-06-10 → 2025-06-11 (+1d) |  |  |  |
| PG-11993 | Final Fix - Electrical Fixtures | 2025-07-14 → 2025-07-15 (+1d) | 2025-07-19 → 2025-07-21 (+2d) |  |  |
| 1.3.1.3.3.12 | **Floor 9** | 2025-05-15 → 2025-05-16 (+1d) | 2025-08-01 → 2025-08-02 (+1d) |  |  |
| 1.3.1.3.3.12.1 | **PHE Works** | 2025-05-15 → 2025-05-16 (+1d) | 2025-08-01 → 2025-08-02 (+1d) |  |  |
| PG-11994 | 1st Fix - Piping works | 2025-05-15 → 2025-05-16 (+1d) |  |  |  |
| PG-11995 | 2nd Fix - diverter fixing & Pressure testing | 2025-05-24 → 2025-05-26 (+2d) |  |  |  |
| PG-11996 | Final Fix - CP & Sanitary fixtures | 2025-07-22 → 2025-07-23 (+1d) | 2025-08-01 → 2025-08-02 (+1d) |  |  |
| 1.3.1.3.3.12.2 | **Fire Fighting Works** |  | 2025-08-01 → 2025-08-02 (+1d) |  |  |
| PG-11998 | 2nd Fix - Sprinkler fixing & Pressure testing | 2025-07-01 → 2025-07-02 (+1d) |  |  |  |
| PG-11999 | Final Fix - Smoke & heat detectors, FHC , FAS Etc. | 2025-07-22 → 2025-07-23 (+1d) | 2025-08-01 → 2025-08-02 (+1d) |  |  |
| 1.3.1.3.3.12.3 | **Electrical Works** | 2025-05-15 → 2025-05-16 (+1d) | 2025-08-01 → 2025-08-02 (+1d) |  |  |
| PG-12000 | 1st Fix - GI wire pulling | 2025-05-15 → 2025-05-16 (+1d) |  |  |  |
| PG-12001 | 2nd Fix - Wiring works | 2025-06-25 → 2025-06-26 (+1d) |  |  |  |
| PG-12002 | Final Fix - Electrical Fixtures | 2025-07-26 → 2025-07-28 (+2d) | 2025-08-01 → 2025-08-02 (+1d) |  |  |
| 1.3.1.3.3.13 | **Floor 10** | 2025-05-30 → 2025-05-31 (+1d) | 2025-08-19 → 2025-08-20 (+1d) |  |  |
| 1.3.1.3.3.13.1 | **PHE Works** | 2025-05-30 → 2025-05-31 (+1d) | 2025-08-19 → 2025-08-20 (+1d) |  |  |
| PG-12003 | 1st Fix - Piping works | 2025-05-30 → 2025-05-31 (+1d) |  |  |  |
| PG-12004 | 2nd Fix - diverter fixing & Pressure testing | 2025-06-09 → 2025-06-10 (+1d) |  |  |  |
| PG-12005 | Final Fix - CP & Sanitary fixtures | 2025-08-07 → 2025-08-08 (+1d) | 2025-08-19 → 2025-08-20 (+1d) |  |  |
| 1.3.1.3.3.13.2 | **Fire Fighting Works** |  | 2025-08-19 → 2025-08-20 (+1d) |  |  |
| PG-12007 | 2nd Fix - Sprinkler fixing & Pressure testing | 2025-07-16 → 2025-07-17 (+1d) |  |  |  |
| PG-12008 | Final Fix - Smoke & heat detectors, FHC , FAS Etc. | 2025-08-07 → 2025-08-08 (+1d) | 2025-08-19 → 2025-08-20 (+1d) |  |  |
| 1.3.1.3.3.13.3 | **Electrical Works** | 2025-05-30 → 2025-05-31 (+1d) | 2025-08-19 → 2025-08-20 (+1d) |  |  |
| PG-12009 | 1st Fix - GI wire pulling | 2025-05-30 → 2025-05-31 (+1d) |  |  |  |
| PG-12010 | 2nd Fix - Wiring works | 2025-07-11 → 2025-07-12 (+1d) |  |  |  |
| PG-12011 | Final Fix - Electrical Fixtures | 2025-08-12 → 2025-08-13 (+1d) | 2025-08-19 → 2025-08-20 (+1d) |  |  |
| 1.3.1.3.3.14 | **Floor 11** | 2025-06-12 → 2025-06-13 (+1d) | 2025-09-01 → 2025-09-02 (+1d) |  |  |
| 1.3.1.3.3.14.1 | **PHE Works** | 2025-06-12 → 2025-06-13 (+1d) | 2025-09-01 → 2025-09-02 (+1d) |  |  |
| PG-12012 | 1st Fix - Piping works | 2025-06-12 → 2025-06-13 (+1d) |  |  |  |
| PG-12013 | 2nd Fix - diverter fixing & Pressure testing | 2025-06-21 → 2025-06-23 (+2d) |  |  |  |
| PG-12014 | Final Fix - CP & Sanitary fixtures | 2025-08-21 → 2025-08-22 (+1d) | 2025-09-01 → 2025-09-02 (+1d) |  |  |
| 1.3.1.3.3.14.2 | **Fire Fighting Works** |  | 2025-09-01 → 2025-09-02 (+1d) |  |  |
| PG-12016 | 2nd Fix - Sprinkler fixing & Pressure testing | 2025-07-29 → 2025-07-30 (+1d) |  |  |  |
| PG-12017 | Final Fix - Smoke & heat detectors, FHC , FAS Etc. | 2025-08-21 → 2025-08-22 (+1d) | 2025-09-01 → 2025-09-02 (+1d) |  |  |
| 1.3.1.3.3.14.3 | **Electrical Works** | 2025-06-12 → 2025-06-13 (+1d) | 2025-09-01 → 2025-09-02 (+1d) |  |  |
| PG-12018 | 1st Fix - GI wire pulling | 2025-06-12 → 2025-06-13 (+1d) |  |  |  |
| PG-12019 | 2nd Fix - Wiring works | 2025-07-24 → 2025-07-25 (+1d) |  |  |  |
| PG-12020 | Final Fix - Electrical Fixtures | 2025-08-26 → 2025-08-27 (+1d) | 2025-09-01 → 2025-09-02 (+1d) |  |  |
| 1.3.1.3.3.15 | **Floor 12** | 2025-06-25 → 2025-06-26 (+1d) | 2025-09-17 → 2025-09-18 (+1d) |  |  |
| 1.3.1.3.3.15.1 | **PHE Works** | 2025-06-25 → 2025-06-26 (+1d) | 2025-09-17 → 2025-09-18 (+1d) |  |  |
| PG-12021 | 1st Fix - Piping works | 2025-06-25 → 2025-06-26 (+1d) |  |  |  |
| PG-12022 | 2nd Fix - diverter fixing & Pressure testing | 2025-07-04 → 2025-07-05 (+1d) |  |  |  |
| PG-12023 | Final Fix - CP & Sanitary fixtures | 2025-09-04 → 2025-09-05 (+1d) | 2025-09-17 → 2025-09-18 (+1d) |  |  |
| 1.3.1.3.3.15.2 | **Fire Fighting Works** |  | 2025-09-17 → 2025-09-18 (+1d) |  |  |
| PG-12025 | 2nd Fix - Sprinkler fixing & Pressure testing | 2025-08-11 → 2025-08-12 (+1d) |  |  |  |
| PG-12026 | Final Fix - Smoke & heat detectors, FHC , FAS Etc. | 2025-09-04 → 2025-09-05 (+1d) | 2025-09-17 → 2025-09-18 (+1d) |  |  |
| 1.3.1.3.3.15.3 | **Electrical Works** | 2025-06-25 → 2025-06-26 (+1d) | 2025-09-17 → 2025-09-18 (+1d) |  |  |
| PG-12027 | 1st Fix - GI wire pulling | 2025-06-25 → 2025-06-26 (+1d) |  |  |  |
| PG-12028 | 2nd Fix - Wiring works | 2025-08-05 → 2025-08-06 (+1d) |  |  |  |
| PG-12029 | Final Fix - Electrical Fixtures | 2025-09-11 → 2025-09-12 (+1d) | 2025-09-17 → 2025-09-18 (+1d) |  |  |
| 1.3.1.3.3.16 | **Floor 13** | 2025-07-08 → 2025-07-09 (+1d) | 2025-09-30 → 2025-10-01 (+1d) |  |  |
| 1.3.1.3.3.16.1 | **PHE Works** | 2025-07-08 → 2025-07-09 (+1d) | 2025-09-30 → 2025-10-01 (+1d) |  |  |

| ID | Task | Start | Finish |
| --- | --- | --- | --- |
| PG-12030 | 1st Fix - Piping works | 2025-07-08 → 2025-07-09 (+1d) |  |
| PG-12031 | 2nd Fix - diverter fixing & Pressure testing | 2025-07-17 → 2025-07-18 (+1d) |  |
| PG-12032 | Final Fix - CP & Sanitary fixtures | 2025-09-18 → 2025-09-19 (+1d) | 2025-09-30 → 2025-10-01 (+1d) |
| 1.3.1.3.3.16.2 | **Fire Fighting Works** |  | 2025-09-30 → 2025-10-01 (+1d) |
| PG-12034 | 2nd Fix - Sprinkler fixing & Pressure testing | 2025-08-25 → 2025-08-26 (+1d) |  |
| PG-12035 | Final Fix - Smoke & heat detectors, FHC , FAS Etc. | 2025-09-18 → 2025-09-19 (+1d) | 2025-09-30 → 2025-10-01 (+1d) |
| 1.3.1.3.3.16.3 | **Electrical Works** | 2025-07-08 → 2025-07-09 (+1d) | 2025-09-30 → 2025-10-01 (+1d) |
| PG-12036 | 1st Fix - GI wire pulling | 2025-07-08 → 2025-07-09 (+1d) |  |
| PG-12037 | 2nd Fix - Wiring works | 2025-08-19 → 2025-08-20 (+1d) |  |
| PG-12038 | Final Fix - Electrical Fixtures | 2025-09-24 → 2025-09-25 (+1d) | 2025-09-30 → 2025-10-01 (+1d) |
| 1.3.1.3.3.17 | **Floor 14** | 2025-07-21 → 2025-07-22 (+1d) | 2025-10-11 → 2025-10-13 (+2d) |
| 1.3.1.3.3.17.1 | **PHE Works** | 2025-07-21 → 2025-07-22 (+1d) | 2025-10-11 → 2025-10-13 (+2d) |
| PG-12039 | 1st Fix - Piping works | 2025-07-21 → 2025-07-22 (+1d) |  |
| PG-12040 | 2nd Fix - diverter fixing & Pressure testing | 2025-07-30 → 2025-07-31 (+1d) |  |
| PG-12041 | Final Fix - CP & Sanitary fixtures | 2025-09-30 → 2025-10-01 (+1d) | 2025-10-11 → 2025-10-13 (+2d) |
| 1.3.1.3.3.17.2 | **Fire Fighting Works** |  | 2025-10-11 → 2025-10-13 (+2d) |
| PG-12043 | 2nd Fix - Sprinkler fixing & Pressure testing | 2025-09-06 → 2025-09-08 (+2d) |  |
| PG-12044 | Final Fix - Smoke & heat detectors, FHC , FAS Etc. | 2025-09-30 → 2025-10-01 (+1d) | 2025-10-11 → 2025-10-13 (+2d) |
| 1.3.1.3.3.17.3 | **Electrical Works** | 2025-07-21 → 2025-07-22 (+1d) | 2025-10-11 → 2025-10-13 (+2d) |
| PG-12045 | 1st Fix - GI wire pulling | 2025-07-21 → 2025-07-22 (+1d) |  |
| PG-12046 | 2nd Fix - Wiring works | 2025-08-30 → 2025-09-01 (+2d) |  |
| PG-12047 | Final Fix - Electrical Fixtures | 2025-10-06 → 2025-10-07 (+1d) | 2025-10-11 → 2025-10-13 (+2d) |
| 1.3.1.3.3.18 | **Floor 15** | 2025-08-02 → 2025-08-04 (+2d) |  |
| 1.3.1.3.3.18.1 | **PHE Works** | 2025-08-02 → 2025-08-04 (+2d) |  |
| PG-12048 | 1st Fix - Piping works | 2025-08-02 → 2025-08-04 (+2d) |  |
| PG-12049 | 2nd Fix - diverter fixing & Pressure testing | 2025-08-12 → 2025-08-13 (+1d) |  |
| 1.3.1.3.3.18.3 | **Electrical Works** | 2025-08-02 → 2025-08-04 (+2d) |  |
| PG-12054 | 1st Fix - GI wire pulling | 2025-08-02 → 2025-08-04 (+2d) |  |
| 1.3.1.3.3.19 | **Floor 16** | 2025-08-16 → 2025-08-18 (+2d) |  |
| 1.3.1.3.3.19.1 | **PHE Works** | 2025-08-16 → 2025-08-18 (+2d) |  |
| PG-12057 | 1st Fix - Piping works | 2025-08-16 → 2025-08-18 (+2d) |  |
| PG-12058 | 2nd Fix - diverter fixing & Pressure testing | 2025-08-26 → 2025-08-27 (+1d) |  |
| PG-12059 | Final Fix - CP & Sanitary fixtures | 2025-10-25 → 2025-10-27 (+2d) |  |
| PG-12061 | 2nd Fix - Sprinkler fixing & Pressure testing | 2025-10-03 → 2025-10-04 (+1d) |  |
| PG-12062 | Final Fix - Smoke & heat detectors, FHC , FAS Etc. | 2025-10-25 → 2025-10-27 (+2d) |  |
| 1.3.1.3.3.19.3 | **Electrical Works** | 2025-08-16 → 2025-08-18 (+2d) |  |
| PG-12063 | 1st Fix - GI wire pulling | 2025-08-16 → 2025-08-18 (+2d) |  |
| PG-12064 | 2nd Fix - Wiring works | 2025-09-27 → 2025-09-29 (+2d) |  |
| PG-12065 | Final Fix - Electrical Fixtures | 2025-10-31 → 2025-11-03 (+3d) |  |
| 1.3.1.3.3.20 | **Floor 17** | 2025-08-29 → 2025-08-30 (+1d) |  |
| 1.3.1.3.3.20.1 | **PHE Works** | 2025-08-29 → 2025-08-30 (+1d) |  |
| PG-12066 | 1st Fix - Piping works | 2025-08-29 → 2025-08-30 (+1d) |  |
| PG-12067 | 2nd Fix - diverter fixing & Pressure testing | 2025-09-08 → 2025-09-09 (+1d) |  |
| PG-12068 | Final Fix - CP & Sanitary fixtures | 2025-11-07 → 2025-11-08 (+1d) |  |
| PG-12070 | 2nd Fix - Sprinkler fixing & Pressure testing | 2025-10-16 → 2025-10-17 (+1d) |  |
| PG-12071 | Final Fix - Smoke & heat detectors, FHC , FAS Etc. | 2025-11-07 → 2025-11-08 (+1d) |  |
| 1.3.1.3.3.20.3 | **Electrical Works** | 2025-08-29 → 2025-08-30 (+1d) |  |
| PG-12072 | 1st Fix - GI wire pulling | 2025-08-29 → 2025-08-30 (+1d) |  |
| PG-12073 | 2nd Fix - Wiring works | 2025-10-10 → 2025-10-11 (+1d) |  |
| PG-12074 | Final Fix - Electrical Fixtures | 2025-11-13 → 2025-11-14 (+1d) |  |
| 1.3.1.3.3.21 | **Floor 18** | 2025-09-11 → 2025-09-12 (+1d) |  |
| 1.3.1.3.3.21.1 | **PHE Works** | 2025-09-11 → 2025-09-12 (+1d) |  |
| PG-12075 | 1st Fix - Piping works | 2025-09-11 → 2025-09-12 (+1d) |  |
| PG-12076 | 2nd Fix - diverter fixing & Pressure testing | 2025-09-20 → 2025-09-22 (+2d) |  |
| PG-12077 | Final Fix - CP & Sanitary fixtures | 2025-11-20 → 2025-11-21 (+1d) |  |
| PG-12079 | 2nd Fix - Sprinkler fixing & Pressure testing | 2025-10-29 → 2025-10-30 (+1d) |  |
| PG-12080 | Final Fix - Smoke & heat detectors, FHC , FAS Etc. | 2025-11-20 → 2025-11-21 (+1d) |  |
| 1.3.1.3.3.21.3 | **Electrical Works** | 2025-09-11 → 2025-09-12 (+1d) |  |
| PG-12081 | 1st Fix - GI wire pulling | 2025-09-11 → 2025-09-12 (+1d) |  |
| PG-12082 | 2nd Fix - Wiring works | 2025-10-23 → 2025-10-24 (+1d) |  |
| PG-12083 | Final Fix - Electrical Fixtures | 2025-11-26 → 2025-11-27 (+1d) |  |
| 1.3.1.3.3.22 | **Floor 19** | 2025-09-24 → 2025-09-25 (+1d) |  |
| 1.3.1.3.3.22.1 | **PHE Works** | 2025-09-24 → 2025-09-25 (+1d) |  |
| PG-12084 | 1st Fix - Piping works | 2025-09-24 → 2025-09-25 (+1d) |  |
| PG-12085 | 2nd Fix - diverter fixing & Pressure testing | 2025-10-04 → 2025-10-06 (+2d) |  |
| PG-12086 | Final Fix - CP & Sanitary fixtures | 2025-12-03 → 2025-12-04 (+1d) |  |
| PG-12088 | 2nd Fix - Sprinkler fixing & Pressure testing | 2025-11-12 → 2025-11-13 (+1d) |  |
| PG-12089 | Final Fix - Smoke & heat detectors, FHC , FAS Etc. | 2025-12-03 → 2025-12-04 (+1d) |  |
| 1.3.1.3.3.22.3 | **Electrical Works** | 2025-09-24 → 2025-09-25 (+1d) |  |
| PG-12090 | 1st Fix - GI wire pulling | 2025-09-24 → 2025-09-25 (+1d) |  |

| ID | Task | Start | Finish |
| --- | --- | --- | --- |
| PG-12091 | 2nd Fix - Wiring works | 2025-11-06 → 2025-11-07 (+1d) |  |
| PG-12092 | Final Fix - Electrical Fixtures | 2025-12-09 → 2025-12-10 (+1d) |  |
| 1.3.1.3.3.23 | **Floor 20** | 2025-10-08 → 2025-10-09 (+1d) | 2025-12-29 → 2025-12-30 (+1d) |
| 1.3.1.3.3.23.1 | **PHE Works** | 2025-10-08 → 2025-10-09 (+1d) | 2025-12-29 → 2025-12-30 (+1d) |
| PG-12093 | 1st Fix - Piping works | 2025-10-08 → 2025-10-09 (+1d) |  |
| PG-12094 | 2nd Fix - diverter fixing & Pressure testing | 2025-10-17 → 2025-10-18 (+1d) |  |
| PG-12095 | Final Fix - CP & Sanitary fixtures | 2025-12-18 → 2025-12-19 (+1d) | 2025-12-29 → 2025-12-30 (+1d) |
| 1.3.1.3.3.23.2 | **Fire Fighting Works** |  | 2025-12-29 → 2025-12-30 (+1d) |
| PG-12097 | 2nd Fix - Sprinkler fixing & Pressure testing | 2025-11-25 → 2025-11-26 (+1d) |  |
| PG-12098 | Final Fix - Smoke & heat detectors, FHC , FAS Etc. | 2025-12-18 → 2025-12-19 (+1d) | 2025-12-29 → 2025-12-30 (+1d) |
| 1.3.1.3.3.23.3 | **Electrical Works** | 2025-10-08 → 2025-10-09 (+1d) | 2025-12-29 → 2025-12-30 (+1d) |
| PG-12099 | 1st Fix - GI wire pulling | 2025-10-08 → 2025-10-09 (+1d) |  |
| PG-12100 | 2nd Fix - Wiring works | 2025-11-19 → 2025-11-20 (+1d) |  |
| PG-12101 | Final Fix - Electrical Fixtures | 2025-12-23 → 2025-12-24 (+1d) | 2025-12-29 → 2025-12-30 (+1d) |
| 1.3.1.3.3.24 | **Floor 21** | 2025-10-21 → 2025-10-22 (+1d) | 2026-01-10 → 2026-01-12 (+2d) |
| 1.3.1.3.3.24.1 | **PHE Works** | 2025-10-21 → 2025-10-22 (+1d) | 2026-01-10 → 2026-01-12 (+2d) |
| PG-12102 | 1st Fix - Piping works | 2025-10-21 → 2025-10-22 (+1d) |  |
| PG-12103 | 2nd Fix - diverter fixing & Pressure testing | 2025-10-31 → 2025-11-03 (+3d) |  |
| PG-12104 | Final Fix - CP & Sanitary fixtures |  | 2026-01-10 → 2026-01-12 (+2d) |
| 1.3.1.3.3.24.2 | **Fire Fighting Works** |  | 2026-01-10 → 2026-01-12 (+2d) |
| PG-12106 | 2nd Fix - Sprinkler fixing & Pressure testing | 2025-12-08 → 2025-12-09 (+1d) |  |
| PG-12107 | Final Fix - Smoke & heat detectors, FHC , FAS Etc. |  | 2026-01-10 → 2026-01-12 (+2d) |
| 1.3.1.3.3.24.3 | **Electrical Works** | 2025-10-21 → 2025-10-22 (+1d) | 2025-12-29 → 2025-12-30 (+1d) |
| PG-12108 | 1st Fix - GI wire pulling | 2025-10-21 → 2025-10-22 (+1d) |  |
| PG-12109 | 2nd Fix - Wiring works | 2025-11-19 → 2025-11-20 (+1d) |  |
| PG-12110 | Final Fix - Electrical Fixtures | 2025-12-23 → 2025-12-24 (+1d) | 2025-12-29 → 2025-12-30 (+1d) |
| 1.3.1.3.3.25 | **Floor 22** | 2025-11-04 → 2025-11-05 (+1d) | 2026-01-23 → 2026-01-24 (+1d) |
| 1.3.1.3.3.25.1 | **PHE Works** | 2025-11-04 → 2025-11-05 (+1d) | 2026-01-23 → 2026-01-24 (+1d) |
| PG-12111 | 1st Fix - Piping works | 2025-11-04 → 2025-11-05 (+1d) |  |
| PG-12112 | 2nd Fix - diverter fixing & Pressure testing | 2025-11-14 → 2025-11-15 (+1d) |  |
| PG-12113 | Final Fix - CP & Sanitary fixtures |  | 2026-01-23 → 2026-01-24 (+1d) |
| 1.3.1.3.3.25.2 | **Fire Fighting Works** |  | 2026-01-23 → 2026-01-24 (+1d) |
| PG-12115 | 2nd Fix - Sprinkler fixing & Pressure testing | 2025-12-20 → 2025-12-22 (+2d) |  |
| PG-12116 | Final Fix - Smoke & heat detectors, FHC , FAS Etc. |  | 2026-01-23 → 2026-01-24 (+1d) |
| 1.3.1.3.3.25.3 | **Electrical Works** | 2025-11-04 → 2025-11-05 (+1d) | 2026-01-23 → 2026-01-24 (+1d) |
| PG-12117 | 1st Fix - GI wire pulling | 2025-11-04 → 2025-11-05 (+1d) |  |
| PG-12118 | 2nd Fix - Wiring works | 2025-12-15 → 2025-12-16 (+1d) |  |
| PG-12119 | Final Fix - Electrical Fixtures |  | 2026-01-23 → 2026-01-24 (+1d) |
| PG-12120 | 1st Fix - Piping works |  | 2025-11-28 → 2025-11-29 (+1d) |
| PG-12121 | 2nd Fix - diverter fixing & Pressure testing |  | 2025-12-05 → 2025-12-06 (+1d) |
| PG-12122 | Final Fix - CP & Sanitary fixtures | 2026-01-24 → 2026-01-27 (+3d) |  |
| PG-12124 | 2nd Fix - Sprinkler fixing & Pressure testing |  | 2026-01-12 → 2026-01-13 (+1d) |
| PG-12125 | Final Fix - Smoke & heat detectors, FHC , FAS Etc. | 2026-01-24 → 2026-01-27 (+3d) |  |
| PG-12127 | 2nd Fix - Wiring works |  | 2026-01-10 → 2026-01-12 (+2d) |
| PG-12128 | Final Fix - Electrical Fixtures | 2026-01-30 → 2026-01-31 (+1d) |  |
| 1.3.1.3.3.27 | **Floor 24** |  | 2026-02-19 → 2026-02-20 (+1d) |
| 1.3.1.3.3.27.1 | **PHE Works** |  | 2026-02-19 → 2026-02-20 (+1d) |
| PG-12129 | 1st Fix - Piping works |  | 2025-12-12 → 2025-12-13 (+1d) |
| PG-12130 | 2nd Fix - diverter fixing & Pressure testing |  | 2025-12-19 → 2025-12-20 (+1d) |
| PG-12131 | Final Fix - CP & Sanitary fixtures | 2026-02-07 → 2026-02-09 (+2d) | 2026-02-19 → 2026-02-20 (+1d) |
| 1.3.1.3.3.27.2 | **Fire Fighting Works** | 2025-12-09 → 2025-12-10 (+1d) | 2026-02-19 → 2026-02-20 (+1d) |
| PG-12132 | 1st Fix - Piping and Shaft hydrant works | 2025-12-09 → 2025-12-10 (+1d) |  |
| PG-12133 | 2nd Fix - Sprinkler fixing & Pressure testing | 2026-01-14 → 2026-01-15 (+1d) | 2026-01-27 → 2026-01-28 (+1d) |
| PG-12134 | Final Fix - Smoke & heat detectors, FHC , FAS Etc. | 2026-02-07 → 2026-02-09 (+2d) | 2026-02-19 → 2026-02-20 (+1d) |
| 1.3.1.3.3.27.3 | **Electrical Works** |  | 2026-02-19 → 2026-02-20 (+1d) |
| PG-12136 | 2nd Fix - Wiring works | 2026-01-08 → 2026-01-09 (+1d) | 2026-01-24 → 2026-01-27 (+3d) |
| PG-12137 | Final Fix - Electrical Fixtures | 2026-02-12 → 2026-02-13 (+1d) | 2026-02-19 → 2026-02-20 (+1d) |
| 1.3.1.3.3.28 | **Floor 25** | 2025-12-20 → 2025-12-22 (+2d) | 2026-03-12 → 2026-03-13 (+1d) |
| 1.3.1.3.3.28.1 | **PHE Works** | 2025-12-20 → 2025-12-22 (+2d) | 2026-03-12 → 2026-03-13 (+1d) |
| PG-12138 | 1st Fix - Piping works | 2025-12-20 → 2025-12-22 (+2d) | 2026-01-02 → 2026-01-03 (+1d) |
| PG-12139 | 2nd Fix - diverter fixing & Pressure testing |  | 2026-01-09 → 2026-01-10 (+1d) |
| PG-12140 | Final Fix - CP & Sanitary fixtures | 2026-03-02 → 2026-03-03 (+1d) | 2026-03-12 → 2026-03-13 (+1d) |
| 1.3.1.3.3.28.2 | **Fire Fighting Works** |  | 2026-03-12 → 2026-03-13 (+1d) |
| PG-12141 | 1st Fix - Piping and Shaft hydrant works |  | 2026-01-13 → 2026-01-14 (+1d) |
| PG-12142 | 2nd Fix - Sprinkler fixing & Pressure testing | 2026-02-06 → 2026-02-07 (+1d) | 2026-02-17 → 2026-02-18 (+1d) |
| PG-12143 | Final Fix - Smoke & heat detectors, FHC , FAS Etc. | 2026-03-02 → 2026-03-03 (+1d) | 2026-03-12 → 2026-03-13 (+1d) |
| 1.3.1.3.3.28.3 | **Electrical Works** | 2025-12-20 → 2025-12-22 (+2d) | 2026-03-12 → 2026-03-13 (+1d) |
| PG-12144 | 1st Fix - GI wire pulling | 2025-12-20 → 2025-12-22 (+2d) | 2025-12-30 → 2025-12-31 (+1d) |
| PG-12145 | 2nd Fix - Wiring works | 2026-01-29 → 2026-01-30 (+1d) | 2026-02-16 → 2026-02-17 (+1d) |
| PG-12146 | Final Fix - Electrical Fixtures | 2026-03-06 → 2026-03-07 (+1d) | 2026-03-12 → 2026-03-13 (+1d) |

| ID | Task | Start | Finish | Complete | Total float |
| --- | --- | --- | --- | --- | --- |
| 1.3.1.3.3.29 | **Floor 26** | 2026-01-10 → 2026-01-12 (+2d) | 2026-04-02 → 2026-04-03 (+1d) |  |  |
| 1.3.1.3.3.29.1 | **PHE Works** | 2026-01-10 → 2026-01-12 (+2d) | 2026-04-02 → 2026-04-03 (+1d) |  |  |
| PG-12147 | 1st Fix - Piping works | 2026-01-10 → 2026-01-12 (+2d) | 2026-01-24 → 2026-01-27 (+3d) |  |  |
| PG-12148 | 2nd Fix - diverter fixing & Pressure testing | 2026-01-19 → 2026-01-20 (+1d) | 2026-02-02 → 2026-02-03 (+1d) |  |  |
| PG-12149 | Final Fix - CP & Sanitary fixtures | 2026-03-24 → 2026-03-25 (+1d) | 2026-04-02 → 2026-04-03 (+1d) |  |  |
| 1.3.1.3.3.29.2 | **Fire Fighting Works** | 2026-01-20 → 2026-01-21 (+1d) | 2026-04-02 → 2026-04-03 (+1d) |  |  |
| PG-12150 | 1st Fix - Piping and Shaft hydrant works | 2026-01-20 → 2026-01-21 (+1d) |  |  |  |
| PG-12151 | 2nd Fix - Sprinkler fixing & Pressure testing |  | 2026-03-11 → 2026-03-12 (+1d) |  |  |
| PG-12152 | Final Fix - Smoke & heat detectors, FHC , FAS Etc. | 2026-03-24 → 2026-03-25 (+1d) | 2026-04-02 → 2026-04-03 (+1d) |  |  |
| 1.3.1.3.3.29.3 | **Electrical Works** | 2026-01-10 → 2026-01-12 (+2d) | 2026-04-02 → 2026-04-03 (+1d) |  |  |
| PG-12153 | 1st Fix - GI wire pulling | 2026-01-10 → 2026-01-12 (+2d) |  |  |  |
| PG-12154 | 2nd Fix - Wiring works |  | 2026-03-10 → 2026-03-11 (+1d) |  |  |
| PG-12155 | Final Fix - Electrical Fixtures | 2026-03-27 → 2026-03-28 (+1d) | 2026-04-02 → 2026-04-03 (+1d) |  |  |
| 1.3.1.3.3.30 | **Floor 27** | 2026-02-03 → 2026-02-04 (+1d) | 2026-04-24 → 2026-04-25 (+1d) |  |  |
| 1.3.1.3.3.30.1 | **PHE Works** | 2026-02-03 → 2026-02-04 (+1d) | 2026-04-24 → 2026-04-25 (+1d) |  |  |
| PG-12156 | 1st Fix - Piping works | 2026-02-03 → 2026-02-04 (+1d) |  |  |  |
| PG-12157 | 2nd Fix - diverter fixing & Pressure testing | 2026-02-12 → 2026-02-13 (+1d) |  |  |  |
| PG-12158 | Final Fix - CP & Sanitary fixtures |  | 2026-04-24 → 2026-04-25 (+1d) |  |  |
| 1.3.1.3.3.30.2 | **Fire Fighting Works** | 2026-02-12 → 2026-02-13 (+1d) | 2026-04-24 → 2026-04-25 (+1d) |  |  |
| PG-12159 | 1st Fix - Piping and Shaft hydrant works | 2026-02-12 → 2026-02-13 (+1d) |  |  |  |
| PG-12160 | 2nd Fix - Sprinkler fixing & Pressure testing | 2026-03-23 → 2026-03-24 (+1d) |  |  |  |
| PG-12161 | Final Fix - Smoke & heat detectors, FHC , FAS Etc. |  | 2026-04-24 → 2026-04-25 (+1d) |  |  |
| 1.3.1.3.3.30.3 | **Electrical Works** | 2026-02-03 → 2026-02-04 (+1d) | 2026-04-24 → 2026-04-25 (+1d) |  |  |
| PG-12162 | 1st Fix - GI wire pulling | 2026-02-03 → 2026-02-04 (+1d) |  |  |  |
| PG-12163 | 2nd Fix - Wiring works | 2026-03-16 → 2026-03-17 (+1d) |  |  |  |
| PG-12164 | Final Fix - Electrical Fixtures |  | 2026-04-24 → 2026-04-25 (+1d) |  |  |
| 1.3.1.3.3.31 | **Floor 28** |  | 2026-05-16 → 2026-05-18 (+2d) |  |  |
| 1.3.1.3.3.31.1 | **PHE Works** |  | 2026-05-16 → 2026-05-18 (+2d) |  |  |
| PG-12165 | 1st Fix - Piping works |  | 2026-03-10 → 2026-03-11 (+1d) |  |  |
| PG-12166 | 2nd Fix - diverter fixing & Pressure testing |  | 2026-03-17 → 2026-03-18 (+1d) |  |  |
| PG-12167 | Final Fix - CP & Sanitary fixtures |  | 2026-05-16 → 2026-05-18 (+2d) |  |  |
| 1.3.1.3.3.31.2 | **Fire Fighting Works** |  | 2026-05-16 → 2026-05-18 (+2d) |  |  |
| PG-12168 | 1st Fix - Piping and Shaft hydrant works |  | 2026-03-19 → 2026-03-20 (+1d) |  |  |
| PG-12169 | 2nd Fix - Sprinkler fixing & Pressure testing | 2026-04-13 → 2026-04-14 (+1d) | 2026-04-23 → 2026-04-24 (+1d) |  |  |
| PG-12170 | Final Fix - Smoke & heat detectors, FHC , FAS Etc. |  | 2026-05-16 → 2026-05-18 (+2d) |  |  |
| 1.3.1.3.3.31.3 | **Electrical Works** |  | 2026-05-16 → 2026-05-18 (+2d) |  |  |
| PG-12171 | 1st Fix - GI wire pulling |  | 2026-03-05 → 2026-03-06 (+1d) |  |  |
| PG-12172 | 2nd Fix - Wiring works | 2026-04-06 → 2026-04-07 (+1d) | 2026-04-22 → 2026-04-23 (+1d) |  |  |
| PG-12173 | Final Fix - Electrical Fixtures |  | 2026-05-16 → 2026-05-18 (+2d) |  |  |
| 1.3.1.3.3.32 | **Floor 29** | 2026-03-18 → 2026-03-19 (+1d) |  |  |  |
| 1.3.1.3.3.32.1 | **PHE Works** | 2026-03-18 → 2026-03-19 (+1d) |  |  |  |
| PG-12174 | 1st Fix - Piping works | 2026-03-18 → 2026-03-19 (+1d) | 2026-04-01 → 2026-04-02 (+1d) |  |  |
| PG-12175 | 2nd Fix - diverter fixing & Pressure testing | 2026-03-27 → 2026-03-28 (+1d) | 2026-04-08 → 2026-04-09 (+1d) |  |  |
| PG-12176 | Final Fix - CP & Sanitary fixtures | 2026-05-27 → 2026-05-28 (+1d) |  |  |  |
| PG-12177 | 1st Fix - Piping and Shaft hydrant works |  | 2026-04-10 → 2026-04-11 (+1d) |  |  |
| PG-12178 | 2nd Fix - Sprinkler fixing & Pressure testing |  | 2026-05-15 → 2026-05-16 (+1d) |  |  |
| PG-12179 | Final Fix - Smoke & heat detectors, FHC , FAS Etc. | 2026-05-27 → 2026-05-28 (+1d) |  |  |  |
| 1.3.1.3.3.32.3 | **Electrical Works** | 2026-03-18 → 2026-03-19 (+1d) |  |  |  |
| PG-12180 | 1st Fix - GI wire pulling | 2026-03-18 → 2026-03-19 (+1d) | 2026-03-27 → 2026-03-28 (+1d) |  |  |
| PG-12181 | 2nd Fix - Wiring works |  | 2026-05-14 → 2026-05-15 (+1d) |  |  |
| PG-12182 | Final Fix - Electrical Fixtures | 2026-06-01 → 2026-06-02 (+1d) |  |  |  |
| PG-12240 | Final Coat Painting |  |  | 56% → 87% | 436.62d → 437.18d |
| PG-12245 | Final Coat Painting |  |  | 49% → 80% | 399.55d → 400.11d |
| 1.3.1.3.4.7 | **Floor 4** |  | 2025-05-16 → 2025-05-13 (-3d) |  |  |
| 1.3.1.3.4.7.1 | **Ceiling Finishing works - Civil** |  | 2025-05-16 → 2025-05-13 (-3d) |  |  |
| PG-12252 | Painting Works - Putty, Primer and 1st |  | 2025-04-24 → 2025-04-19 A (-5d) | 3% → 100% | 420.95d → none |
| PG-12254 | Final Coat Painting | 2025-04-24 → 2025-04-19 A (-5d) | 2025-05-16 → 2025-05-13 (-3d) | 0% → 17% | 420.95d → 424.51d |
| 1.3.1.3.4.7.2 | **Wall Finishing works - Civil** |  | 2025-05-09 → 2025-05-13 (+4d) |  |  |
| PG-12259 | Final Coat Painting | 2025-04-18 → 2025-04-19 A (+1d) | 2025-05-09 → 2025-05-13 (+4d) | 0% → 16% | 389.67d → 387.62d |
| 1.3.1.3.4.7.3 | **Floor Finishing Works - Civil** |  | 2025-04-18 → 2025-04-19 (+1d) |  |  |
| PG-12263 | Wooden doors |  | 2025-04-18 → 2025-04-19 A (+1d) | 91% → 100% | 389.67d → none |
| PG-12279 | Cornice fixing | 2025-04-23 → 2025-04-24 A (+1d) | 2025-04-28 → 2025-04-29 (+1d) | 0% → 26% | 410.89d → 410.42d |
| PG-12285 | Dadoing - Wet area | 2025-04-18 → 2025-04-19 A (+1d) | 2025-04-24 → 2025-04-25 A (+1d) | 0% → 100% | 364.75d → none |
| PG-12289 | Floor Tiling - Wet area | 2025-04-24 → 2025-04-25 A (+1d) |  | 0% → 11% | 364.75d → 365.07d |
| 1.3.1.3.4.10 | **Floor 7** |  | 2025-06-27 → 2025-06-28 (+1d) |  |  |
| 1.3.1.3.4.10.1 | **Ceiling Finishing works - Civil** | 2025-04-22 → 2025-04-23 (+1d) | 2025-06-27 → 2025-06-28 (+1d) |  |  |
| PG-12292 | Gypsum Plastering | 2025-04-22 → 2025-04-23 A (+1d) | 2025-04-29 → 2025-04-30 (+1d) | 0% → 27% | 398.63d → 398.8d |
| PG-12293 | Cornice fixing | 2025-05-08 → 2025-05-10 (+2d) | 2025-05-13 → 2025-05-15 (+2d) |  | 398.63d → 397.85d |
| PG-12295 | Toilet False ceiling | 2025-05-17 → 2025-05-19 (+2d) | 2025-05-22 → 2025-05-23 (+1d) |  | 378.95d → 378.8d |
| PG-12294 | Painting Works - Putty, Primer and 1st | 2025-05-28 → 2025-05-29 (+1d) | 2025-06-04 → 2025-06-05 (+1d) |  | 385.62d → 385.47d |

| ID | Task | Start | Finish | Total float |
| --- | --- | --- | --- | --- |
| PG-12296 | Final Coat Painting | 2025-06-04 → 2025-06-05 (+1d) | 2025-06-27 → 2025-06-28 (+1d) | 385.62d → 385.47d |
| 1.3.1.3.4.10.2 | **Wall Finishing works - Civil** |  | 2025-06-26 → 2025-06-27 (+1d) |  |
| PG-12299 | Dadoing - Wet area | 2025-05-05 → 2025-05-06 (+1d) | 2025-05-10 → 2025-05-12 (+2d) | 351.95d → 351.8d |
| PG-12298 | UPVC Windows & Sliding doors | 2025-05-22 → 2025-05-23 (+1d) | 2025-05-28 → 2025-05-29 (+1d) | 351.95d → 351.8d |
| PG-12300 | Painting Works - Putty, Primer and 1st | 2025-05-28 → 2025-05-29 (+1d) | 2025-06-04 → 2025-06-05 (+1d) | 351.95d → 351.8d |
| PG-12301 | Final Coat Painting | 2025-06-04 → 2025-06-05 (+1d) | 2025-06-26 → 2025-06-27 (+1d) | 351.95d → 351.8d |
| 1.3.1.3.4.10.3 | **Floor Finishing Works - Civil** |  | 2025-06-04 → 2025-06-05 (+1d) |  |
| PG-12303 | Floor Tiling - Wet area | 2025-05-10 → 2025-05-12 (+2d) | 2025-05-16 → 2025-05-17 (+1d) | 351.95d → 351.8d |
| PG-12304 | Floor Tiling - Dry area | 2025-05-16 → 2025-05-17 (+1d) | 2025-05-22 → 2025-05-23 (+1d) | 351.95d → 351.8d |
| PG-12305 | Wooden doors | 2025-05-29 → 2025-05-30 (+1d) | 2025-06-04 → 2025-06-05 (+1d) | 351.95d → 351.8d |
| 1.3.1.3.4.11 | **Floor 8** | 2025-04-30 → 2025-05-01 (+1d) | 2025-07-14 → 2025-07-15 (+1d) |  |
| 1.3.1.3.4.11.1 | **Ceiling Finishing works - Civil** |  | 2025-07-14 → 2025-07-15 (+1d) |  |
| PG-12309 | Toilet False ceiling | 2025-06-03 → 2025-06-04 (+1d) |  |  |
| PG-12308 | Painting Works - Putty, Primer and 1st | 2025-06-13 → 2025-06-14 (+1d) |  |  |
| PG-12310 | Final Coat Painting | 2025-06-20 → 2025-06-21 (+1d) | 2025-07-14 → 2025-07-15 (+1d) |  |
| 1.3.1.3.4.11.2 | **Wall Finishing works - Civil** | 2025-04-30 → 2025-05-01 (+1d) | 2025-07-12 → 2025-07-14 (+2d) |  |
| PG-12311 | Balcony Railing Fixing works | 2025-04-30 → 2025-05-01 (+1d) |  |  |
| PG-12313 | Dadoing - Wet area | 2025-05-21 → 2025-05-22 (+1d) |  |  |
| PG-12312 | UPVC Windows & Sliding doors | 2025-06-07 → 2025-06-09 (+2d) |  |  |
| PG-12314 | Painting Works - Putty, Primer and 1st | 2025-06-13 → 2025-06-14 (+1d) |  |  |
| PG-12315 | Final Coat Painting | 2025-06-20 → 2025-06-21 (+1d) | 2025-07-12 → 2025-07-14 (+2d) |  |
| 1.3.1.3.4.11.3 | **Floor Finishing Works - Civil** | 2025-04-30 → 2025-05-01 (+1d) |  |  |
| PG-12316 | Waterproofing for sunken areas | 2025-04-30 → 2025-05-01 (+1d) |  |  |
| PG-12317 | Floor Tiling - Wet area | 2025-05-27 → 2025-05-28 (+1d) |  |  |
| PG-12318 | Floor Tiling - Dry area | 2025-06-02 → 2025-06-03 (+1d) |  |  |
| PG-12319 | Wooden doors | 2025-06-14 → 2025-06-16 (+2d) |  |  |
| 1.3.1.3.4.12 | **Floor 9** | 2025-05-15 → 2025-05-16 (+1d) |  |  |
| PG-12323 | Toilet False ceiling | 2025-06-18 → 2025-06-19 (+1d) |  |  |
| PG-12322 | Painting Works - Putty, Primer and 1st | 2025-06-28 → 2025-06-30 (+2d) |  |  |
| PG-12324 | Final Coat Painting | 2025-07-05 → 2025-07-07 (+2d) |  |  |
| 1.3.1.3.4.12.2 | **Wall Finishing works - Civil** | 2025-05-15 → 2025-05-16 (+1d) | 2025-07-25 → 2025-07-26 (+1d) |  |
| PG-12325 | Balcony Railing Fixing works | 2025-05-15 → 2025-05-16 (+1d) |  |  |
| PG-12327 | Dadoing - Wet area | 2025-06-05 → 2025-06-06 (+1d) |  |  |
| PG-12326 | UPVC Windows & Sliding doors | 2025-06-23 → 2025-06-24 (+1d) |  |  |
| PG-12328 | Painting Works - Putty, Primer and 1st | 2025-06-28 → 2025-06-30 (+2d) |  |  |
| PG-12329 | Final Coat Painting | 2025-07-05 → 2025-07-07 (+2d) | 2025-07-25 → 2025-07-26 (+1d) |  |
| 1.3.1.3.4.12.3 | **Floor Finishing Works - Civil** | 2025-05-15 → 2025-05-16 (+1d) |  |  |
| PG-12330 | Waterproofing for sunken areas | 2025-05-15 → 2025-05-16 (+1d) |  |  |
| PG-12331 | Floor Tiling - Wet area | 2025-06-11 → 2025-06-12 (+1d) |  |  |
| PG-12332 | Floor Tiling - Dry area | 2025-06-17 → 2025-06-18 (+1d) |  |  |
| PG-12333 | Wooden doors | 2025-06-30 → 2025-07-01 (+1d) |  |  |
| 1.3.1.3.4.13 | **Floor 10** | 2025-05-30 → 2025-05-31 (+1d) | 2025-08-12 → 2025-08-13 (+1d) |  |
| 1.3.1.3.4.13.1 | **Ceiling Finishing works - Civil** |  | 2025-08-12 → 2025-08-13 (+1d) |  |
| PG-12337 | Toilet False ceiling | 2025-07-03 → 2025-07-04 (+1d) |  |  |
| PG-12336 | Painting Works - Putty, Primer and 1st | 2025-07-14 → 2025-07-15 (+1d) |  |  |
| PG-12338 | Final Coat Painting | 2025-07-21 → 2025-07-22 (+1d) | 2025-08-12 → 2025-08-13 (+1d) |  |
| 1.3.1.3.4.13.2 | **Wall Finishing works - Civil** | 2025-05-30 → 2025-05-31 (+1d) | 2025-08-11 → 2025-08-12 (+1d) |  |
| PG-12339 | Balcony Railing Fixing works | 2025-05-30 → 2025-05-31 (+1d) |  |  |
| PG-12341 | Dadoing - Wet area | 2025-06-20 → 2025-06-21 (+1d) |  |  |
| PG-12340 | UPVC Windows & Sliding doors | 2025-07-08 → 2025-07-09 (+1d) |  |  |
| PG-12342 | Painting Works - Putty, Primer and 1st | 2025-07-14 → 2025-07-15 (+1d) |  |  |
| PG-12343 | Final Coat Painting | 2025-07-21 → 2025-07-22 (+1d) | 2025-08-11 → 2025-08-12 (+1d) |  |
| 1.3.1.3.4.13.3 | **Floor Finishing Works - Civil** | 2025-05-30 → 2025-05-31 (+1d) |  |  |
| PG-12344 | Waterproofing for sunken areas | 2025-05-30 → 2025-05-31 (+1d) |  |  |
| PG-12345 | Floor Tiling - Wet area | 2025-06-26 → 2025-06-27 (+1d) |  |  |
| PG-12346 | Floor Tiling - Dry area | 2025-07-02 → 2025-07-03 (+1d) |  |  |
| PG-12347 | Wooden doors | 2025-07-15 → 2025-07-16 (+1d) |  |  |
| 1.3.1.3.4.14 | **Floor 11** | 2025-06-12 → 2025-06-13 (+1d) |  |  |
| PG-12351 | Toilet False ceiling | 2025-07-16 → 2025-07-17 (+1d) |  |  |
| PG-12350 | Painting Works - Putty, Primer and 1st | 2025-07-26 → 2025-07-28 (+2d) |  |  |
| PG-12352 | Final Coat Painting | 2025-08-02 → 2025-08-04 (+2d) |  |  |
| 1.3.1.3.4.14.2 | **Wall Finishing works - Civil** | 2025-06-12 → 2025-06-13 (+1d) | 2025-08-25 → 2025-08-26 (+1d) |  |
| PG-12353 | Balcony Railing Fixing works | 2025-06-12 → 2025-06-13 (+1d) |  |  |
| PG-12355 | Dadoing - Wet area | 2025-07-03 → 2025-07-04 (+1d) |  |  |
| PG-12354 | UPVC Windows & Sliding doors | 2025-07-21 → 2025-07-22 (+1d) |  |  |
| PG-12356 | Painting Works - Putty, Primer and 1st | 2025-07-26 → 2025-07-28 (+2d) |  |  |
| PG-12357 | Final Coat Painting | 2025-08-02 → 2025-08-04 (+2d) | 2025-08-25 → 2025-08-26 (+1d) |  |
| 1.3.1.3.4.14.3 | **Floor Finishing Works - Civil** | 2025-06-12 → 2025-06-13 (+1d) |  |  |
| PG-12358 | Waterproofing for sunken areas | 2025-06-12 → 2025-06-13 (+1d) |  |  |
| PG-12359 | Floor Tiling - Wet area | 2025-07-09 → 2025-07-10 (+1d) |  |  |

| ID | Task | Start | Finish |
| --- | --- | --- | --- |
| PG-12360 | Floor Tiling - Dry area | 2025-07-15 → 2025-07-16 (+1d) |  |
| PG-12361 | Wooden doors | 2025-07-28 → 2025-07-29 (+1d) |  |
| 1.3.1.3.4.15 | **Floor 12** | 2025-06-25 → 2025-06-26 (+1d) | 2025-09-10 → 2025-09-11 (+1d) |
| 1.3.1.3.4.15.1 | **Ceiling Finishing works - Civil** |  | 2025-09-10 → 2025-09-11 (+1d) |
| PG-12365 | Toilet False ceiling | 2025-07-29 → 2025-07-30 (+1d) |  |
| PG-12364 | Painting Works - Putty, Primer and 1st | 2025-08-08 → 2025-08-09 (+1d) |  |
| PG-12366 | Final Coat Painting | 2025-08-16 → 2025-08-18 (+2d) | 2025-09-10 → 2025-09-11 (+1d) |
| 1.3.1.3.4.15.2 | **Wall Finishing works - Civil** | 2025-06-25 → 2025-06-26 (+1d) | 2025-09-10 → 2025-09-11 (+1d) |
| PG-12367 | Balcony Railing Fixing works | 2025-06-25 → 2025-06-26 (+1d) |  |
| PG-12369 | Dadoing - Wet area | 2025-07-16 → 2025-07-17 (+1d) |  |
| PG-12368 | UPVC Windows & Sliding doors | 2025-08-02 → 2025-08-04 (+2d) |  |
| PG-12370 | Painting Works - Putty, Primer and 1st | 2025-08-08 → 2025-08-09 (+1d) |  |
| PG-12371 | Final Coat Painting | 2025-08-16 → 2025-08-18 (+2d) | 2025-09-10 → 2025-09-11 (+1d) |
| 1.3.1.3.4.15.3 | **Floor Finishing Works - Civil** | 2025-06-25 → 2025-06-26 (+1d) |  |
| PG-12372 | Waterproofing for sunken areas | 2025-06-25 → 2025-06-26 (+1d) |  |
| PG-12373 | Floor Tiling - Wet area | 2025-07-22 → 2025-07-23 (+1d) |  |
| PG-12374 | Floor Tiling - Dry area | 2025-07-28 → 2025-07-29 (+1d) |  |
| PG-12375 | Wooden doors | 2025-08-09 → 2025-08-11 (+2d) |  |
| 1.3.1.3.4.16 | **Floor 13** | 2025-07-08 → 2025-07-09 (+1d) | 2025-09-23 → 2025-09-24 (+1d) |
| 1.3.1.3.4.16.1 | **Ceiling Finishing works - Civil** |  | 2025-09-23 → 2025-09-24 (+1d) |
| PG-12379 | Toilet False ceiling | 2025-08-11 → 2025-08-12 (+1d) |  |
| PG-12378 | Painting Works - Putty, Primer and 1st | 2025-08-22 → 2025-08-23 (+1d) |  |
| PG-12380 | Final Coat Painting | 2025-08-29 → 2025-08-30 (+1d) | 2025-09-23 → 2025-09-24 (+1d) |
| 1.3.1.3.4.16.2 | **Wall Finishing works - Civil** | 2025-07-08 → 2025-07-09 (+1d) | 2025-09-23 → 2025-09-24 (+1d) |
| PG-12381 | Balcony Railing Fixing works | 2025-07-08 → 2025-07-09 (+1d) |  |
| PG-12383 | Dadoing - Wet area | 2025-07-29 → 2025-07-30 (+1d) |  |
| PG-12382 | UPVC Windows & Sliding doors | 2025-08-16 → 2025-08-18 (+2d) |  |
| PG-12384 | Painting Works - Putty, Primer and 1st | 2025-08-22 → 2025-08-23 (+1d) |  |
| PG-12385 | Final Coat Painting | 2025-08-29 → 2025-08-30 (+1d) | 2025-09-23 → 2025-09-24 (+1d) |
| 1.3.1.3.4.16.3 | **Floor Finishing Works - Civil** | 2025-07-08 → 2025-07-09 (+1d) |  |
| PG-12386 | Waterproofing for sunken areas | 2025-07-08 → 2025-07-09 (+1d) |  |
| PG-12387 | Floor Tiling - Wet area | 2025-08-04 → 2025-08-05 (+1d) |  |
| PG-12388 | Floor Tiling - Dry area | 2025-08-09 → 2025-08-11 (+2d) |  |
| PG-12389 | Wooden doors | 2025-08-23 → 2025-08-25 (+2d) |  |
| 1.3.1.3.4.17 | **Floor 14** | 2025-07-21 → 2025-07-22 (+1d) | 2025-10-04 → 2025-10-06 (+2d) |
| 1.3.1.3.4.17.1 | **Ceiling Finishing works - Civil** |  | 2025-10-04 → 2025-10-06 (+2d) |
| PG-12393 | Toilet False ceiling | 2025-08-25 → 2025-08-26 (+1d) |  |
| PG-12392 | Painting Works - Putty, Primer and 1st | 2025-09-04 → 2025-09-05 (+1d) |  |
| PG-12394 | Final Coat Painting | 2025-09-11 → 2025-09-12 (+1d) | 2025-10-04 → 2025-10-06 (+2d) |
| 1.3.1.3.4.17.2 | **Wall Finishing works - Civil** | 2025-07-21 → 2025-07-22 (+1d) | 2025-10-04 → 2025-10-06 (+2d) |
| PG-12395 | Balcony Railing Fixing works | 2025-07-21 → 2025-07-22 (+1d) |  |
| PG-12397 | Dadoing - Wet area | 2025-08-11 → 2025-08-12 (+1d) |  |
| PG-12396 | UPVC Windows & Sliding doors | 2025-08-29 → 2025-08-30 (+1d) |  |
| PG-12398 | Painting Works - Putty, Primer and 1st | 2025-09-04 → 2025-09-05 (+1d) |  |
| PG-12399 | Final Coat Painting | 2025-09-11 → 2025-09-12 (+1d) | 2025-10-04 → 2025-10-06 (+2d) |
| 1.3.1.3.4.17.3 | **Floor Finishing Works - Civil** | 2025-07-21 → 2025-07-22 (+1d) |  |
| PG-12400 | Waterproofing for sunken areas | 2025-07-21 → 2025-07-22 (+1d) |  |
| PG-12401 | Floor Tiling - Wet area | 2025-08-18 → 2025-08-19 (+1d) |  |
| PG-12402 | Floor Tiling - Dry area | 2025-08-23 → 2025-08-25 (+2d) |  |
| PG-12403 | Wooden doors | 2025-09-05 → 2025-09-06 (+1d) |  |
| 1.3.1.3.4.18 | **Floor 15** | 2025-08-02 → 2025-08-04 (+2d) |  |
| 1.3.1.3.4.18.2 | **Wall Finishing works - Civil** | 2025-08-02 → 2025-08-04 (+2d) |  |
| PG-12409 | Balcony Railing Fixing works | 2025-08-02 → 2025-08-04 (+2d) |  |
| 1.3.1.3.4.18.3 | **Floor Finishing Works - Civil** | 2025-08-02 → 2025-08-04 (+2d) |  |
| PG-12414 | Waterproofing for sunken areas | 2025-08-02 → 2025-08-04 (+2d) |  |
| 1.3.1.3.4.19 | **Floor 16** | 2025-08-16 → 2025-08-18 (+2d) |  |
| 1.3.1.3.4.19.1 | **Ceiling Finishing works - Civil** |  | 2025-10-30 → 2025-10-31 (+1d) |
| PG-12421 | Toilet False ceiling | 2025-09-19 → 2025-09-20 (+1d) |  |
| PG-12420 | Painting Works - Putty, Primer and 1st | 2025-09-30 → 2025-10-01 (+1d) |  |
| PG-12422 | Final Coat Painting | 2025-10-08 → 2025-10-09 (+1d) | 2025-10-30 → 2025-10-31 (+1d) |
| 1.3.1.3.4.19.2 | **Wall Finishing works - Civil** | 2025-08-16 → 2025-08-18 (+2d) |  |
| PG-12423 | Balcony Railing Fixing works | 2025-08-16 → 2025-08-18 (+2d) |  |
| PG-12425 | Dadoing - Wet area | 2025-09-06 → 2025-09-08 (+2d) |  |
| PG-12424 | UPVC Windows & Sliding doors | 2025-09-24 → 2025-09-25 (+1d) |  |
| PG-12426 | Painting Works - Putty, Primer and 1st | 2025-09-30 → 2025-10-01 (+1d) |  |
| PG-12427 | Final Coat Painting | 2025-10-08 → 2025-10-09 (+1d) |  |
| 1.3.1.3.4.19.3 | **Floor Finishing Works - Civil** | 2025-08-16 → 2025-08-18 (+2d) |  |
| PG-12428 | Waterproofing for sunken areas | 2025-08-16 → 2025-08-18 (+2d) |  |
| PG-12429 | Floor Tiling - Wet area | 2025-09-12 → 2025-09-13 (+1d) |  |
| PG-12430 | Floor Tiling - Dry area | 2025-09-18 → 2025-09-19 (+1d) |  |

| ID | Task | Start | Finish |
| --- | --- | --- | --- |
| PG-12431 | Wooden doors | 2025-10-01 → 2025-10-03 (+2d) |  |
| 1.3.1.3.4.20 | **Floor 17** | 2025-08-29 → 2025-08-30 (+1d) |  |
| PG-12435 | Toilet False ceiling | 2025-10-03 → 2025-10-04 (+1d) |  |
| PG-12434 | Painting Works - Putty, Primer and 1st | 2025-10-14 → 2025-10-15 (+1d) |  |
| PG-12436 | Final Coat Painting | 2025-10-21 → 2025-10-22 (+1d) |  |
| 1.3.1.3.4.20.2 | **Wall Finishing works - Civil** | 2025-08-29 → 2025-08-30 (+1d) |  |
| PG-12437 | Balcony Railing Fixing works | 2025-08-29 → 2025-08-30 (+1d) |  |
| PG-12439 | Dadoing - Wet area | 2025-09-19 → 2025-09-20 (+1d) |  |
| PG-12438 | UPVC Windows & Sliding doors | 2025-10-08 → 2025-10-09 (+1d) |  |
| PG-12440 | Painting Works - Putty, Primer and 1st | 2025-10-14 → 2025-10-15 (+1d) |  |
| PG-12441 | Final Coat Painting | 2025-10-21 → 2025-10-22 (+1d) |  |
| 1.3.1.3.4.20.3 | **Floor Finishing Works - Civil** | 2025-08-29 → 2025-08-30 (+1d) |  |
| PG-12442 | Waterproofing for sunken areas | 2025-08-29 → 2025-08-30 (+1d) |  |
| PG-12443 | Floor Tiling - Wet area | 2025-09-25 → 2025-09-26 (+1d) |  |
| PG-12444 | Floor Tiling - Dry area | 2025-10-01 → 2025-10-03 (+2d) |  |
| PG-12445 | Wooden doors | 2025-10-15 → 2025-10-16 (+1d) |  |
| 1.3.1.3.4.21 | **Floor 18** | 2025-09-11 → 2025-09-12 (+1d) |  |
| PG-12449 | Toilet False ceiling | 2025-10-16 → 2025-10-17 (+1d) |  |
| PG-12448 | Painting Works - Putty, Primer and 1st | 2025-10-27 → 2025-10-28 (+1d) |  |
| PG-12450 | Final Coat Painting | 2025-11-04 → 2025-11-05 (+1d) |  |
| 1.3.1.3.4.21.2 | **Wall Finishing works - Civil** | 2025-09-11 → 2025-09-12 (+1d) |  |
| PG-12451 | Balcony Railing Fixing works | 2025-09-11 → 2025-09-12 (+1d) |  |
| PG-12453 | Dadoing - Wet area | 2025-10-03 → 2025-10-04 (+1d) |  |
| PG-12452 | UPVC Windows & Sliding doors | 2025-10-21 → 2025-10-22 (+1d) |  |
| PG-12454 | Painting Works - Putty, Primer and 1st | 2025-10-27 → 2025-10-28 (+1d) |  |
| PG-12455 | Final Coat Painting | 2025-11-04 → 2025-11-05 (+1d) |  |
| 1.3.1.3.4.21.3 | **Floor Finishing Works - Civil** | 2025-09-11 → 2025-09-12 (+1d) |  |
| PG-12456 | Waterproofing for sunken areas | 2025-09-11 → 2025-09-12 (+1d) |  |
| PG-12457 | Floor Tiling - Wet area | 2025-10-09 → 2025-10-10 (+1d) |  |
| PG-12458 | Floor Tiling - Dry area | 2025-10-15 → 2025-10-16 (+1d) |  |
| PG-12459 | Wooden doors | 2025-10-28 → 2025-10-29 (+1d) |  |
| 1.3.1.3.4.22 | **Floor 19** | 2025-09-24 → 2025-09-25 (+1d) |  |
| PG-12463 | Toilet False ceiling | 2025-10-29 → 2025-10-30 (+1d) |  |
| PG-12462 | Painting Works - Putty, Primer and 1st | 2025-11-10 → 2025-11-11 (+1d) |  |
| PG-12464 | Final Coat Painting | 2025-11-17 → 2025-11-18 (+1d) |  |
| 1.3.1.3.4.22.2 | **Wall Finishing works - Civil** | 2025-09-24 → 2025-09-25 (+1d) |  |
| PG-12465 | Balcony Railing Fixing works | 2025-09-24 → 2025-09-25 (+1d) |  |
| PG-12467 | Dadoing - Wet area | 2025-10-16 → 2025-10-17 (+1d) |  |
| PG-12466 | UPVC Windows & Sliding doors | 2025-11-04 → 2025-11-05 (+1d) |  |
| PG-12468 | Painting Works - Putty, Primer and 1st | 2025-11-10 → 2025-11-11 (+1d) |  |
| PG-12469 | Final Coat Painting | 2025-11-17 → 2025-11-18 (+1d) |  |
| 1.3.1.3.4.22.3 | **Floor Finishing Works - Civil** | 2025-09-24 → 2025-09-25 (+1d) |  |
| PG-12470 | Waterproofing for sunken areas | 2025-09-24 → 2025-09-25 (+1d) |  |
| PG-12471 | Floor Tiling - Wet area | 2025-10-22 → 2025-10-23 (+1d) |  |
| PG-12472 | Floor Tiling - Dry area | 2025-10-28 → 2025-10-29 (+1d) |  |
| PG-12473 | Wooden doors | 2025-11-11 → 2025-11-12 (+1d) |  |
| 1.3.1.3.4.23 | **Floor 20** | 2025-10-08 → 2025-10-09 (+1d) | 2025-12-22 → 2025-12-23 (+1d) |
| 1.3.1.3.4.23.1 | **Ceiling Finishing works - Civil** |  | 2025-12-22 → 2025-12-23 (+1d) |
| PG-12477 | Toilet False ceiling | 2025-11-12 → 2025-11-13 (+1d) |  |
| PG-12476 | Painting Works - Putty, Primer and 1st | 2025-11-22 → 2025-11-24 (+2d) |  |
| PG-12478 | Final Coat Painting | 2025-11-29 → 2025-12-01 (+2d) | 2025-12-22 → 2025-12-23 (+1d) |
| 1.3.1.3.4.23.2 | **Wall Finishing works - Civil** | 2025-10-08 → 2025-10-09 (+1d) | 2025-12-22 → 2025-12-23 (+1d) |
| PG-12479 | Balcony Railing Fixing works | 2025-10-08 → 2025-10-09 (+1d) |  |
| PG-12481 | Dadoing - Wet area | 2025-10-29 → 2025-10-30 (+1d) |  |
| PG-12480 | UPVC Windows & Sliding doors | 2025-11-17 → 2025-11-18 (+1d) |  |
| PG-12482 | Painting Works - Putty, Primer and 1st | 2025-11-22 → 2025-11-24 (+2d) |  |
| PG-12483 | Final Coat Painting | 2025-11-29 → 2025-12-01 (+2d) | 2025-12-22 → 2025-12-23 (+1d) |
| 1.3.1.3.4.23.3 | **Floor Finishing Works - Civil** | 2025-10-08 → 2025-10-09 (+1d) |  |
| PG-12484 | Waterproofing for sunken areas | 2025-10-08 → 2025-10-09 (+1d) |  |
| PG-12485 | Floor Tiling - Wet area | 2025-11-05 → 2025-11-06 (+1d) |  |
| PG-12486 | Floor Tiling - Dry area | 2025-11-11 → 2025-11-12 (+1d) |  |
| PG-12487 | Wooden doors | 2025-11-24 → 2025-11-25 (+1d) |  |
| 1.3.1.3.4.24 | **Floor 21** | 2025-10-21 → 2025-10-22 (+1d) | 2026-01-03 → 2026-01-05 (+2d) |
| 1.3.1.3.4.24.1 | **Ceiling Finishing works - Civil** |  | 2026-01-03 → 2026-01-05 (+2d) |
| PG-12492 | Final Coat Painting |  | 2026-01-03 → 2026-01-05 (+2d) |
| 1.3.1.3.4.24.2 | **Wall Finishing works - Civil** | 2025-10-21 → 2025-10-22 (+1d) | 2026-01-03 → 2026-01-05 (+2d) |
| PG-12493 | Balcony Railing Fixing works | 2025-10-21 → 2025-10-22 (+1d) |  |
| PG-12497 | Final Coat Painting |  | 2026-01-03 → 2026-01-05 (+2d) |
| 1.3.1.3.4.24.3 | **Floor Finishing Works - Civil** | 2025-10-21 → 2025-10-22 (+1d) |  |
| PG-12498 | Waterproofing for sunken areas | 2025-10-21 → 2025-10-22 (+1d) |  |

| ID | Task | Start | Finish |
| --- | --- | --- | --- |
| 1.3.1.3.4.25 | **Floor 22** | 2025-11-04 → 2025-11-05 (+1d) | 2026-01-16 → 2026-01-17 (+1d) |
| 1.3.1.3.4.25.1 | **Ceiling Finishing works - Civil** |  | 2026-01-16 → 2026-01-17 (+1d) |
| PG-12506 | Final Coat Painting |  | 2026-01-16 → 2026-01-17 (+1d) |
| 1.3.1.3.4.25.2 | **Wall Finishing works - Civil** | 2025-11-04 → 2025-11-05 (+1d) | 2026-01-16 → 2026-01-17 (+1d) |
| PG-12507 | Balcony Railing Fixing works | 2025-11-04 → 2025-11-05 (+1d) |  |
| PG-12511 | Final Coat Painting |  | 2026-01-16 → 2026-01-17 (+1d) |
| 1.3.1.3.4.25.3 | **Floor Finishing Works - Civil** | 2025-11-04 → 2025-11-05 (+1d) |  |
| PG-12512 | Waterproofing for sunken areas | 2025-11-04 → 2025-11-05 (+1d) |  |
| PG-12519 | Toilet False ceiling | 2025-12-18 → 2025-12-19 (+1d) | 2025-12-23 → 2025-12-24 (+1d) |
| PG-12518 | Painting Works - Putty, Primer and 1st | 2025-12-29 → 2025-12-30 (+1d) | 2026-01-05 → 2026-01-06 (+1d) |
| PG-12520 | Final Coat Painting | 2026-01-05 → 2026-01-06 (+1d) |  |
| PG-12523 | Dadoing - Wet area | 2025-12-05 → 2025-12-06 (+1d) | 2025-12-11 → 2025-12-12 (+1d) |
| PG-12522 | UPVC Windows & Sliding doors | 2025-12-23 → 2025-12-24 (+1d) | 2025-12-29 → 2025-12-30 (+1d) |
| PG-12524 | Painting Works - Putty, Primer and 1st | 2025-12-29 → 2025-12-30 (+1d) | 2026-01-05 → 2026-01-06 (+1d) |
| PG-12525 | Final Coat Painting | 2026-01-05 → 2026-01-06 (+1d) |  |
| 1.3.1.3.4.26.3 | **Floor Finishing Works - Civil** |  | 2026-01-05 → 2026-01-06 (+1d) |
| PG-12527 | Floor Tiling - Wet area | 2025-12-11 → 2025-12-12 (+1d) | 2025-12-17 → 2025-12-18 (+1d) |
| PG-12528 | Floor Tiling - Dry area | 2025-12-17 → 2025-12-18 (+1d) | 2025-12-23 → 2025-12-24 (+1d) |
| PG-12529 | Wooden doors | 2025-12-30 → 2025-12-31 (+1d) | 2026-01-05 → 2026-01-06 (+1d) |
| 1.3.1.3.4.27 | **Floor 24** |  | 2026-02-12 → 2026-02-13 (+1d) |
| 1.3.1.3.4.27.1 | **Ceiling Finishing works - Civil** |  | 2026-02-12 → 2026-02-13 (+1d) |
| PG-12533 | Toilet False ceiling | 2026-01-01 → 2026-01-02 (+1d) | 2026-01-06 → 2026-01-07 (+1d) |
| PG-12532 | Painting Works - Putty, Primer and 1st | 2026-01-12 → 2026-01-13 (+1d) | 2026-01-19 → 2026-01-20 (+1d) |
| PG-12534 | Final Coat Painting | 2026-01-19 → 2026-01-20 (+1d) | 2026-02-12 → 2026-02-13 (+1d) |
| 1.3.1.3.4.27.2 | **Wall Finishing works - Civil** |  | 2026-02-12 → 2026-02-13 (+1d) |
| PG-12537 | Dadoing - Wet area | 2025-12-19 → 2025-12-20 (+1d) | 2025-12-25 → 2025-12-26 (+1d) |
| PG-12536 | UPVC Windows & Sliding doors | 2026-01-06 → 2026-01-07 (+1d) | 2026-01-12 → 2026-01-13 (+1d) |
| PG-12538 | Painting Works - Putty, Primer and 1st | 2026-01-12 → 2026-01-13 (+1d) | 2026-01-19 → 2026-01-20 (+1d) |
| PG-12539 | Final Coat Painting | 2026-01-19 → 2026-01-20 (+1d) | 2026-02-12 → 2026-02-13 (+1d) |
| 1.3.1.3.4.27.3 | **Floor Finishing Works - Civil** |  | 2026-01-19 → 2026-01-20 (+1d) |
| PG-12541 | Floor Tiling - Wet area | 2025-12-25 → 2025-12-26 (+1d) | 2025-12-31 → 2026-01-01 (+1d) |
| PG-12542 | Floor Tiling - Dry area | 2025-12-31 → 2026-01-01 (+1d) | 2026-01-06 → 2026-01-07 (+1d) |
| PG-12543 | Wooden doors | 2026-01-13 → 2026-01-14 (+1d) | 2026-01-19 → 2026-01-20 (+1d) |
| 1.3.1.3.4.28 | **Floor 25** | 2025-12-20 → 2025-12-22 (+2d) | 2026-03-05 → 2026-03-06 (+1d) |
| 1.3.1.3.4.28.1 | **Ceiling Finishing works - Civil** | 2025-12-30 → 2025-12-31 (+1d) | 2026-03-05 → 2026-03-06 (+1d) |
| PG-12544 | Gypsum Plastering | 2025-12-30 → 2025-12-31 (+1d) | 2026-01-06 → 2026-01-07 (+1d) |
| PG-12545 | Cornice fixing | 2026-01-15 → 2026-01-16 (+1d) | 2026-01-20 → 2026-01-21 (+1d) |
| PG-12547 | Toilet False ceiling | 2026-01-22 → 2026-01-23 (+1d) | 2026-01-28 → 2026-01-29 (+1d) |
| PG-12546 | Painting Works - Putty, Primer and 1st | 2026-02-03 → 2026-02-04 (+1d) | 2026-02-10 → 2026-02-11 (+1d) |
| PG-12548 | Final Coat Painting | 2026-02-10 → 2026-02-11 (+1d) | 2026-03-05 → 2026-03-06 (+1d) |
| 1.3.1.3.4.28.2 | **Wall Finishing works - Civil** | 2025-12-20 → 2025-12-22 (+2d) | 2026-03-05 → 2026-03-06 (+1d) |
| PG-12549 | Balcony Railing Fixing works | 2025-12-20 → 2025-12-22 (+2d) | 2025-12-25 → 2025-12-26 (+1d) |
| PG-12551 | Dadoing - Wet area | 2026-01-09 → 2026-01-10 (+1d) | 2026-01-15 → 2026-01-16 (+1d) |
| PG-12550 | UPVC Windows & Sliding doors | 2026-01-28 → 2026-01-29 (+1d) | 2026-02-03 → 2026-02-04 (+1d) |
| PG-12552 | Painting Works - Putty, Primer and 1st | 2026-02-03 → 2026-02-04 (+1d) | 2026-02-10 → 2026-02-11 (+1d) |
| PG-12553 | Final Coat Painting | 2026-02-10 → 2026-02-11 (+1d) | 2026-03-05 → 2026-03-06 (+1d) |
| 1.3.1.3.4.28.3 | **Floor Finishing Works - Civil** | 2025-12-20 → 2025-12-22 (+2d) | 2026-02-10 → 2026-02-11 (+1d) |
| PG-12554 | Waterproofing for sunken areas | 2025-12-20 → 2025-12-22 (+2d) | 2025-12-24 → 2025-12-25 (+1d) |
| PG-12555 | Floor Tiling - Wet area | 2026-01-15 → 2026-01-16 (+1d) | 2026-01-21 → 2026-01-22 (+1d) |
| PG-12556 | Floor Tiling - Dry area | 2026-01-21 → 2026-01-22 (+1d) | 2026-01-28 → 2026-01-29 (+1d) |
| PG-12557 | Wooden doors | 2026-02-04 → 2026-02-05 (+1d) | 2026-02-10 → 2026-02-11 (+1d) |
| 1.3.1.3.4.29 | **Floor 26** | 2026-01-10 → 2026-01-12 (+2d) | 2026-03-27 → 2026-03-28 (+1d) |
| 1.3.1.3.4.29.1 | **Ceiling Finishing works - Civil** | 2026-01-20 → 2026-01-21 (+1d) | 2026-03-27 → 2026-03-28 (+1d) |
| PG-12558 | Gypsum Plastering | 2026-01-20 → 2026-01-21 (+1d) |  |
| PG-12559 | Cornice fixing | 2026-02-06 → 2026-02-07 (+1d) |  |
| PG-12561 | Toilet False ceiling | 2026-02-14 → 2026-02-16 (+2d) | 2026-02-19 → 2026-02-20 (+1d) |
| PG-12560 | Painting Works - Putty, Primer and 1st | 2026-02-25 → 2026-02-26 (+1d) | 2026-03-04 → 2026-03-05 (+1d) |
| PG-12562 | Final Coat Painting | 2026-03-04 → 2026-03-05 (+1d) | 2026-03-27 → 2026-03-28 (+1d) |
| 1.3.1.3.4.29.2 | **Wall Finishing works - Civil** | 2026-01-10 → 2026-01-12 (+2d) | 2026-03-26 → 2026-03-27 (+1d) |
| PG-12563 | Balcony Railing Fixing works | 2026-01-10 → 2026-01-12 (+2d) | 2026-01-15 → 2026-01-16 (+1d) |
| PG-12565 | Dadoing - Wet area | 2026-02-02 → 2026-02-03 (+1d) | 2026-02-07 → 2026-02-09 (+2d) |
| PG-12564 | UPVC Windows & Sliding doors | 2026-02-19 → 2026-02-20 (+1d) | 2026-02-25 → 2026-02-26 (+1d) |
| PG-12566 | Painting Works - Putty, Primer and 1st | 2026-02-25 → 2026-02-26 (+1d) | 2026-03-04 → 2026-03-05 (+1d) |
| PG-12567 | Final Coat Painting | 2026-03-04 → 2026-03-05 (+1d) | 2026-03-26 → 2026-03-27 (+1d) |
| 1.3.1.3.4.29.3 | **Floor Finishing Works - Civil** | 2026-01-10 → 2026-01-12 (+2d) | 2026-03-04 → 2026-03-05 (+1d) |
| PG-12568 | Waterproofing for sunken areas | 2026-01-10 → 2026-01-12 (+2d) | 2026-01-14 → 2026-01-15 (+1d) |
| PG-12569 | Floor Tiling - Wet area | 2026-02-07 → 2026-02-09 (+2d) | 2026-02-13 → 2026-02-14 (+1d) |
| PG-12570 | Floor Tiling - Dry area | 2026-02-13 → 2026-02-14 (+1d) | 2026-02-19 → 2026-02-20 (+1d) |
| PG-12571 | Wooden doors | 2026-02-26 → 2026-02-27 (+1d) | 2026-03-04 → 2026-03-05 (+1d) |
| 1.3.1.3.4.30 | **Floor 27** | 2026-02-03 → 2026-02-04 (+1d) | 2026-04-17 → 2026-04-18 (+1d) |

| ID | Task | Start | Finish |
| --- | --- | --- | --- |
| 1.3.1.3.4.30.1 | **Ceiling Finishing works - Civil** |  | 2026-04-17 → 2026-04-18 (+1d) |
| PG-12576 | Final Coat Painting |  | 2026-04-17 → 2026-04-18 (+1d) |
| 1.3.1.3.4.30.2 | **Wall Finishing works - Civil** | 2026-02-03 → 2026-02-04 (+1d) | 2026-04-17 → 2026-04-18 (+1d) |
| PG-12577 | Balcony Railing Fixing works | 2026-02-03 → 2026-02-04 (+1d) | 2026-02-07 → 2026-02-09 (+2d) |
| PG-12581 | Final Coat Painting |  | 2026-04-17 → 2026-04-18 (+1d) |
| 1.3.1.3.4.30.3 | **Floor Finishing Works - Civil** | 2026-02-03 → 2026-02-04 (+1d) |  |
| PG-12582 | Waterproofing for sunken areas | 2026-02-03 → 2026-02-04 (+1d) | 2026-02-06 → 2026-02-07 (+1d) |
| 1.3.1.3.4.31 | **Floor 28** |  | 2026-05-09 → 2026-05-11 (+2d) |
| 1.3.1.3.4.31.1 | **Ceiling Finishing works - Civil** | 2026-03-05 → 2026-03-06 (+1d) | 2026-05-09 → 2026-05-11 (+2d) |
| PG-12586 | Gypsum Plastering | 2026-03-05 → 2026-03-06 (+1d) | 2026-03-12 → 2026-03-13 (+1d) |
| PG-12587 | Cornice fixing |  | 2026-03-26 → 2026-03-27 (+1d) |
| PG-12589 | Toilet False ceiling | 2026-03-30 → 2026-03-31 (+1d) | 2026-04-03 → 2026-04-04 (+1d) |
| PG-12588 | Painting Works - Putty, Primer and 1st | 2026-04-09 → 2026-04-10 (+1d) | 2026-04-16 → 2026-04-17 (+1d) |
| PG-12590 | Final Coat Painting | 2026-04-16 → 2026-04-17 (+1d) | 2026-05-09 → 2026-05-11 (+2d) |
| 1.3.1.3.4.31.2 | **Wall Finishing works - Civil** |  | 2026-05-09 → 2026-05-11 (+2d) |
| PG-12593 | Dadoing - Wet area | 2026-03-17 → 2026-03-18 (+1d) | 2026-03-23 → 2026-03-24 (+1d) |
| PG-12592 | UPVC Windows & Sliding doors | 2026-04-03 → 2026-04-04 (+1d) | 2026-04-09 → 2026-04-10 (+1d) |
| PG-12594 | Painting Works - Putty, Primer and 1st | 2026-04-09 → 2026-04-10 (+1d) | 2026-04-16 → 2026-04-17 (+1d) |
| PG-12595 | Final Coat Painting | 2026-04-16 → 2026-04-17 (+1d) | 2026-05-09 → 2026-05-11 (+2d) |
| 1.3.1.3.4.31.3 | **Floor Finishing Works - Civil** |  | 2026-04-16 → 2026-04-17 (+1d) |
| PG-12597 | Floor Tiling - Wet area | 2026-03-23 → 2026-03-24 (+1d) | 2026-03-28 → 2026-03-30 (+2d) |
| PG-12598 | Floor Tiling - Dry area | 2026-03-28 → 2026-03-30 (+2d) | 2026-04-03 → 2026-04-04 (+1d) |
| PG-12599 | Wooden doors | 2026-04-10 → 2026-04-11 (+1d) | 2026-04-16 → 2026-04-17 (+1d) |
| 1.3.1.3.4.32 | **Floor 29** | 2026-03-18 → 2026-03-19 (+1d) |  |
| 1.3.1.3.4.32.1 | **Ceiling Finishing works - Civil** | 2026-03-27 → 2026-03-28 (+1d) |  |
| PG-12600 | Gypsum Plastering | 2026-03-27 → 2026-03-28 (+1d) | 2026-04-03 → 2026-04-04 (+1d) |
| PG-12601 | Cornice fixing | 2026-04-20 → 2026-04-21 (+1d) | 2026-04-24 → 2026-04-25 (+1d) |
| PG-12603 | Toilet False ceiling | 2026-04-21 → 2026-04-22 (+1d) | 2026-04-25 → 2026-04-27 (+2d) |
| PG-12602 | Painting Works - Putty, Primer and 1st | 2026-05-01 → 2026-05-02 (+1d) | 2026-05-08 → 2026-05-09 (+1d) |
| PG-12604 | Final Coat Painting | 2026-05-08 → 2026-05-09 (+1d) |  |
| 1.3.1.3.4.32.2 | **Wall Finishing works - Civil** | 2026-03-18 → 2026-03-19 (+1d) |  |
| PG-12605 | Balcony Railing Fixing works | 2026-03-18 → 2026-03-19 (+1d) | 2026-03-23 → 2026-03-24 (+1d) |
| PG-12607 | Dadoing - Wet area | 2026-04-08 → 2026-04-09 (+1d) | 2026-04-14 → 2026-04-15 (+1d) |
| PG-12606 | UPVC Windows & Sliding doors | 2026-04-25 → 2026-04-27 (+2d) | 2026-05-01 → 2026-05-02 (+1d) |
| PG-12608 | Painting Works - Putty, Primer and 1st | 2026-05-01 → 2026-05-02 (+1d) | 2026-05-08 → 2026-05-09 (+1d) |
| PG-12609 | Final Coat Painting | 2026-05-08 → 2026-05-09 (+1d) |  |
| 1.3.1.3.4.32.3 | **Floor Finishing Works - Civil** | 2026-03-18 → 2026-03-19 (+1d) | 2026-05-08 → 2026-05-09 (+1d) |
| PG-12610 | Waterproofing for sunken areas | 2026-03-18 → 2026-03-19 (+1d) | 2026-03-21 → 2026-03-23 (+2d) |
| PG-12611 | Floor Tiling - Wet area | 2026-04-14 → 2026-04-15 (+1d) | 2026-04-20 → 2026-04-21 (+1d) |
| PG-12612 | Floor Tiling - Dry area | 2026-04-20 → 2026-04-21 (+1d) | 2026-04-25 → 2026-04-27 (+2d) |
| PG-12613 | Wooden doors | 2026-05-02 → 2026-05-04 (+2d) | 2026-05-08 → 2026-05-09 (+1d) |
| 1.3.1.3.4.33 | **External Finishing works** | 2025-12-26 → 2025-12-27 (+1d) | 2026-04-23 → 2026-04-24 (+1d) |
| PG-12614 | External walls tie rod hole plugging with GP2 | 2025-12-26 → 2025-12-27 (+1d) | 2026-01-31 → 2026-02-02 (+2d) |
| PG-12615 | External walls grinding works | 2026-01-19 → 2026-01-20 (+1d) | 2026-03-07 → 2026-03-09 (+2d) |
| PG-12616 | Texture and painting works | 2026-03-02 → 2026-03-03 (+1d) | 2026-04-23 → 2026-04-24 (+1d) |
| 1.3.1.3.5 | **Corridor & Fire Staircase Finishing works** | 2026-03-04 → 2026-03-05 (+1d) | 2026-06-30 → 2026-07-01 (+1d) |
| 1.3.1.3.5.1 | **Ceiling Finishing works - Civil** | 2026-03-04 → 2026-03-05 (+1d) | 2026-05-26 → 2026-05-27 (+1d) |
| PG-12617 | Gypsum Plastering | 2026-03-04 → 2026-03-05 (+1d) | 2026-03-11 → 2026-03-12 (+1d) |
| PG-12618 | Cornice fixing | 2026-03-10 → 2026-03-11 (+1d) | 2026-03-14 → 2026-03-16 (+2d) |
| PG-12619 | Painting Works - Putty, Primer and 1st | 2026-03-27 → 2026-03-28 (+1d) | 2026-04-03 → 2026-04-04 (+1d) |
| PG-12620 | False ceiling | 2026-04-03 → 2026-04-04 (+1d) | 2026-05-08 → 2026-05-09 (+1d) |
| PG-12621 | Final Coat Painting |  | 2026-05-26 → 2026-05-27 (+1d) |
| 1.3.1.3.5.2 | **Wall Finishing works - Civil** | 2026-04-08 → 2026-04-09 (+1d) | 2026-06-30 → 2026-07-01 (+1d) |
| PG-12622 | UPVC Windows & Sliding doors | 2026-04-08 → 2026-04-09 (+1d) | 2026-04-14 → 2026-04-15 (+1d) |
| PG-12623 | Wall Cladding Upto 1.2 Mts | 2026-04-25 → 2026-04-27 (+2d) | 2026-05-19 → 2026-05-20 (+1d) |
| PG-12624 | Painting Works - Texture & one coat Painting works | 2026-05-26 → 2026-05-27 (+1d) | 2026-06-12 → 2026-06-13 (+1d) |
| PG-12625 | Final Coat Painting |  | 2026-06-30 → 2026-07-01 (+1d) |
| 1.3.1.3.5.3 | **Floor Finishing Works - Civil** | 2026-03-11 → 2026-03-12 (+1d) | 2026-04-09 → 2026-04-10 (+1d) |
| PG-12626 | Fire Doors installation | 2026-03-11 → 2026-03-12 (+1d) | 2026-03-23 → 2026-03-24 (+1d) |
| PG-12627 | Vitrified tile flooring works | 2026-03-23 → 2026-03-24 (+1d) | 2026-04-09 → 2026-04-10 (+1d) |
| 1.3.1.3.5.4 | **Fire Staircase Finishing Works - Civil** | 2026-03-11 → 2026-03-12 (+1d) | 2026-06-30 → 2026-07-01 (+1d) |
| PG-12628 | Staircase Railing Fixing works | 2026-03-11 → 2026-03-12 (+1d) | 2026-04-03 → 2026-04-04 (+1d) |
| PG-12629 | Wall and ceiling Gypsum plastering |  | 2026-04-27 → 2026-04-28 (+1d) |
| PG-12630 | Staircase Flooring and Skirting Works |  | 2026-05-26 → 2026-05-27 (+1d) |
| PG-12631 | UPVC Window fixing works |  | 2026-06-12 → 2026-06-13 (+1d) |
| PG-12632 | Staircase Painting works | 2026-06-06 → 2026-06-08 (+2d) | 2026-06-30 → 2026-07-01 (+1d) |
| 1.3.1.3.6 | **MEP Civil Works (Shaft, Lift Shaft & OHT )** | 2025-12-12 → 2025-12-13 (+1d) |  |
| 1.3.1.3.6.1 | **Lift Shaft Works** | 2025-12-12 → 2025-12-13 (+1d) |  |
| PG-12633 | Tie rod hole packing | 2025-12-12 → 2025-12-13 (+1d) | 2025-12-22 → 2025-12-23 (+1d) |
| PG-12634 | Grinding works | 2025-12-22 → 2025-12-23 (+1d) | 2025-12-27 → 2025-12-29 (+2d) |

| ID | Task | Start | Finish |
| --- | --- | --- | --- |
| PG-12635 | Lift pit water proofing works | 2025-12-27 → 2025-12-29 (+2d) | 2026-01-21 → 2026-01-22 (+1d) |
| PG-12636 | Shaft door opening finishing | 2026-01-21 → 2026-01-22 (+1d) |  |
| PG-12638 | Lift Wall Cladding Works | 2026-04-24 → 2026-04-25 (+1d) |  |
| 1.3.1.3.6.2 | **Electrical Shaft works** | 2025-12-12 → 2025-12-13 (+1d) | 2026-01-14 → 2026-01-15 (+1d) |
| PG-12639 | Tie rod hole packing | 2025-12-12 → 2025-12-13 (+1d) | 2025-12-22 → 2025-12-23 (+1d) |
| PG-12640 | Grinding works | 2025-12-22 → 2025-12-23 (+1d) | 2025-12-27 → 2025-12-29 (+2d) |
| PG-12641 | Shaft door opening finishing | 2025-12-27 → 2025-12-29 (+2d) | 2026-01-05 → 2026-01-06 (+1d) |
| PG-12642 | Painting works | 2026-01-05 → 2026-01-06 (+1d) | 2026-01-14 → 2026-01-15 (+1d) |
| 1.3.1.3.6.3 | **FPS Shaft works** | 2025-12-12 → 2025-12-13 (+1d) | 2026-01-14 → 2026-01-15 (+1d) |
| PG-12643 | Tie rod hole packing | 2025-12-12 → 2025-12-13 (+1d) | 2025-12-22 → 2025-12-23 (+1d) |
| PG-12644 | Grinding works | 2025-12-22 → 2025-12-23 (+1d) | 2025-12-27 → 2025-12-29 (+2d) |
| PG-12645 | Shaft door opening finishing | 2025-12-27 → 2025-12-29 (+2d) | 2026-01-05 → 2026-01-06 (+1d) |
| PG-12646 | Painting works | 2026-01-05 → 2026-01-06 (+1d) | 2026-01-14 → 2026-01-15 (+1d) |
| 1.3.1.3.6.4 | **PHE Shaft works** | 2025-12-12 → 2025-12-13 (+1d) | 2026-01-14 → 2026-01-15 (+1d) |
| PG-12647 | Tie rod hole packing | 2025-12-12 → 2025-12-13 (+1d) | 2025-12-22 → 2025-12-23 (+1d) |
| PG-12648 | Grinding works | 2025-12-22 → 2025-12-23 (+1d) | 2025-12-27 → 2025-12-29 (+2d) |
| PG-12649 | Shaft door opening finishing | 2025-12-27 → 2025-12-29 (+2d) | 2026-01-05 → 2026-01-06 (+1d) |
| PG-12650 | Painting works | 2026-01-05 → 2026-01-06 (+1d) | 2026-01-14 → 2026-01-15 (+1d) |
| 1.3.1.3.6.5 | **Data & Communication Shaft** | 2025-12-12 → 2025-12-13 (+1d) | 2026-01-12 → 2026-01-13 (+1d) |
| PG-12651 | Tie rod hole packing | 2025-12-12 → 2025-12-13 (+1d) | 2025-12-22 → 2025-12-23 (+1d) |
| PG-12652 | Grinding works | 2025-12-22 → 2025-12-23 (+1d) | 2025-12-27 → 2025-12-29 (+2d) |
| PG-12653 | Shaft door opening finishing | 2025-12-27 → 2025-12-29 (+2d) | 2026-01-02 → 2026-01-03 (+1d) |
| PG-12654 | Painting works | 2026-01-02 → 2026-01-03 (+1d) | 2026-01-12 → 2026-01-13 (+1d) |
| 1.3.1.3.6.6 | **OHT Works** | 2025-12-12 → 2025-12-13 (+1d) | 2026-01-31 → 2026-02-02 (+2d) |
| PG-12655 | Tank materials Supply & Shifting | 2025-12-12 → 2025-12-13 (+1d) | 2025-12-24 → 2025-12-25 (+1d) |
| PG-12656 | Assembling OHT FRP Tank | 2025-12-24 → 2025-12-25 (+1d) | 2026-01-05 → 2026-01-06 (+1d) |
| PG-12657 | Installation of OHT Tank | 2026-01-05 → 2026-01-06 (+1d) | 2026-01-22 → 2026-01-23 (+1d) |
| PG-12658 | Water tightness works and checking | 2026-01-22 → 2026-01-23 (+1d) | 2026-01-31 → 2026-02-02 (+2d) |
| 1.3.1.3.7 | **MEP Shaft works** | 2026-01-12 → 2026-01-13 (+1d) |  |
| 1.3.1.3.7.1 | **Electrical** | 2026-01-14 → 2026-01-15 (+1d) | 2026-02-24 → 2026-02-25 (+1d) |
| PG-12659 | Tray Works | 2026-01-14 → 2026-01-15 (+1d) |  |
| PG-12661 | Wiring/DB/connector box installation and termination works |  | 2026-02-24 → 2026-02-25 (+1d) |
| 1.3.1.3.7.2 | **FPS** | 2026-01-14 → 2026-01-15 (+1d) | 2026-02-24 → 2026-02-25 (+1d) |
| PG-12662 | Shaft MS Piping & fixtures installation | 2026-01-14 → 2026-01-15 (+1d) |  |
| PG-12663 | Tray / cabling / conducting & wiring works | 2026-02-07 → 2026-02-09 (+2d) | 2026-02-24 → 2026-02-25 (+1d) |
| 1.3.1.3.7.3 | **Data & Communication** | 2026-01-12 → 2026-01-13 (+1d) | 2026-03-02 → 2026-03-03 (+1d) |
| PG-12664 | Tray Works | 2026-01-12 → 2026-01-13 (+1d) | 2026-01-27 → 2026-01-28 (+1d) |
| PG-12665 | Tray / cabling / conducting & wiring works | 2026-01-27 → 2026-01-28 (+1d) |  |
| PG-12666 | Wiring/DB/connector box installation and termination works |  | 2026-03-02 → 2026-03-03 (+1d) |
| 1.3.1.3.7.4 | **PHE** | 2026-01-14 → 2026-01-15 (+1d) |  |
| PG-12667 | Bracket fixing works | 2026-01-14 → 2026-01-15 (+1d) |  |
| PG-12668 | Piping Works |  | 2026-02-09 → 2026-02-10 (+1d) |
| PG-12669 | Terrace Ring main & OHT Connection works | 2026-02-09 → 2026-02-10 (+1d) | 2026-03-27 → 2026-03-28 (+1d) |
| PG-12670 | Commissioning | 2026-03-27 → 2026-03-28 (+1d) |  |
| 1.3.1.3.8 | **Lift Installation and Testing works** | 2025-12-27 → 2025-12-29 (+2d) |  |
| PG-12671 | Lift Shaft Survey works | 2025-12-27 → 2025-12-29 (+2d) | 2026-01-08 → 2026-01-09 (+1d) |
| PG-12674 | CAR Assembly works | 2026-04-24 → 2026-04-25 (+1d) |  |
| PG-12676 | Slow Speed & High Speed Testing works | 2026-06-22 → 2026-06-23 (+1d) |  |
| 1.3.1.3.10 | **Entrance Lobby works** | 2026-06-30 → 2026-07-01 (+1d) | 2026-10-14 → 2026-10-15 (+1d) |
| PG-12684 | Flooring Works | 2026-06-30 → 2026-07-01 (+1d) |  |
| PG-12685 | Glass Door and installation Works |  | 2026-08-08 → 2026-08-10 (+2d) |
| PG-12687 | Canopy Works |  | 2026-08-14 → 2026-08-17 (+3d) |
| PG-12686 | Painting Works | 2026-08-08 → 2026-08-10 (+2d) |  |
| PG-12688 | Interior Works |  | 2026-10-14 → 2026-10-15 (+1d) |
| 1.3.1.3.11 | **Lightening Arrester works** | 2026-04-23 → 2026-04-24 (+1d) |  |
| PG-12689 | Conductor will be lifted with RCC Works, But Terrace works will be done once Parapet Painting done | 2026-04-23 → 2026-04-24 (+1d) |  |
| 1.3.1.5 | **Landscape and Hardscape works** | 2026-04-23 → 2026-04-24 (+1d) |  |
| PG-12715 | Hardscape ( Granite, Planter, Walkways Etc..) | 2026-04-23 → 2026-04-24 (+1d) | 2026-06-15 → 2026-06-16 (+1d) |
| PG-12716 | Filter media and soil filling works |  | 2026-07-02 → 2026-07-03 (+1d) |
| PG-12717 | Irrigation piping works |  | 2026-07-14 → 2026-07-15 (+1d) |
| PG-12718 | Planting works | 2026-07-14 → 2026-07-15 (+1d) |  |
| PG-30428 | Footing and Pedestal Excavation Works |  | 2026-03-31 → 2026-04-01 (+1d) |
| PG-30429 | Footing and Pedestal Reinforcement works |  | 2026-04-06 → 2026-04-07 (+1d) |
| PG-30430 | Footing and Pedestal Concrete works | 2026-04-06 → 2026-04-07 (+1d) |  |
| PG-30431 | Fencing Retaining wall footing reinforcement works |  | 2026-04-24 → 2026-04-25 (+1d) |
| PG-30432 | Fencing Retaining wall footing formwork and concrete works | 2026-04-24 → 2026-04-25 (+1d) | 2026-05-01 → 2026-05-02 (+1d) |
| PG-30434 | Fencing works MS/GRC | 2026-04-29 → 2026-04-30 (+1d) | 2026-05-23 → 2026-05-25 (+2d) |
| PG-30433 | Retaining wall upto low level concrete works | 2026-05-01 → 2026-05-02 (+1d) | 2026-05-06 → 2026-05-07 (+1d) |
| PG-30435 | Floor Aggregates spreading works | 2026-05-23 → 2026-05-25 (+2d) |  |
| 1.3.9.1.2 | **Transformer Yard Electrical works** | 2026-08-06 → 2026-08-07 (+1d) |  |

| ID | Task | Start | Finish | Complete | Total float |
| --- | --- | --- | --- | --- | --- |
| 1.3.9.1.2.1 | **Transformer 01** | 2026-08-06 → 2026-08-07 (+1d) |  |  |  |
| PG-30460 | Cable Trench works | 2026-08-06 → 2026-08-07 (+1d) | 2026-08-18 → 2026-08-19 (+1d) |  |  |
| PG-30461 | LTQS Installation Works | 2026-08-18 → 2026-08-19 (+1d) | 2026-08-27 → 2026-08-28 (+1d) |  |  |
| PG-30462 | Cable laying works | 2026-08-27 → 2026-08-28 (+1d) |  |  |  |
| PG-30463 | Cable Termination works |  | 2026-09-16 → 2026-09-17 (+1d) |  |  |
| PG-30464 | Testing and commissioning works | 2026-09-16 → 2026-09-17 (+1d) |  |  |  |
| PG-30542 | piping for Excess Treated water discharge | 2025-12-01 → 2025-11-29 (-2d) | 2025-12-08 → 2025-12-06 (-2d) |  | 214.36d → 215.83d |
| PG-30543 | Equipment installation and Pump Fixing Works | 2025-12-08 → 2025-12-06 (-2d) | 2025-12-25 → 2025-12-24 (-1d) |  | 214.36d → 215.83d |
| PG-30544 | Electrical Cabling works for Pumps | 2025-12-25 → 2025-12-24 (-1d) | 2026-01-06 → 2026-01-05 (-1d) |  | 214.36d → 215.83d |
| PG-30545 | Electrical Conducting/Wiring and fixture installation | 2026-01-06 → 2026-01-05 (-1d) |  |  | 214.36d → 215.83d |
| PG-30709 | Painting Works |  |  | 8% → 28% | 303d → 303.56d |
| 1.6.1.1 | **Tower 1** |  | 2026-04-20 → 2026-04-18 (-2d) |  |  |
| 1.6.1.1.1 | **Units** |  | 2026-02-21 → 2026-02-20 (-1d) |  |  |
| PG-30736 | T&C - Floor 5 |  |  | 42% → 62% | 428.59d → 429.15d |
| PG-30737 | T&C - Floor 6 |  |  | 3% → 23% | 417.24d → 417.8d |
| PG-30738 | T&C - Floor 7 | 2025-05-01 → 2025-05-02 (+1d) | 2025-06-04 → 2025-06-05 (+1d) |  | 405.7d → 405.43d |
| PG-30739 | T&C - Floor 8 | 2025-05-15 → 2025-05-16 (+1d) | 2025-06-18 → 2025-06-19 (+1d) |  | 391.49d → 391.64d |
| PG-30740 | T&C - Floor 9 | 2025-05-30 → 2025-05-29 (-1d) | 2025-07-03 → 2025-07-02 (-1d) |  | 379.94d → 381.52d |
| PG-30742 | T&C - Floor 11 | 2025-06-26 → 2025-06-27 (+1d) | 2025-08-01 → 2025-08-02 (+1d) |  | 355.55d → 355.08d |
| PG-30743 | T&C - Floor 12 | 2025-07-10 → 2025-07-09 (-1d) | 2025-08-13 → 2025-08-12 (-1d) |  | 345.69d → 347.08d |
| PG-30744 | T&C - Floor 13 | 2025-07-25 → 2025-07-24 (-1d) |  |  | 333.19d → 334.66d |
| PG-30745 | T&C - Floor 14 | 2025-08-07 → 2025-08-06 (-1d) |  |  | 322.19d → 323.66d |
| PG-30746 | T&C - Floor 15 | 2025-08-20 → 2025-08-19 (-1d) |  |  | 312.19d → 313.66d |
| PG-30747 | T&C - Floor 16 | 2025-09-02 → 2025-09-01 (-1d) |  |  | 301.19d → 302.66d |
| PG-30748 | T&C - Floor 17 | 2025-09-15 → 2025-09-13 (-2d) |  |  | 290.19d → 291.66d |
| PG-30749 | T&C - Floor 18 | 2025-09-27 → 2025-09-26 (-1d) |  |  | 279.19d → 280.66d |
| PG-30750 | T&C - Floor 19 | 2025-10-23 → 2025-10-22 (-1d) |  |  | 258.19d → 259.66d |
| PG-30751 | T&C - Floor 20 | 2025-11-14 → 2025-11-13 (-1d) | 2025-12-18 → 2025-12-17 (-1d) |  | 239.02d → 240.49d |
| PG-30752 | T&C - Floor 21 | 2025-12-06 → 2025-12-05 (-1d) | 2026-01-09 → 2026-01-08 (-1d) |  | 220.02d → 221.49d |
| PG-30753 | T&C - Floor 22 | 2025-12-29 → 2025-12-27 (-2d) |  |  | 200.02d → 201.49d |
| PG-30754 | T&C - Floor 23 | 2026-01-17 → 2026-01-16 (-1d) | 2026-02-21 → 2026-02-20 (-1d) |  | 184.02d → 185.49d |
| 1.6.1.1.2 | **Common Areas** | 2025-10-06 → 2025-10-04 (-2d) | 2026-04-20 → 2026-04-18 (-2d) |  |  |
| PG-30755 | T&C - Internal Electrical Works | 2025-10-06 → 2025-10-04 (-2d) | 2025-10-21 → 2025-10-20 (-1d) |  | 259.69d → 261.16d |
| PG-30756 | T&C - Internal FPS Works | 2025-10-06 → 2025-10-04 (-2d) | 2025-10-21 → 2025-10-20 (-1d) |  | 259.36d → 260.83d |
| PG-30757 | T&C - Data & Communication Works | 2025-10-11 → 2025-10-10 (-1d) | 2025-10-27 → 2025-10-25 (-2d) |  | 254.36d → 255.83d |
| PG-30758 | T&C - Internal PHE Works including OHT | 2025-11-15 → 2025-11-14 (-1d) | 2025-12-09 → 2025-12-08 (-1d) |  | 216.36d → 217.83d |
| PG-30761 | T&C - Lightining Arrestor works | 2025-12-16 → 2025-12-15 (-1d) |  |  | 248.19d → 249.66d |
| PG-30760 | T&C - Electrical Panel Works | 2026-02-26 → 2026-02-25 (-1d) | 2026-03-23 → 2026-03-21 (-2d) |  | 129.69d → 131.16d |
| PG-30759 | T&C - Lift Works | 2026-03-28 → 2026-03-27 (-1d) | 2026-04-20 → 2026-04-18 (-2d) |  | 105.86d → 106.97d |
| PG-30766 | T&C - Floor 4 |  |  | 78% → 98% | 438.54d → 439.1d |
| PG-30767 | T&C - Floor 5 |  |  | 48% → 68% | 429.7d → 430.26d |
| PG-30768 | T&C - Floor 6 |  | 2025-05-21 → 2025-05-24 (+3d) | 3% → 15% | 417.16d → 415.4d |
| PG-30769 | T&C - Floor 7 | 2025-04-30 → 2025-05-01 (+1d) | 2025-06-04 → 2025-06-05 (+1d) |  | 405.77d → 405.33d |
| PG-30770 | T&C - Floor 8 | 2025-05-16 → 2025-05-20 (+4d) | 2025-06-19 → 2025-06-23 (+4d) |  | 391.53d → 389.34d |
| PG-30773 | T&C - Floor 11 | 2025-06-27 → 2025-06-28 (+1d) | 2025-07-31 → 2025-08-01 (+1d) |  | 356.22d → 355.75d |
| PG-30795 | T&C - Lightining Arrestor works | 2026-01-22 → 2026-01-21 (-1d) |  |  | 219.27d → 219.9d |
| PG-30793 | T&C - Lift Works | 2026-04-16 → 2026-04-15 (-1d) |  |  | 119.77d → 120.4d |
| 1.6.1.3.1 | **Units** |  | 2026-07-11 → 2026-07-13 (+2d) |  |  |
| PG-30796 | T&C - Ground Floor |  | 2025-04-22 → 2025-04-23 A (+1d) | 90% → 100% | 443.05d → none |
| PG-30797 | T&C - Floor 1 |  |  | 45% → 65% | 428.67d → 429.23d |
| PG-30798 | T&C - Floor 2 |  |  | 4% → 25% | 416.39d → 416.95d |
| PG-30800 | T&C - Floor 4 | 2025-05-16 → 2025-05-20 (+4d) | 2025-06-21 → 2025-06-25 (+4d) |  | 389.67d → 387.62d |
| PG-30803 | T&C - Floor 7 | 2025-07-03 → 2025-07-04 (+1d) |  |  | 351.95d → 351.8d |
| PG-30804 | T&C - Floor 8 | 2025-07-19 → 2025-07-21 (+2d) | 2025-08-23 → 2025-08-25 (+2d) |  |  |
| PG-30805 | T&C - Floor 9 | 2025-08-01 → 2025-08-02 (+1d) | 2025-09-05 → 2025-09-06 (+1d) |  |  |
| PG-30806 | T&C - Floor 10 | 2025-08-19 → 2025-08-20 (+1d) | 2025-09-23 → 2025-09-24 (+1d) |  |  |
| PG-30807 | T&C - Floor 11 | 2025-09-01 → 2025-09-02 (+1d) | 2025-10-07 → 2025-10-08 (+1d) |  |  |
| PG-30808 | T&C - Floor 12 | 2025-09-17 → 2025-09-18 (+1d) | 2025-10-22 → 2025-10-23 (+1d) |  |  |
| PG-30809 | T&C - Floor 13 | 2025-09-30 → 2025-10-01 (+1d) | 2025-11-05 → 2025-11-06 (+1d) |  |  |
| PG-30810 | T&C - Floor 14 | 2025-10-11 → 2025-10-13 (+2d) | 2025-11-15 → 2025-11-17 (+2d) |  |  |
| PG-30812 | T&C - Floor 16 |  | 2025-12-11 → 2025-12-12 (+1d) |  |  |
| PG-30813 | T&C - Floor 17 |  | 2025-12-24 → 2025-12-25 (+1d) |  |  |
| PG-30814 | T&C - Floor 18 |  | 2026-01-06 → 2026-01-07 (+1d) |  |  |
| PG-30815 | T&C - Floor 19 |  | 2026-01-19 → 2026-01-20 (+1d) |  |  |
| PG-30816 | T&C - Floor 20 | 2025-12-29 → 2025-12-30 (+1d) |  |  |  |
| PG-30817 | T&C - Floor 21 | 2026-01-10 → 2026-01-12 (+2d) |  |  |  |
| PG-30818 | T&C - Floor 22 | 2026-01-23 → 2026-01-24 (+1d) |  |  |  |
| PG-30819 | T&C - Floor 23 |  | 2026-03-12 → 2026-03-13 (+1d) |  |  |
| PG-30820 | T&C - Floor 24 | 2026-02-19 → 2026-02-20 (+1d) |  |  |  |
| PG-30821 | T&C - Floor 25 | 2026-03-12 → 2026-03-13 (+1d) |  |  |  |

| ID | Task | Start | Finish | Complete | Total float |
| --- | --- | --- | --- | --- | --- |
| PG-30822 | T&C - Floor 26 | 2026-04-02 → 2026-04-03 (+1d) | 2026-05-09 → 2026-05-11 (+2d) |  |  |
| PG-30823 | T&C - Floor 27 | 2026-04-24 → 2026-04-25 (+1d) | 2026-05-30 → 2026-06-01 (+2d) |  |  |
| PG-30824 | T&C - Floor 28 | 2026-05-16 → 2026-05-18 (+2d) | 2026-06-20 → 2026-06-22 (+2d) |  |  |
| PG-30825 | T&C - Floor 29 |  | 2026-07-11 → 2026-07-13 (+2d) |  |  |
| 1.6.1.3.2 | **Common Areas** | 2026-02-24 → 2026-02-25 (+1d) |  |  |  |
| PG-30826 | T&C - Internal Electrical Works | 2026-02-24 → 2026-02-25 (+1d) |  |  |  |
| PG-30827 | T&C - Internal FPS Works | 2026-02-24 → 2026-02-25 (+1d) | 2026-03-13 → 2026-03-14 (+1d) |  |  |
| PG-30828 | T&C - Data & Communication Works | 2026-03-02 → 2026-03-03 (+1d) |  |  |  |
| PG-30829 | T&C - Internal PHE Works including OHT |  | 2026-04-28 → 2026-04-29 (+1d) |  |  |
| PG-30832 | T&C - Lightining Arrestor works |  | 2026-05-12 → 2026-05-13 (+1d) |  |  |
| PG-30830 | T&C - Lift Works |  | 2026-08-06 → 2026-08-07 (+1d) |  |  |
| 1.6.9.1 | **Transformer Works** | 2026-09-23 → 2026-09-24 (+1d) |  |  |  |
| PG-31514 | T&C - Transformer 01 ( Building 01 & 02 ) | 2026-09-23 → 2026-09-24 (+1d) |  |  |  |
| 1.7.1 | **Building 1** |  | 2026-10-31 → 2026-11-02 (+2d) |  |  |
| 1.7.1.1.1 | **Units** |  | 2026-03-28 → 2026-03-27 (-1d) |  |  |
| PG-31536 | Floor 2 |  |  | 71% → 91% | 466.91d → 467.47d |
| PG-31537 | Floor 3 |  |  | 43% → 63% | 458.32d → 458.88d |
| PG-31538 | Floor 4 |  | 2025-05-22 → 2025-05-23 (+1d) | 3% → 20% | 446.02d → 445.75d |
| PG-31541 | Floor 7 | 2025-06-04 → 2025-06-05 (+1d) |  |  | 405.7d → 405.43d |
| PG-31542 | Floor 8 | 2025-06-18 → 2025-06-19 (+1d) |  |  | 391.49d → 391.64d |
| PG-31543 | Floor 9 | 2025-07-03 → 2025-07-02 (-1d) | 2025-08-07 → 2025-08-06 (-1d) |  | 379.94d → 381.52d |
| PG-31545 | Floor 11 | 2025-08-01 → 2025-08-02 (+1d) | 2025-09-06 → 2025-09-08 (+2d) |  | 355.55d → 355.08d |
| PG-31546 | Floor 12 | 2025-08-13 → 2025-08-12 (-1d) | 2025-09-18 → 2025-09-17 (-1d) |  | 345.69d → 347.08d |
| PG-31547 | Floor 13 |  | 2025-10-03 → 2025-10-01 (-2d) |  | 333.19d → 334.66d |
| PG-31548 | Floor 14 |  | 2025-10-16 → 2025-10-15 (-1d) |  | 322.19d → 323.66d |
| PG-31549 | Floor 15 |  | 2025-10-28 → 2025-10-27 (-1d) |  | 312.19d → 313.66d |
| PG-31550 | Floor 16 |  | 2025-11-11 → 2025-11-10 (-1d) |  | 301.19d → 302.66d |
| PG-31551 | Floor 17 |  | 2025-11-24 → 2025-11-22 (-2d) |  | 290.19d → 291.66d |
| PG-31552 | Floor 18 |  | 2025-12-06 → 2025-12-05 (-1d) |  | 279.19d → 280.66d |
| PG-31553 | Floor 19 |  | 2025-12-31 → 2025-12-30 (-1d) |  | 258.19d → 259.66d |
| PG-31554 | Floor 20 | 2025-12-18 → 2025-12-17 (-1d) | 2026-01-22 → 2026-01-21 (-1d) |  | 239.02d → 240.49d |
| PG-31555 | Floor 21 | 2026-01-09 → 2026-01-08 (-1d) | 2026-02-14 → 2026-02-13 (-1d) |  | 220.02d → 221.49d |
| PG-31556 | Floor 22 |  | 2026-03-10 → 2026-03-09 (-1d) |  | 200.02d → 201.49d |
| PG-31557 | Floor 23 | 2026-02-21 → 2026-02-20 (-1d) | 2026-03-28 → 2026-03-27 (-1d) |  | 184.02d → 185.49d |
| 1.7.1.1.2 | **Common Areas** | 2025-10-21 → 2025-10-20 (-1d) |  |  |  |
| PG-31559 | Internal Electrical Works | 2025-10-21 → 2025-10-20 (-1d) | 2025-12-30 → 2025-12-29 (-1d) |  | 259.69d → 261.16d |
| PG-31560 | Internal FPS Works | 2025-10-21 → 2025-10-20 (-1d) | 2025-12-30 → 2025-12-29 (-1d) |  | 259.36d → 260.83d |
| PG-31561 | Data & Communication Works | 2025-10-27 → 2025-10-25 (-2d) | 2026-01-05 → 2026-01-03 (-2d) |  | 254.36d → 255.83d |
| PG-31562 | Internal PHE Works including OHT | 2025-12-09 → 2025-12-08 (-1d) | 2026-02-19 → 2026-02-18 (-1d) |  | 216.36d → 217.83d |
| PG-31565 | Lightining Arrestor works |  | 2026-01-12 → 2026-01-10 (-2d) |  | 248.19d → 249.66d |
| PG-31564 | Electrical Panel Works | 2026-03-23 → 2026-03-21 (-2d) | 2026-06-01 → 2026-05-30 (-2d) |  | 129.69d → 131.16d |
| PG-31563 | Lift Works | 2026-04-20 → 2026-04-18 (-2d) |  |  | 105.86d → 106.97d |
| PG-31568 | Floor 2 |  | 2025-04-23 → 2025-04-24 A (+1d) | 85% → 100% | 471.21d → none |
| PG-31569 | Floor 3 |  |  | 38% → 58% | 456.77d → 457.33d |
| PG-31572 | Floor 6 | 2025-05-21 → 2025-05-24 (+3d) | 2025-06-25 → 2025-06-27 (+2d) |  | 417.16d → 415.4d |
| PG-31573 | Floor 7 | 2025-06-04 → 2025-06-05 (+1d) | 2025-07-08 → 2025-07-09 (+1d) |  | 405.77d → 405.33d |
| PG-31574 | Floor 8 | 2025-06-19 → 2025-06-23 (+4d) | 2025-07-25 → 2025-07-28 (+3d) |  | 391.53d → 389.34d |
| PG-31577 | Floor 11 | 2025-07-31 → 2025-08-01 (+1d) | 2025-09-05 → 2025-09-06 (+1d) |  | 356.22d → 355.75d |
| PG-31578 | Floor 12 |  | 2025-09-18 → 2025-09-19 (+1d) |  | 344.94d → 345.27d |
| PG-31587 | Floor 21 | 2025-12-11 → 2025-12-10 (-1d) |  |  | 247.11d → 247.74d |
| PG-31590 | Floor 24 | 2026-02-14 → 2026-02-13 (-1d) |  |  | 190.11d → 190.74d |
| 1.7.1.3 | **Tower 3** | 2025-04-22 → 2025-04-23 (+1d) | 2026-10-31 → 2026-11-02 (+2d) |  |  |
| 1.7.1.3.1 | **Units** | 2025-04-22 → 2025-04-23 (+1d) | 2026-08-17 → 2026-08-18 (+1d) |  |  |
| PG-31601 | Ground Floor | 2025-04-22 → 2025-04-23 A (+1d) | 2025-05-26 → 2025-05-28 (+2d) | 0% → 3% | 443.05d → 441.55d |
| PG-31605 | Floor 4 | 2025-06-21 → 2025-06-25 (+4d) | 2025-07-28 → 2025-07-30 (+2d) |  | 389.67d → 387.62d |
| PG-31608 | Floor 7 |  | 2025-09-10 → 2025-09-11 (+1d) |  | 351.95d → 351.8d |
| PG-31609 | Floor 8 | 2025-08-23 → 2025-08-25 (+2d) |  |  |  |
| PG-31610 | Floor 9 | 2025-09-05 → 2025-09-06 (+1d) |  |  |  |
| PG-31611 | Floor 10 | 2025-09-23 → 2025-09-24 (+1d) | 2025-10-29 → 2025-10-30 (+1d) |  |  |
| PG-31612 | Floor 11 | 2025-10-07 → 2025-10-08 (+1d) |  |  |  |
| PG-31613 | Floor 12 | 2025-10-22 → 2025-10-23 (+1d) | 2025-11-27 → 2025-11-28 (+1d) |  |  |
| PG-31614 | Floor 13 | 2025-11-05 → 2025-11-06 (+1d) |  |  |  |
| PG-31615 | Floor 14 | 2025-11-15 → 2025-11-17 (+2d) |  |  |  |
| PG-31617 | Floor 16 | 2025-12-11 → 2025-12-12 (+1d) |  |  |  |
| PG-31618 | Floor 17 | 2025-12-24 → 2025-12-25 (+1d) |  |  |  |
| PG-31619 | Floor 18 | 2026-01-06 → 2026-01-07 (+1d) |  |  |  |
| PG-31620 | Floor 19 | 2026-01-19 → 2026-01-20 (+1d) |  |  |  |
| PG-31621 | Floor 20 | 2026-02-03 → 2026-02-04 (+1d) |  |  |  |
| PG-31622 | Floor 21 |  | 2026-03-21 → 2026-03-23 (+2d) |  |  |
| PG-31623 | Floor 22 |  | 2026-04-03 → 2026-04-04 (+1d) |  |  |

| ID | Task | Start | Finish | Complete | Total float |
| --- | --- | --- | --- | --- | --- |
| PG-31624 | Floor 23 | 2026-03-12 → 2026-03-13 (+1d) | 2026-04-16 → 2026-04-17 (+1d) |  |  |
| PG-31625 | Floor 24 |  | 2026-04-29 → 2026-04-30 (+1d) |  |  |
| PG-31626 | Floor 25 | 2026-04-16 → 2026-04-17 (+1d) |  |  |  |
| PG-31627 | Floor 26 | 2026-05-09 → 2026-05-11 (+2d) |  |  |  |
| PG-31628 | Floor 27 | 2026-05-30 → 2026-06-01 (+2d) |  |  |  |
| PG-31629 | Floor 28 | 2026-06-20 → 2026-06-22 (+2d) |  |  |  |
| PG-31630 | Floor 29 | 2026-07-11 → 2026-07-13 (+2d) | 2026-08-17 → 2026-08-18 (+1d) |  |  |
| 1.7.1.3.2 | **Common Areas** |  | 2026-10-31 → 2026-11-02 (+2d) |  |  |
| PG-31632 | Internal Electrical Works |  | 2026-03-31 → 2026-04-01 (+1d) |  |  |
| PG-31633 | Internal FPS Works | 2026-03-13 → 2026-03-14 (+1d) |  |  |  |
| PG-31634 | Data & Communication Works | 2026-03-19 → 2026-03-20 (+1d) |  |  |  |
| PG-31635 | Internal PHE Works including OHT | 2026-04-28 → 2026-04-29 (+1d) |  |  |  |
| PG-31638 | Lightining Arrestor works | 2026-05-12 → 2026-05-13 (+1d) | 2026-05-20 → 2026-05-21 (+1d) |  |  |
| PG-31636 | Lift Works | 2026-08-06 → 2026-08-07 (+1d) |  |  |  |
| PG-31631 | Common Area Civil Works | 2026-10-14 → 2026-10-15 (+1d) | 2026-10-31 → 2026-11-02 (+2d) |  |  |
| PG-31639 | LBF |  | 2025-04-18 → 2025-04-19 A (+1d) | 95% → 100% | 474.97d → none |
| PG-31640 | UBF |  |  | 46% → 87% | 467.86d → 468.42d |
| PG-32378 | Building 1 | 2026-10-31 → 2026-11-02 (+2d) |  |  |  |
| PG-32386 | Project InfraStructure Works ( Services & MEP ) | 2027-01-21 → 2027-01-22 (+1d) |  |  |  |
| 1.10 | **Post Construction Statutory Approvals** |  | 2027-02-26 → 2027-02-27 (+1d) |  |  |
| PG-32396 | Pollution Control board clearance for STP |  | 2026-06-01 → 2026-05-30 (-2d) |  | 214.36d → 215.83d |
| PG-32394 | CEIG Approval - Lift | 2026-11-12 → 2026-11-13 (+1d) | 2026-12-16 → 2026-12-17 (+1d) |  |  |
| PG-32395 | Pollution Control board CFO | 2026-12-16 → 2026-12-17 (+1d) | 2027-01-21 → 2027-01-22 (+1d) |  |  |
| PG-32397 | Occupation Certificate | 2026-12-16 → 2026-12-17 (+1d) | 2027-02-26 → 2027-02-27 (+1d) |  |  |
| 2 | **Milestone** |  | 2027-02-26 → 2027-02-27 (+1d) |  |  |
| MS-1001 | Tower 1 - Structure Complete | 2025-08-18 → 2025-08-16 (-2d) | 2025-08-18 → 2025-08-16 (-2d) |  | 476.86d → 478.33d |
| MS-0105 | Electrical Panels Delivered | 2025-08-25 → 2025-08-23 (-2d) | 2025-08-25 → 2025-08-23 (-2d) |  | 471.19d → 472.66d |
| MS-1002 | Tower 1 - MEP 1st Fix Complete | 2025-11-22 → 2025-11-21 (-1d) | 2025-11-22 → 2025-11-21 (-1d) |  | 395.86d → 397.33d |
| MS-0107 | FRP Water Tanks Delivered | 2025-12-01 → 2025-11-29 (-2d) | 2025-12-01 → 2025-11-29 (-2d) |  | 389.19d → 390.66d |
| MS-1003 | Tower 1 - MEP 2nd Fix Complete | 2025-12-27 → 2025-12-26 (-1d) | 2025-12-27 → 2025-12-26 (-1d) |  | 365.86d → 367.33d |
| MS-3001 | Tower 3 - Structure Complete | 2026-01-07 → 2026-01-08 (+1d) | 2026-01-07 → 2026-01-08 (+1d) |  |  |
| MS-1005 | Tower 1 - MEP Final Fix Complete | 2026-01-17 → 2026-01-16 (-1d) | 2026-01-17 → 2026-01-16 (-1d) |  | 348.36d → 349.83d |
| MS-1006 | Tower 1 - Lifts Commissioned | 2026-03-28 → 2026-03-27 (-1d) | 2026-03-28 → 2026-03-27 (-1d) |  | 289.52d → 290.63d |
| MS-3002 | Tower 3 - MEP 1st Fix Complete | 2026-04-10 → 2026-04-11 (+1d) | 2026-04-10 → 2026-04-11 (+1d) |  |  |
| MS-1007 | Tower 1 - T&C Complete | 2026-04-20 → 2026-04-18 (-2d) | 2026-04-20 → 2026-04-18 (-2d) |  | 270.19d → 271.3d |
| MS-3003 | Tower 3 - MEP 2nd Fix Complete | 2026-05-15 → 2026-05-16 (+1d) | 2026-05-15 → 2026-05-16 (+1d) |  |  |
| MS-3004 | Tower 3 - Internal Finishes Complete | 2026-06-30 → 2026-07-01 (+1d) | 2026-06-30 → 2026-07-01 (+1d) |  |  |
| MS-9991 | Statutory Approvals Obtained | 2027-02-26 → 2027-02-27 (+1d) | 2027-02-26 → 2027-02-27 (+1d) |  |  |

## Version 8 (data date 2025-05-02, saved 2026-09-20, file APX_2025-05-02.xer)

Last finish 2027-03-05 → 2027-03-06 (+1d). Complete tasks 1105 → 1147.

Changed:

| ID | Task | Start | Finish | Complete | Total float |
| --- | --- | --- | --- | --- | --- |
| 1 | **Project Genisis** |  | 2027-03-05 → 2027-03-06 (+1d) |  |  |
| PG-32433 | Project Close Out | 2027-02-27 → 2027-03-01 (+2d) | 2027-03-05 → 2027-03-06 (+1d) |  |  |
| 1.2 | **Procurement and Materials requirement to Site** |  | 2026-07-25 → 2026-07-28 (+3d) |  |  |
| 1.2.4 | **FRP Tanks Supply** | 2025-05-03 → 2025-05-05 (+2d) | 2025-11-29 → 2025-12-01 (+2d) |  |  |
| PG-10024 | Purchase Order works | 2025-05-03 → 2025-05-05 (+2d) | 2025-05-12 → 2025-05-13 (+1d) |  | 215.83d → 216.35d |
| PG-10025 | Materials Supply to site ( Tower - 1, 2, 3, 9, 14, 18 & 19 ) | 2025-06-28 → 2025-06-30 (+2d) | 2025-08-01 → 2025-08-02 (+1d) |  | 215.83d → 216.35d |
| PG-10026 | Materials Supply to site ( Tower - 4, 8, 10 & 13 ) | 2025-07-31 → 2025-08-01 (+1d) | 2025-09-06 → 2025-09-08 (+2d) |  | 215.83d → 216.35d |
| PG-10027 | Materials Supply to site ( Tower - 5, 6, 7, 11, 12, 15, 16 & 17 ) | 2025-10-25 → 2025-10-27 (+2d) | 2025-11-29 → 2025-12-01 (+2d) |  | 215.83d → 216.35d |
| 1.2.5 | **Lift Supply** |  | 2025-11-24 → 2025-11-25 (+1d) |  |  |
| PG-10028 | Purchase Order works |  | 2025-04-30 → 2025-05-01 A (+1d) | 40% → 100% | 106.97d → none |
| PG-10029 | Materials Supply to site ( First Lot - T1, T2. T3,T4, T8, T9, T13, T14, T18 & T19 ) | 2025-08-13 → 2025-08-14 (+1d) | 2025-09-06 → 2025-09-08 (+2d) |  | 106.97d → 107.43d |
| PG-10030 | Materials Supply to site ( First Lot - T5, T6. T7,T11, T12, T15, T16 & T17 ) | 2025-10-18 → 2025-10-20 (+2d) | 2025-11-24 → 2025-11-25 (+1d) |  | 106.97d → 107.43d |
| 1.2.6 | **Electrical Panel Supply** |  | 2025-08-23 → 2025-08-25 (+2d) |  |  |
| PG-10032 | Materials Supply to site | 2025-07-19 → 2025-07-21 (+2d) | 2025-08-23 → 2025-08-25 (+2d) |  | 139.83d → 140.35d |
| 1.2.8 | **Transformer Supply** | 2026-02-25 → 2026-02-26 (+1d) | 2026-07-25 → 2026-07-28 (+3d) |  |  |
| PG-10035 | Purchase Order works | 2026-02-25 → 2026-02-26 (+1d) | 2026-03-07 → 2026-03-10 (+3d) |  |  |
| PG-10036 | Materials Supply to site | 2026-06-22 → 2026-06-23 (+1d) | 2026-07-25 → 2026-07-28 (+3d) |  |  |
| 1.3 | **Construction** |  | 2026-10-15 → 2026-10-16 (+1d) |  |  |
| 1.3.1 | **Building 1** |  | 2026-10-15 → 2026-10-16 (+1d) |  |  |
| 1.3.1.1.2 | **Structure works** |  | 2025-08-16 → 2025-08-18 (+2d) |  |  |
| 1.3.1.1.2.21 | **Floor 18** |  | 2025-05-03 → 2025-05-05 (+2d) |  |  |
| 1.3.1.1.2.21.1 | **Columns / shear walls** |  | 2025-04-28 → 2025-04-29 (+1d) |  |  |
| PG-10161 | Reinforcement |  | 2025-04-25 → 2025-04-26 A (+1d) | 79% → 100% | 44.83d → none |
| PG-10162 | Formwork |  | 2025-04-28 → 2025-04-29 A (+1d) | 31% → 100% | 44.83d → none |
| 1.3.1.1.2.21.2 | **Slab, Beams & Staircase** | 2025-04-26 → 2025-04-28 (+2d) | 2025-05-03 → 2025-05-05 (+2d) |  |  |
| PG-10163 | Formwork | 2025-04-26 → 2025-04-28 A (+2d) | 2025-04-30 → 2025-05-01 A (+1d) | 0% → 100% | 44.83d → none |
| PG-10164 | Reinforcement | 2025-04-29 → 2025-04-30 A (+1d) | 2025-05-02 → 2025-05-03 (+1d) | 0% → 70% | 44.83d → 45.35d |
| PG-10165 | Concrete | 2025-05-02 → 2025-05-03 (+1d) | 2025-05-03 → 2025-05-05 (+2d) |  | 44.83d → 45.35d |
| 1.3.1.1.2.22 | **Floor 19** | 2025-05-03 → 2025-05-05 (+2d) | 2025-05-16 → 2025-05-17 (+1d) |  |  |
| 1.3.1.1.2.22.1 | **Columns / shear walls** | 2025-05-03 → 2025-05-05 (+2d) | 2025-05-10 → 2025-05-12 (+2d) |  |  |
| PG-10166 | Reinforcement | 2025-05-03 → 2025-05-05 (+2d) | 2025-05-08 → 2025-05-09 (+1d) |  | 44.83d → 45.35d |
| PG-10167 | Formwork | 2025-05-06 → 2025-05-07 (+1d) | 2025-05-10 → 2025-05-12 (+2d) |  | 44.83d → 45.35d |
| 1.3.1.1.2.22.2 | **Slab, Beams & Staircase** | 2025-05-09 → 2025-05-10 (+1d) | 2025-05-16 → 2025-05-17 (+1d) |  |  |
| PG-10168 | Formwork | 2025-05-09 → 2025-05-10 (+1d) | 2025-05-13 → 2025-05-14 (+1d) |  | 44.83d → 45.35d |
| PG-10169 | Reinforcement | 2025-05-12 → 2025-05-13 (+1d) | 2025-05-15 → 2025-05-16 (+1d) |  | 44.83d → 45.35d |
| PG-10170 | Concrete | 2025-05-15 → 2025-05-16 (+1d) | 2025-05-16 → 2025-05-17 (+1d) |  | 44.83d → 45.35d |
| 1.3.1.1.2.23 | **Floor 20** | 2025-05-16 → 2025-05-17 (+1d) | 2025-05-29 → 2025-05-30 (+1d) |  |  |
| 1.3.1.1.2.23.1 | **Columns / shear walls** | 2025-05-16 → 2025-05-17 (+1d) | 2025-05-23 → 2025-05-24 (+1d) |  |  |
| PG-10171 | Reinforcement | 2025-05-16 → 2025-05-17 (+1d) | 2025-05-21 → 2025-05-22 (+1d) |  | 44.83d → 45.35d |
| PG-10172 | Formwork | 2025-05-19 → 2025-05-20 (+1d) | 2025-05-23 → 2025-05-24 (+1d) |  | 44.83d → 45.35d |
| 1.3.1.1.2.23.2 | **Slab, Beams & Staircase** | 2025-05-22 → 2025-05-23 (+1d) | 2025-05-29 → 2025-05-30 (+1d) |  |  |
| PG-10173 | Formwork | 2025-05-22 → 2025-05-23 (+1d) | 2025-05-26 → 2025-05-27 (+1d) |  | 44.83d → 45.35d |
| PG-10174 | Reinforcement | 2025-05-24 → 2025-05-26 (+2d) | 2025-05-28 → 2025-05-29 (+1d) |  | 44.83d → 45.35d |
| PG-10175 | Concrete | 2025-05-28 → 2025-05-29 (+1d) | 2025-05-29 → 2025-05-30 (+1d) |  | 44.83d → 45.35d |
| 1.3.1.1.2.24 | **Floor 21** | 2025-05-29 → 2025-05-30 (+1d) | 2025-06-11 → 2025-06-12 (+1d) |  |  |
| 1.3.1.1.2.24.1 | **Columns / shear walls** | 2025-05-29 → 2025-05-30 (+1d) | 2025-06-05 → 2025-06-06 (+1d) |  |  |
| PG-10176 | Reinforcement | 2025-05-29 → 2025-05-30 (+1d) | 2025-06-03 → 2025-06-04 (+1d) |  | 44.83d → 45.35d |
| PG-10177 | Formwork | 2025-05-31 → 2025-06-02 (+2d) | 2025-06-05 → 2025-06-06 (+1d) |  | 44.83d → 45.35d |
| 1.3.1.1.2.24.2 | **Slab, Beams & Staircase** | 2025-06-04 → 2025-06-05 (+1d) | 2025-06-11 → 2025-06-12 (+1d) |  |  |
| PG-10178 | Formwork | 2025-06-04 → 2025-06-05 (+1d) | 2025-06-07 → 2025-06-09 (+2d) |  | 44.83d → 45.35d |
| PG-10179 | Reinforcement | 2025-06-06 → 2025-06-07 (+1d) | 2025-06-10 → 2025-06-11 (+1d) |  | 44.83d → 45.35d |
| PG-10180 | Concrete | 2025-06-10 → 2025-06-11 (+1d) | 2025-06-11 → 2025-06-12 (+1d) |  | 44.83d → 45.35d |
| 1.3.1.1.2.25 | **Floor 22** | 2025-06-11 → 2025-06-12 (+1d) | 2025-06-24 → 2025-06-25 (+1d) |  |  |
| 1.3.1.1.2.25.1 | **Columns / shear walls** | 2025-06-11 → 2025-06-12 (+1d) | 2025-06-18 → 2025-06-19 (+1d) |  |  |
| PG-10181 | Reinforcement | 2025-06-11 → 2025-06-12 (+1d) | 2025-06-16 → 2025-06-17 (+1d) |  | 44.83d → 45.35d |
| PG-10182 | Formwork | 2025-06-13 → 2025-06-14 (+1d) | 2025-06-18 → 2025-06-19 (+1d) |  | 44.83d → 45.35d |
| 1.3.1.1.2.25.2 | **Slab, Beams & Staircase** | 2025-06-17 → 2025-06-18 (+1d) | 2025-06-24 → 2025-06-25 (+1d) |  |  |
| PG-10183 | Formwork | 2025-06-17 → 2025-06-18 (+1d) | 2025-06-20 → 2025-06-21 (+1d) |  | 44.83d → 45.35d |
| PG-10184 | Reinforcement | 2025-06-19 → 2025-06-20 (+1d) | 2025-06-23 → 2025-06-24 (+1d) |  | 44.83d → 45.35d |
| PG-10185 | Concrete | 2025-06-23 → 2025-06-24 (+1d) | 2025-06-24 → 2025-06-25 (+1d) |  | 44.83d → 45.35d |
| 1.3.1.1.2.26 | **Floor 23** | 2025-06-24 → 2025-06-25 (+1d) | 2025-07-07 → 2025-07-08 (+1d) |  |  |
| 1.3.1.1.2.26.1 | **Columns / shear walls** | 2025-06-24 → 2025-06-25 (+1d) | 2025-07-01 → 2025-07-02 (+1d) |  |  |
| PG-10186 | Reinforcement | 2025-06-24 → 2025-06-25 (+1d) | 2025-06-28 → 2025-06-30 (+2d) |  | 44.83d → 45.35d |
| PG-10187 | Formwork | 2025-06-26 → 2025-06-27 (+1d) | 2025-07-01 → 2025-07-02 (+1d) |  | 44.83d → 45.35d |
| 1.3.1.1.2.26.2 | **Slab, Beams & Staircase** | 2025-06-30 → 2025-07-01 (+1d) | 2025-07-07 → 2025-07-08 (+1d) |  |  |
| PG-10188 | Formwork | 2025-06-30 → 2025-07-01 (+1d) | 2025-07-03 → 2025-07-04 (+1d) |  | 44.83d → 45.35d |
| PG-10189 | Reinforcement | 2025-07-02 → 2025-07-03 (+1d) | 2025-07-05 → 2025-07-07 (+2d) |  | 44.83d → 45.35d |
| PG-10190 | Concrete | 2025-07-05 → 2025-07-07 (+2d) | 2025-07-07 → 2025-07-08 (+1d) |  | 44.83d → 45.35d |
| 1.3.1.1.2.27 | **Above Terrace Floor** | 2025-07-07 → 2025-07-08 (+1d) | 2025-08-16 → 2025-08-18 (+2d) |  |  |
| 1.3.1.1.2.27.1 | **Columns / shear walls/Parapet Walls** | 2025-07-07 → 2025-07-08 (+1d) | 2025-07-21 → 2025-07-22 (+1d) |  |  |

| ID | Task | Start | Finish | Complete | Total float |
| --- | --- | --- | --- | --- | --- |
| PG-10191 | Reinforcement | 2025-07-07 → 2025-07-08 (+1d) | 2025-07-11 → 2025-07-12 (+1d) |  | 122.33d → 122.85d |
| PG-10192 | Formwork | 2025-07-09 → 2025-07-10 (+1d) | 2025-07-15 → 2025-07-16 (+1d) |  | 122.33d → 122.85d |
| PG-10193 | Concrete | 2025-07-15 → 2025-07-16 (+1d) | 2025-07-21 → 2025-07-22 (+1d) |  | 122.33d → 122.85d |
| 1.3.1.1.2.27.2 | **Slab, Beams & Staircase Head rooms, Lift headroom** | 2025-07-11 → 2025-07-12 (+1d) | 2025-08-16 → 2025-08-18 (+2d) |  |  |
| PG-10197 | Terrace Waterproofing and Protective finishing. | 2025-07-11 → 2025-07-12 (+1d) | 2025-08-16 → 2025-08-18 (+2d) |  | 247.49d → 248.01d |
| PG-10194 | Formwork | 2025-07-21 → 2025-07-22 (+1d) | 2025-07-26 → 2025-07-28 (+2d) |  | 247.49d → 248.01d |
| PG-10195 | Reinforcement | 2025-07-26 → 2025-07-28 (+2d) | 2025-08-01 → 2025-08-02 (+1d) |  | 247.49d → 248.01d |
| PG-10196 | Concrete | 2025-08-01 → 2025-08-02 (+1d) | 2025-08-04 → 2025-08-05 (+1d) |  | 247.49d → 248.01d |
| 1.3.1.1.3 | **MEP Internal works** |  | 2026-01-16 → 2026-01-17 (+1d) |  |  |
| PG-10270 | Final Fix - CP & Sanitary fixtures |  |  | 33% → 94% | 405.43d → 406.68d |
| 1.3.1.1.3.10.2 | **Fire Fighting Works** |  | 2025-05-01 → 2025-05-02 (+1d) |  |  |
| PG-10273 | Final Fix - Smoke & heat detectors, FHC , FAS Etc. |  | 2025-05-01 → 2025-05-02 A (+1d) | 46% → 100% | 406d → none |
| 1.3.1.1.3.10.3 | **Electrical Works** |  | 2025-05-01 → 2025-05-02 (+1d) |  |  |
| PG-10276 | Final Fix - Electrical Fixtures | 2025-04-25 → 2025-04-26 A (+1d) | 2025-05-01 → 2025-05-02 (+1d) | 0% → 98% | 406d → 406.68d |
| PG-10290 | 2nd Fix - Sprinkler fixing & Pressure testing | 2025-04-26 → 2025-04-28 A (+2d) |  | 0% → 40% | 389.85d → 390.43d |
| PG-10293 | 2nd Fix - Wiring works |  |  | 39% → 80% | 395.35d → 395.93d |
| PG-10294 | Final Fix - Electrical Fixtures | 2025-05-22 → 2025-05-23 (+1d) |  |  | 381.52d → 382.65d |
| 1.3.1.1.3.13 | **Floor 10** |  | 2025-06-12 → 2025-06-13 (+1d) |  |  |
| 1.3.1.1.3.13.1 | **PHE Works** |  | 2025-06-12 → 2025-06-13 (+1d) |  |  |
| PG-10297 | Final Fix - CP & Sanitary fixtures | 2025-06-02 → 2025-06-03 (+1d) | 2025-06-12 → 2025-06-13 (+1d) |  | 368.27d → 368.68d |
| 1.3.1.1.3.13.2 | **Fire Fighting Works** |  | 2025-06-12 → 2025-06-13 (+1d) |  |  |
| PG-10299 | 2nd Fix - Sprinkler fixing & Pressure testing | 2025-05-12 → 2025-05-13 (+1d) | 2025-05-23 → 2025-05-24 (+1d) |  | 376.1d → 376.51d |
| PG-10300 | Final Fix - Smoke & heat detectors, FHC , FAS Etc. | 2025-06-02 → 2025-06-03 (+1d) | 2025-06-12 → 2025-06-13 (+1d) |  | 368.27d → 368.68d |
| 1.3.1.1.3.13.3 | **Electrical Works** |  | 2025-06-12 → 2025-06-13 (+1d) |  |  |
| PG-10302 | 2nd Fix - Wiring works | 2025-05-05 → 2025-05-06 (+1d) | 2025-05-22 → 2025-05-23 (+1d) |  | 380.93d → 381.35d |
| PG-10303 | Final Fix - Electrical Fixtures | 2025-06-06 → 2025-06-07 (+1d) | 2025-06-12 → 2025-06-13 (+1d) |  | 368.27d → 368.68d |
| PG-10305 | 2nd Fix - diverter fixing & Pressure testing |  | 2025-05-01 → 2025-05-02 A (+1d) | 49% → 100% | 355.08d → none |
| PG-10307 | 1st Fix - Piping and Shaft hydrant works |  | 2025-05-01 → 2025-05-02 A (+1d) | 52% → 100% | 405.17d → none |
| 1.3.1.1.3.15 | **Floor 12** |  | 2025-07-09 → 2025-07-10 (+1d) |  |  |
| 1.3.1.1.3.15.1 | **PHE Works** |  | 2025-07-09 → 2025-07-10 (+1d) |  |  |
| PG-10313 | 1st Fix - Piping works |  |  | 26% → 76% | 347.08d → 348.51d |
| PG-10314 | 2nd Fix - diverter fixing & Pressure testing | 2025-04-30 → 2025-05-01 A (+1d) | 2025-05-12 → 2025-05-13 (+1d) | 0% → 3% | 347.08d → 347.73d |
| PG-10315 | Final Fix - CP & Sanitary fixtures | 2025-06-27 → 2025-06-28 (+1d) | 2025-07-09 → 2025-07-10 (+1d) |  | 347.08d → 347.73d |
| 1.3.1.1.3.15.2 | **Fire Fighting Works** | 2025-04-30 → 2025-05-01 (+1d) | 2025-07-09 → 2025-07-10 (+1d) |  |  |
| PG-10316 | 1st Fix - Piping and Shaft hydrant works | 2025-04-30 → 2025-05-01 A (+1d) |  | 0% → 9% | 394.61d → 395.52d |
| PG-10317 | 2nd Fix - Sprinkler fixing & Pressure testing | 2025-06-06 → 2025-06-07 (+1d) | 2025-06-18 → 2025-06-19 (+1d) |  | 354.75d → 355.4d |
| PG-10318 | Final Fix - Smoke & heat detectors, FHC , FAS Etc. | 2025-06-27 → 2025-06-28 (+1d) | 2025-07-09 → 2025-07-10 (+1d) |  | 347.08d → 347.73d |
| 1.3.1.1.3.15.3 | **Electrical Works** |  | 2025-07-09 → 2025-07-10 (+1d) |  |  |
| PG-10319 | 1st Fix - GI wire pulling |  | 2025-04-30 → 2025-05-01 A (+1d) | 47% → 100% | 394.61d → none |
| PG-10320 | 2nd Fix - Wiring works | 2025-05-30 → 2025-05-31 (+1d) | 2025-06-17 → 2025-06-18 (+1d) |  | 359.75d → 360.4d |
| PG-10321 | Final Fix - Electrical Fixtures | 2025-07-02 → 2025-07-03 (+1d) | 2025-07-09 → 2025-07-10 (+1d) |  | 347.08d → 347.73d |
| 1.3.1.1.3.16 | **Floor 13** | 2025-05-03 → 2025-05-05 (+2d) | 2025-07-24 → 2025-07-25 (+1d) |  |  |
| 1.3.1.1.3.16.1 | **PHE Works** | 2025-05-03 → 2025-05-05 (+2d) | 2025-07-24 → 2025-07-25 (+1d) |  |  |
| PG-10322 | 1st Fix - Piping works | 2025-05-03 → 2025-05-05 (+2d) | 2025-05-17 → 2025-05-19 (+2d) |  | 334.66d → 335.18d |
| PG-10323 | 2nd Fix - diverter fixing & Pressure testing | 2025-05-13 → 2025-05-14 (+1d) | 2025-05-24 → 2025-05-26 (+2d) |  | 334.66d → 335.18d |
| PG-10324 | Final Fix - CP & Sanitary fixtures | 2025-07-12 → 2025-07-14 (+2d) | 2025-07-24 → 2025-07-25 (+1d) |  | 334.66d → 335.18d |
| 1.3.1.1.3.16.2 | **Fire Fighting Works** | 2025-05-13 → 2025-05-14 (+1d) | 2025-07-24 → 2025-07-25 (+1d) |  |  |
| PG-10325 | 1st Fix - Piping and Shaft hydrant works | 2025-05-13 → 2025-05-14 (+1d) | 2025-05-27 → 2025-05-28 (+1d) |  | 379.33d → 379.85d |
| PG-10326 | 2nd Fix - Sprinkler fixing & Pressure testing | 2025-06-19 → 2025-06-20 (+1d) | 2025-07-01 → 2025-07-02 (+1d) |  | 344.66d → 345.18d |
| PG-10327 | Final Fix - Smoke & heat detectors, FHC , FAS Etc. | 2025-07-12 → 2025-07-14 (+2d) | 2025-07-24 → 2025-07-25 (+1d) |  | 334.66d → 335.18d |
| 1.3.1.1.3.16.3 | **Electrical Works** | 2025-05-03 → 2025-05-05 (+2d) | 2025-07-24 → 2025-07-25 (+1d) |  |  |
| PG-10328 | 1st Fix - GI wire pulling | 2025-05-03 → 2025-05-05 (+2d) | 2025-05-13 → 2025-05-14 (+1d) |  | 379.33d → 379.85d |
| PG-10329 | 2nd Fix - Wiring works | 2025-06-12 → 2025-06-13 (+1d) | 2025-06-30 → 2025-07-01 (+1d) |  | 349.66d → 350.18d |
| PG-10330 | Final Fix - Electrical Fixtures | 2025-07-17 → 2025-07-18 (+1d) | 2025-07-24 → 2025-07-25 (+1d) |  | 334.66d → 335.18d |
| 1.3.1.1.3.17 | **Floor 14** | 2025-05-16 → 2025-05-17 (+1d) | 2025-08-06 → 2025-08-07 (+1d) |  |  |
| 1.3.1.1.3.17.1 | **PHE Works** | 2025-05-16 → 2025-05-17 (+1d) | 2025-08-06 → 2025-08-07 (+1d) |  |  |
| PG-10331 | 1st Fix - Piping works | 2025-05-16 → 2025-05-17 (+1d) | 2025-05-30 → 2025-05-31 (+1d) |  | 323.66d → 324.18d |
| PG-10332 | 2nd Fix - diverter fixing & Pressure testing | 2025-05-26 → 2025-05-27 (+1d) | 2025-06-06 → 2025-06-07 (+1d) |  | 323.66d → 324.18d |
| PG-10333 | Final Fix - CP & Sanitary fixtures | 2025-07-25 → 2025-07-26 (+1d) | 2025-08-06 → 2025-08-07 (+1d) |  | 323.66d → 324.18d |
| 1.3.1.1.3.17.2 | **Fire Fighting Works** | 2025-05-26 → 2025-05-27 (+1d) | 2025-08-06 → 2025-08-07 (+1d) |  |  |
| PG-10334 | 1st Fix - Piping and Shaft hydrant works | 2025-05-26 → 2025-05-27 (+1d) | 2025-06-09 → 2025-06-10 (+1d) |  | 370.33d → 370.85d |
| PG-10335 | 2nd Fix - Sprinkler fixing & Pressure testing | 2025-07-02 → 2025-07-03 (+1d) | 2025-07-14 → 2025-07-15 (+1d) |  | 333.66d → 334.18d |
| PG-10336 | Final Fix - Smoke & heat detectors, FHC , FAS Etc. | 2025-07-25 → 2025-07-26 (+1d) | 2025-08-06 → 2025-08-07 (+1d) |  | 323.66d → 324.18d |
| 1.3.1.1.3.17.3 | **Electrical Works** | 2025-05-16 → 2025-05-17 (+1d) | 2025-08-06 → 2025-08-07 (+1d) |  |  |
| PG-10337 | 1st Fix - GI wire pulling | 2025-05-16 → 2025-05-17 (+1d) | 2025-05-26 → 2025-05-27 (+1d) |  | 370.33d → 370.85d |
| PG-10338 | 2nd Fix - Wiring works | 2025-06-25 → 2025-06-26 (+1d) | 2025-07-12 → 2025-07-14 (+2d) |  | 338.66d → 339.18d |
| PG-10339 | Final Fix - Electrical Fixtures | 2025-07-30 → 2025-07-31 (+1d) | 2025-08-06 → 2025-08-07 (+1d) |  | 323.66d → 324.18d |
| 1.3.1.1.3.18 | **Floor 15** | 2025-05-29 → 2025-05-30 (+1d) | 2025-08-19 → 2025-08-20 (+1d) |  |  |
| 1.3.1.1.3.18.1 | **PHE Works** | 2025-05-29 → 2025-05-30 (+1d) | 2025-08-19 → 2025-08-20 (+1d) |  |  |
| PG-10340 | 1st Fix - Piping works | 2025-05-29 → 2025-05-30 (+1d) | 2025-06-12 → 2025-06-13 (+1d) |  | 131.16d → 131.68d |

| ID | Task | Start | Finish | Total float |
| --- | --- | --- | --- | --- |
| PG-10341 | 2nd Fix - diverter fixing & Pressure testing | 2025-06-07 → 2025-06-09 (+2d) | 2025-06-19 → 2025-06-20 (+1d) | 131.16d → 131.68d |
| PG-10342 | Final Fix - CP & Sanitary fixtures | 2025-08-06 → 2025-08-07 (+1d) | 2025-08-19 → 2025-08-20 (+1d) | 313.66d → 314.18d |
| 1.3.1.1.3.18.2 | **Fire Fighting Works** | 2025-06-07 → 2025-06-09 (+2d) | 2025-08-19 → 2025-08-20 (+1d) |  |
| PG-10343 | 1st Fix - Piping and Shaft hydrant works | 2025-06-07 → 2025-06-09 (+2d) | 2025-06-21 → 2025-06-23 (+2d) | 360.33d → 360.85d |
| PG-10344 | 2nd Fix - Sprinkler fixing & Pressure testing | 2025-07-15 → 2025-07-16 (+1d) | 2025-07-26 → 2025-07-28 (+2d) | 322.66d → 323.18d |
| PG-10345 | Final Fix - Smoke & heat detectors, FHC , FAS Etc. | 2025-08-06 → 2025-08-07 (+1d) | 2025-08-19 → 2025-08-20 (+1d) | 313.66d → 314.18d |
| 1.3.1.1.3.18.3 | **Electrical Works** | 2025-05-29 → 2025-05-30 (+1d) | 2025-08-19 → 2025-08-20 (+1d) |  |
| PG-10346 | 1st Fix - GI wire pulling | 2025-05-29 → 2025-05-30 (+1d) | 2025-06-07 → 2025-06-09 (+2d) | 360.33d → 360.85d |
| PG-10347 | 2nd Fix - Wiring works | 2025-07-08 → 2025-07-09 (+1d) | 2025-07-25 → 2025-07-26 (+1d) | 327.66d → 328.18d |
| PG-10348 | Final Fix - Electrical Fixtures | 2025-08-11 → 2025-08-12 (+1d) | 2025-08-19 → 2025-08-20 (+1d) | 313.66d → 314.18d |
| 1.3.1.1.3.19 | **Floor 16** | 2025-06-11 → 2025-06-12 (+1d) | 2025-09-01 → 2025-09-02 (+1d) |  |
| 1.3.1.1.3.19.1 | **PHE Works** | 2025-06-11 → 2025-06-12 (+1d) | 2025-09-01 → 2025-09-02 (+1d) |  |
| PG-10349 | 1st Fix - Piping works | 2025-06-11 → 2025-06-12 (+1d) | 2025-06-25 → 2025-06-26 (+1d) | 302.66d → 303.18d |
| PG-10350 | 2nd Fix - diverter fixing & Pressure testing | 2025-06-20 → 2025-06-21 (+1d) | 2025-07-02 → 2025-07-03 (+1d) | 302.66d → 303.18d |
| PG-10351 | Final Fix - CP & Sanitary fixtures | 2025-08-20 → 2025-08-21 (+1d) | 2025-09-01 → 2025-09-02 (+1d) | 302.66d → 303.18d |
| 1.3.1.1.3.19.2 | **Fire Fighting Works** | 2025-06-20 → 2025-06-21 (+1d) | 2025-09-01 → 2025-09-02 (+1d) |  |
| PG-10352 | 1st Fix - Piping and Shaft hydrant works | 2025-06-20 → 2025-06-21 (+1d) | 2025-07-04 → 2025-07-05 (+1d) | 349.33d → 349.85d |
| PG-10353 | 2nd Fix - Sprinkler fixing & Pressure testing | 2025-07-28 → 2025-07-29 (+1d) | 2025-08-08 → 2025-08-09 (+1d) | 311.66d → 312.18d |
| PG-10354 | Final Fix - Smoke & heat detectors, FHC , FAS Etc. | 2025-08-20 → 2025-08-21 (+1d) | 2025-09-01 → 2025-09-02 (+1d) | 302.66d → 303.18d |
| 1.3.1.1.3.19.3 | **Electrical Works** | 2025-06-11 → 2025-06-12 (+1d) | 2025-09-01 → 2025-09-02 (+1d) |  |
| PG-10355 | 1st Fix - GI wire pulling | 2025-06-11 → 2025-06-12 (+1d) | 2025-06-20 → 2025-06-21 (+1d) | 349.33d → 349.85d |
| PG-10356 | 2nd Fix - Wiring works | 2025-07-21 → 2025-07-22 (+1d) | 2025-08-07 → 2025-08-08 (+1d) | 316.66d → 317.18d |
| PG-10357 | Final Fix - Electrical Fixtures | 2025-08-25 → 2025-08-26 (+1d) | 2025-09-01 → 2025-09-02 (+1d) | 302.66d → 303.18d |
| 1.3.1.1.3.20 | **Floor 17** | 2025-06-24 → 2025-06-25 (+1d) | 2025-09-13 → 2025-09-15 (+2d) |  |
| 1.3.1.1.3.20.1 | **PHE Works** | 2025-06-24 → 2025-06-25 (+1d) | 2025-09-13 → 2025-09-15 (+2d) |  |
| PG-10358 | 1st Fix - Piping works | 2025-06-24 → 2025-06-25 (+1d) | 2025-07-08 → 2025-07-09 (+1d) | 291.66d → 292.18d |
| PG-10359 | 2nd Fix - diverter fixing & Pressure testing | 2025-07-03 → 2025-07-04 (+1d) | 2025-07-15 → 2025-07-16 (+1d) | 291.66d → 292.18d |
| PG-10360 | Final Fix - CP & Sanitary fixtures | 2025-09-02 → 2025-09-03 (+1d) | 2025-09-13 → 2025-09-15 (+2d) | 291.66d → 292.18d |
| 1.3.1.1.3.20.2 | **Fire Fighting Works** | 2025-07-03 → 2025-07-04 (+1d) | 2025-09-13 → 2025-09-15 (+2d) |  |
| PG-10361 | 1st Fix - Piping and Shaft hydrant works | 2025-07-03 → 2025-07-04 (+1d) | 2025-07-17 → 2025-07-18 (+1d) | 338.33d → 338.85d |
| PG-10362 | 2nd Fix - Sprinkler fixing & Pressure testing | 2025-08-09 → 2025-08-11 (+2d) | 2025-08-22 → 2025-08-23 (+1d) | 300.66d → 301.18d |
| PG-10363 | Final Fix - Smoke & heat detectors, FHC , FAS Etc. | 2025-09-02 → 2025-09-03 (+1d) | 2025-09-13 → 2025-09-15 (+2d) | 291.66d → 292.18d |
| 1.3.1.1.3.20.3 | **Electrical Works** | 2025-06-24 → 2025-06-25 (+1d) | 2025-09-13 → 2025-09-15 (+2d) |  |
| PG-10364 | 1st Fix - GI wire pulling | 2025-06-24 → 2025-06-25 (+1d) | 2025-07-03 → 2025-07-04 (+1d) | 338.33d → 338.85d |
| PG-10365 | 2nd Fix - Wiring works | 2025-08-02 → 2025-08-04 (+2d) | 2025-08-21 → 2025-08-22 (+1d) | 305.66d → 306.18d |
| PG-10366 | Final Fix - Electrical Fixtures | 2025-09-06 → 2025-09-08 (+2d) | 2025-09-13 → 2025-09-15 (+2d) | 291.66d → 292.18d |
| 1.3.1.1.3.21 | **Floor 18** | 2025-07-07 → 2025-07-08 (+1d) | 2025-09-26 → 2025-09-27 (+1d) |  |
| 1.3.1.1.3.21.1 | **PHE Works** | 2025-07-07 → 2025-07-08 (+1d) | 2025-09-26 → 2025-09-27 (+1d) |  |
| PG-10367 | 1st Fix - Piping works | 2025-07-07 → 2025-07-08 (+1d) | 2025-07-21 → 2025-07-22 (+1d) | 44.83d → 45.35d |
| PG-10368 | 2nd Fix - diverter fixing & Pressure testing | 2025-07-16 → 2025-07-17 (+1d) | 2025-07-28 → 2025-07-29 (+1d) | 280.66d → 281.18d |
| PG-10369 | Final Fix - CP & Sanitary fixtures | 2025-09-15 → 2025-09-16 (+1d) | 2025-09-26 → 2025-09-27 (+1d) | 280.66d → 281.18d |
| 1.3.1.1.3.21.2 | **Fire Fighting Works** | 2025-07-16 → 2025-07-17 (+1d) | 2025-09-26 → 2025-09-27 (+1d) |  |
| PG-10370 | 1st Fix - Piping and Shaft hydrant works | 2025-07-16 → 2025-07-17 (+1d) | 2025-07-30 → 2025-07-31 (+1d) | 327.33d → 327.85d |
| PG-10371 | 2nd Fix - Sprinkler fixing & Pressure testing | 2025-08-23 → 2025-08-25 (+2d) | 2025-09-04 → 2025-09-05 (+1d) | 289.66d → 290.18d |
| PG-10372 | Final Fix - Smoke & heat detectors, FHC , FAS Etc. | 2025-09-15 → 2025-09-16 (+1d) | 2025-09-26 → 2025-09-27 (+1d) | 280.66d → 281.18d |
| 1.3.1.1.3.21.3 | **Electrical Works** | 2025-07-07 → 2025-07-08 (+1d) | 2025-09-26 → 2025-09-27 (+1d) |  |
| PG-10373 | 1st Fix - GI wire pulling | 2025-07-07 → 2025-07-08 (+1d) | 2025-07-16 → 2025-07-17 (+1d) | 327.33d → 327.85d |
| PG-10374 | 2nd Fix - Wiring works | 2025-08-16 → 2025-08-18 (+2d) | 2025-09-03 → 2025-09-04 (+1d) | 294.66d → 295.18d |
| PG-10375 | Final Fix - Electrical Fixtures | 2025-09-19 → 2025-09-20 (+1d) | 2025-09-26 → 2025-09-27 (+1d) | 280.66d → 281.18d |
| 1.3.1.1.3.22 | **Floor 19** | 2025-07-29 → 2025-07-30 (+1d) | 2025-10-22 → 2025-10-23 (+1d) |  |
| 1.3.1.1.3.22.1 | **PHE Works** | 2025-07-29 → 2025-07-30 (+1d) | 2025-10-22 → 2025-10-23 (+1d) |  |
| PG-10376 | 1st Fix - Piping works | 2025-07-29 → 2025-07-30 (+1d) | 2025-08-12 → 2025-08-13 (+1d) | 163.83d → 164.35d |
| PG-10377 | 2nd Fix - diverter fixing & Pressure testing | 2025-08-07 → 2025-08-08 (+1d) | 2025-08-20 → 2025-08-21 (+1d) | 163.83d → 164.35d |
| PG-10378 | Final Fix - CP & Sanitary fixtures | 2025-10-10 → 2025-10-11 (+1d) | 2025-10-22 → 2025-10-23 (+1d) | 259.66d → 260.18d |
| 1.3.1.1.3.22.2 | **Fire Fighting Works** | 2025-08-07 → 2025-08-08 (+1d) | 2025-10-22 → 2025-10-23 (+1d) |  |
| PG-10379 | 1st Fix - Piping and Shaft hydrant works | 2025-08-07 → 2025-08-08 (+1d) | 2025-08-22 → 2025-08-23 (+1d) | 175.83d → 176.35d |
| PG-10380 | 2nd Fix - Sprinkler fixing & Pressure testing | 2025-09-15 → 2025-09-16 (+1d) | 2025-09-26 → 2025-09-27 (+1d) | 270.66d → 271.18d |
| PG-10381 | Final Fix - Smoke & heat detectors, FHC , FAS Etc. | 2025-10-10 → 2025-10-11 (+1d) | 2025-10-22 → 2025-10-23 (+1d) | 259.66d → 260.18d |
| 1.3.1.1.3.22.3 | **Electrical Works** | 2025-07-29 → 2025-07-30 (+1d) | 2025-10-22 → 2025-10-23 (+1d) |  |
| PG-10382 | 1st Fix - GI wire pulling | 2025-07-29 → 2025-07-30 (+1d) | 2025-08-07 → 2025-08-08 (+1d) | 44.83d → 45.35d |
| PG-10383 | 2nd Fix - Wiring works | 2025-09-08 → 2025-09-09 (+1d) | 2025-09-25 → 2025-09-26 (+1d) | 275.66d → 276.18d |
| PG-10384 | Final Fix - Electrical Fixtures | 2025-10-15 → 2025-10-16 (+1d) | 2025-10-22 → 2025-10-23 (+1d) | 259.66d → 260.18d |
| 1.3.1.1.3.23 | **Floor 20** | 2025-08-21 → 2025-08-22 (+1d) | 2025-11-13 → 2025-11-14 (+1d) |  |
| 1.3.1.1.3.23.1 | **PHE Works** | 2025-08-21 → 2025-08-22 (+1d) | 2025-11-13 → 2025-11-14 (+1d) |  |
| PG-10385 | 1st Fix - Piping works | 2025-08-21 → 2025-08-22 (+1d) | 2025-09-04 → 2025-09-05 (+1d) | 185.49d → 186.01d |
| PG-10386 | 2nd Fix - diverter fixing & Pressure testing | 2025-08-30 → 2025-09-01 (+2d) | 2025-09-11 → 2025-09-12 (+1d) | 240.49d → 241.01d |
| PG-10387 | Final Fix - CP & Sanitary fixtures | 2025-10-31 → 2025-11-03 (+3d) | 2025-11-13 → 2025-11-14 (+1d) | 240.49d → 241.01d |
| 1.3.1.1.3.23.2 | **Fire Fighting Works** | 2025-08-30 → 2025-09-01 (+2d) | 2025-11-13 → 2025-11-14 (+1d) |  |
| PG-10388 | 1st Fix - Piping and Shaft hydrant works | 2025-08-30 → 2025-09-01 (+2d) | 2025-09-13 → 2025-09-15 (+2d) | 287.16d → 287.68d |
| PG-10389 | 2nd Fix - Sprinkler fixing & Pressure testing | 2025-10-08 → 2025-10-09 (+1d) | 2025-10-20 → 2025-10-21 (+1d) | 250.16d → 250.68d |

| ID | Task | Start | Finish | Complete | Total float |
| --- | --- | --- | --- | --- | --- |
| PG-10390 | Final Fix - Smoke & heat detectors, FHC , FAS Etc. | 2025-10-31 → 2025-11-03 (+3d) | 2025-11-13 → 2025-11-14 (+1d) |  | 240.49d → 241.01d |
| 1.3.1.1.3.23.3 | **Electrical Works** | 2025-08-21 → 2025-08-22 (+1d) | 2025-11-13 → 2025-11-14 (+1d) |  |  |
| PG-10391 | 1st Fix - GI wire pulling | 2025-08-21 → 2025-08-22 (+1d) | 2025-08-30 → 2025-09-01 (+2d) |  | 287.16d → 287.68d |
| PG-10392 | 2nd Fix - Wiring works | 2025-09-30 → 2025-10-01 (+1d) | 2025-10-18 → 2025-10-20 (+2d) |  | 255.49d → 256.01d |
| PG-10393 | Final Fix - Electrical Fixtures | 2025-11-06 → 2025-11-07 (+1d) | 2025-11-13 → 2025-11-14 (+1d) |  | 240.49d → 241.01d |
| 1.3.1.1.3.24 | **Floor 21** | 2025-09-12 → 2025-09-13 (+1d) | 2025-12-05 → 2025-12-06 (+1d) |  |  |
| 1.3.1.1.3.24.1 | **PHE Works** | 2025-09-12 → 2025-09-13 (+1d) | 2025-12-05 → 2025-12-06 (+1d) |  |  |
| PG-10394 | 1st Fix - Piping works | 2025-09-12 → 2025-09-13 (+1d) | 2025-09-26 → 2025-09-27 (+1d) |  | 185.49d → 186.01d |
| PG-10395 | 2nd Fix - diverter fixing & Pressure testing | 2025-09-22 → 2025-09-23 (+1d) | 2025-10-04 → 2025-10-06 (+2d) |  | 221.49d → 222.01d |
| PG-10396 | Final Fix - CP & Sanitary fixtures | 2025-11-24 → 2025-11-25 (+1d) | 2025-12-05 → 2025-12-06 (+1d) |  | 221.49d → 222.01d |
| 1.3.1.1.3.24.2 | **Fire Fighting Works** | 2025-09-22 → 2025-09-23 (+1d) | 2025-12-05 → 2025-12-06 (+1d) |  |  |
| PG-10397 | 1st Fix - Piping and Shaft hydrant works | 2025-09-22 → 2025-09-23 (+1d) | 2025-10-07 → 2025-10-08 (+1d) |  | 268.16d → 268.68d |
| PG-10398 | 2nd Fix - Sprinkler fixing & Pressure testing | 2025-10-30 → 2025-10-31 (+1d) | 2025-11-12 → 2025-11-13 (+1d) |  | 231.49d → 232.01d |
| PG-10399 | Final Fix - Smoke & heat detectors, FHC , FAS Etc. | 2025-11-24 → 2025-11-25 (+1d) | 2025-12-05 → 2025-12-06 (+1d) |  | 221.49d → 222.01d |
| 1.3.1.1.3.24.3 | **Electrical Works** | 2025-09-12 → 2025-09-13 (+1d) | 2025-12-05 → 2025-12-06 (+1d) |  |  |
| PG-10400 | 1st Fix - GI wire pulling | 2025-09-12 → 2025-09-13 (+1d) | 2025-09-22 → 2025-09-23 (+1d) |  | 268.16d → 268.68d |
| PG-10401 | 2nd Fix - Wiring works | 2025-10-23 → 2025-10-24 (+1d) | 2025-11-11 → 2025-11-12 (+1d) |  | 236.49d → 237.01d |
| PG-10402 | Final Fix - Electrical Fixtures | 2025-11-28 → 2025-11-29 (+1d) | 2025-12-05 → 2025-12-06 (+1d) |  | 221.49d → 222.01d |
| 1.3.1.1.3.25 | **Floor 22** | 2025-10-06 → 2025-10-07 (+1d) | 2025-12-27 → 2025-12-29 (+2d) |  |  |
| 1.3.1.1.3.25.1 | **PHE Works** | 2025-10-06 → 2025-10-07 (+1d) | 2025-12-27 → 2025-12-29 (+2d) |  |  |
| PG-10403 | 1st Fix - Piping works | 2025-10-06 → 2025-10-07 (+1d) | 2025-10-20 → 2025-10-21 (+1d) |  | 185.49d → 186.01d |
| PG-10404 | 2nd Fix - diverter fixing & Pressure testing | 2025-10-15 → 2025-10-16 (+1d) | 2025-10-27 → 2025-10-28 (+1d) |  | 201.49d → 202.01d |
| PG-10405 | Final Fix - CP & Sanitary fixtures | 2025-12-16 → 2025-12-17 (+1d) | 2025-12-27 → 2025-12-29 (+2d) |  | 201.49d → 202.01d |
| 1.3.1.1.3.25.2 | **Fire Fighting Works** | 2025-10-15 → 2025-10-16 (+1d) | 2025-12-27 → 2025-12-29 (+2d) |  |  |
| PG-10406 | 1st Fix - Piping and Shaft hydrant works | 2025-10-15 → 2025-10-16 (+1d) | 2025-10-29 → 2025-10-30 (+1d) |  | 249.16d → 249.68d |
| PG-10407 | 2nd Fix - Sprinkler fixing & Pressure testing | 2025-11-22 → 2025-11-24 (+2d) | 2025-12-04 → 2025-12-05 (+1d) |  | 211.49d → 212.01d |
| PG-10408 | Final Fix - Smoke & heat detectors, FHC , FAS Etc. | 2025-12-16 → 2025-12-17 (+1d) | 2025-12-27 → 2025-12-29 (+2d) |  | 201.49d → 202.01d |
| 1.3.1.1.3.25.3 | **Electrical Works** | 2025-10-06 → 2025-10-07 (+1d) | 2025-12-27 → 2025-12-29 (+2d) |  |  |
| PG-10409 | 1st Fix - GI wire pulling | 2025-10-06 → 2025-10-07 (+1d) | 2025-10-15 → 2025-10-16 (+1d) |  | 249.16d → 249.68d |
| PG-10410 | 2nd Fix - Wiring works | 2025-11-15 → 2025-11-17 (+2d) | 2025-12-03 → 2025-12-04 (+1d) |  | 216.49d → 217.01d |
| PG-10411 | Final Fix - Electrical Fixtures | 2025-12-20 → 2025-12-22 (+2d) | 2025-12-27 → 2025-12-29 (+2d) |  | 201.49d → 202.01d |
| 1.3.1.1.3.26 | **Floor 23** | 2025-10-28 → 2025-10-29 (+1d) | 2026-01-16 → 2026-01-17 (+1d) |  |  |
| 1.3.1.1.3.26.1 | **PHE Works** | 2025-10-28 → 2025-10-29 (+1d) | 2026-01-16 → 2026-01-17 (+1d) |  |  |
| PG-10412 | 1st Fix - Piping works | 2025-10-28 → 2025-10-29 (+1d) | 2025-11-12 → 2025-11-13 (+1d) |  | 185.49d → 186.01d |
| PG-10413 | 2nd Fix - diverter fixing & Pressure testing | 2025-11-07 → 2025-11-08 (+1d) | 2025-11-19 → 2025-11-20 (+1d) |  | 185.49d → 186.01d |
| PG-10414 | Final Fix - CP & Sanitary fixtures | 2026-01-05 → 2026-01-06 (+1d) | 2026-01-16 → 2026-01-17 (+1d) |  | 185.49d → 186.01d |
| 1.3.1.1.3.26.2 | **Fire Fighting Works** | 2025-11-07 → 2025-11-08 (+1d) | 2026-01-16 → 2026-01-17 (+1d) |  |  |
| PG-10415 | 1st Fix - Piping and Shaft hydrant works | 2025-11-07 → 2025-11-08 (+1d) | 2025-11-21 → 2025-11-22 (+1d) |  | 230.33d → 230.85d |
| PG-10416 | 2nd Fix - Sprinkler fixing & Pressure testing | 2025-12-15 → 2025-12-16 (+1d) | 2025-12-26 → 2025-12-27 (+1d) |  | 192.99d → 193.51d |
| PG-10417 | Final Fix - Smoke & heat detectors, FHC , FAS Etc. | 2026-01-05 → 2026-01-06 (+1d) | 2026-01-16 → 2026-01-17 (+1d) |  | 185.49d → 186.01d |
| 1.3.1.1.3.26.3 | **Electrical Works** | 2025-10-28 → 2025-10-29 (+1d) | 2026-01-16 → 2026-01-17 (+1d) |  |  |
| PG-10418 | 1st Fix - GI wire pulling | 2025-10-28 → 2025-10-29 (+1d) | 2025-11-07 → 2025-11-08 (+1d) |  | 230.33d → 230.85d |
| PG-10419 | 2nd Fix - Wiring works | 2025-12-08 → 2025-12-09 (+1d) | 2025-12-25 → 2025-12-26 (+1d) |  | 197.99d → 198.51d |
| PG-10420 | Final Fix - Electrical Fixtures | 2026-01-09 → 2026-01-10 (+1d) | 2026-01-16 → 2026-01-17 (+1d) |  | 185.49d → 186.01d |
| 1.3.1.1.4 | **Civil Finishes - Units** |  | 2026-01-12 → 2026-01-13 (+1d) |  |  |
| PG-10548 | Final Coat Painting |  |  | 41% → 73% | 427.67d → 429.1d |
| PG-10553 | Final Coat Painting |  |  | 33% → 66% | 391.64d → 393.07d |
| PG-10560 | Painting Works - Putty, Primer and 1st |  | 2025-04-30 → 2025-05-01 A (+1d) | 18% → 100% | 416.42d → none |
| PG-10562 | Final Coat Painting | 2025-05-01 → 2025-05-02 A (+1d) |  | 0% → 3% | 416.18d → 417.32d |
| PG-10566 | Painting Works - Putty, Primer and 1st |  | 2025-05-01 → 2025-05-02 A (+1d) | 14% → 100% | 381.52d → none |
| PG-10567 | Final Coat Painting | 2025-05-01 → 2025-05-02 A (+1d) |  | 0% → 3% | 381.52d → 382.65d |
| 1.3.1.1.4.12.3 | **Floor Finishing Works - Civil** |  | 2025-05-01 → 2025-05-02 (+1d) |  |  |
| PG-10571 | Wooden doors | 2025-04-25 → 2025-04-26 A (+1d) | 2025-05-01 → 2025-05-02 A (+1d) | 0% → 100% | 381.52d → none |
| 1.3.1.1.4.13 | **Floor 10** |  | 2025-06-05 → 2025-06-06 (+1d) |  |  |
| 1.3.1.1.4.13.1 | **Ceiling Finishing works - Civil** |  | 2025-06-05 → 2025-06-06 (+1d) |  |  |
| PG-10573 | Cornice fixing |  | 2025-04-26 A | 85% → 100% | 415.5d → none |
| PG-10575 | Toilet False ceiling | 2025-04-29 → 2025-04-30 A (+1d) | 2025-05-03 → 2025-05-05 (+2d) | 0% → 59% | 393.1d → 393.51d |
| PG-10574 | Painting Works - Putty, Primer and 1st | 2025-05-09 → 2025-05-10 (+1d) | 2025-05-16 → 2025-05-17 (+1d) |  | 404.93d → 405.35d |
| PG-10576 | Final Coat Painting | 2025-05-16 → 2025-05-17 (+1d) | 2025-06-05 → 2025-06-06 (+1d) |  | 404.93d → 405.35d |
| 1.3.1.1.4.13.2 | **Wall Finishing works - Civil** |  | 2025-06-05 → 2025-06-06 (+1d) |  |  |
| PG-10578 | UPVC Windows & Sliding doors | 2025-05-03 → 2025-05-05 (+2d) | 2025-05-09 → 2025-05-10 (+1d) |  | 368.27d → 368.68d |
| PG-10580 | Painting Works - Putty, Primer and 1st | 2025-05-09 → 2025-05-10 (+1d) | 2025-05-16 → 2025-05-17 (+1d) |  | 368.27d → 368.68d |
| PG-10581 | Final Coat Painting | 2025-05-16 → 2025-05-17 (+1d) | 2025-06-05 → 2025-06-06 (+1d) |  | 368.27d → 368.68d |
| 1.3.1.1.4.13.3 | **Floor Finishing Works - Civil** |  | 2025-05-16 → 2025-05-17 (+1d) |  |  |
| PG-10583 | Floor Tiling - Wet area |  | 2025-04-28 → 2025-04-29 A (+1d) | 52% → 100% | 368.27d → none |
| PG-10584 | Floor Tiling - Dry area | 2025-04-28 → 2025-04-29 A (+1d) | 2025-05-03 → 2025-05-05 (+2d) | 0% → 64% | 368.27d → 368.68d |
| PG-10585 | Wooden doors | 2025-05-10 → 2025-05-12 (+2d) | 2025-05-16 → 2025-05-17 (+1d) |  | 368.27d → 368.68d |
| PG-10593 | Dadoing - Wet area | 2025-05-01 → 2025-05-02 A (+1d) |  | 0% → 12% | 355.08d → 356.55d |
| 1.3.1.1.4.15 | **Floor 12** |  | 2025-07-02 → 2025-07-03 (+1d) |  |  |
| 1.3.1.1.4.15.1 | **Ceiling Finishing works - Civil** | 2025-04-30 → 2025-05-01 (+1d) | 2025-07-02 → 2025-07-03 (+1d) |  |  |

| ID | Task | Start | Finish | Complete | Total float |
| --- | --- | --- | --- | --- | --- |
| PG-10600 | Gypsum Plastering | 2025-04-30 → 2025-05-01 A (+1d) |  | 0% → 30% | 394.61d → 396.07d |
| PG-10603 | Toilet False ceiling | 2025-05-24 → 2025-05-26 (+2d) | 2025-05-29 → 2025-05-30 (+1d) |  | 371.75d → 372.4d |
| PG-10602 | Painting Works - Putty, Primer and 1st | 2025-06-04 → 2025-06-05 (+1d) | 2025-06-11 → 2025-06-12 (+1d) |  | 381.91d → 382.56d |
| PG-10604 | Final Coat Painting | 2025-06-11 → 2025-06-12 (+1d) | 2025-07-02 → 2025-07-03 (+1d) |  | 381.91d → 382.56d |
| 1.3.1.1.4.15.2 | **Wall Finishing works - Civil** |  | 2025-07-02 → 2025-07-03 (+1d) |  |  |
| PG-10605 | Balcony Railing Fixing works |  | 2025-04-25 → 2025-04-26 A (+1d) | 81% → 100% | 376.24d → none |
| PG-10607 | Dadoing - Wet area | 2025-05-12 → 2025-05-13 (+1d) | 2025-05-17 → 2025-05-19 (+2d) |  | 347.08d → 347.73d |
| PG-10606 | UPVC Windows & Sliding doors | 2025-05-29 → 2025-05-30 (+1d) | 2025-06-04 → 2025-06-05 (+1d) |  | 347.08d → 347.73d |
| PG-10608 | Painting Works - Putty, Primer and 1st | 2025-06-04 → 2025-06-05 (+1d) | 2025-06-11 → 2025-06-12 (+1d) |  | 347.08d → 347.73d |
| PG-10609 | Final Coat Painting | 2025-06-11 → 2025-06-12 (+1d) | 2025-07-02 → 2025-07-03 (+1d) |  | 347.08d → 347.73d |
| 1.3.1.1.4.15.3 | **Floor Finishing Works - Civil** |  | 2025-06-11 → 2025-06-12 (+1d) |  |  |
| PG-10610 | Waterproofing for sunken areas |  | 2025-04-25 → 2025-04-26 A (+1d) | 97% → 100% | 366.92d → none |
| PG-10611 | Floor Tiling - Wet area | 2025-05-17 → 2025-05-19 (+2d) | 2025-05-23 → 2025-05-24 (+1d) |  | 347.08d → 347.73d |
| PG-10612 | Floor Tiling - Dry area | 2025-05-23 → 2025-05-24 (+1d) | 2025-05-29 → 2025-05-30 (+1d) |  | 347.08d → 347.73d |
| PG-10613 | Wooden doors | 2025-06-05 → 2025-06-06 (+1d) | 2025-06-11 → 2025-06-12 (+1d) |  | 347.08d → 347.73d |
| 1.3.1.1.4.16 | **Floor 13** | 2025-05-03 → 2025-05-05 (+2d) | 2025-07-19 → 2025-07-21 (+2d) |  |  |
| 1.3.1.1.4.16.1 | **Ceiling Finishing works - Civil** | 2025-05-13 → 2025-05-14 (+1d) | 2025-07-19 → 2025-07-21 (+2d) |  |  |
| PG-10614 | Gypsum Plastering | 2025-05-13 → 2025-05-14 (+1d) | 2025-05-20 → 2025-05-21 (+1d) |  | 379.33d → 379.85d |
| PG-10615 | Cornice fixing | 2025-05-29 → 2025-05-30 (+1d) | 2025-06-03 → 2025-06-04 (+1d) |  | 379.33d → 379.85d |
| PG-10617 | Toilet False ceiling | 2025-06-06 → 2025-06-07 (+1d) | 2025-06-11 → 2025-06-12 (+1d) |  | 361.16d → 361.68d |
| PG-10616 | Painting Works - Putty, Primer and 1st | 2025-06-17 → 2025-06-18 (+1d) | 2025-06-24 → 2025-06-25 (+1d) |  | 367.33d → 367.85d |
| PG-10618 | Final Coat Painting | 2025-06-24 → 2025-06-25 (+1d) | 2025-07-19 → 2025-07-21 (+2d) |  | 367.33d → 367.85d |
| 1.3.1.1.4.16.2 | **Wall Finishing works - Civil** | 2025-05-03 → 2025-05-05 (+2d) | 2025-07-17 → 2025-07-18 (+1d) |  |  |
| PG-10619 | Balcony Railing Fixing works | 2025-05-03 → 2025-05-05 (+2d) | 2025-05-08 → 2025-05-09 (+1d) |  | 363.66d → 364.18d |
| PG-10621 | Dadoing - Wet area | 2025-05-24 → 2025-05-26 (+2d) | 2025-05-30 → 2025-05-31 (+1d) |  | 334.66d → 335.18d |
| PG-10620 | UPVC Windows & Sliding doors | 2025-06-11 → 2025-06-12 (+1d) | 2025-06-17 → 2025-06-18 (+1d) |  | 334.66d → 335.18d |
| PG-10622 | Painting Works - Putty, Primer and 1st | 2025-06-17 → 2025-06-18 (+1d) | 2025-06-24 → 2025-06-25 (+1d) |  | 334.66d → 335.18d |
| PG-10623 | Final Coat Painting | 2025-06-24 → 2025-06-25 (+1d) | 2025-07-17 → 2025-07-18 (+1d) |  | 334.66d → 335.18d |
| 1.3.1.1.4.16.3 | **Floor Finishing Works - Civil** | 2025-05-03 → 2025-05-05 (+2d) | 2025-06-24 → 2025-06-25 (+1d) |  |  |
| PG-10624 | Waterproofing for sunken areas | 2025-05-03 → 2025-05-05 (+2d) | 2025-05-07 → 2025-05-08 (+1d) |  | 354.66d → 355.18d |
| PG-10625 | Floor Tiling - Wet area | 2025-05-30 → 2025-05-31 (+1d) | 2025-06-05 → 2025-06-06 (+1d) |  | 334.66d → 335.18d |
| PG-10626 | Floor Tiling - Dry area | 2025-06-05 → 2025-06-06 (+1d) | 2025-06-11 → 2025-06-12 (+1d) |  | 334.66d → 335.18d |
| PG-10627 | Wooden doors | 2025-06-18 → 2025-06-19 (+1d) | 2025-06-24 → 2025-06-25 (+1d) |  | 334.66d → 335.18d |
| 1.3.1.1.4.17 | **Floor 14** | 2025-05-16 → 2025-05-17 (+1d) | 2025-07-30 → 2025-07-31 (+1d) |  |  |
| 1.3.1.1.4.17.1 | **Ceiling Finishing works - Civil** | 2025-05-26 → 2025-05-27 (+1d) | 2025-07-30 → 2025-07-31 (+1d) |  |  |
| PG-10628 | Gypsum Plastering | 2025-05-26 → 2025-05-27 (+1d) | 2025-06-02 → 2025-06-03 (+1d) |  | 370.33d → 370.85d |
| PG-10629 | Cornice fixing | 2025-06-11 → 2025-06-12 (+1d) | 2025-06-16 → 2025-06-17 (+1d) |  | 370.33d → 370.85d |
| PG-10631 | Toilet False ceiling | 2025-06-19 → 2025-06-20 (+1d) | 2025-06-24 → 2025-06-25 (+1d) |  | 350.66d → 351.18d |
| PG-10630 | Painting Works - Putty, Primer and 1st | 2025-06-30 → 2025-07-01 (+1d) | 2025-07-07 → 2025-07-08 (+1d) |  | 358.33d → 358.85d |
| PG-10632 | Final Coat Painting | 2025-07-07 → 2025-07-08 (+1d) | 2025-07-30 → 2025-07-31 (+1d) |  | 358.33d → 358.85d |
| 1.3.1.1.4.17.2 | **Wall Finishing works - Civil** | 2025-05-16 → 2025-05-17 (+1d) | 2025-07-30 → 2025-07-31 (+1d) |  |  |
| PG-10633 | Balcony Railing Fixing works | 2025-05-16 → 2025-05-17 (+1d) | 2025-05-21 → 2025-05-22 (+1d) |  | 352.66d → 353.18d |
| PG-10635 | Dadoing - Wet area | 2025-06-06 → 2025-06-07 (+1d) | 2025-06-12 → 2025-06-13 (+1d) |  | 323.66d → 324.18d |
| PG-10634 | UPVC Windows & Sliding doors | 2025-06-24 → 2025-06-25 (+1d) | 2025-06-30 → 2025-07-01 (+1d) |  | 323.66d → 324.18d |
| PG-10636 | Painting Works - Putty, Primer and 1st | 2025-06-30 → 2025-07-01 (+1d) | 2025-07-07 → 2025-07-08 (+1d) |  | 323.66d → 324.18d |
| PG-10637 | Final Coat Painting | 2025-07-07 → 2025-07-08 (+1d) | 2025-07-30 → 2025-07-31 (+1d) |  | 323.66d → 324.18d |
| 1.3.1.1.4.17.3 | **Floor Finishing Works - Civil** | 2025-05-16 → 2025-05-17 (+1d) | 2025-07-07 → 2025-07-08 (+1d) |  |  |
| PG-10638 | Waterproofing for sunken areas | 2025-05-16 → 2025-05-17 (+1d) | 2025-05-20 → 2025-05-21 (+1d) |  | 343.66d → 344.18d |
| PG-10639 | Floor Tiling - Wet area | 2025-06-12 → 2025-06-13 (+1d) | 2025-06-18 → 2025-06-19 (+1d) |  | 323.66d → 324.18d |
| PG-10640 | Floor Tiling - Dry area | 2025-06-18 → 2025-06-19 (+1d) | 2025-06-24 → 2025-06-25 (+1d) |  | 323.66d → 324.18d |
| PG-10641 | Wooden doors | 2025-07-01 → 2025-07-02 (+1d) | 2025-07-07 → 2025-07-08 (+1d) |  | 323.66d → 324.18d |
| 1.3.1.1.4.18 | **Floor 15** | 2025-05-29 → 2025-05-30 (+1d) | 2025-08-11 → 2025-08-12 (+1d) |  |  |
| 1.3.1.1.4.18.1 | **Ceiling Finishing works - Civil** | 2025-06-07 → 2025-06-09 (+2d) | 2025-08-11 → 2025-08-12 (+1d) |  |  |
| PG-10642 | Gypsum Plastering | 2025-06-07 → 2025-06-09 (+2d) | 2025-06-14 → 2025-06-16 (+2d) |  | 360.33d → 360.85d |
| PG-10643 | Cornice fixing | 2025-06-24 → 2025-06-25 (+1d) | 2025-06-28 → 2025-06-30 (+2d) |  | 360.33d → 360.85d |
| PG-10645 | Toilet False ceiling | 2025-07-02 → 2025-07-03 (+1d) | 2025-07-07 → 2025-07-08 (+1d) |  | 339.66d → 340.18d |
| PG-10644 | Painting Works - Putty, Primer and 1st | 2025-07-12 → 2025-07-14 (+2d) | 2025-07-19 → 2025-07-21 (+2d) |  | 348.33d → 348.85d |
| PG-10646 | Final Coat Painting | 2025-07-19 → 2025-07-21 (+2d) | 2025-08-11 → 2025-08-12 (+1d) |  | 348.33d → 348.85d |
| 1.3.1.1.4.18.2 | **Wall Finishing works - Civil** | 2025-05-29 → 2025-05-30 (+1d) | 2025-08-11 → 2025-08-12 (+1d) |  |  |
| PG-10647 | Balcony Railing Fixing works | 2025-05-29 → 2025-05-30 (+1d) | 2025-06-03 → 2025-06-04 (+1d) |  | 160.16d → 160.68d |
| PG-10649 | Dadoing - Wet area | 2025-06-19 → 2025-06-20 (+1d) | 2025-06-25 → 2025-06-26 (+1d) |  | 131.16d → 131.68d |
| PG-10648 | UPVC Windows & Sliding doors | 2025-07-07 → 2025-07-08 (+1d) | 2025-07-12 → 2025-07-14 (+2d) |  | 131.16d → 131.68d |
| PG-10650 | Painting Works - Putty, Primer and 1st | 2025-07-12 → 2025-07-14 (+2d) | 2025-07-19 → 2025-07-21 (+2d) |  | 131.16d → 131.68d |
| PG-10651 | Final Coat Painting | 2025-07-19 → 2025-07-21 (+2d) | 2025-08-11 → 2025-08-12 (+1d) |  | 313.66d → 314.18d |
| 1.3.1.1.4.18.3 | **Floor Finishing Works - Civil** | 2025-05-29 → 2025-05-30 (+1d) | 2025-07-19 → 2025-07-21 (+2d) |  |  |
| PG-10652 | Waterproofing for sunken areas | 2025-05-29 → 2025-05-30 (+1d) | 2025-06-02 → 2025-06-03 (+1d) |  | 151.16d → 151.68d |
| PG-10653 | Floor Tiling - Wet area | 2025-06-25 → 2025-06-26 (+1d) | 2025-07-01 → 2025-07-02 (+1d) |  | 131.16d → 131.68d |
| PG-10654 | Floor Tiling - Dry area | 2025-07-01 → 2025-07-02 (+1d) | 2025-07-07 → 2025-07-08 (+1d) |  | 131.16d → 131.68d |
| PG-10655 | Wooden doors | 2025-07-14 → 2025-07-15 (+1d) | 2025-07-19 → 2025-07-21 (+2d) |  | 131.16d → 131.68d |
| 1.3.1.1.4.19 | **Floor 16** | 2025-06-11 → 2025-06-12 (+1d) | 2025-08-25 → 2025-08-26 (+1d) |  |  |

| ID | Task | Start | Finish | Total float |
| --- | --- | --- | --- | --- |
| 1.3.1.1.4.19.1 | **Ceiling Finishing works - Civil** | 2025-06-20 → 2025-06-21 (+1d) | 2025-08-25 → 2025-08-26 (+1d) |  |
| PG-10656 | Gypsum Plastering | 2025-06-20 → 2025-06-21 (+1d) | 2025-06-27 → 2025-06-28 (+1d) | 349.33d → 349.85d |
| PG-10657 | Cornice fixing | 2025-07-07 → 2025-07-08 (+1d) | 2025-07-11 → 2025-07-12 (+1d) | 349.33d → 349.85d |
| PG-10659 | Toilet False ceiling | 2025-07-15 → 2025-07-16 (+1d) | 2025-07-19 → 2025-07-21 (+2d) | 328.66d → 329.18d |
| PG-10658 | Painting Works - Putty, Primer and 1st | 2025-07-25 → 2025-07-26 (+1d) | 2025-08-01 → 2025-08-02 (+1d) | 337.33d → 337.85d |
| PG-10660 | Final Coat Painting | 2025-08-01 → 2025-08-02 (+1d) | 2025-08-25 → 2025-08-26 (+1d) | 337.33d → 337.85d |
| 1.3.1.1.4.19.2 | **Wall Finishing works - Civil** | 2025-06-11 → 2025-06-12 (+1d) | 2025-08-25 → 2025-08-26 (+1d) |  |
| PG-10661 | Balcony Railing Fixing works | 2025-06-11 → 2025-06-12 (+1d) | 2025-06-16 → 2025-06-17 (+1d) | 331.66d → 332.18d |
| PG-10663 | Dadoing - Wet area | 2025-07-02 → 2025-07-03 (+1d) | 2025-07-08 → 2025-07-09 (+1d) | 302.66d → 303.18d |
| PG-10662 | UPVC Windows & Sliding doors | 2025-07-19 → 2025-07-21 (+2d) | 2025-07-25 → 2025-07-26 (+1d) | 302.66d → 303.18d |
| PG-10664 | Painting Works - Putty, Primer and 1st | 2025-07-25 → 2025-07-26 (+1d) | 2025-08-01 → 2025-08-02 (+1d) | 302.66d → 303.18d |
| PG-10665 | Final Coat Painting | 2025-08-01 → 2025-08-02 (+1d) | 2025-08-25 → 2025-08-26 (+1d) | 302.66d → 303.18d |
| 1.3.1.1.4.19.3 | **Floor Finishing Works - Civil** | 2025-06-11 → 2025-06-12 (+1d) | 2025-08-01 → 2025-08-02 (+1d) |  |
| PG-10666 | Waterproofing for sunken areas | 2025-06-11 → 2025-06-12 (+1d) | 2025-06-14 → 2025-06-16 (+2d) | 322.66d → 323.18d |
| PG-10667 | Floor Tiling - Wet area | 2025-07-08 → 2025-07-09 (+1d) | 2025-07-14 → 2025-07-15 (+1d) | 302.66d → 303.18d |
| PG-10668 | Floor Tiling - Dry area | 2025-07-14 → 2025-07-15 (+1d) | 2025-07-19 → 2025-07-21 (+2d) | 302.66d → 303.18d |
| PG-10669 | Wooden doors | 2025-07-26 → 2025-07-28 (+2d) | 2025-08-01 → 2025-08-02 (+1d) | 302.66d → 303.18d |
| 1.3.1.1.4.20 | **Floor 17** | 2025-06-24 → 2025-06-25 (+1d) | 2025-09-06 → 2025-09-08 (+2d) |  |
| 1.3.1.1.4.20.1 | **Ceiling Finishing works - Civil** | 2025-07-03 → 2025-07-04 (+1d) | 2025-09-06 → 2025-09-08 (+2d) |  |
| PG-10670 | Gypsum Plastering | 2025-07-03 → 2025-07-04 (+1d) | 2025-07-10 → 2025-07-11 (+1d) | 338.33d → 338.85d |
| PG-10671 | Cornice fixing | 2025-07-19 → 2025-07-21 (+2d) | 2025-07-24 → 2025-07-25 (+1d) | 338.33d → 338.85d |
| PG-10673 | Toilet False ceiling | 2025-07-28 → 2025-07-29 (+1d) | 2025-08-01 → 2025-08-02 (+1d) | 317.66d → 318.18d |
| PG-10672 | Painting Works - Putty, Primer and 1st | 2025-08-07 → 2025-08-08 (+1d) | 2025-08-14 → 2025-08-16 (+2d) | 326.33d → 326.85d |
| PG-10674 | Final Coat Painting | 2025-08-14 → 2025-08-16 (+2d) | 2025-09-06 → 2025-09-08 (+2d) | 326.33d → 326.85d |
| 1.3.1.1.4.20.2 | **Wall Finishing works - Civil** | 2025-06-24 → 2025-06-25 (+1d) | 2025-09-06 → 2025-09-08 (+2d) |  |
| PG-10675 | Balcony Railing Fixing works | 2025-06-24 → 2025-06-25 (+1d) | 2025-06-28 → 2025-06-30 (+2d) | 320.66d → 321.18d |
| PG-10677 | Dadoing - Wet area | 2025-07-15 → 2025-07-16 (+1d) | 2025-07-21 → 2025-07-22 (+1d) | 291.66d → 292.18d |
| PG-10676 | UPVC Windows & Sliding doors | 2025-08-01 → 2025-08-02 (+1d) | 2025-08-07 → 2025-08-08 (+1d) | 291.66d → 292.18d |
| PG-10678 | Painting Works - Putty, Primer and 1st | 2025-08-07 → 2025-08-08 (+1d) | 2025-08-14 → 2025-08-16 (+2d) | 291.66d → 292.18d |
| PG-10679 | Final Coat Painting | 2025-08-14 → 2025-08-16 (+2d) | 2025-09-06 → 2025-09-08 (+2d) | 291.66d → 292.18d |
| 1.3.1.1.4.20.3 | **Floor Finishing Works - Civil** | 2025-06-24 → 2025-06-25 (+1d) | 2025-08-14 → 2025-08-16 (+2d) |  |
| PG-10680 | Waterproofing for sunken areas | 2025-06-24 → 2025-06-25 (+1d) | 2025-06-27 → 2025-06-28 (+1d) | 311.66d → 312.18d |
| PG-10681 | Floor Tiling - Wet area | 2025-07-21 → 2025-07-22 (+1d) | 2025-07-26 → 2025-07-28 (+2d) | 291.66d → 292.18d |
| PG-10682 | Floor Tiling - Dry area | 2025-07-26 → 2025-07-28 (+2d) | 2025-08-01 → 2025-08-02 (+1d) | 291.66d → 292.18d |
| PG-10683 | Wooden doors | 2025-08-08 → 2025-08-09 (+1d) | 2025-08-14 → 2025-08-16 (+2d) | 291.66d → 292.18d |
| 1.3.1.1.4.21 | **Floor 18** | 2025-07-07 → 2025-07-08 (+1d) | 2025-09-19 → 2025-09-20 (+1d) |  |
| 1.3.1.1.4.21.1 | **Ceiling Finishing works - Civil** | 2025-07-16 → 2025-07-17 (+1d) | 2025-09-19 → 2025-09-20 (+1d) |  |
| PG-10684 | Gypsum Plastering | 2025-07-16 → 2025-07-17 (+1d) | 2025-07-23 → 2025-07-24 (+1d) | 327.33d → 327.85d |
| PG-10685 | Cornice fixing | 2025-08-01 → 2025-08-02 (+1d) | 2025-08-06 → 2025-08-07 (+1d) | 327.33d → 327.85d |
| PG-10687 | Toilet False ceiling | 2025-08-09 → 2025-08-11 (+2d) | 2025-08-14 → 2025-08-16 (+2d) | 306.66d → 307.18d |
| PG-10686 | Painting Works - Putty, Primer and 1st | 2025-08-21 → 2025-08-22 (+1d) | 2025-08-28 → 2025-08-29 (+1d) | 315.33d → 315.85d |
| PG-10688 | Final Coat Painting | 2025-08-28 → 2025-08-29 (+1d) | 2025-09-19 → 2025-09-20 (+1d) | 315.33d → 315.85d |
| 1.3.1.1.4.21.2 | **Wall Finishing works - Civil** | 2025-07-07 → 2025-07-08 (+1d) | 2025-09-19 → 2025-09-20 (+1d) |  |
| PG-10689 | Balcony Railing Fixing works | 2025-07-07 → 2025-07-08 (+1d) | 2025-07-11 → 2025-07-12 (+1d) | 309.66d → 310.18d |
| PG-10691 | Dadoing - Wet area | 2025-07-28 → 2025-07-29 (+1d) | 2025-08-02 → 2025-08-04 (+2d) | 280.66d → 281.18d |
| PG-10690 | UPVC Windows & Sliding doors | 2025-08-14 → 2025-08-16 (+2d) | 2025-08-21 → 2025-08-22 (+1d) | 280.66d → 281.18d |
| PG-10692 | Painting Works - Putty, Primer and 1st | 2025-08-21 → 2025-08-22 (+1d) | 2025-08-28 → 2025-08-29 (+1d) | 280.66d → 281.18d |
| PG-10693 | Final Coat Painting | 2025-08-28 → 2025-08-29 (+1d) | 2025-09-19 → 2025-09-20 (+1d) | 280.66d → 281.18d |
| 1.3.1.1.4.21.3 | **Floor Finishing Works - Civil** | 2025-07-07 → 2025-07-08 (+1d) | 2025-08-28 → 2025-08-29 (+1d) |  |
| PG-10694 | Waterproofing for sunken areas | 2025-07-07 → 2025-07-08 (+1d) | 2025-07-10 → 2025-07-11 (+1d) | 300.66d → 301.18d |
| PG-10695 | Floor Tiling - Wet area | 2025-08-02 → 2025-08-04 (+2d) | 2025-08-08 → 2025-08-09 (+1d) | 280.66d → 281.18d |
| PG-10696 | Floor Tiling - Dry area | 2025-08-08 → 2025-08-09 (+1d) | 2025-08-14 → 2025-08-16 (+2d) | 280.66d → 281.18d |
| PG-10697 | Wooden doors | 2025-08-22 → 2025-08-23 (+1d) | 2025-08-28 → 2025-08-29 (+1d) | 280.66d → 281.18d |
| 1.3.1.1.4.22 | **Floor 19** | 2025-07-29 → 2025-07-30 (+1d) | 2025-10-15 → 2025-10-16 (+1d) |  |
| 1.3.1.1.4.22.1 | **Ceiling Finishing works - Civil** | 2025-08-07 → 2025-08-08 (+1d) | 2025-10-15 → 2025-10-16 (+1d) |  |
| PG-10698 | Gypsum Plastering | 2025-08-07 → 2025-08-08 (+1d) | 2025-08-14 → 2025-08-16 (+2d) | 175.83d → 176.35d |
| PG-10699 | Cornice fixing | 2025-08-25 → 2025-08-26 (+1d) | 2025-08-29 → 2025-08-30 (+1d) | 175.83d → 176.35d |
| PG-10701 | Toilet False ceiling | 2025-09-02 → 2025-09-03 (+1d) | 2025-09-06 → 2025-09-08 (+2d) | 287.66d → 288.18d |
| PG-10700 | Painting Works - Putty, Primer and 1st | 2025-09-12 → 2025-09-13 (+1d) | 2025-09-19 → 2025-09-20 (+1d) | 163.83d → 164.35d |
| PG-10702 | Final Coat Painting | 2025-09-19 → 2025-09-20 (+1d) | 2025-10-15 → 2025-10-16 (+1d) | 294.33d → 294.85d |
| 1.3.1.1.4.22.2 | **Wall Finishing works - Civil** | 2025-07-29 → 2025-07-30 (+1d) | 2025-10-15 → 2025-10-16 (+1d) |  |
| PG-10703 | Balcony Railing Fixing works | 2025-07-29 → 2025-07-30 (+1d) | 2025-08-02 → 2025-08-04 (+2d) | 192.83d → 193.35d |
| PG-10705 | Dadoing - Wet area | 2025-08-20 → 2025-08-21 (+1d) | 2025-08-26 → 2025-08-27 (+1d) | 163.83d → 164.35d |
| PG-10704 | UPVC Windows & Sliding doors | 2025-09-06 → 2025-09-08 (+2d) | 2025-09-12 → 2025-09-13 (+1d) | 163.83d → 164.35d |
| PG-10706 | Painting Works - Putty, Primer and 1st | 2025-09-12 → 2025-09-13 (+1d) | 2025-09-19 → 2025-09-20 (+1d) | 259.66d → 260.18d |
| PG-10707 | Final Coat Painting | 2025-09-19 → 2025-09-20 (+1d) | 2025-10-15 → 2025-10-16 (+1d) | 259.66d → 260.18d |
| 1.3.1.1.4.22.3 | **Floor Finishing Works - Civil** | 2025-07-29 → 2025-07-30 (+1d) | 2025-09-19 → 2025-09-20 (+1d) |  |
| PG-10708 | Waterproofing for sunken areas | 2025-07-29 → 2025-07-30 (+1d) | 2025-08-01 → 2025-08-02 (+1d) | 183.83d → 184.35d |
| PG-10709 | Floor Tiling - Wet area | 2025-08-26 → 2025-08-27 (+1d) | 2025-09-01 → 2025-09-02 (+1d) | 163.83d → 164.35d |
| PG-10710 | Floor Tiling - Dry area | 2025-09-01 → 2025-09-02 (+1d) | 2025-09-06 → 2025-09-08 (+2d) | 163.83d → 164.35d |

| ID | Task | Start | Finish | Total float |
| --- | --- | --- | --- | --- |
| PG-10711 | Wooden doors | 2025-09-13 → 2025-09-15 (+2d) | 2025-09-19 → 2025-09-20 (+1d) | 259.66d → 260.18d |
| 1.3.1.1.4.23 | **Floor 20** | 2025-08-21 → 2025-08-22 (+1d) | 2025-11-06 → 2025-11-07 (+1d) |  |
| 1.3.1.1.4.23.1 | **Ceiling Finishing works - Civil** | 2025-08-30 → 2025-09-01 (+2d) | 2025-11-06 → 2025-11-07 (+1d) |  |
| PG-10712 | Gypsum Plastering | 2025-08-30 → 2025-09-01 (+2d) | 2025-09-06 → 2025-09-08 (+2d) | 287.16d → 287.68d |
| PG-10713 | Cornice fixing | 2025-09-16 → 2025-09-17 (+1d) | 2025-09-20 → 2025-09-22 (+2d) | 287.16d → 287.68d |
| PG-10715 | Toilet False ceiling | 2025-09-24 → 2025-09-25 (+1d) | 2025-09-29 → 2025-09-30 (+1d) | 267.16d → 267.68d |
| PG-10714 | Painting Works - Putty, Primer and 1st | 2025-10-06 → 2025-10-07 (+1d) | 2025-10-13 → 2025-10-14 (+1d) | 275.16d → 275.68d |
| PG-10716 | Final Coat Painting | 2025-10-13 → 2025-10-14 (+1d) | 2025-11-06 → 2025-11-07 (+1d) | 275.16d → 275.68d |
| 1.3.1.1.4.23.2 | **Wall Finishing works - Civil** | 2025-08-21 → 2025-08-22 (+1d) | 2025-11-06 → 2025-11-07 (+1d) |  |
| PG-10717 | Balcony Railing Fixing works | 2025-08-21 → 2025-08-22 (+1d) | 2025-08-26 → 2025-08-27 (+1d) | 269.49d → 270.01d |
| PG-10719 | Dadoing - Wet area | 2025-09-11 → 2025-09-12 (+1d) | 2025-09-17 → 2025-09-18 (+1d) | 240.49d → 241.01d |
| PG-10718 | UPVC Windows & Sliding doors | 2025-09-29 → 2025-09-30 (+1d) | 2025-10-06 → 2025-10-07 (+1d) | 240.49d → 241.01d |
| PG-10720 | Painting Works - Putty, Primer and 1st | 2025-10-06 → 2025-10-07 (+1d) | 2025-10-13 → 2025-10-14 (+1d) | 240.49d → 241.01d |
| PG-10721 | Final Coat Painting | 2025-10-13 → 2025-10-14 (+1d) | 2025-11-06 → 2025-11-07 (+1d) | 240.49d → 241.01d |
| 1.3.1.1.4.23.3 | **Floor Finishing Works - Civil** | 2025-08-21 → 2025-08-22 (+1d) | 2025-10-13 → 2025-10-14 (+1d) |  |
| PG-10722 | Waterproofing for sunken areas | 2025-08-21 → 2025-08-22 (+1d) | 2025-08-25 → 2025-08-26 (+1d) | 260.49d → 261.01d |
| PG-10723 | Floor Tiling - Wet area | 2025-09-17 → 2025-09-18 (+1d) | 2025-09-23 → 2025-09-24 (+1d) | 240.49d → 241.01d |
| PG-10724 | Floor Tiling - Dry area | 2025-09-23 → 2025-09-24 (+1d) | 2025-09-29 → 2025-09-30 (+1d) | 240.49d → 241.01d |
| PG-10725 | Wooden doors | 2025-10-07 → 2025-10-08 (+1d) | 2025-10-13 → 2025-10-14 (+1d) | 240.49d → 241.01d |
| 1.3.1.1.4.24 | **Floor 21** | 2025-09-12 → 2025-09-13 (+1d) | 2025-11-28 → 2025-11-29 (+1d) |  |
| 1.3.1.1.4.24.1 | **Ceiling Finishing works - Civil** | 2025-09-22 → 2025-09-23 (+1d) | 2025-11-28 → 2025-11-29 (+1d) |  |
| PG-10726 | Gypsum Plastering | 2025-09-22 → 2025-09-23 (+1d) | 2025-09-29 → 2025-09-30 (+1d) | 268.16d → 268.68d |
| PG-10727 | Cornice fixing | 2025-10-09 → 2025-10-10 (+1d) | 2025-10-14 → 2025-10-15 (+1d) | 268.16d → 268.68d |
| PG-10729 | Toilet False ceiling | 2025-10-17 → 2025-10-18 (+1d) | 2025-10-22 → 2025-10-23 (+1d) | 248.49d → 249.01d |
| PG-10728 | Painting Works - Putty, Primer and 1st | 2025-10-28 → 2025-10-29 (+1d) | 2025-11-05 → 2025-11-06 (+1d) | 256.16d → 256.68d |
| PG-10730 | Final Coat Painting | 2025-11-05 → 2025-11-06 (+1d) | 2025-11-28 → 2025-11-29 (+1d) | 256.16d → 256.68d |
| 1.3.1.1.4.24.2 | **Wall Finishing works - Civil** | 2025-09-12 → 2025-09-13 (+1d) | 2025-11-28 → 2025-11-29 (+1d) |  |
| PG-10731 | Balcony Railing Fixing works | 2025-09-12 → 2025-09-13 (+1d) | 2025-09-17 → 2025-09-18 (+1d) | 250.49d → 251.01d |
| PG-10733 | Dadoing - Wet area | 2025-10-04 → 2025-10-06 (+2d) | 2025-10-10 → 2025-10-11 (+1d) | 221.49d → 222.01d |
| PG-10732 | UPVC Windows & Sliding doors | 2025-10-22 → 2025-10-23 (+1d) | 2025-10-28 → 2025-10-29 (+1d) | 221.49d → 222.01d |
| PG-10734 | Painting Works - Putty, Primer and 1st | 2025-10-28 → 2025-10-29 (+1d) | 2025-11-05 → 2025-11-06 (+1d) | 221.49d → 222.01d |
| PG-10735 | Final Coat Painting | 2025-11-05 → 2025-11-06 (+1d) | 2025-11-28 → 2025-11-29 (+1d) | 221.49d → 222.01d |
| 1.3.1.1.4.24.3 | **Floor Finishing Works - Civil** | 2025-09-12 → 2025-09-13 (+1d) | 2025-11-05 → 2025-11-06 (+1d) |  |
| PG-10736 | Waterproofing for sunken areas | 2025-09-12 → 2025-09-13 (+1d) | 2025-09-16 → 2025-09-17 (+1d) | 241.49d → 242.01d |
| PG-10737 | Floor Tiling - Wet area | 2025-10-10 → 2025-10-11 (+1d) | 2025-10-16 → 2025-10-17 (+1d) | 221.49d → 222.01d |
| PG-10738 | Floor Tiling - Dry area | 2025-10-16 → 2025-10-17 (+1d) | 2025-10-22 → 2025-10-23 (+1d) | 221.49d → 222.01d |
| PG-10739 | Wooden doors | 2025-10-29 → 2025-10-30 (+1d) | 2025-11-05 → 2025-11-06 (+1d) | 221.49d → 222.01d |
| 1.3.1.1.4.25 | **Floor 22** | 2025-10-06 → 2025-10-07 (+1d) | 2025-12-20 → 2025-12-22 (+2d) |  |
| 1.3.1.1.4.25.1 | **Ceiling Finishing works - Civil** | 2025-10-15 → 2025-10-16 (+1d) | 2025-12-20 → 2025-12-22 (+2d) |  |
| PG-10740 | Gypsum Plastering | 2025-10-15 → 2025-10-16 (+1d) | 2025-10-22 → 2025-10-23 (+1d) | 249.16d → 249.68d |
| PG-10741 | Cornice fixing | 2025-10-31 → 2025-11-03 (+3d) | 2025-11-06 → 2025-11-07 (+1d) | 249.16d → 249.68d |
| PG-10743 | Toilet False ceiling | 2025-11-10 → 2025-11-11 (+1d) | 2025-11-14 → 2025-11-15 (+1d) | 228.49d → 229.01d |
| PG-10742 | Painting Works - Putty, Primer and 1st | 2025-11-20 → 2025-11-21 (+1d) | 2025-11-27 → 2025-11-28 (+1d) | 237.16d → 237.68d |
| PG-10744 | Final Coat Painting | 2025-11-27 → 2025-11-28 (+1d) | 2025-12-20 → 2025-12-22 (+2d) | 237.16d → 237.68d |
| 1.3.1.1.4.25.2 | **Wall Finishing works - Civil** | 2025-10-06 → 2025-10-07 (+1d) | 2025-12-20 → 2025-12-22 (+2d) |  |
| PG-10745 | Balcony Railing Fixing works | 2025-10-06 → 2025-10-07 (+1d) | 2025-10-10 → 2025-10-11 (+1d) | 230.49d → 231.01d |
| PG-10747 | Dadoing - Wet area | 2025-10-27 → 2025-10-28 (+1d) | 2025-11-03 → 2025-11-04 (+1d) | 201.49d → 202.01d |
| PG-10746 | UPVC Windows & Sliding doors | 2025-11-14 → 2025-11-15 (+1d) | 2025-11-20 → 2025-11-21 (+1d) | 201.49d → 202.01d |
| PG-10748 | Painting Works - Putty, Primer and 1st | 2025-11-20 → 2025-11-21 (+1d) | 2025-11-27 → 2025-11-28 (+1d) | 201.49d → 202.01d |
| PG-10749 | Final Coat Painting | 2025-11-27 → 2025-11-28 (+1d) | 2025-12-20 → 2025-12-22 (+2d) | 201.49d → 202.01d |
| 1.3.1.1.4.25.3 | **Floor Finishing Works - Civil** | 2025-10-06 → 2025-10-07 (+1d) | 2025-11-27 → 2025-11-28 (+1d) |  |
| PG-10750 | Waterproofing for sunken areas | 2025-10-06 → 2025-10-07 (+1d) | 2025-10-09 → 2025-10-10 (+1d) | 221.49d → 222.01d |
| PG-10751 | Floor Tiling - Wet area | 2025-11-03 → 2025-11-04 (+1d) | 2025-11-08 → 2025-11-10 (+2d) | 201.49d → 202.01d |
| PG-10752 | Floor Tiling - Dry area | 2025-11-08 → 2025-11-10 (+2d) | 2025-11-14 → 2025-11-15 (+1d) | 201.49d → 202.01d |
| PG-10753 | Wooden doors | 2025-11-21 → 2025-11-22 (+1d) | 2025-11-27 → 2025-11-28 (+1d) | 201.49d → 202.01d |
| 1.3.1.1.4.26 | **Floor 23** | 2025-10-28 → 2025-10-29 (+1d) | 2026-01-12 → 2026-01-13 (+1d) |  |
| 1.3.1.1.4.26.1 | **Ceiling Finishing works - Civil** | 2025-11-07 → 2025-11-08 (+1d) | 2026-01-12 → 2026-01-13 (+1d) |  |
| PG-10754 | Gypsum Plastering | 2025-11-07 → 2025-11-08 (+1d) | 2025-11-14 → 2025-11-15 (+1d) | 230.33d → 230.85d |
| PG-10755 | Cornice fixing | 2025-11-24 → 2025-11-25 (+1d) | 2025-11-28 → 2025-11-29 (+1d) | 230.33d → 230.85d |
| PG-10757 | Toilet False ceiling | 2025-12-02 → 2025-12-03 (+1d) | 2025-12-06 → 2025-12-08 (+2d) | 209.99d → 210.51d |
| PG-10756 | Painting Works - Putty, Primer and 1st | 2025-12-12 → 2025-12-13 (+1d) | 2025-12-19 → 2025-12-20 (+1d) | 218.33d → 218.85d |
| PG-10758 | Final Coat Painting | 2025-12-19 → 2025-12-20 (+1d) | 2026-01-12 → 2026-01-13 (+1d) | 218.33d → 218.85d |
| 1.3.1.1.4.26.2 | **Wall Finishing works - Civil** | 2025-10-28 → 2025-10-29 (+1d) | 2026-01-09 → 2026-01-10 (+1d) |  |
| PG-10759 | Balcony Railing Fixing works | 2025-10-28 → 2025-10-29 (+1d) | 2025-11-03 → 2025-11-04 (+1d) | 214.49d → 215.01d |
| PG-10761 | Dadoing - Wet area | 2025-11-19 → 2025-11-20 (+1d) | 2025-11-25 → 2025-11-26 (+1d) | 185.49d → 186.01d |
| PG-10760 | UPVC Windows & Sliding doors | 2025-12-06 → 2025-12-08 (+2d) | 2025-12-12 → 2025-12-13 (+1d) | 185.49d → 186.01d |
| PG-10762 | Painting Works - Putty, Primer and 1st | 2025-12-12 → 2025-12-13 (+1d) | 2025-12-19 → 2025-12-20 (+1d) | 185.49d → 186.01d |
| PG-10763 | Final Coat Painting | 2025-12-19 → 2025-12-20 (+1d) | 2026-01-09 → 2026-01-10 (+1d) | 185.49d → 186.01d |
| 1.3.1.1.4.26.3 | **Floor Finishing Works - Civil** | 2025-10-28 → 2025-10-29 (+1d) | 2025-12-19 → 2025-12-20 (+1d) |  |
| PG-10764 | Waterproofing for sunken areas | 2025-10-28 → 2025-10-29 (+1d) | 2025-10-31 → 2025-11-03 (+3d) | 205.49d → 206.01d |

| ID | Task | Start | Finish | Total float |
| --- | --- | --- | --- | --- |
| PG-10765 | Floor Tiling - Wet area | 2025-11-25 → 2025-11-26 (+1d) | 2025-12-01 → 2025-12-02 (+1d) | 185.49d → 186.01d |
| PG-10766 | Floor Tiling - Dry area | 2025-12-01 → 2025-12-02 (+1d) | 2025-12-06 → 2025-12-08 (+2d) | 185.49d → 186.01d |
| PG-10767 | Wooden doors | 2025-12-13 → 2025-12-15 (+2d) | 2025-12-19 → 2025-12-20 (+1d) | 185.49d → 186.01d |
| 1.3.1.1.4.27 | **External Finishing works** | 2025-08-04 → 2025-08-05 (+1d) | 2025-12-02 → 2025-12-03 (+1d) |  |
| PG-10768 | External walls tie rod hole plugging with GP2 | 2025-08-04 → 2025-08-05 (+1d) | 2025-09-09 → 2025-09-10 (+1d) | 249.66d → 250.18d |
| PG-10769 | External walls grinding works | 2025-08-28 → 2025-08-29 (+1d) | 2025-10-15 → 2025-10-16 (+1d) | 249.66d → 250.18d |
| PG-10770 | Texture and painting works | 2025-10-09 → 2025-10-10 (+1d) | 2025-12-02 → 2025-12-03 (+1d) | 249.66d → 250.18d |
| 1.3.1.1.5 | **Corridor & Fire Staircase Finishing works** | 2025-10-11 → 2025-10-13 (+2d) |  |  |
| 1.3.1.1.5.1 | **Ceiling Finishing works - Civil** | 2025-10-11 → 2025-10-13 (+2d) | 2026-01-22 → 2026-01-23 (+1d) |  |
| PG-10771 | Gypsum Plastering | 2025-10-11 → 2025-10-13 (+2d) | 2025-10-18 → 2025-10-20 (+2d) | 44.83d → 45.35d |
| PG-10772 | Cornice fixing | 2025-10-17 → 2025-10-18 (+1d) | 2025-10-22 → 2025-10-23 (+1d) | 175.83d → 176.35d |
| PG-10773 | Painting Works - Putty, Primer and 1st | 2025-11-06 → 2025-11-07 (+1d) | 2025-11-13 → 2025-11-14 (+1d) | 163.83d → 164.35d |
| PG-10774 | False ceiling | 2025-11-13 → 2025-11-14 (+1d) | 2025-12-18 → 2025-12-19 (+1d) | 163.83d → 164.35d |
| PG-10775 | Final Coat Painting | 2025-12-18 → 2025-12-19 (+1d) | 2026-01-22 → 2026-01-23 (+1d) | 178.83d → 179.35d |
| 1.3.1.1.5.2 | **Wall Finishing works - Civil** | 2025-11-18 → 2025-11-19 (+1d) |  |  |
| PG-10776 | UPVC Windows & Sliding doors | 2025-11-18 → 2025-11-19 (+1d) | 2025-11-24 → 2025-11-25 (+1d) | 169.83d → 170.35d |
| PG-10777 | Wall Cladding Upto 1.2 Mts | 2025-12-05 → 2025-12-06 (+1d) | 2025-12-29 → 2025-12-30 (+1d) | 169.83d → 170.35d |
| PG-10778 | Painting Works - Texture & one coat Painting works | 2026-01-05 → 2026-01-06 (+1d) | 2026-01-22 → 2026-01-23 (+1d) | 163.83d → 164.35d |
| 1.3.1.1.5.3 | **Floor Finishing Works - Civil** | 2025-10-18 → 2025-10-20 (+2d) | 2025-11-18 → 2025-11-19 (+1d) |  |
| PG-10780 | Fire Doors installation | 2025-10-18 → 2025-10-20 (+2d) | 2025-10-30 → 2025-10-31 (+1d) | 214.49d → 215.01d |
| PG-10781 | Verified tile flooring works | 2025-10-30 → 2025-10-31 (+1d) | 2025-11-18 → 2025-11-19 (+1d) | 214.49d → 215.01d |
| 1.3.1.1.5.4 | **Fire Staircase Finishing Works - Civil** | 2025-10-18 → 2025-10-20 (+2d) | 2026-02-09 → 2026-02-10 (+1d) |  |
| PG-10782 | Staircase Railing Fixing works | 2025-10-18 → 2025-10-20 (+2d) | 2025-11-12 → 2025-11-13 (+1d) | 44.83d → 45.35d |
| PG-10783 | Wall and ceiling Gypsum plastering | 2025-10-30 → 2025-10-31 (+1d) | 2025-12-05 → 2025-12-06 (+1d) | 44.83d → 45.35d |
| PG-10784 | Staircase Flooring and Skirting Works | 2025-11-18 → 2025-11-19 (+1d) | 2026-01-03 → 2026-01-05 (+2d) | 44.83d → 45.35d |
| PG-10785 | UPVC Window fixing works | 2026-01-03 → 2026-01-05 (+2d) | 2026-01-21 → 2026-01-22 (+1d) | 44.83d → 45.35d |
| PG-10786 | Staircase Painting works | 2026-01-15 → 2026-01-16 (+1d) | 2026-02-09 → 2026-02-10 (+1d) | 44.83d → 45.35d |
| 1.3.1.1.6 | **MEP Civil Works (Shaft, Lift Shaft & OHT )** | 2025-07-21 → 2025-07-22 (+1d) | 2026-01-09 → 2026-01-10 (+1d) |  |
| 1.3.1.1.6.1 | **Lift Shaft Works** | 2025-07-21 → 2025-07-22 (+1d) | 2026-01-09 → 2026-01-10 (+1d) |  |
| PG-10787 | Tie rod hole packing | 2025-07-21 → 2025-07-22 (+1d) | 2025-07-30 → 2025-07-31 (+1d) | 122.33d → 122.85d |
| PG-10788 | Grinding works | 2025-07-30 → 2025-07-31 (+1d) | 2025-08-05 → 2025-08-06 (+1d) | 122.33d → 122.85d |
| PG-10789 | Lift pit waterproofing works | 2025-08-05 → 2025-08-06 (+1d) | 2025-08-30 → 2025-09-01 (+2d) | 122.33d → 122.85d |
| PG-10790 | Shaft door opening finishing | 2025-08-30 → 2025-09-01 (+2d) | 2025-09-08 → 2025-09-09 (+1d) | 122.33d → 122.85d |
| PG-10791 | Painting works | 2025-09-08 → 2025-09-09 (+1d) | 2025-09-17 → 2025-09-18 (+1d) | 122.33d → 122.85d |
| PG-10792 | Lift Wall Cladding Works | 2025-12-23 → 2025-12-24 (+1d) | 2026-01-09 → 2026-01-10 (+1d) | 141.97d → 142.43d |
| 1.3.1.1.6.2 | **Electrical Shaft works** | 2025-07-21 → 2025-07-22 (+1d) | 2025-08-23 → 2025-08-25 (+2d) |  |
| PG-10793 | Tie rod hole packing | 2025-07-21 → 2025-07-22 (+1d) | 2025-07-30 → 2025-07-31 (+1d) | 261.16d → 261.68d |
| PG-10794 | Grinding works | 2025-07-30 → 2025-07-31 (+1d) | 2025-08-05 → 2025-08-06 (+1d) | 261.16d → 261.68d |
| PG-10795 | Shaft door opening finishing | 2025-08-05 → 2025-08-06 (+1d) | 2025-08-13 → 2025-08-14 (+1d) | 261.16d → 261.68d |
| PG-10796 | Painting works | 2025-08-13 → 2025-08-14 (+1d) | 2025-08-23 → 2025-08-25 (+2d) | 261.16d → 261.68d |
| 1.3.1.1.6.3 | **FPS Shaft works** | 2025-07-21 → 2025-07-22 (+1d) | 2025-08-23 → 2025-08-25 (+2d) |  |
| PG-10797 | Tie rod hole packing | 2025-07-21 → 2025-07-22 (+1d) | 2025-07-30 → 2025-07-31 (+1d) | 260.83d → 261.35d |
| PG-10798 | Grinding works | 2025-07-30 → 2025-07-31 (+1d) | 2025-08-05 → 2025-08-06 (+1d) | 260.83d → 261.35d |
| PG-10799 | Shaft door opening finishing | 2025-08-05 → 2025-08-06 (+1d) | 2025-08-13 → 2025-08-14 (+1d) | 260.83d → 261.35d |
| PG-10800 | Painting works | 2025-08-13 → 2025-08-14 (+1d) | 2025-08-23 → 2025-08-25 (+2d) | 260.83d → 261.35d |
| 1.3.1.1.6.4 | **PHE Shaft works** | 2025-07-21 → 2025-07-22 (+1d) | 2025-08-23 → 2025-08-25 (+2d) |  |
| PG-10801 | Tie rod hole packing | 2025-07-21 → 2025-07-22 (+1d) | 2025-07-30 → 2025-07-31 (+1d) | 219.49d → 220.01d |
| PG-10802 | Grinding works | 2025-07-30 → 2025-07-31 (+1d) | 2025-08-05 → 2025-08-06 (+1d) | 219.49d → 220.01d |
| PG-10803 | Shaft door opening finishing | 2025-08-05 → 2025-08-06 (+1d) | 2025-08-13 → 2025-08-14 (+1d) | 219.49d → 220.01d |
| PG-10804 | Painting works | 2025-08-13 → 2025-08-14 (+1d) | 2025-08-23 → 2025-08-25 (+2d) | 219.49d → 220.01d |
| 1.3.1.1.6.5 | **Data & Communication Shaft** | 2025-07-21 → 2025-07-22 (+1d) | 2025-08-21 → 2025-08-22 (+1d) |  |
| PG-10805 | Tie rod hole packing | 2025-07-21 → 2025-07-22 (+1d) | 2025-07-30 → 2025-07-31 (+1d) | 255.83d → 256.35d |
| PG-10806 | Grinding works | 2025-07-30 → 2025-07-31 (+1d) | 2025-08-05 → 2025-08-06 (+1d) | 255.83d → 256.35d |
| PG-10807 | Shaft door opening finishing | 2025-08-05 → 2025-08-06 (+1d) | 2025-08-11 → 2025-08-12 (+1d) | 255.83d → 256.35d |
| PG-10808 | Painting works | 2025-08-11 → 2025-08-12 (+1d) | 2025-08-21 → 2025-08-22 (+1d) | 255.83d → 256.35d |
| 1.3.1.1.6.6 | **OHT Works** | 2025-08-01 → 2025-08-02 (+1d) | 2025-09-20 → 2025-09-22 (+2d) |  |
| PG-10809 | Tank materials Supply & Shifting | 2025-08-01 → 2025-08-02 (+1d) | 2025-08-13 → 2025-08-14 (+1d) | 217.83d → 218.35d |
| PG-10810 | Assembling OHT FRP Tank | 2025-08-13 → 2025-08-14 (+1d) | 2025-08-26 → 2025-08-27 (+1d) | 217.83d → 218.35d |
| PG-10811 | Installation of OHT Tank | 2025-08-26 → 2025-08-27 (+1d) | 2025-09-12 → 2025-09-13 (+1d) | 217.83d → 218.35d |
| PG-10812 | Water tightness works and checking | 2025-09-12 → 2025-09-13 (+1d) | 2025-09-20 → 2025-09-22 (+2d) | 217.83d → 218.35d |
| 1.3.1.1.7 | **MEP Shaft works** | 2025-08-21 → 2025-08-22 (+1d) | 2025-11-14 → 2025-11-15 (+1d) |  |
| 1.3.1.1.7.1 | **Electrical** | 2025-08-23 → 2025-08-25 (+2d) | 2025-10-04 → 2025-10-06 (+2d) |  |
| PG-10813 | Tray Works | 2025-08-23 → 2025-08-25 (+2d) | 2025-09-04 → 2025-09-05 (+1d) | 261.16d → 261.68d |
| PG-10814 | Cable & Conducting works | 2025-09-04 → 2025-09-05 (+1d) | 2025-09-16 → 2025-09-17 (+1d) | 261.16d → 261.68d |
| PG-10815 | Wiring/DB/connector box installation and termination works | 2025-09-16 → 2025-09-17 (+1d) | 2025-10-04 → 2025-10-06 (+2d) | 261.16d → 261.68d |
| 1.3.1.1.7.2 | **FPS** | 2025-08-23 → 2025-08-25 (+2d) | 2025-10-04 → 2025-10-06 (+2d) |  |
| PG-10816 | Shaft MS Piping & fixtures installation | 2025-08-23 → 2025-08-25 (+2d) | 2025-09-16 → 2025-09-17 (+1d) | 260.83d → 261.35d |
| PG-10817 | Tray / cabling / conducting & wiring works | 2025-09-16 → 2025-09-17 (+1d) | 2025-10-04 → 2025-10-06 (+2d) | 260.83d → 261.35d |
| 1.3.1.1.7.3 | **Data & Communication** | 2025-08-21 → 2025-08-22 (+1d) | 2025-10-10 → 2025-10-11 (+1d) |  |
| PG-10818 | Tray Works | 2025-08-21 → 2025-08-22 (+1d) | 2025-09-04 → 2025-09-05 (+1d) | 255.83d → 256.35d |

| ID | Task | Start | Finish | Complete | Total float |
| --- | --- | --- | --- | --- | --- |
| PG-10819 | Tray / cabling / conducting & wiring works | 2025-09-04 → 2025-09-05 (+1d) | 2025-09-22 → 2025-09-23 (+1d) |  | 255.83d → 256.35d |
| PG-10820 | Wiring/DB/connector box installation and termination works | 2025-09-22 → 2025-09-23 (+1d) | 2025-10-10 → 2025-10-11 (+1d) |  | 255.83d → 256.35d |
| 1.3.1.1.7.4 | **PHE** | 2025-08-23 → 2025-08-25 (+2d) | 2025-11-14 → 2025-11-15 (+1d) |  |  |
| PG-10821 | Bracket fixing works | 2025-08-23 → 2025-08-25 (+2d) | 2025-09-01 → 2025-09-02 (+1d) |  | 219.49d → 220.01d |
| PG-10822 | Piping Works | 2025-09-01 → 2025-09-02 (+1d) | 2025-09-18 → 2025-09-19 (+1d) |  | 219.49d → 220.01d |
| PG-10823 | Terrace Ring main & OHT Connection works | 2025-09-20 → 2025-09-22 (+2d) | 2025-11-08 → 2025-11-10 (+2d) |  | 217.83d → 218.35d |
| PG-10824 | Commissioning | 2025-11-08 → 2025-11-10 (+2d) | 2025-11-14 → 2025-11-15 (+1d) |  | 217.83d → 218.35d |
| 1.3.1.1.8 | **Lift Installation and Testing works** | 2025-08-05 → 2025-08-06 (+1d) | 2026-03-27 → 2026-03-28 (+1d) |  |  |
| PG-10825 | Lift Shaft Survey works | 2025-08-05 → 2025-08-06 (+1d) | 2025-08-18 → 2025-08-19 (+1d) |  | 148.83d → 149.35d |
| PG-10826 | Guide Rails fixing works | 2025-09-17 → 2025-09-18 (+1d) | 2025-11-05 → 2025-11-06 (+1d) |  | 122.33d → 122.85d |
| PG-10827 | Lift Frame fixing works | 2025-11-24 → 2025-11-25 (+1d) | 2025-12-23 → 2025-12-24 (+1d) |  | 106.97d → 107.43d |
| PG-10828 | CAR Assembly works | 2025-12-23 → 2025-12-24 (+1d) | 2026-01-15 → 2026-01-16 (+1d) |  | 106.97d → 107.43d |
| PG-10829 | Lift Machine Room Works | 2026-01-15 → 2026-01-16 (+1d) | 2026-02-20 → 2026-02-21 (+1d) |  | 106.97d → 107.43d |
| PG-10830 | Slow Speed & High Speed Testing works | 2026-02-20 → 2026-02-21 (+1d) | 2026-03-27 → 2026-03-28 (+1d) |  | 106.97d → 107.43d |
| 1.3.1.1.9 | **Electrical Panel Works** | 2025-07-19 → 2025-07-21 (+2d) | 2026-02-25 → 2026-02-26 (+1d) |  |  |
| 1.3.1.1.9.1 | **Civil Finishing Works** | 2025-07-19 → 2025-07-21 (+2d) | 2025-09-03 → 2025-09-04 (+1d) |  |  |
| PG-10831 | Wall Tie rod hole packing & Grinding works. | 2025-07-19 → 2025-07-21 (+2d) | 2025-08-06 → 2025-08-07 (+1d) |  | 131.16d → 131.68d |
| PG-10832 | Window, Louver and Door fixing works | 2025-08-06 → 2025-08-07 (+1d) | 2025-08-14 → 2025-08-16 (+2d) |  | 131.16d → 131.68d |
| PG-10833 | Pedestal works | 2025-08-14 → 2025-08-16 (+2d) | 2025-08-27 → 2025-08-28 (+1d) |  | 131.16d → 131.68d |
| PG-10834 | Painting works | 2025-08-27 → 2025-08-28 (+1d) | 2025-09-03 → 2025-09-04 (+1d) |  | 131.16d → 131.68d |
| 1.3.1.1.9.2 | **Electrical Panel works** | 2025-09-03 → 2025-09-04 (+1d) | 2026-02-25 → 2026-02-26 (+1d) |  |  |
| PG-10835 | Electrical Panel assembly works | 2025-09-03 → 2025-09-04 (+1d) | 2025-11-12 → 2025-11-13 (+1d) |  | 131.16d → 131.68d |
| PG-10836 | Electrical Panel installation and cable termination. | 2025-11-12 → 2025-11-13 (+1d) | 2026-01-21 → 2026-01-22 (+1d) |  | 131.16d → 131.68d |
| PG-10837 | Electrical Panel Testing and commissioning works | 2026-01-21 → 2026-01-22 (+1d) | 2026-02-25 → 2026-02-26 (+1d) |  | 131.16d → 131.68d |
| 1.3.1.1.10 | **Entrance Lobby works** | 2026-02-09 → 2026-02-10 (+1d) | 2026-06-29 → 2026-06-30 (+1d) |  |  |
| PG-10838 | Flooring Works | 2026-02-09 → 2026-02-10 (+1d) | 2026-03-17 → 2026-03-18 (+1d) |  | 44.83d → 45.35d |
| PG-10839 | Glass Door and False ceiling Works | 2026-03-17 → 2026-03-18 (+1d) | 2026-04-21 → 2026-04-22 (+1d) |  | 44.83d → 45.35d |
| PG-10841 | Canopy Works | 2026-03-17 → 2026-03-18 (+1d) | 2026-04-16 → 2026-04-17 (+1d) |  | 63.66d → 64.18d |
| PG-10840 | Painting Works | 2026-04-21 → 2026-04-22 (+1d) |  |  | 44.83d → 45.35d |
| PG-10842 | Interior Works |  | 2026-06-29 → 2026-06-30 (+1d) |  | 44.83d → 45.35d |
| 1.3.1.1.11 | **Lightening Arrester works** | 2025-12-02 → 2025-12-03 (+1d) | 2025-12-15 → 2025-12-16 (+1d) |  |  |
| PG-10843 | Conductor will be lifted with RCC Works, But Terrace works will be done once Parapet Painting done | 2025-12-02 → 2025-12-03 (+1d) | 2025-12-15 → 2025-12-16 (+1d) |  | 249.66d → 250.18d |
| 1.3.1.2 | **Tower 2 ( 2B+G+26 ) TYP 4 Units - 106 Units** |  | 2026-08-04 → 2026-08-05 (+1d) |  |  |
| 1.3.1.2.2 | **Structure works** |  | 2025-09-24 → 2025-09-25 (+1d) |  |  |
| 1.3.1.2.2.21 | **Floor 18** |  | 2025-05-03 → 2025-05-05 (+2d) |  |  |
| 1.3.1.2.2.21.1 | **Columns / shear walls** |  | 2025-04-28 → 2025-04-29 (+1d) |  |  |
| PG-10958 | Reinforcement |  | 2025-04-25 → 2025-04-26 A (+1d) | 84% → 100% | 15.18d → none |
| PG-10959 | Formwork |  | 2025-04-28 → 2025-04-29 A (+1d) | 27% → 100% | 14.9d → none |
| 1.3.1.2.2.21.2 | **Slab, Beams & Staircase** | 2025-04-26 → 2025-04-28 (+2d) | 2025-05-03 → 2025-05-05 (+2d) |  |  |
| PG-10960 | Formwork | 2025-04-26 → 2025-04-28 A (+2d) | 2025-04-30 → 2025-05-02 A (+2d) | 0% → 100% | 14.9d → none |
| PG-10961 | Reinforcement | 2025-04-29 → 2025-05-01 A (+2d) | 2025-05-02 → 2025-05-03 (+1d) | 0% → 46% | 14.9d → 15.26d |
| PG-10962 | Concrete | 2025-05-02 → 2025-05-05 (+3d) | 2025-05-03 → 2025-05-05 (+2d) |  | 14.9d → 15.26d |
| 1.3.1.2.2.22 | **Floor 19** | 2025-05-03 → 2025-05-06 (+3d) | 2025-05-16 → 2025-05-17 (+1d) |  |  |
| 1.3.1.2.2.22.1 | **Columns / shear walls** | 2025-05-03 → 2025-05-06 (+3d) | 2025-05-10 → 2025-05-12 (+2d) |  |  |
| PG-10963 | Reinforcement | 2025-05-03 → 2025-05-06 (+3d) | 2025-05-08 → 2025-05-09 (+1d) |  | 14.9d → 15.26d |
| PG-10964 | Formwork | 2025-05-06 → 2025-05-08 (+2d) | 2025-05-10 → 2025-05-12 (+2d) |  | 14.9d → 15.26d |
| 1.3.1.2.2.22.2 | **Slab, Beams & Staircase** | 2025-05-09 → 2025-05-12 (+3d) | 2025-05-16 → 2025-05-17 (+1d) |  |  |
| PG-10965 | Formwork | 2025-05-09 → 2025-05-12 (+3d) | 2025-05-13 → 2025-05-14 (+1d) |  | 14.9d → 15.26d |
| PG-10966 | Reinforcement | 2025-05-12 → 2025-05-14 (+2d) | 2025-05-15 → 2025-05-16 (+1d) |  | 14.9d → 15.26d |
| PG-10967 | Concrete | 2025-05-15 → 2025-05-17 (+2d) | 2025-05-16 → 2025-05-17 (+1d) |  | 14.9d → 15.26d |
| 1.3.1.2.2.23 | **Floor 20** | 2025-05-16 → 2025-05-19 (+3d) | 2025-05-29 → 2025-05-30 (+1d) |  |  |
| 1.3.1.2.2.23.1 | **Columns / shear walls** | 2025-05-16 → 2025-05-19 (+3d) | 2025-05-23 → 2025-05-24 (+1d) |  |  |
| PG-10968 | Reinforcement | 2025-05-16 → 2025-05-19 (+3d) | 2025-05-21 → 2025-05-22 (+1d) |  | 14.9d → 15.26d |
| PG-10969 | Formwork | 2025-05-19 → 2025-05-21 (+2d) | 2025-05-23 → 2025-05-24 (+1d) |  | 14.9d → 15.26d |
| 1.3.1.2.2.23.2 | **Slab, Beams & Staircase** | 2025-05-22 → 2025-05-24 (+2d) | 2025-05-29 → 2025-05-30 (+1d) |  |  |
| PG-10970 | Formwork | 2025-05-22 → 2025-05-24 (+2d) | 2025-05-26 → 2025-05-27 (+1d) |  | 14.9d → 15.26d |
| PG-10971 | Reinforcement | 2025-05-24 → 2025-05-27 (+3d) | 2025-05-28 → 2025-05-29 (+1d) |  | 14.9d → 15.26d |
| PG-10972 | Concrete | 2025-05-28 → 2025-05-30 (+2d) | 2025-05-29 → 2025-05-30 (+1d) |  | 14.9d → 15.26d |
| 1.3.1.2.2.24 | **Floor 21** | 2025-05-29 → 2025-05-31 (+2d) | 2025-06-11 → 2025-06-12 (+1d) |  |  |
| 1.3.1.2.2.24.1 | **Columns / shear walls** | 2025-05-29 → 2025-05-31 (+2d) | 2025-06-05 → 2025-06-06 (+1d) |  |  |
| PG-10973 | Reinforcement | 2025-05-29 → 2025-05-31 (+2d) | 2025-06-03 → 2025-06-04 (+1d) |  | 14.9d → 15.26d |
| PG-10974 | Formwork | 2025-05-31 → 2025-06-03 (+3d) | 2025-06-05 → 2025-06-06 (+1d) |  | 14.9d → 15.26d |
| 1.3.1.2.2.24.2 | **Slab, Beams & Staircase** | 2025-06-04 → 2025-06-06 (+2d) | 2025-06-11 → 2025-06-12 (+1d) |  |  |
| PG-10975 | Formwork | 2025-06-04 → 2025-06-06 (+2d) | 2025-06-07 → 2025-06-09 (+2d) |  | 14.9d → 15.26d |
| PG-10976 | Reinforcement | 2025-06-06 → 2025-06-09 (+3d) | 2025-06-10 → 2025-06-11 (+1d) |  | 14.9d → 15.26d |
| PG-10977 | Concrete | 2025-06-10 → 2025-06-12 (+2d) | 2025-06-11 → 2025-06-12 (+1d) |  | 14.9d → 15.26d |
| 1.3.1.2.2.25 | **Floor 22** | 2025-06-11 → 2025-06-13 (+2d) | 2025-06-24 → 2025-06-25 (+1d) |  |  |
| 1.3.1.2.2.25.1 | **Columns / shear walls** | 2025-06-11 → 2025-06-13 (+2d) | 2025-06-18 → 2025-06-19 (+1d) |  |  |
| PG-10978 | Reinforcement | 2025-06-11 → 2025-06-13 (+2d) | 2025-06-16 → 2025-06-17 (+1d) |  | 14.9d → 15.26d |
| PG-10979 | Formwork | 2025-06-13 → 2025-06-16 (+3d) | 2025-06-18 → 2025-06-19 (+1d) |  | 14.9d → 15.26d |

| ID | Task | Start | Finish | Complete | Total float |
| --- | --- | --- | --- | --- | --- |
| 1.3.1.2.2.25.2 | **Slab, Beams & Staircase** | 2025-06-17 → 2025-06-19 (+2d) | 2025-06-24 → 2025-06-25 (+1d) |  |  |
| PG-10980 | Formwork | 2025-06-17 → 2025-06-19 (+2d) | 2025-06-20 → 2025-06-21 (+1d) |  | 14.9d → 15.26d |
| PG-10981 | Reinforcement | 2025-06-19 → 2025-06-21 (+2d) | 2025-06-23 → 2025-06-24 (+1d) |  | 14.9d → 15.26d |
| PG-10982 | Concrete | 2025-06-23 → 2025-06-25 (+2d) | 2025-06-24 → 2025-06-25 (+1d) |  | 14.9d → 15.26d |
| 1.3.1.2.2.26 | **Floor 23** | 2025-06-24 → 2025-06-26 (+2d) | 2025-07-07 → 2025-07-08 (+1d) |  |  |
| 1.3.1.2.2.26.1 | **Columns / shear walls** | 2025-06-24 → 2025-06-26 (+2d) | 2025-07-01 → 2025-07-02 (+1d) |  |  |
| PG-10983 | Reinforcement | 2025-06-24 → 2025-06-26 (+2d) | 2025-06-28 → 2025-06-30 (+2d) |  | 14.9d → 15.26d |
| PG-10984 | Formwork | 2025-06-26 → 2025-06-28 (+2d) | 2025-07-01 → 2025-07-02 (+1d) |  | 14.9d → 15.26d |
| 1.3.1.2.2.26.2 | **Slab, Beams & Staircase** | 2025-06-30 → 2025-07-02 (+2d) | 2025-07-07 → 2025-07-08 (+1d) |  |  |
| PG-10985 | Formwork | 2025-06-30 → 2025-07-02 (+2d) | 2025-07-03 → 2025-07-04 (+1d) |  | 14.9d → 15.26d |
| PG-10986 | Reinforcement | 2025-07-02 → 2025-07-04 (+2d) | 2025-07-05 → 2025-07-07 (+2d) |  | 14.9d → 15.26d |
| PG-10987 | Concrete | 2025-07-05 → 2025-07-08 (+3d) | 2025-07-07 → 2025-07-08 (+1d) |  | 14.9d → 15.26d |
| 1.3.1.2.2.27 | **Floor 24** | 2025-07-07 → 2025-07-09 (+2d) | 2025-07-19 → 2025-07-21 (+2d) |  |  |
| 1.3.1.2.2.27.1 | **Columns / shear walls** | 2025-07-07 → 2025-07-09 (+2d) | 2025-07-14 → 2025-07-15 (+1d) |  |  |
| PG-10988 | Reinforcement | 2025-07-07 → 2025-07-09 (+2d) | 2025-07-11 → 2025-07-12 (+1d) |  | 14.9d → 15.26d |
| PG-10989 | Formwork | 2025-07-09 → 2025-07-11 (+2d) | 2025-07-14 → 2025-07-15 (+1d) |  | 14.9d → 15.26d |
| 1.3.1.2.2.27.2 | **Slab, Beams & Staircase** | 2025-07-12 → 2025-07-15 (+3d) | 2025-07-19 → 2025-07-21 (+2d) |  |  |
| PG-10990 | Formwork | 2025-07-12 → 2025-07-15 (+3d) | 2025-07-16 → 2025-07-17 (+1d) |  | 14.9d → 15.26d |
| PG-10991 | Reinforcement | 2025-07-15 → 2025-07-17 (+2d) | 2025-07-18 → 2025-07-19 (+1d) |  | 14.9d → 15.26d |
| PG-10992 | Concrete | 2025-07-18 → 2025-07-21 (+3d) | 2025-07-19 → 2025-07-21 (+2d) |  | 14.9d → 15.26d |
| 1.3.1.2.2.28 | **Floor 25** | 2025-07-19 → 2025-07-22 (+3d) | 2025-08-01 → 2025-08-02 (+1d) |  |  |
| 1.3.1.2.2.28.1 | **Columns / shear walls** | 2025-07-19 → 2025-07-22 (+3d) | 2025-07-26 → 2025-07-28 (+2d) |  |  |
| PG-10993 | Reinforcement | 2025-07-19 → 2025-07-22 (+3d) | 2025-07-24 → 2025-07-25 (+1d) |  | 14.9d → 15.26d |
| PG-10994 | Formwork | 2025-07-22 → 2025-07-24 (+2d) | 2025-07-26 → 2025-07-28 (+2d) |  | 14.9d → 15.26d |
| 1.3.1.2.2.28.2 | **Slab, Beams & Staircase** | 2025-07-25 → 2025-07-28 (+3d) | 2025-08-01 → 2025-08-02 (+1d) |  |  |
| PG-10995 | Formwork | 2025-07-25 → 2025-07-28 (+3d) | 2025-07-29 → 2025-07-30 (+1d) |  | 14.9d → 15.26d |
| PG-10996 | Reinforcement | 2025-07-28 → 2025-07-30 (+2d) | 2025-07-31 → 2025-08-01 (+1d) |  | 14.9d → 15.26d |
| PG-10997 | Concrete | 2025-07-31 → 2025-08-02 (+2d) | 2025-08-01 → 2025-08-02 (+1d) |  | 14.9d → 15.26d |
| 1.3.1.2.2.29 | **Floor 26** | 2025-08-01 → 2025-08-04 (+3d) | 2025-08-14 → 2025-08-16 (+2d) |  |  |
| 1.3.1.2.2.29.1 | **Columns / shear walls** | 2025-08-01 → 2025-08-04 (+3d) | 2025-08-08 → 2025-08-09 (+1d) |  |  |
| PG-10998 | Reinforcement | 2025-08-01 → 2025-08-04 (+3d) | 2025-08-06 → 2025-08-07 (+1d) |  | 14.9d → 15.26d |
| PG-10999 | Formwork | 2025-08-04 → 2025-08-06 (+2d) | 2025-08-08 → 2025-08-09 (+1d) |  | 14.9d → 15.26d |
| 1.3.1.2.2.29.2 | **Slab, Beams & Staircase** | 2025-08-07 → 2025-08-09 (+2d) | 2025-08-14 → 2025-08-16 (+2d) |  |  |
| PG-11000 | Formwork | 2025-08-07 → 2025-08-09 (+2d) | 2025-08-11 → 2025-08-12 (+1d) |  | 14.9d → 15.26d |
| PG-11001 | Reinforcement | 2025-08-09 → 2025-08-12 (+3d) | 2025-08-13 → 2025-08-14 (+1d) |  | 14.9d → 15.26d |
| PG-11002 | Concrete | 2025-08-13 → 2025-08-16 (+3d) | 2025-08-14 → 2025-08-16 (+2d) |  | 14.9d → 15.26d |
| 1.3.1.2.2.30 | **Above Terrace Floor** | 2025-08-14 → 2025-08-18 (+4d) | 2025-09-24 → 2025-09-25 (+1d) |  |  |
| 1.3.1.2.2.30.1 | **Columns / shear walls/Parapet Walls** | 2025-08-14 → 2025-08-18 (+4d) | 2025-08-29 → 2025-08-30 (+1d) |  |  |
| PG-11003 | Reinforcement | 2025-08-14 → 2025-08-18 (+4d) | 2025-08-20 → 2025-08-21 (+1d) |  | 120.4d → 120.76d |
| PG-11004 | Formwork | 2025-08-18 → 2025-08-20 (+2d) | 2025-08-23 → 2025-08-25 (+2d) |  | 120.4d → 120.76d |
| PG-11005 | Concrete | 2025-08-23 → 2025-08-26 (+3d) | 2025-08-29 → 2025-08-30 (+1d) |  | 120.4d → 120.76d |
| 1.3.1.2.2.30.2 | **Slab, Beams & Staircase Head rooms, Lift headroom** | 2025-08-21 → 2025-08-23 (+2d) | 2025-09-24 → 2025-09-25 (+1d) |  |  |
| PG-11009 | Terrace Waterproofing and Protective finishing. | 2025-08-21 → 2025-08-23 (+2d) | 2025-09-24 → 2025-09-25 (+1d) |  | 213.07d → 213.43d |
| PG-11006 | Formwork | 2025-08-29 → 2025-08-30 (+1d) | 2025-09-04 → 2025-09-05 (+1d) |  | 213.07d → 213.43d |
| PG-11007 | Reinforcement | 2025-09-04 → 2025-09-05 (+1d) | 2025-09-10 → 2025-09-11 (+1d) |  | 213.07d → 213.43d |
| PG-11008 | Concrete | 2025-09-10 → 2025-09-11 (+1d) | 2025-09-12 → 2025-09-13 (+1d) |  | 213.07d → 213.43d |
| 1.3.1.2.3 | **MEP Internal works** |  | 2026-02-23 → 2026-02-24 (+1d) |  |  |
| PG-11082 | Final Fix - CP & Sanitary fixtures |  | 2025-05-01 A | 56% → 100% | 405.33d → none |
| PG-11085 | Final Fix - Smoke & heat detectors, FHC , FAS Etc. |  | 2025-05-01 A | 52% → 100% | 405.33d → none |
| PG-11088 | Final Fix - Electrical Fixtures |  | 2025-05-01 A | 17% → 100% | 405.33d → none |
| PG-11102 | 2nd Fix - Sprinkler fixing & Pressure testing | 2025-04-25 → 2025-04-26 A (+1d) | 2025-05-07 → 2025-05-08 (+1d) | 0% → 47% | 390.52d → 390.93d |
| PG-11105 | 2nd Fix - Wiring works |  |  | 22% → 63% | 394.02d → 395.45d |
| PG-11106 | Final Fix - Electrical Fixtures | 2025-05-22 → 2025-05-23 (+1d) |  |  | 381.35d → 382.31d |
| 1.3.1.2.3.13 | **Floor 10** |  | 2025-06-13 → 2025-06-14 (+1d) |  |  |
| 1.3.1.2.3.13.1 | **PHE Works** |  | 2025-06-13 → 2025-06-14 (+1d) |  |  |
| PG-11109 | Final Fix - CP & Sanitary fixtures | 2025-06-02 → 2025-06-03 (+1d) | 2025-06-13 → 2025-06-14 (+1d) |  | 367.93d → 368.35d |
| 1.3.1.2.3.13.2 | **Fire Fighting Works** |  | 2025-06-13 → 2025-06-14 (+1d) |  |  |
| PG-11111 | 2nd Fix - Sprinkler fixing & Pressure testing | 2025-05-12 → 2025-05-13 (+1d) | 2025-05-23 → 2025-05-24 (+1d) |  | 375.76d → 376.18d |
| PG-11112 | Final Fix - Smoke & heat detectors, FHC , FAS Etc. | 2025-06-02 → 2025-06-03 (+1d) | 2025-06-13 → 2025-06-14 (+1d) |  | 367.93d → 368.35d |
| 1.3.1.2.3.13.3 | **Electrical Works** |  | 2025-06-13 → 2025-06-14 (+1d) |  |  |
| PG-11114 | 2nd Fix - Wiring works | 2025-05-07 → 2025-05-08 (+1d) | 2025-05-22 → 2025-05-23 (+1d) |  | 381.6d → 382.01d |
| PG-11115 | Final Fix - Electrical Fixtures | 2025-06-07 → 2025-06-09 (+2d) | 2025-06-13 → 2025-06-14 (+1d) |  | 367.93d → 368.35d |
| 1.3.1.2.3.14 | **Floor 11** |  | 2025-06-28 → 2025-06-27 (-1d) |  |  |
| 1.3.1.2.3.14.1 | **PHE Works** |  | 2025-06-28 → 2025-06-27 (-1d) |  |  |
| PG-11117 | 2nd Fix - diverter fixing & Pressure testing |  | 2025-04-30 A | 63% → 100% | 355.75d → none |
| PG-11118 | Final Fix - CP & Sanitary fixtures | 2025-06-16 → 2025-06-14 (-2d) | 2025-06-28 → 2025-06-27 (-1d) |  | 355.75d → 357.91d |
| 1.3.1.2.3.14.2 | **Fire Fighting Works** |  | 2025-06-28 → 2025-06-27 (-1d) |  |  |
| PG-11119 | 1st Fix - Piping and Shaft hydrant works |  | 2025-05-01 → 2025-05-02 A (+1d) | 53% → 100% | 403.83d → none |
| PG-11121 | Final Fix - Smoke & heat detectors, FHC , FAS Etc. | 2025-06-16 → 2025-06-14 (-2d) | 2025-06-28 → 2025-06-27 (-1d) |  | 355.75d → 357.91d |
| 1.3.1.2.3.14.3 | **Electrical Works** |  | 2025-06-28 → 2025-06-27 (-1d) |  |  |

| ID | Task | Start | Finish | Complete | Total float |
| --- | --- | --- | --- | --- | --- |
| PG-11123 | 2nd Fix - Wiring works | 2025-05-22 → 2025-05-21 (-1d) |  |  | 369.42d → 371.58d |
| PG-11124 | Final Fix - Electrical Fixtures | 2025-06-21 → 2025-06-20 (-1d) | 2025-06-28 → 2025-06-27 (-1d) |  | 355.75d → 357.91d |
| 1.3.1.2.3.15 | **Floor 12** |  | 2025-07-10 → 2025-07-11 (+1d) |  |  |
| 1.3.1.2.3.15.1 | **PHE Works** |  | 2025-07-10 → 2025-07-11 (+1d) |  |  |
| PG-11125 | 1st Fix - Piping works |  |  | 23% → 73% | 345.27d → 346.7d |
| PG-11126 | 2nd Fix - diverter fixing & Pressure testing | 2025-05-01 → 2025-05-02 A (+1d) |  | 0% → 4% | 345.27d → 346.28d |
| PG-11127 | Final Fix - CP & Sanitary fixtures |  | 2025-07-10 → 2025-07-11 (+1d) |  | 345.27d → 346.28d |
| 1.3.1.2.3.15.2 | **Fire Fighting Works** | 2025-05-01 → 2025-05-02 (+1d) | 2025-07-10 → 2025-07-11 (+1d) |  |  |
| PG-11128 | 1st Fix - Piping and Shaft hydrant works | 2025-05-01 → 2025-05-02 (+1d) | 2025-05-14 → 2025-05-15 (+1d) |  | 393.14d → 394.41d |
| PG-11130 | Final Fix - Smoke & heat detectors, FHC , FAS Etc. |  | 2025-07-10 → 2025-07-11 (+1d) |  | 345.27d → 346.28d |
| 1.3.1.2.3.15.3 | **Electrical Works** |  | 2025-07-10 → 2025-07-11 (+1d) |  |  |
| PG-11131 | 1st Fix - GI wire pulling |  | 2025-04-30 → 2025-05-01 A (+1d) | 38% → 100% | 393.14d → none |
| PG-11133 | Final Fix - Electrical Fixtures |  | 2025-07-10 → 2025-07-11 (+1d) |  | 345.27d → 346.28d |
| 1.3.1.2.3.16 | **Floor 13** | 2025-05-03 → 2025-05-06 (+3d) | 2025-07-24 → 2025-07-25 (+1d) |  |  |
| 1.3.1.2.3.16.1 | **PHE Works** | 2025-05-03 → 2025-05-06 (+3d) | 2025-07-24 → 2025-07-25 (+1d) |  |  |
| PG-11134 | 1st Fix - Piping works | 2025-05-03 → 2025-05-06 (+3d) | 2025-05-17 → 2025-05-19 (+2d) |  | 334.57d → 334.93d |
| PG-11135 | 2nd Fix - diverter fixing & Pressure testing | 2025-05-13 → 2025-05-15 (+2d) | 2025-05-24 → 2025-05-26 (+2d) |  | 334.57d → 334.93d |
| PG-11136 | Final Fix - CP & Sanitary fixtures | 2025-07-11 → 2025-07-14 (+3d) | 2025-07-24 → 2025-07-25 (+1d) |  | 334.57d → 334.93d |
| 1.3.1.2.3.16.2 | **Fire Fighting Works** | 2025-05-13 → 2025-05-14 (+1d) | 2025-07-24 → 2025-07-25 (+1d) |  |  |
| PG-11137 | 1st Fix - Piping and Shaft hydrant works | 2025-05-13 → 2025-05-14 (+1d) | 2025-05-27 → 2025-05-28 (+1d) |  | 381.57d → 381.93d |
| PG-11138 | 2nd Fix - Sprinkler fixing & Pressure testing | 2025-06-19 → 2025-06-21 (+2d) | 2025-07-01 → 2025-07-02 (+1d) |  | 343.57d → 343.93d |
| PG-11139 | Final Fix - Smoke & heat detectors, FHC , FAS Etc. | 2025-07-11 → 2025-07-14 (+3d) | 2025-07-24 → 2025-07-25 (+1d) |  | 334.57d → 334.93d |
| 1.3.1.2.3.16.3 | **Electrical Works** | 2025-05-03 → 2025-05-06 (+3d) | 2025-07-24 → 2025-07-25 (+1d) |  |  |
| PG-11140 | 1st Fix - GI wire pulling | 2025-05-03 → 2025-05-06 (+3d) | 2025-05-13 → 2025-05-14 (+1d) |  | 381.57d → 381.93d |
| PG-11141 | 2nd Fix - Wiring works | 2025-06-16 → 2025-06-17 (+1d) | 2025-06-30 → 2025-07-01 (+1d) |  | 349.57d → 349.93d |
| PG-11142 | Final Fix - Electrical Fixtures | 2025-07-17 → 2025-07-19 (+2d) | 2025-07-24 → 2025-07-25 (+1d) |  | 334.57d → 334.93d |
| 1.3.1.2.3.17 | **Floor 14** | 2025-05-16 → 2025-05-19 (+3d) | 2025-08-06 → 2025-08-07 (+1d) |  |  |
| 1.3.1.2.3.17.1 | **PHE Works** | 2025-05-16 → 2025-05-19 (+3d) | 2025-08-06 → 2025-08-07 (+1d) |  |  |
| PG-11143 | 1st Fix - Piping works | 2025-05-16 → 2025-05-19 (+3d) | 2025-05-30 → 2025-05-31 (+1d) |  | 323.57d → 323.93d |
| PG-11144 | 2nd Fix - diverter fixing & Pressure testing | 2025-05-26 → 2025-05-28 (+2d) | 2025-06-06 → 2025-06-07 (+1d) |  | 323.57d → 323.93d |
| PG-11145 | Final Fix - CP & Sanitary fixtures | 2025-07-25 → 2025-07-28 (+3d) | 2025-08-06 → 2025-08-07 (+1d) |  | 323.57d → 323.93d |
| 1.3.1.2.3.17.2 | **Fire Fighting Works** | 2025-05-27 → 2025-05-28 (+1d) | 2025-08-06 → 2025-08-07 (+1d) |  |  |
| PG-11146 | 1st Fix - Piping and Shaft hydrant works | 2025-05-27 → 2025-05-28 (+1d) | 2025-06-10 → 2025-06-11 (+1d) |  | 369.57d → 369.93d |
| PG-11147 | 2nd Fix - Sprinkler fixing & Pressure testing | 2025-07-02 → 2025-07-04 (+2d) | 2025-07-14 → 2025-07-15 (+1d) |  | 333.57d → 333.93d |
| PG-11148 | Final Fix - Smoke & heat detectors, FHC , FAS Etc. | 2025-07-25 → 2025-07-28 (+3d) | 2025-08-06 → 2025-08-07 (+1d) |  | 323.57d → 323.93d |
| 1.3.1.2.3.17.3 | **Electrical Works** | 2025-05-16 → 2025-05-19 (+3d) | 2025-08-06 → 2025-08-07 (+1d) |  |  |
| PG-11149 | 1st Fix - GI wire pulling | 2025-05-16 → 2025-05-19 (+3d) | 2025-05-27 → 2025-05-28 (+1d) |  | 369.57d → 369.93d |
| PG-11150 | 2nd Fix - Wiring works | 2025-06-28 → 2025-06-30 (+2d) | 2025-07-12 → 2025-07-14 (+2d) |  | 338.57d → 338.93d |
| PG-11151 | Final Fix - Electrical Fixtures | 2025-07-30 → 2025-08-01 (+2d) | 2025-08-06 → 2025-08-07 (+1d) |  | 323.57d → 323.93d |
| 1.3.1.2.3.18 | **Floor 15** | 2025-05-29 → 2025-05-31 (+2d) | 2025-08-19 → 2025-08-20 (+1d) |  |  |
| 1.3.1.2.3.18.1 | **PHE Works** | 2025-05-29 → 2025-05-31 (+2d) | 2025-08-19 → 2025-08-20 (+1d) |  |  |
| PG-11152 | 1st Fix - Piping works | 2025-05-29 → 2025-05-31 (+2d) | 2025-06-12 → 2025-06-13 (+1d) |  | 162.57d → 162.93d |
| PG-11153 | 2nd Fix - diverter fixing & Pressure testing | 2025-06-07 → 2025-06-10 (+3d) | 2025-06-19 → 2025-06-20 (+1d) |  | 162.57d → 162.93d |
| PG-11154 | Final Fix - CP & Sanitary fixtures | 2025-08-06 → 2025-08-08 (+2d) | 2025-08-19 → 2025-08-20 (+1d) |  | 313.57d → 313.93d |
| 1.3.1.2.3.18.2 | **Fire Fighting Works** | 2025-06-07 → 2025-06-09 (+2d) | 2025-08-19 → 2025-08-20 (+1d) |  |  |
| PG-11155 | 1st Fix - Piping and Shaft hydrant works | 2025-06-07 → 2025-06-09 (+2d) | 2025-06-21 → 2025-06-23 (+2d) |  | 360.24d → 360.6d |
| PG-11156 | 2nd Fix - Sprinkler fixing & Pressure testing | 2025-07-15 → 2025-07-17 (+2d) | 2025-07-26 → 2025-07-28 (+2d) |  | 322.57d → 322.93d |
| PG-11157 | Final Fix - Smoke & heat detectors, FHC , FAS Etc. | 2025-08-06 → 2025-08-08 (+2d) | 2025-08-19 → 2025-08-20 (+1d) |  | 313.57d → 313.93d |
| 1.3.1.2.3.18.3 | **Electrical Works** | 2025-05-29 → 2025-05-31 (+2d) | 2025-08-19 → 2025-08-20 (+1d) |  |  |
| PG-11158 | 1st Fix - GI wire pulling | 2025-05-29 → 2025-05-31 (+2d) | 2025-06-07 → 2025-06-09 (+2d) |  | 360.24d → 360.6d |
| PG-11159 | 2nd Fix - Wiring works | 2025-07-09 → 2025-07-10 (+1d) | 2025-07-25 → 2025-07-26 (+1d) |  | 327.57d → 327.93d |
| PG-11160 | Final Fix - Electrical Fixtures | 2025-08-11 → 2025-08-13 (+2d) | 2025-08-19 → 2025-08-20 (+1d) |  | 313.57d → 313.93d |
| 1.3.1.2.3.19 | **Floor 16** | 2025-06-11 → 2025-06-13 (+2d) | 2025-08-30 → 2025-09-01 (+2d) |  |  |
| 1.3.1.2.3.19.1 | **PHE Works** | 2025-06-11 → 2025-06-13 (+2d) | 2025-08-30 → 2025-09-01 (+2d) |  |  |
| PG-11161 | 1st Fix - Piping works | 2025-06-11 → 2025-06-13 (+2d) | 2025-06-25 → 2025-06-26 (+1d) |  | 303.24d → 303.6d |
| PG-11162 | 2nd Fix - diverter fixing & Pressure testing | 2025-06-20 → 2025-06-23 (+3d) | 2025-07-02 → 2025-07-03 (+1d) |  | 303.24d → 303.6d |
| PG-11163 | Final Fix - CP & Sanitary fixtures | 2025-08-19 → 2025-08-20 (+1d) | 2025-08-30 → 2025-09-01 (+2d) |  | 303.24d → 303.6d |
| 1.3.1.2.3.19.2 | **Fire Fighting Works** | 2025-06-20 → 2025-06-21 (+1d) | 2025-08-30 → 2025-09-01 (+2d) |  |  |
| PG-11164 | 1st Fix - Piping and Shaft hydrant works | 2025-06-20 → 2025-06-21 (+1d) | 2025-07-04 → 2025-07-05 (+1d) |  | 349.07d → 349.43d |
| PG-11165 | 2nd Fix - Sprinkler fixing & Pressure testing | 2025-07-28 → 2025-07-30 (+2d) | 2025-08-08 → 2025-08-09 (+1d) |  | 310.4d → 310.76d |
| PG-11166 | Final Fix - Smoke & heat detectors, FHC , FAS Etc. | 2025-08-19 → 2025-08-20 (+1d) | 2025-08-30 → 2025-09-01 (+2d) |  | 303.24d → 303.6d |
| 1.3.1.2.3.19.3 | **Electrical Works** | 2025-06-11 → 2025-06-13 (+2d) | 2025-08-30 → 2025-09-01 (+2d) |  |  |
| PG-11167 | 1st Fix - GI wire pulling | 2025-06-11 → 2025-06-13 (+2d) | 2025-06-20 → 2025-06-21 (+1d) |  | 349.07d → 349.43d |
| PG-11168 | 2nd Fix - Wiring works | 2025-07-23 → 2025-07-24 (+1d) | 2025-08-07 → 2025-08-08 (+1d) |  | 316.24d → 316.6d |
| PG-11169 | Final Fix - Electrical Fixtures | 2025-08-23 → 2025-08-26 (+3d) | 2025-08-30 → 2025-09-01 (+2d) |  | 303.24d → 303.6d |
| 1.3.1.2.3.20 | **Floor 17** | 2025-06-24 → 2025-06-26 (+2d) | 2025-09-12 → 2025-09-13 (+1d) |  |  |
| 1.3.1.2.3.20.1 | **PHE Works** | 2025-06-24 → 2025-06-26 (+2d) | 2025-09-12 → 2025-09-13 (+1d) |  |  |
| PG-11170 | 1st Fix - Piping works | 2025-06-24 → 2025-06-26 (+2d) | 2025-07-08 → 2025-07-09 (+1d) |  | 292.24d → 292.6d |
| PG-11171 | 2nd Fix - diverter fixing & Pressure testing | 2025-07-03 → 2025-07-05 (+2d) | 2025-07-15 → 2025-07-16 (+1d) |  | 292.24d → 292.6d |
| PG-11172 | Final Fix - CP & Sanitary fixtures | 2025-09-01 → 2025-09-02 (+1d) | 2025-09-12 → 2025-09-13 (+1d) |  | 292.24d → 292.6d |

| ID | Task | Start | Finish | Total float |
| --- | --- | --- | --- | --- |
| 1.3.1.2.3.20.2 | **Fire Fighting Works** | 2025-07-03 → 2025-07-04 (+1d) | 2025-09-12 → 2025-09-13 (+1d) |  |
| PG-11173 | 1st Fix - Piping and Shaft hydrant works | 2025-07-03 → 2025-07-04 (+1d) | 2025-07-17 → 2025-07-18 (+1d) | 338.07d → 338.43d |
| PG-11174 | 2nd Fix - Sprinkler fixing & Pressure testing | 2025-08-09 → 2025-08-12 (+3d) | 2025-08-22 → 2025-08-23 (+1d) | 299.4d → 299.76d |
| PG-11175 | Final Fix - Smoke & heat detectors, FHC , FAS Etc. | 2025-09-01 → 2025-09-02 (+1d) | 2025-09-12 → 2025-09-13 (+1d) | 292.24d → 292.6d |
| 1.3.1.2.3.20.3 | **Electrical Works** | 2025-06-24 → 2025-06-26 (+2d) | 2025-09-12 → 2025-09-13 (+1d) |  |
| PG-11176 | 1st Fix - GI wire pulling | 2025-06-24 → 2025-06-26 (+2d) | 2025-07-03 → 2025-07-04 (+1d) | 338.07d → 338.43d |
| PG-11177 | 2nd Fix - Wiring works | 2025-08-05 → 2025-08-06 (+1d) | 2025-08-21 → 2025-08-22 (+1d) | 305.24d → 305.6d |
| PG-11178 | Final Fix - Electrical Fixtures | 2025-09-05 → 2025-09-08 (+3d) | 2025-09-12 → 2025-09-13 (+1d) | 292.24d → 292.6d |
| 1.3.1.2.3.21 | **Floor 18** | 2025-07-07 → 2025-07-09 (+2d) | 2025-09-26 → 2025-09-27 (+1d) |  |
| 1.3.1.2.3.21.1 | **PHE Works** | 2025-07-07 → 2025-07-09 (+2d) | 2025-09-26 → 2025-09-27 (+1d) |  |
| PG-11179 | 1st Fix - Piping works | 2025-07-07 → 2025-07-09 (+2d) | 2025-07-21 → 2025-07-22 (+1d) | 280.4d → 280.76d |
| PG-11180 | 2nd Fix - diverter fixing & Pressure testing | 2025-07-17 → 2025-07-19 (+2d) | 2025-07-28 → 2025-07-29 (+1d) | 280.4d → 280.76d |
| PG-11181 | Final Fix - CP & Sanitary fixtures | 2025-09-13 → 2025-09-15 (+2d) | 2025-09-26 → 2025-09-27 (+1d) | 280.4d → 280.76d |
| 1.3.1.2.3.21.2 | **Fire Fighting Works** | 2025-07-17 → 2025-07-18 (+1d) | 2025-09-26 → 2025-09-27 (+1d) |  |
| PG-11182 | 1st Fix - Piping and Shaft hydrant works | 2025-07-17 → 2025-07-18 (+1d) | 2025-07-30 → 2025-07-31 (+1d) | 328.07d → 328.43d |
| PG-11183 | 2nd Fix - Sprinkler fixing & Pressure testing | 2025-08-23 → 2025-08-25 (+2d) | 2025-09-04 → 2025-09-05 (+1d) | 288.4d → 288.76d |
| PG-11184 | Final Fix - Smoke & heat detectors, FHC , FAS Etc. | 2025-09-13 → 2025-09-15 (+2d) | 2025-09-26 → 2025-09-27 (+1d) | 280.4d → 280.76d |
| 1.3.1.2.3.21.3 | **Electrical Works** | 2025-07-07 → 2025-07-09 (+2d) | 2025-09-26 → 2025-09-27 (+1d) |  |
| PG-11185 | 1st Fix - GI wire pulling | 2025-07-07 → 2025-07-09 (+2d) | 2025-07-16 → 2025-07-17 (+1d) | 328.07d → 328.43d |
| PG-11186 | 2nd Fix - Wiring works | 2025-08-16 → 2025-08-18 (+2d) | 2025-09-03 → 2025-09-04 (+1d) | 294.4d → 294.76d |
| PG-11187 | Final Fix - Electrical Fixtures | 2025-09-19 → 2025-09-20 (+1d) | 2025-09-26 → 2025-09-27 (+1d) | 280.4d → 280.76d |
| 1.3.1.2.3.22 | **Floor 19** | 2025-07-19 → 2025-07-22 (+3d) | 2025-10-10 → 2025-10-11 (+1d) |  |
| 1.3.1.2.3.22.1 | **PHE Works** | 2025-07-19 → 2025-07-22 (+3d) | 2025-10-10 → 2025-10-11 (+1d) |  |
| PG-11188 | 1st Fix - Piping works | 2025-07-19 → 2025-07-22 (+3d) | 2025-08-02 → 2025-08-04 (+2d) | 269.4d → 269.76d |
| PG-11189 | 2nd Fix - diverter fixing & Pressure testing | 2025-07-30 → 2025-08-01 (+2d) | 2025-08-09 → 2025-08-11 (+2d) | 269.4d → 269.76d |
| PG-11190 | Final Fix - CP & Sanitary fixtures | 2025-09-26 → 2025-09-27 (+1d) | 2025-10-10 → 2025-10-11 (+1d) | 269.4d → 269.76d |
| 1.3.1.2.3.22.2 | **Fire Fighting Works** | 2025-07-29 → 2025-07-30 (+1d) | 2025-10-10 → 2025-10-11 (+1d) |  |
| PG-11191 | 1st Fix - Piping and Shaft hydrant works | 2025-07-29 → 2025-07-30 (+1d) | 2025-08-12 → 2025-08-13 (+1d) | 317.07d → 317.43d |
| PG-11192 | 2nd Fix - Sprinkler fixing & Pressure testing | 2025-09-05 → 2025-09-06 (+1d) | 2025-09-17 → 2025-09-18 (+1d) | 277.4d → 277.76d |
| PG-11193 | Final Fix - Smoke & heat detectors, FHC , FAS Etc. | 2025-09-26 → 2025-09-27 (+1d) | 2025-10-10 → 2025-10-11 (+1d) | 269.4d → 269.76d |
| 1.3.1.2.3.22.3 | **Electrical Works** | 2025-07-19 → 2025-07-22 (+3d) | 2025-10-10 → 2025-10-11 (+1d) |  |
| PG-11194 | 1st Fix - GI wire pulling | 2025-07-19 → 2025-07-22 (+3d) | 2025-07-29 → 2025-07-30 (+1d) | 317.07d → 317.43d |
| PG-11195 | 2nd Fix - Wiring works | 2025-08-29 → 2025-08-30 (+1d) | 2025-09-16 → 2025-09-17 (+1d) | 283.4d → 283.76d |
| PG-11196 | Final Fix - Electrical Fixtures | 2025-10-03 → 2025-10-04 (+1d) | 2025-10-10 → 2025-10-11 (+1d) | 269.4d → 269.76d |
| 1.3.1.2.3.23 | **Floor 20** | 2025-08-01 → 2025-08-04 (+3d) | 2025-10-24 → 2025-10-25 (+1d) |  |
| 1.3.1.2.3.23.1 | **PHE Works** | 2025-08-01 → 2025-08-04 (+3d) | 2025-10-24 → 2025-10-25 (+1d) |  |
| PG-11197 | 1st Fix - Piping works | 2025-08-01 → 2025-08-04 (+3d) | 2025-08-18 → 2025-08-19 (+1d) | 257.4d → 257.76d |
| PG-11198 | 2nd Fix - diverter fixing & Pressure testing | 2025-08-13 → 2025-08-16 (+3d) | 2025-08-25 → 2025-08-26 (+1d) | 257.4d → 257.76d |
| PG-11199 | Final Fix - CP & Sanitary fixtures | 2025-10-11 → 2025-10-13 (+2d) | 2025-10-24 → 2025-10-25 (+1d) | 257.4d → 257.76d |
| 1.3.1.2.3.23.2 | **Fire Fighting Works** | 2025-08-13 → 2025-08-14 (+1d) | 2025-10-24 → 2025-10-25 (+1d) |  |
| PG-11200 | 1st Fix - Piping and Shaft hydrant works | 2025-08-13 → 2025-08-14 (+1d) | 2025-08-27 → 2025-08-28 (+1d) | 305.24d → 305.6d |
| PG-11201 | 2nd Fix - Sprinkler fixing & Pressure testing | 2025-09-19 → 2025-09-20 (+1d) | 2025-10-01 → 2025-10-03 (+2d) | 265.4d → 265.76d |
| PG-11202 | Final Fix - Smoke & heat detectors, FHC , FAS Etc. | 2025-10-11 → 2025-10-13 (+2d) | 2025-10-24 → 2025-10-25 (+1d) | 257.4d → 257.76d |
| 1.3.1.2.3.23.3 | **Electrical Works** | 2025-08-01 → 2025-08-04 (+3d) | 2025-10-24 → 2025-10-25 (+1d) |  |
| PG-11203 | 1st Fix - GI wire pulling | 2025-08-01 → 2025-08-04 (+3d) | 2025-08-12 → 2025-08-13 (+1d) | 305.24d → 305.6d |
| PG-11204 | 2nd Fix - Wiring works | 2025-09-12 → 2025-09-13 (+1d) | 2025-09-30 → 2025-10-01 (+1d) | 271.4d → 271.76d |
| PG-11205 | Final Fix - Electrical Fixtures | 2025-10-17 → 2025-10-18 (+1d) | 2025-10-24 → 2025-10-25 (+1d) | 257.4d → 257.76d |
| 1.3.1.2.3.24 | **Floor 21** | 2025-08-14 → 2025-08-18 (+4d) | 2025-11-06 → 2025-11-07 (+1d) |  |
| 1.3.1.2.3.24.1 | **PHE Works** | 2025-08-14 → 2025-08-18 (+4d) | 2025-11-06 → 2025-11-07 (+1d) |  |
| PG-11206 | 1st Fix - Piping works | 2025-08-14 → 2025-08-18 (+4d) | 2025-08-28 → 2025-08-29 (+1d) | 14.9d → 15.26d |
| PG-11207 | 2nd Fix - diverter fixing & Pressure testing | 2025-08-23 → 2025-08-26 (+3d) | 2025-09-04 → 2025-09-05 (+1d) | 247.74d → 248.1d |
| PG-11208 | Final Fix - CP & Sanitary fixtures | 2025-10-23 → 2025-10-24 (+1d) | 2025-11-06 → 2025-11-07 (+1d) | 247.74d → 248.1d |
| 1.3.1.2.3.24.2 | **Fire Fighting Works** | 2025-08-23 → 2025-08-26 (+3d) | 2025-11-06 → 2025-11-07 (+1d) |  |
| PG-11209 | 1st Fix - Piping and Shaft hydrant works | 2025-08-23 → 2025-08-26 (+3d) | 2025-09-06 → 2025-09-08 (+2d) | 295.4d → 295.76d |
| PG-11210 | 2nd Fix - Sprinkler fixing & Pressure testing | 2025-10-01 → 2025-10-03 (+2d) | 2025-10-13 → 2025-10-14 (+1d) | 256.74d → 257.1d |
| PG-11211 | Final Fix - Smoke & heat detectors, FHC , FAS Etc. | 2025-10-23 → 2025-10-24 (+1d) | 2025-11-06 → 2025-11-07 (+1d) | 247.74d → 248.1d |
| 1.3.1.2.3.24.3 | **Electrical Works** | 2025-08-14 → 2025-08-18 (+4d) | 2025-10-24 → 2025-10-25 (+1d) |  |
| PG-11212 | 1st Fix - GI wire pulling | 2025-08-14 → 2025-08-18 (+4d) | 2025-08-23 → 2025-08-25 (+2d) | 295.4d → 295.76d |
| PG-11213 | 2nd Fix - Wiring works | 2025-09-12 → 2025-09-13 (+1d) | 2025-09-30 → 2025-10-01 (+1d) | 271.74d → 272.1d |
| PG-11214 | Final Fix - Electrical Fixtures | 2025-10-17 → 2025-10-18 (+1d) | 2025-10-24 → 2025-10-25 (+1d) | 257.74d → 258.1d |
| 1.3.1.2.3.25 | **Floor 22** | 2025-09-05 → 2025-09-06 (+1d) | 2025-11-28 → 2025-11-29 (+1d) |  |
| 1.3.1.2.3.25.1 | **PHE Works** | 2025-09-05 → 2025-09-06 (+1d) | 2025-11-28 → 2025-11-29 (+1d) |  |
| PG-11215 | 1st Fix - Piping works | 2025-09-05 → 2025-09-06 (+1d) | 2025-09-19 → 2025-09-20 (+1d) | 123.74d → 124.1d |
| PG-11216 | 2nd Fix - diverter fixing & Pressure testing | 2025-09-13 → 2025-09-15 (+2d) | 2025-09-26 → 2025-09-27 (+1d) | 133.24d → 133.6d |
| PG-11217 | Final Fix - CP & Sanitary fixtures | 2025-11-17 → 2025-11-18 (+1d) | 2025-11-28 → 2025-11-29 (+1d) | 227.9d → 228.26d |
| 1.3.1.2.3.25.2 | **Fire Fighting Works** | 2025-09-15 → 2025-09-16 (+1d) | 2025-11-28 → 2025-11-29 (+1d) |  |
| PG-11218 | 1st Fix - Piping and Shaft hydrant works | 2025-09-15 → 2025-09-16 (+1d) | 2025-09-29 → 2025-09-30 (+1d) | 145.4d → 145.76d |
| PG-11219 | 2nd Fix - Sprinkler fixing & Pressure testing | 2025-10-22 → 2025-10-24 (+2d) | 2025-11-05 → 2025-11-06 (+1d) | 237.9d → 238.26d |
| PG-11220 | Final Fix - Smoke & heat detectors, FHC , FAS Etc. | 2025-11-17 → 2025-11-18 (+1d) | 2025-11-28 → 2025-11-29 (+1d) | 227.9d → 228.26d |
| 1.3.1.2.3.25.3 | **Electrical Works** | 2025-09-05 → 2025-09-06 (+1d) | 2025-11-28 → 2025-11-29 (+1d) |  |

| ID | Task | Start | Finish | Complete | Total float |
| --- | --- | --- | --- | --- | --- |
| PG-11221 | 1st Fix - GI wire pulling | 2025-09-05 → 2025-09-06 (+1d) | 2025-09-15 → 2025-09-16 (+1d) |  | 14.9d → 15.26d |
| PG-11222 | 2nd Fix - Wiring works | 2025-10-15 → 2025-10-17 (+2d) | 2025-11-04 → 2025-11-05 (+1d) |  | 242.9d → 243.26d |
| PG-11223 | Final Fix - Electrical Fixtures | 2025-11-21 → 2025-11-22 (+1d) | 2025-11-28 → 2025-11-29 (+1d) |  | 227.9d → 228.26d |
| 1.3.1.2.3.26 | **Floor 23** | 2025-09-27 → 2025-09-29 (+2d) | 2025-12-18 → 2025-12-19 (+1d) |  |  |
| 1.3.1.2.3.26.1 | **PHE Works** | 2025-09-27 → 2025-09-29 (+2d) | 2025-12-18 → 2025-12-19 (+1d) |  |  |
| PG-11224 | 1st Fix - Piping works | 2025-09-27 → 2025-09-29 (+2d) | 2025-10-11 → 2025-10-13 (+2d) |  | 123.74d → 124.1d |
| PG-11225 | 2nd Fix - diverter fixing & Pressure testing | 2025-10-08 → 2025-10-09 (+1d) | 2025-10-18 → 2025-10-20 (+2d) |  | 209.9d → 210.26d |
| PG-11226 | Final Fix - CP & Sanitary fixtures | 2025-12-08 → 2025-12-09 (+1d) | 2025-12-18 → 2025-12-19 (+1d) |  | 209.9d → 210.26d |
| 1.3.1.2.3.26.2 | **Fire Fighting Works** | 2025-10-08 → 2025-10-09 (+1d) | 2025-12-18 → 2025-12-19 (+1d) |  |  |
| PG-11227 | 1st Fix - Piping and Shaft hydrant works | 2025-10-08 → 2025-10-09 (+1d) | 2025-10-22 → 2025-10-23 (+1d) |  | 256.74d → 257.1d |
| PG-11228 | 2nd Fix - Sprinkler fixing & Pressure testing | 2025-11-14 → 2025-11-15 (+1d) | 2025-11-26 → 2025-11-27 (+1d) |  | 219.9d → 220.26d |
| PG-11229 | Final Fix - Smoke & heat detectors, FHC , FAS Etc. | 2025-12-08 → 2025-12-09 (+1d) | 2025-12-18 → 2025-12-19 (+1d) |  | 209.9d → 210.26d |
| 1.3.1.2.3.26.3 | **Electrical Works** | 2025-09-27 → 2025-09-29 (+2d) | 2025-12-18 → 2025-12-19 (+1d) |  |  |
| PG-11230 | 1st Fix - GI wire pulling | 2025-09-27 → 2025-09-29 (+2d) | 2025-10-08 → 2025-10-09 (+1d) |  | 256.74d → 257.1d |
| PG-11231 | 2nd Fix - Wiring works | 2025-11-07 → 2025-11-08 (+1d) | 2025-11-25 → 2025-11-26 (+1d) |  | 224.9d → 225.26d |
| PG-11232 | Final Fix - Electrical Fixtures | 2025-12-12 → 2025-12-13 (+1d) | 2025-12-18 → 2025-12-19 (+1d) |  | 209.9d → 210.26d |
| 1.3.1.2.3.27 | **Floor 24** | 2025-10-20 → 2025-10-21 (+1d) | 2026-01-08 → 2026-01-09 (+1d) |  |  |
| 1.3.1.2.3.27.1 | **PHE Works** | 2025-10-20 → 2025-10-21 (+1d) | 2026-01-08 → 2026-01-09 (+1d) |  |  |
| PG-11233 | 1st Fix - Piping works | 2025-10-20 → 2025-10-21 (+1d) | 2025-11-03 → 2025-11-04 (+1d) |  | 123.74d → 124.1d |
| PG-11234 | 2nd Fix - diverter fixing & Pressure testing | 2025-10-29 → 2025-10-30 (+1d) | 2025-11-10 → 2025-11-11 (+1d) |  | 190.74d → 191.1d |
| PG-11235 | Final Fix - CP & Sanitary fixtures | 2025-12-27 → 2025-12-29 (+2d) | 2026-01-08 → 2026-01-09 (+1d) |  | 190.74d → 191.1d |
| 1.3.1.2.3.27.2 | **Fire Fighting Works** | 2025-10-29 → 2025-10-30 (+1d) | 2026-01-08 → 2026-01-09 (+1d) |  |  |
| PG-11236 | 1st Fix - Piping and Shaft hydrant works | 2025-10-29 → 2025-10-30 (+1d) | 2025-11-12 → 2025-11-13 (+1d) |  | 239.4d → 239.76d |
| PG-11237 | 2nd Fix - Sprinkler fixing & Pressure testing | 2025-12-06 → 2025-12-08 (+2d) | 2025-12-17 → 2025-12-18 (+1d) |  | 199.24d → 199.6d |
| PG-11238 | Final Fix - Smoke & heat detectors, FHC , FAS Etc. | 2025-12-27 → 2025-12-29 (+2d) | 2026-01-08 → 2026-01-09 (+1d) |  | 190.74d → 191.1d |
| 1.3.1.2.3.27.3 | **Electrical Works** | 2025-10-20 → 2025-10-21 (+1d) | 2026-01-08 → 2026-01-09 (+1d) |  |  |
| PG-11239 | 1st Fix - GI wire pulling | 2025-10-20 → 2025-10-21 (+1d) | 2025-10-28 → 2025-10-29 (+1d) |  | 239.4d → 239.76d |
| PG-11240 | 2nd Fix - Wiring works | 2025-11-29 → 2025-12-01 (+2d) | 2025-12-16 → 2025-12-17 (+1d) |  | 204.74d → 205.1d |
| PG-11241 | Final Fix - Electrical Fixtures | 2026-01-01 → 2026-01-02 (+1d) | 2026-01-08 → 2026-01-09 (+1d) |  | 190.74d → 191.1d |
| 1.3.1.2.3.28 | **Floor 25** | 2025-11-11 → 2025-11-12 (+1d) | 2026-02-02 → 2026-02-03 (+1d) |  |  |
| 1.3.1.2.3.28.1 | **PHE Works** | 2025-11-11 → 2025-11-12 (+1d) | 2026-02-02 → 2026-02-03 (+1d) |  |  |
| PG-11242 | 1st Fix - Piping works | 2025-11-11 → 2025-11-12 (+1d) | 2025-11-25 → 2025-11-26 (+1d) |  | 123.74d → 124.1d |
| PG-11243 | 2nd Fix - diverter fixing & Pressure testing | 2025-11-20 → 2025-11-21 (+1d) | 2025-12-02 → 2025-12-03 (+1d) |  | 171.24d → 171.6d |
| PG-11244 | Final Fix - CP & Sanitary fixtures | 2026-01-20 → 2026-01-21 (+1d) | 2026-02-02 → 2026-02-03 (+1d) |  | 171.24d → 171.6d |
| 1.3.1.2.3.28.2 | **Fire Fighting Works** | 2025-11-21 → 2025-11-22 (+1d) | 2026-02-02 → 2026-02-03 (+1d) |  |  |
| PG-11245 | 1st Fix - Piping and Shaft hydrant works | 2025-11-21 → 2025-11-22 (+1d) | 2025-12-04 → 2025-12-05 (+1d) |  | 218.9d → 219.26d |
| PG-11246 | 2nd Fix - Sprinkler fixing & Pressure testing | 2025-12-29 → 2025-12-30 (+1d) | 2026-01-08 → 2026-01-09 (+1d) |  | 181.24d → 181.6d |
| PG-11247 | Final Fix - Smoke & heat detectors, FHC , FAS Etc. | 2026-01-20 → 2026-01-21 (+1d) | 2026-02-02 → 2026-02-03 (+1d) |  | 171.24d → 171.6d |
| 1.3.1.2.3.28.3 | **Electrical Works** | 2025-11-11 → 2025-11-12 (+1d) | 2026-02-02 → 2026-02-03 (+1d) |  |  |
| PG-11248 | 1st Fix - GI wire pulling | 2025-11-11 → 2025-11-12 (+1d) | 2025-11-20 → 2025-11-21 (+1d) |  | 218.9d → 219.26d |
| PG-11249 | 2nd Fix - Wiring works | 2025-12-22 → 2025-12-23 (+1d) | 2026-01-07 → 2026-01-08 (+1d) |  | 187.24d → 187.6d |
| PG-11250 | Final Fix - Electrical Fixtures | 2026-01-27 → 2026-01-28 (+1d) | 2026-02-02 → 2026-02-03 (+1d) |  | 171.24d → 171.6d |
| 1.3.1.2.3.29 | **Floor 26** | 2025-12-03 → 2025-12-04 (+1d) | 2026-02-23 → 2026-02-24 (+1d) |  |  |
| 1.3.1.2.3.29.1 | **PHE Works** | 2025-12-03 → 2025-12-04 (+1d) | 2026-02-23 → 2026-02-24 (+1d) |  |  |
| PG-11251 | 1st Fix - Piping works | 2025-12-03 → 2025-12-04 (+1d) | 2025-12-17 → 2025-12-18 (+1d) |  | 123.74d → 124.1d |
| PG-11252 | 2nd Fix - diverter fixing & Pressure testing | 2025-12-12 → 2025-12-13 (+1d) | 2025-12-24 → 2025-12-25 (+1d) |  | 123.74d → 124.1d |
| PG-11253 | Final Fix - CP & Sanitary fixtures | 2026-02-11 → 2026-02-12 (+1d) | 2026-02-23 → 2026-02-24 (+1d) |  | 123.74d → 124.1d |
| 1.3.1.2.3.29.2 | **Fire Fighting Works** | 2025-12-12 → 2025-12-13 (+1d) | 2026-02-23 → 2026-02-24 (+1d) |  |  |
| PG-11254 | 1st Fix - Piping and Shaft hydrant works | 2025-12-12 → 2025-12-13 (+1d) | 2025-12-26 → 2025-12-27 (+1d) |  | 201.9d → 202.26d |
| PG-11255 | 2nd Fix - Sprinkler fixing & Pressure testing | 2026-01-17 → 2026-01-19 (+2d) | 2026-01-31 → 2026-02-02 (+2d) |  | 132.74d → 133.1d |
| PG-11256 | Final Fix - Smoke & heat detectors, FHC , FAS Etc. | 2026-02-11 → 2026-02-12 (+1d) | 2026-02-23 → 2026-02-24 (+1d) |  | 123.74d → 124.1d |
| 1.3.1.2.3.29.3 | **Electrical Works** | 2025-12-03 → 2025-12-04 (+1d) | 2026-02-23 → 2026-02-24 (+1d) |  |  |
| PG-11257 | 1st Fix - GI wire pulling | 2025-12-03 → 2025-12-04 (+1d) | 2025-12-12 → 2025-12-13 (+1d) |  | 201.9d → 202.26d |
| PG-11258 | 2nd Fix - Wiring works | 2026-01-10 → 2026-01-12 (+2d) | 2026-01-30 → 2026-01-31 (+1d) |  | 138.74d → 139.1d |
| PG-11259 | Final Fix - Electrical Fixtures | 2026-02-17 → 2026-02-18 (+1d) | 2026-02-23 → 2026-02-24 (+1d) |  | 123.74d → 124.1d |
| 1.3.1.2.4 | **Civil Finishes - Units** |  | 2026-02-16 → 2026-02-17 (+1d) |  |  |
| PG-11387 | Final Coat Painting |  |  | 17% → 46% | 422.53d → 423.96d |
| PG-11392 | Final Coat Painting |  |  | 20% → 50% | 389.34d → 390.77d |
| 1.3.1.2.4.12 | **Floor 9** |  | 2025-05-22 → 2025-05-23 (+1d) |  |  |
| 1.3.1.2.4.12.1 | **Ceiling Finishing works - Civil** |  | 2025-05-22 → 2025-05-23 (+1d) |  |  |
| PG-11399 | Painting Works - Putty, Primer and 1st |  | 2025-04-30 → 2025-05-01 A (+1d) | 21% → 100% | 416.08d → none |
| PG-11401 | Final Coat Painting | 2025-04-30 → 2025-05-01 A (+1d) | 2025-05-22 → 2025-05-23 (+1d) | 0% → 3% | 415.85d → 416.9d |
| PG-11405 | Painting Works - Putty, Primer and 1st |  | 2025-04-30 → 2025-05-01 A (+1d) | 17% → 100% | 381.35d → none |
| PG-11406 | Final Coat Painting | 2025-04-30 → 2025-05-01 A (+1d) |  | 0% → 3% | 381.35d → 382.31d |
| 1.3.1.2.4.12.3 | **Floor Finishing Works - Civil** |  | 2025-04-30 → 2025-05-01 (+1d) |  |  |
| PG-11410 | Wooden doors |  | 2025-04-30 → 2025-05-01 A (+1d) | 3% → 100% | 381.35d → none |
| 1.3.1.2.4.13 | **Floor 10** |  | 2025-06-07 → 2025-06-09 (+2d) |  |  |
| 1.3.1.2.4.13.1 | **Ceiling Finishing works - Civil** |  | 2025-06-07 → 2025-06-09 (+2d) |  |  |
| PG-11412 | Cornice fixing |  | 2025-04-26 A | 84% → 100% | 414.67d → none |
| PG-11414 | Toilet False ceiling | 2025-04-29 → 2025-04-30 A (+1d) | 2025-05-03 → 2025-05-05 (+2d) | 0% → 54% | 392.76d → 393.18d |

| ID | Task | Start | Finish | Complete | Total float |
| --- | --- | --- | --- | --- | --- |
| PG-11413 | Painting Works - Putty, Primer and 1st | 2025-05-09 → 2025-05-10 (+1d) | 2025-05-16 → 2025-05-17 (+1d) |  | 403.26d → 403.68d |
| PG-11415 | Final Coat Painting | 2025-05-16 → 2025-05-17 (+1d) | 2025-06-07 → 2025-06-09 (+2d) |  | 403.26d → 403.68d |
| 1.3.1.2.4.13.2 | **Wall Finishing works - Civil** |  | 2025-06-06 → 2025-06-07 (+1d) |  |  |
| PG-11417 | UPVC Windows & Sliding doors | 2025-05-03 → 2025-05-05 (+2d) | 2025-05-09 → 2025-05-10 (+1d) |  | 367.93d → 368.35d |
| PG-11419 | Painting Works - Putty, Primer and 1st | 2025-05-09 → 2025-05-10 (+1d) | 2025-05-16 → 2025-05-17 (+1d) |  | 367.93d → 368.35d |
| PG-11420 | Final Coat Painting | 2025-05-16 → 2025-05-17 (+1d) | 2025-06-06 → 2025-06-07 (+1d) |  | 367.93d → 368.35d |
| 1.3.1.2.4.13.3 | **Floor Finishing Works - Civil** |  | 2025-05-16 → 2025-05-17 (+1d) |  |  |
| PG-11422 | Floor Tiling - Wet area |  | 2025-04-28 → 2025-04-29 A (+1d) | 49% → 100% | 367.93d → none |
| PG-11423 | Floor Tiling - Dry area | 2025-04-28 → 2025-04-29 A (+1d) | 2025-05-03 → 2025-05-05 (+2d) | 0% → 56% | 367.93d → 368.35d |
| PG-11424 | Wooden doors | 2025-05-10 → 2025-05-12 (+2d) | 2025-05-16 → 2025-05-17 (+1d) |  | 367.93d → 368.35d |
| 1.3.1.2.4.14 | **Floor 11** |  | 2025-06-21 → 2025-06-20 (-1d) |  |  |
| 1.3.1.2.4.14.1 | **Ceiling Finishing works - Civil** |  | 2025-06-21 → 2025-06-20 (-1d) |  |  |
| PG-11429 | Final Coat Painting |  | 2025-06-21 → 2025-06-20 (-1d) |  | 391.08d → 393.24d |
| 1.3.1.2.4.14.2 | **Wall Finishing works - Civil** |  | 2025-06-21 → 2025-06-20 (-1d) |  |  |
| PG-11432 | Dadoing - Wet area | 2025-04-30 A |  | 0% → 40% | 355.75d → 357.91d |
| PG-11434 | Final Coat Painting |  | 2025-06-21 → 2025-06-20 (-1d) |  | 355.75d → 357.91d |
| 1.3.1.2.4.15 | **Floor 12** |  | 2025-07-03 → 2025-07-04 (+1d) |  |  |
| 1.3.1.2.4.15.1 | **Ceiling Finishing works - Civil** | 2025-04-30 → 2025-05-01 (+1d) | 2025-07-03 → 2025-07-04 (+1d) |  |  |
| PG-11439 | Gypsum Plastering | 2025-04-30 → 2025-05-01 A (+1d) | 2025-05-07 → 2025-05-08 (+1d) | 0% → 16% | 393.14d → 394.41d |
| PG-11440 | Cornice fixing | 2025-05-16 → 2025-05-17 (+1d) | 2025-05-21 → 2025-05-22 (+1d) |  | 393.14d → 394.41d |
| PG-11443 | Final Coat Painting |  | 2025-07-03 → 2025-07-04 (+1d) |  | 380.77d → 381.78d |
| 1.3.1.2.4.15.2 | **Wall Finishing works - Civil** |  | 2025-07-03 → 2025-07-04 (+1d) |  |  |
| PG-11444 | Balcony Railing Fixing works |  | 2025-04-26 → 2025-04-28 A (+2d) | 74% → 100% | 374.46d → none |
| PG-11448 | Final Coat Painting |  | 2025-07-03 → 2025-07-04 (+1d) |  | 345.27d → 346.28d |
| 1.3.1.2.4.16 | **Floor 13** | 2025-05-03 → 2025-05-06 (+3d) | 2025-07-17 → 2025-07-18 (+1d) |  |  |
| 1.3.1.2.4.16.1 | **Ceiling Finishing works - Civil** | 2025-05-13 → 2025-05-14 (+1d) | 2025-07-17 → 2025-07-18 (+1d) |  |  |
| PG-11453 | Gypsum Plastering | 2025-05-13 → 2025-05-14 (+1d) | 2025-05-20 → 2025-05-21 (+1d) |  | 381.57d → 381.93d |
| PG-11454 | Cornice fixing | 2025-05-29 → 2025-05-30 (+1d) | 2025-06-03 → 2025-06-04 (+1d) |  | 381.57d → 381.93d |
| PG-11456 | Toilet False ceiling | 2025-06-06 → 2025-06-09 (+3d) | 2025-06-11 → 2025-06-12 (+1d) |  | 360.57d → 360.93d |
| PG-11455 | Painting Works - Putty, Primer and 1st | 2025-06-17 → 2025-06-19 (+2d) | 2025-06-24 → 2025-06-25 (+1d) |  | 369.24d → 369.6d |
| PG-11457 | Final Coat Painting | 2025-06-24 → 2025-06-26 (+2d) | 2025-07-17 → 2025-07-18 (+1d) |  | 369.24d → 369.6d |
| 1.3.1.2.4.16.2 | **Wall Finishing works - Civil** | 2025-05-03 → 2025-05-06 (+3d) | 2025-07-17 → 2025-07-18 (+1d) |  |  |
| PG-11458 | Balcony Railing Fixing works | 2025-05-03 → 2025-05-06 (+3d) | 2025-05-08 → 2025-05-09 (+1d) |  | 363.57d → 363.93d |
| PG-11460 | Dadoing - Wet area | 2025-05-24 → 2025-05-27 (+3d) | 2025-05-30 → 2025-05-31 (+1d) |  | 334.57d → 334.93d |
| PG-11459 | UPVC Windows & Sliding doors | 2025-06-11 → 2025-06-13 (+2d) | 2025-06-17 → 2025-06-18 (+1d) |  | 334.57d → 334.93d |
| PG-11461 | Painting Works - Putty, Primer and 1st | 2025-06-17 → 2025-06-19 (+2d) | 2025-06-24 → 2025-06-25 (+1d) |  | 334.57d → 334.93d |
| PG-11462 | Final Coat Painting | 2025-06-24 → 2025-06-26 (+2d) | 2025-07-17 → 2025-07-18 (+1d) |  | 334.57d → 334.93d |
| 1.3.1.2.4.16.3 | **Floor Finishing Works - Civil** | 2025-05-03 → 2025-05-06 (+3d) | 2025-06-24 → 2025-06-25 (+1d) |  |  |
| PG-11463 | Waterproofing for sunken areas | 2025-05-03 → 2025-05-06 (+3d) | 2025-05-07 → 2025-05-08 (+1d) |  | 354.57d → 354.93d |
| PG-11464 | Floor Tiling - Wet area | 2025-05-30 → 2025-06-02 (+3d) | 2025-06-05 → 2025-06-06 (+1d) |  | 334.57d → 334.93d |
| PG-11465 | Floor Tiling - Dry area | 2025-06-05 → 2025-06-07 (+2d) | 2025-06-11 → 2025-06-12 (+1d) |  | 334.57d → 334.93d |
| PG-11466 | Wooden doors | 2025-06-18 → 2025-06-20 (+2d) | 2025-06-24 → 2025-06-25 (+1d) |  | 334.57d → 334.93d |
| 1.3.1.2.4.17 | **Floor 14** | 2025-05-16 → 2025-05-19 (+3d) | 2025-07-30 → 2025-07-31 (+1d) |  |  |
| 1.3.1.2.4.17.1 | **Ceiling Finishing works - Civil** | 2025-05-27 → 2025-05-28 (+1d) | 2025-07-30 → 2025-07-31 (+1d) |  |  |
| PG-11467 | Gypsum Plastering | 2025-05-27 → 2025-05-28 (+1d) | 2025-06-03 → 2025-06-04 (+1d) |  | 369.57d → 369.93d |
| PG-11468 | Cornice fixing | 2025-06-12 → 2025-06-13 (+1d) | 2025-06-17 → 2025-06-18 (+1d) |  | 369.57d → 369.93d |
| PG-11470 | Toilet False ceiling | 2025-06-19 → 2025-06-21 (+2d) | 2025-06-24 → 2025-06-25 (+1d) |  | 350.57d → 350.93d |
| PG-11469 | Painting Works - Putty, Primer and 1st | 2025-06-30 → 2025-07-02 (+2d) | 2025-07-07 → 2025-07-08 (+1d) |  | 358.24d → 358.6d |
| PG-11471 | Final Coat Painting | 2025-07-07 → 2025-07-09 (+2d) | 2025-07-30 → 2025-07-31 (+1d) |  | 358.24d → 358.6d |
| 1.3.1.2.4.17.2 | **Wall Finishing works - Civil** | 2025-05-16 → 2025-05-19 (+3d) | 2025-07-30 → 2025-07-31 (+1d) |  |  |
| PG-11472 | Balcony Railing Fixing works | 2025-05-16 → 2025-05-19 (+3d) | 2025-05-21 → 2025-05-22 (+1d) |  | 352.57d → 352.93d |
| PG-11474 | Dadoing - Wet area | 2025-06-06 → 2025-06-09 (+3d) | 2025-06-12 → 2025-06-13 (+1d) |  | 323.57d → 323.93d |
| PG-11473 | UPVC Windows & Sliding doors | 2025-06-24 → 2025-06-26 (+2d) | 2025-06-30 → 2025-07-01 (+1d) |  | 323.57d → 323.93d |
| PG-11475 | Painting Works - Putty, Primer and 1st | 2025-06-30 → 2025-07-02 (+2d) | 2025-07-07 → 2025-07-08 (+1d) |  | 323.57d → 323.93d |
| PG-11476 | Final Coat Painting | 2025-07-07 → 2025-07-09 (+2d) | 2025-07-30 → 2025-07-31 (+1d) |  | 323.57d → 323.93d |
| 1.3.1.2.4.17.3 | **Floor Finishing Works - Civil** | 2025-05-16 → 2025-05-19 (+3d) | 2025-07-07 → 2025-07-08 (+1d) |  |  |
| PG-11477 | Waterproofing for sunken areas | 2025-05-16 → 2025-05-19 (+3d) | 2025-05-20 → 2025-05-21 (+1d) |  | 343.57d → 343.93d |
| PG-11478 | Floor Tiling - Wet area | 2025-06-12 → 2025-06-14 (+2d) | 2025-06-18 → 2025-06-19 (+1d) |  | 323.57d → 323.93d |
| PG-11479 | Floor Tiling - Dry area | 2025-06-18 → 2025-06-20 (+2d) | 2025-06-24 → 2025-06-25 (+1d) |  | 323.57d → 323.93d |
| PG-11480 | Wooden doors | 2025-07-01 → 2025-07-03 (+2d) | 2025-07-07 → 2025-07-08 (+1d) |  | 323.57d → 323.93d |
| 1.3.1.2.4.18 | **Floor 15** | 2025-05-29 → 2025-05-31 (+2d) | 2025-08-11 → 2025-08-12 (+1d) |  |  |
| 1.3.1.2.4.18.1 | **Ceiling Finishing works - Civil** | 2025-06-07 → 2025-06-09 (+2d) | 2025-08-11 → 2025-08-12 (+1d) |  |  |
| PG-11481 | Gypsum Plastering | 2025-06-07 → 2025-06-09 (+2d) | 2025-06-14 → 2025-06-16 (+2d) |  | 360.24d → 360.6d |
| PG-11482 | Cornice fixing | 2025-06-24 → 2025-06-25 (+1d) | 2025-06-28 → 2025-06-30 (+2d) |  | 360.24d → 360.6d |
| PG-11484 | Toilet False ceiling | 2025-07-02 → 2025-07-04 (+2d) | 2025-07-07 → 2025-07-08 (+1d) |  | 339.57d → 339.93d |
| PG-11483 | Painting Works - Putty, Primer and 1st | 2025-07-12 → 2025-07-15 (+3d) | 2025-07-19 → 2025-07-21 (+2d) |  | 348.07d → 348.43d |
| PG-11485 | Final Coat Painting | 2025-07-19 → 2025-07-22 (+3d) | 2025-08-11 → 2025-08-12 (+1d) |  | 348.07d → 348.43d |
| 1.3.1.2.4.18.2 | **Wall Finishing works - Civil** | 2025-05-29 → 2025-05-31 (+2d) | 2025-08-11 → 2025-08-12 (+1d) |  |  |
| PG-11486 | Balcony Railing Fixing works | 2025-05-29 → 2025-05-31 (+2d) | 2025-06-03 → 2025-06-04 (+1d) |  | 191.57d → 191.93d |
| PG-11488 | Dadoing - Wet area | 2025-06-19 → 2025-06-21 (+2d) | 2025-06-25 → 2025-06-26 (+1d) |  | 162.57d → 162.93d |

| ID | Task | Start | Finish | Total float |
| --- | --- | --- | --- | --- |
| PG-11487 | UPVC Windows & Sliding doors | 2025-07-07 → 2025-07-09 (+2d) | 2025-07-12 → 2025-07-14 (+2d) | 162.57d → 162.93d |
| PG-11489 | Painting Works - Putty, Primer and 1st | 2025-07-12 → 2025-07-15 (+3d) | 2025-07-19 → 2025-07-21 (+2d) | 162.57d → 162.93d |
| PG-11490 | Final Coat Painting | 2025-07-19 → 2025-07-22 (+3d) | 2025-08-11 → 2025-08-12 (+1d) | 313.57d → 313.93d |
| 1.3.1.2.4.18.3 | **Floor Finishing Works - Civil** | 2025-05-29 → 2025-05-31 (+2d) | 2025-07-19 → 2025-07-21 (+2d) |  |
| PG-11491 | Waterproofing for sunken areas | 2025-05-29 → 2025-05-31 (+2d) | 2025-06-02 → 2025-06-03 (+1d) | 182.57d → 182.93d |
| PG-11492 | Floor Tiling - Wet area | 2025-06-25 → 2025-06-27 (+2d) | 2025-07-01 → 2025-07-02 (+1d) | 162.57d → 162.93d |
| PG-11493 | Floor Tiling - Dry area | 2025-07-01 → 2025-07-03 (+2d) | 2025-07-07 → 2025-07-08 (+1d) | 162.57d → 162.93d |
| PG-11494 | Wooden doors | 2025-07-14 → 2025-07-16 (+2d) | 2025-07-19 → 2025-07-21 (+2d) | 162.57d → 162.93d |
| 1.3.1.2.4.19 | **Floor 16** | 2025-06-11 → 2025-06-13 (+2d) | 2025-08-25 → 2025-08-26 (+1d) |  |
| 1.3.1.2.4.19.1 | **Ceiling Finishing works - Civil** | 2025-06-20 → 2025-06-21 (+1d) | 2025-08-25 → 2025-08-26 (+1d) |  |
| PG-11495 | Gypsum Plastering | 2025-06-20 → 2025-06-21 (+1d) | 2025-06-27 → 2025-06-28 (+1d) | 349.07d → 349.43d |
| PG-11496 | Cornice fixing | 2025-07-07 → 2025-07-08 (+1d) | 2025-07-11 → 2025-07-12 (+1d) | 349.07d → 349.43d |
| PG-11498 | Toilet False ceiling | 2025-07-15 → 2025-07-17 (+2d) | 2025-07-19 → 2025-07-21 (+2d) | 327.4d → 327.76d |
| PG-11497 | Painting Works - Putty, Primer and 1st | 2025-07-25 → 2025-07-28 (+3d) | 2025-08-01 → 2025-08-02 (+1d) | 336.9d → 337.26d |
| PG-11499 | Final Coat Painting | 2025-08-01 → 2025-08-04 (+3d) | 2025-08-25 → 2025-08-26 (+1d) | 336.9d → 337.26d |
| 1.3.1.2.4.19.2 | **Wall Finishing works - Civil** | 2025-06-11 → 2025-06-13 (+2d) | 2025-08-23 → 2025-08-25 (+2d) |  |
| PG-11500 | Balcony Railing Fixing works | 2025-06-11 → 2025-06-13 (+2d) | 2025-06-16 → 2025-06-17 (+1d) | 332.24d → 332.6d |
| PG-11502 | Dadoing - Wet area | 2025-07-02 → 2025-07-04 (+2d) | 2025-07-08 → 2025-07-09 (+1d) | 303.24d → 303.6d |
| PG-11501 | UPVC Windows & Sliding doors | 2025-07-19 → 2025-07-22 (+3d) | 2025-07-25 → 2025-07-26 (+1d) | 303.24d → 303.6d |
| PG-11503 | Painting Works - Putty, Primer and 1st | 2025-07-25 → 2025-07-28 (+3d) | 2025-08-01 → 2025-08-02 (+1d) | 303.24d → 303.6d |
| PG-11504 | Final Coat Painting | 2025-08-01 → 2025-08-04 (+3d) | 2025-08-23 → 2025-08-25 (+2d) | 303.24d → 303.6d |
| 1.3.1.2.4.19.3 | **Floor Finishing Works - Civil** | 2025-06-11 → 2025-06-13 (+2d) | 2025-08-01 → 2025-08-02 (+1d) |  |
| PG-11505 | Waterproofing for sunken areas | 2025-06-11 → 2025-06-13 (+2d) | 2025-06-14 → 2025-06-16 (+2d) | 323.24d → 323.6d |
| PG-11506 | Floor Tiling - Wet area | 2025-07-08 → 2025-07-10 (+2d) | 2025-07-14 → 2025-07-15 (+1d) | 303.24d → 303.6d |
| PG-11507 | Floor Tiling - Dry area | 2025-07-14 → 2025-07-16 (+2d) | 2025-07-19 → 2025-07-21 (+2d) | 303.24d → 303.6d |
| PG-11508 | Wooden doors | 2025-07-26 → 2025-07-29 (+3d) | 2025-08-01 → 2025-08-02 (+1d) | 303.24d → 303.6d |
| 1.3.1.2.4.20 | **Floor 17** | 2025-06-24 → 2025-06-26 (+2d) | 2025-09-06 → 2025-09-08 (+2d) |  |
| 1.3.1.2.4.20.1 | **Ceiling Finishing works - Civil** | 2025-07-03 → 2025-07-04 (+1d) | 2025-09-06 → 2025-09-08 (+2d) |  |
| PG-11509 | Gypsum Plastering | 2025-07-03 → 2025-07-04 (+1d) | 2025-07-10 → 2025-07-11 (+1d) | 338.07d → 338.43d |
| PG-11510 | Cornice fixing | 2025-07-19 → 2025-07-21 (+2d) | 2025-07-24 → 2025-07-25 (+1d) | 338.07d → 338.43d |
| PG-11512 | Toilet False ceiling | 2025-07-28 → 2025-07-30 (+2d) | 2025-08-01 → 2025-08-02 (+1d) | 316.4d → 316.76d |
| PG-11511 | Painting Works - Putty, Primer and 1st | 2025-08-07 → 2025-08-09 (+2d) | 2025-08-14 → 2025-08-16 (+2d) | 325.9d → 326.26d |
| PG-11513 | Final Coat Painting | 2025-08-14 → 2025-08-18 (+4d) | 2025-09-06 → 2025-09-08 (+2d) | 325.9d → 326.26d |
| 1.3.1.2.4.20.2 | **Wall Finishing works - Civil** | 2025-06-24 → 2025-06-26 (+2d) | 2025-09-05 → 2025-09-06 (+1d) |  |
| PG-11514 | Balcony Railing Fixing works | 2025-06-24 → 2025-06-26 (+2d) | 2025-06-28 → 2025-06-30 (+2d) | 321.24d → 321.6d |
| PG-11516 | Dadoing - Wet area | 2025-07-15 → 2025-07-17 (+2d) | 2025-07-21 → 2025-07-22 (+1d) | 292.24d → 292.6d |
| PG-11515 | UPVC Windows & Sliding doors | 2025-08-01 → 2025-08-04 (+3d) | 2025-08-07 → 2025-08-08 (+1d) | 292.24d → 292.6d |
| PG-11517 | Painting Works - Putty, Primer and 1st | 2025-08-07 → 2025-08-09 (+2d) | 2025-08-14 → 2025-08-16 (+2d) | 292.24d → 292.6d |
| PG-11518 | Final Coat Painting | 2025-08-14 → 2025-08-18 (+4d) | 2025-09-05 → 2025-09-06 (+1d) | 292.24d → 292.6d |
| 1.3.1.2.4.20.3 | **Floor Finishing Works - Civil** | 2025-06-24 → 2025-06-26 (+2d) | 2025-08-14 → 2025-08-16 (+2d) |  |
| PG-11519 | Waterproofing for sunken areas | 2025-06-24 → 2025-06-26 (+2d) | 2025-06-27 → 2025-06-28 (+1d) | 312.24d → 312.6d |
| PG-11520 | Floor Tiling - Wet area | 2025-07-21 → 2025-07-23 (+2d) | 2025-07-26 → 2025-07-28 (+2d) | 292.24d → 292.6d |
| PG-11521 | Floor Tiling - Dry area | 2025-07-26 → 2025-07-29 (+3d) | 2025-08-01 → 2025-08-02 (+1d) | 292.24d → 292.6d |
| PG-11522 | Wooden doors | 2025-08-08 → 2025-08-11 (+3d) | 2025-08-14 → 2025-08-16 (+2d) | 292.24d → 292.6d |
| 1.3.1.2.4.21 | **Floor 18** | 2025-07-07 → 2025-07-09 (+2d) | 2025-09-19 → 2025-09-20 (+1d) |  |
| 1.3.1.2.4.21.1 | **Ceiling Finishing works - Civil** | 2025-07-16 → 2025-07-17 (+1d) | 2025-09-19 → 2025-09-20 (+1d) |  |
| PG-11523 | Gypsum Plastering | 2025-07-16 → 2025-07-17 (+1d) | 2025-07-23 → 2025-07-24 (+1d) | 328.07d → 328.43d |
| PG-11524 | Cornice fixing | 2025-08-01 → 2025-08-02 (+1d) | 2025-08-06 → 2025-08-07 (+1d) | 328.07d → 328.43d |
| PG-11526 | Toilet False ceiling | 2025-08-09 → 2025-08-11 (+2d) | 2025-08-14 → 2025-08-16 (+2d) | 305.4d → 305.76d |
| PG-11525 | Painting Works - Putty, Primer and 1st | 2025-08-21 → 2025-08-22 (+1d) | 2025-08-28 → 2025-08-29 (+1d) | 316.24d → 316.6d |
| PG-11527 | Final Coat Painting | 2025-08-28 → 2025-08-29 (+1d) | 2025-09-19 → 2025-09-20 (+1d) | 316.24d → 316.6d |
| 1.3.1.2.4.21.2 | **Wall Finishing works - Civil** | 2025-07-07 → 2025-07-09 (+2d) | 2025-09-19 → 2025-09-20 (+1d) |  |
| PG-11528 | Balcony Railing Fixing works | 2025-07-07 → 2025-07-09 (+2d) | 2025-07-11 → 2025-07-12 (+1d) | 309.07d → 309.43d |
| PG-11530 | Dadoing - Wet area | 2025-07-28 → 2025-07-29 (+1d) | 2025-08-02 → 2025-08-04 (+2d) | 280.4d → 280.76d |
| PG-11529 | UPVC Windows & Sliding doors | 2025-08-14 → 2025-08-16 (+2d) | 2025-08-21 → 2025-08-22 (+1d) | 280.4d → 280.76d |
| PG-11531 | Painting Works - Putty, Primer and 1st | 2025-08-21 → 2025-08-22 (+1d) | 2025-08-28 → 2025-08-29 (+1d) | 280.4d → 280.76d |
| PG-11532 | Final Coat Painting | 2025-08-28 → 2025-08-29 (+1d) | 2025-09-19 → 2025-09-20 (+1d) | 280.4d → 280.76d |
| 1.3.1.2.4.21.3 | **Floor Finishing Works - Civil** | 2025-07-07 → 2025-07-09 (+2d) | 2025-08-28 → 2025-08-29 (+1d) |  |
| PG-11533 | Waterproofing for sunken areas | 2025-07-07 → 2025-07-09 (+2d) | 2025-07-10 → 2025-07-11 (+1d) | 300.07d → 300.43d |
| PG-11534 | Floor Tiling - Wet area | 2025-08-02 → 2025-08-04 (+2d) | 2025-08-08 → 2025-08-09 (+1d) | 280.4d → 280.76d |
| PG-11535 | Floor Tiling - Dry area | 2025-08-08 → 2025-08-09 (+1d) | 2025-08-14 → 2025-08-16 (+2d) | 280.4d → 280.76d |
| PG-11536 | Wooden doors | 2025-08-22 → 2025-08-23 (+1d) | 2025-08-28 → 2025-08-29 (+1d) | 280.4d → 280.76d |
| 1.3.1.2.4.22 | **Floor 19** | 2025-07-19 → 2025-07-22 (+3d) | 2025-10-03 → 2025-10-04 (+1d) |  |
| 1.3.1.2.4.22.1 | **Ceiling Finishing works - Civil** | 2025-07-29 → 2025-07-30 (+1d) | 2025-10-03 → 2025-10-04 (+1d) |  |
| PG-11537 | Gypsum Plastering | 2025-07-29 → 2025-07-30 (+1d) | 2025-08-05 → 2025-08-06 (+1d) | 317.07d → 317.43d |
| PG-11538 | Cornice fixing | 2025-08-16 → 2025-08-18 (+2d) | 2025-08-20 → 2025-08-21 (+1d) | 317.07d → 317.43d |
| PG-11540 | Toilet False ceiling | 2025-08-23 → 2025-08-25 (+2d) | 2025-08-28 → 2025-08-29 (+1d) | 294.4d → 294.76d |
| PG-11539 | Painting Works - Putty, Primer and 1st | 2025-09-03 → 2025-09-04 (+1d) | 2025-09-10 → 2025-09-11 (+1d) | 305.24d → 305.6d |
| PG-11541 | Final Coat Painting | 2025-09-10 → 2025-09-11 (+1d) | 2025-10-03 → 2025-10-04 (+1d) | 305.24d → 305.6d |
| 1.3.1.2.4.22.2 | **Wall Finishing works - Civil** | 2025-07-19 → 2025-07-22 (+3d) | 2025-10-03 → 2025-10-04 (+1d) |  |

| ID | Task | Start | Finish | Total float |
| --- | --- | --- | --- | --- |
| PG-11542 | Balcony Railing Fixing works | 2025-07-19 → 2025-07-22 (+3d) | 2025-07-24 → 2025-07-25 (+1d) | 298.07d → 298.43d |
| PG-11544 | Dadoing - Wet area | 2025-08-09 → 2025-08-11 (+2d) | 2025-08-16 → 2025-08-18 (+2d) | 269.4d → 269.76d |
| PG-11543 | UPVC Windows & Sliding doors | 2025-08-28 → 2025-08-29 (+1d) | 2025-09-03 → 2025-09-04 (+1d) | 269.4d → 269.76d |
| PG-11545 | Painting Works - Putty, Primer and 1st | 2025-09-03 → 2025-09-04 (+1d) | 2025-09-10 → 2025-09-11 (+1d) | 269.4d → 269.76d |
| PG-11546 | Final Coat Painting | 2025-09-10 → 2025-09-11 (+1d) | 2025-10-03 → 2025-10-04 (+1d) | 269.4d → 269.76d |
| 1.3.1.2.4.22.3 | **Floor Finishing Works - Civil** | 2025-07-19 → 2025-07-22 (+3d) | 2025-09-10 → 2025-09-11 (+1d) |  |
| PG-11547 | Waterproofing for sunken areas | 2025-07-19 → 2025-07-22 (+3d) | 2025-07-23 → 2025-07-24 (+1d) | 289.07d → 289.43d |
| PG-11548 | Floor Tiling - Wet area | 2025-08-16 → 2025-08-18 (+2d) | 2025-08-22 → 2025-08-23 (+1d) | 269.4d → 269.76d |
| PG-11549 | Floor Tiling - Dry area | 2025-08-22 → 2025-08-23 (+1d) | 2025-08-28 → 2025-08-29 (+1d) | 269.4d → 269.76d |
| PG-11550 | Wooden doors | 2025-09-04 → 2025-09-05 (+1d) | 2025-09-10 → 2025-09-11 (+1d) | 269.4d → 269.76d |
| 1.3.1.2.4.23 | **Floor 20** | 2025-08-01 → 2025-08-04 (+3d) | 2025-10-17 → 2025-10-18 (+1d) |  |
| 1.3.1.2.4.23.1 | **Ceiling Finishing works - Civil** | 2025-08-12 → 2025-08-13 (+1d) | 2025-10-17 → 2025-10-18 (+1d) |  |
| PG-11551 | Gypsum Plastering | 2025-08-12 → 2025-08-13 (+1d) | 2025-08-20 → 2025-08-21 (+1d) | 305.24d → 305.6d |
| PG-11552 | Cornice fixing | 2025-08-29 → 2025-09-01 (+3d) | 2025-09-03 → 2025-09-04 (+1d) | 305.24d → 305.6d |
| PG-11554 | Toilet False ceiling | 2025-09-06 → 2025-09-08 (+2d) | 2025-09-11 → 2025-09-12 (+1d) | 282.4d → 282.76d |
| PG-11553 | Painting Works - Putty, Primer and 1st | 2025-09-17 → 2025-09-18 (+1d) | 2025-09-24 → 2025-09-25 (+1d) | 293.24d → 293.6d |
| PG-11555 | Final Coat Painting | 2025-09-24 → 2025-09-25 (+1d) | 2025-10-17 → 2025-10-18 (+1d) | 293.24d → 293.6d |
| 1.3.1.2.4.23.2 | **Wall Finishing works - Civil** | 2025-08-01 → 2025-08-04 (+3d) | 2025-10-17 → 2025-10-18 (+1d) |  |
| PG-11556 | Balcony Railing Fixing works | 2025-08-01 → 2025-08-04 (+3d) | 2025-08-06 → 2025-08-07 (+1d) | 287.07d → 287.43d |
| PG-11558 | Dadoing - Wet area | 2025-08-25 → 2025-08-26 (+1d) | 2025-08-30 → 2025-09-01 (+2d) | 257.4d → 257.76d |
| PG-11557 | UPVC Windows & Sliding doors | 2025-09-11 → 2025-09-12 (+1d) | 2025-09-17 → 2025-09-18 (+1d) | 257.4d → 257.76d |
| PG-11559 | Painting Works - Putty, Primer and 1st | 2025-09-17 → 2025-09-18 (+1d) | 2025-09-24 → 2025-09-25 (+1d) | 257.4d → 257.76d |
| PG-11560 | Final Coat Painting | 2025-09-24 → 2025-09-25 (+1d) | 2025-10-17 → 2025-10-18 (+1d) | 257.4d → 257.76d |
| 1.3.1.2.4.23.3 | **Floor Finishing Works - Civil** | 2025-08-01 → 2025-08-04 (+3d) | 2025-09-24 → 2025-09-25 (+1d) |  |
| PG-11561 | Waterproofing for sunken areas | 2025-08-01 → 2025-08-04 (+3d) | 2025-08-05 → 2025-08-06 (+1d) | 278.07d → 278.43d |
| PG-11562 | Floor Tiling - Wet area | 2025-08-30 → 2025-09-01 (+2d) | 2025-09-05 → 2025-09-06 (+1d) | 257.4d → 257.76d |
| PG-11563 | Floor Tiling - Dry area | 2025-09-05 → 2025-09-06 (+1d) | 2025-09-11 → 2025-09-12 (+1d) | 257.4d → 257.76d |
| PG-11564 | Wooden doors | 2025-09-18 → 2025-09-19 (+1d) | 2025-09-24 → 2025-09-25 (+1d) | 257.4d → 257.76d |
| 1.3.1.2.4.24 | **Floor 21** | 2025-08-14 → 2025-08-18 (+4d) | 2025-10-29 → 2025-10-30 (+1d) |  |
| 1.3.1.2.4.24.1 | **Ceiling Finishing works - Civil** | 2025-08-23 → 2025-08-25 (+2d) | 2025-10-29 → 2025-10-30 (+1d) |  |
| PG-11565 | Gypsum Plastering | 2025-08-23 → 2025-08-25 (+2d) | 2025-08-30 → 2025-09-01 (+2d) | 295.4d → 295.76d |
| PG-11566 | Cornice fixing | 2025-09-09 → 2025-09-11 (+2d) | 2025-09-13 → 2025-09-15 (+2d) | 295.4d → 295.76d |
| PG-11568 | Toilet False ceiling | 2025-09-17 → 2025-09-18 (+1d) | 2025-09-22 → 2025-09-23 (+1d) | 273.74d → 274.1d |
| PG-11567 | Painting Works - Putty, Primer and 1st | 2025-09-27 → 2025-09-29 (+2d) | 2025-10-06 → 2025-10-07 (+1d) | 283.4d → 283.76d |
| PG-11569 | Final Coat Painting | 2025-10-06 → 2025-10-07 (+1d) | 2025-10-29 → 2025-10-30 (+1d) | 283.4d → 283.76d |
| 1.3.1.2.4.24.2 | **Wall Finishing works - Civil** | 2025-08-14 → 2025-08-18 (+4d) | 2025-10-29 → 2025-10-30 (+1d) |  |
| PG-11570 | Balcony Railing Fixing works | 2025-08-14 → 2025-08-18 (+4d) | 2025-08-20 → 2025-08-21 (+1d) | 275.4d → 275.76d |
| PG-11572 | Dadoing - Wet area | 2025-09-04 → 2025-09-05 (+1d) | 2025-09-10 → 2025-09-11 (+1d) | 247.74d → 248.1d |
| PG-11571 | UPVC Windows & Sliding doors | 2025-09-22 → 2025-09-23 (+1d) | 2025-09-27 → 2025-09-29 (+2d) | 247.74d → 248.1d |
| PG-11573 | Painting Works - Putty, Primer and 1st | 2025-09-27 → 2025-09-29 (+2d) | 2025-10-06 → 2025-10-07 (+1d) | 247.74d → 248.1d |
| PG-11574 | Final Coat Painting | 2025-10-06 → 2025-10-07 (+1d) | 2025-10-29 → 2025-10-30 (+1d) | 247.74d → 248.1d |
| 1.3.1.2.4.24.3 | **Floor Finishing Works - Civil** | 2025-08-14 → 2025-08-18 (+4d) | 2025-10-06 → 2025-10-07 (+1d) |  |
| PG-11575 | Waterproofing for sunken areas | 2025-08-14 → 2025-08-18 (+4d) | 2025-08-19 → 2025-08-20 (+1d) | 266.4d → 266.76d |
| PG-11576 | Floor Tiling - Wet area | 2025-09-10 → 2025-09-11 (+1d) | 2025-09-16 → 2025-09-17 (+1d) | 247.74d → 248.1d |
| PG-11577 | Floor Tiling - Dry area | 2025-09-16 → 2025-09-17 (+1d) | 2025-09-22 → 2025-09-23 (+1d) | 247.74d → 248.1d |
| PG-11578 | Wooden doors | 2025-09-29 → 2025-09-30 (+1d) | 2025-10-06 → 2025-10-07 (+1d) | 247.74d → 248.1d |
| 1.3.1.2.4.25 | **Floor 22** | 2025-09-05 → 2025-09-06 (+1d) | 2025-11-21 → 2025-11-22 (+1d) |  |
| 1.3.1.2.4.25.1 | **Ceiling Finishing works - Civil** | 2025-09-15 → 2025-09-16 (+1d) | 2025-11-21 → 2025-11-22 (+1d) |  |
| PG-11579 | Gypsum Plastering | 2025-09-15 → 2025-09-16 (+1d) | 2025-09-22 → 2025-09-23 (+1d) | 145.4d → 145.76d |
| PG-11580 | Cornice fixing | 2025-10-01 → 2025-10-03 (+2d) | 2025-10-07 → 2025-10-08 (+1d) | 145.4d → 145.76d |
| PG-11582 | Toilet False ceiling | 2025-10-10 → 2025-10-11 (+1d) | 2025-10-15 → 2025-10-16 (+1d) | 254.9d → 255.26d |
| PG-11581 | Painting Works - Putty, Primer and 1st | 2025-10-21 → 2025-10-22 (+1d) | 2025-10-28 → 2025-10-29 (+1d) | 133.24d → 133.6d |
| PG-11583 | Final Coat Painting | 2025-10-28 → 2025-10-29 (+1d) | 2025-11-21 → 2025-11-22 (+1d) | 262.57d → 262.93d |
| 1.3.1.2.4.25.2 | **Wall Finishing works - Civil** | 2025-09-05 → 2025-09-06 (+1d) | 2025-11-21 → 2025-11-22 (+1d) |  |
| PG-11584 | Balcony Railing Fixing works | 2025-09-05 → 2025-09-06 (+1d) | 2025-09-10 → 2025-09-11 (+1d) | 162.07d → 162.43d |
| PG-11586 | Dadoing - Wet area | 2025-09-26 → 2025-09-27 (+1d) | 2025-10-03 → 2025-10-04 (+1d) | 133.24d → 133.6d |
| PG-11585 | UPVC Windows & Sliding doors | 2025-10-15 → 2025-10-16 (+1d) | 2025-10-21 → 2025-10-22 (+1d) | 133.24d → 133.6d |
| PG-11587 | Painting Works - Putty, Primer and 1st | 2025-10-21 → 2025-10-22 (+1d) | 2025-10-28 → 2025-10-29 (+1d) | 227.9d → 228.26d |
| PG-11588 | Final Coat Painting | 2025-10-28 → 2025-10-29 (+1d) | 2025-11-21 → 2025-11-22 (+1d) | 227.9d → 228.26d |
| 1.3.1.2.4.25.3 | **Floor Finishing Works - Civil** | 2025-09-05 → 2025-09-06 (+1d) | 2025-10-28 → 2025-10-29 (+1d) |  |
| PG-11589 | Waterproofing for sunken areas | 2025-09-05 → 2025-09-06 (+1d) | 2025-09-09 → 2025-09-10 (+1d) | 153.07d → 153.43d |
| PG-11590 | Floor Tiling - Wet area | 2025-10-03 → 2025-10-04 (+1d) | 2025-10-09 → 2025-10-10 (+1d) | 133.24d → 133.6d |
| PG-11591 | Floor Tiling - Dry area | 2025-10-09 → 2025-10-10 (+1d) | 2025-10-15 → 2025-10-16 (+1d) | 133.24d → 133.6d |
| PG-11592 | Wooden doors | 2025-10-22 → 2025-10-23 (+1d) | 2025-10-28 → 2025-10-29 (+1d) | 227.9d → 228.26d |
| 1.3.1.2.4.26 | **Floor 23** | 2025-09-27 → 2025-09-29 (+2d) | 2025-12-11 → 2025-12-12 (+1d) |  |
| 1.3.1.2.4.26.1 | **Ceiling Finishing works - Civil** | 2025-10-08 → 2025-10-09 (+1d) | 2025-12-11 → 2025-12-12 (+1d) |  |
| PG-11593 | Gypsum Plastering | 2025-10-08 → 2025-10-09 (+1d) | 2025-10-15 → 2025-10-16 (+1d) | 256.74d → 257.1d |
| PG-11594 | Cornice fixing | 2025-10-24 → 2025-10-25 (+1d) | 2025-10-29 → 2025-10-30 (+1d) | 256.74d → 257.1d |
| PG-11596 | Toilet False ceiling | 2025-10-31 → 2025-11-03 (+3d) | 2025-11-06 → 2025-11-07 (+1d) | 236.9d → 237.26d |
| PG-11595 | Painting Works - Putty, Primer and 1st | 2025-11-12 → 2025-11-13 (+1d) | 2025-11-19 → 2025-11-20 (+1d) | 245.74d → 246.1d |

| ID | Task | Start | Finish | Total float |
| --- | --- | --- | --- | --- |
| PG-11597 | Final Coat Painting | 2025-11-19 → 2025-11-20 (+1d) | 2025-12-11 → 2025-12-12 (+1d) | 245.74d → 246.1d |
| 1.3.1.2.4.26.2 | **Wall Finishing works - Civil** | 2025-09-27 → 2025-09-29 (+2d) | 2025-12-11 → 2025-12-12 (+1d) |  |
| PG-11598 | Balcony Railing Fixing works | 2025-09-27 → 2025-09-29 (+2d) | 2025-10-03 → 2025-10-04 (+1d) | 237.57d → 237.93d |
| PG-11600 | Dadoing - Wet area | 2025-10-18 → 2025-10-20 (+2d) | 2025-10-24 → 2025-10-25 (+1d) | 209.9d → 210.26d |
| PG-11599 | UPVC Windows & Sliding doors | 2025-11-06 → 2025-11-07 (+1d) | 2025-11-12 → 2025-11-13 (+1d) | 209.9d → 210.26d |
| PG-11601 | Painting Works - Putty, Primer and 1st | 2025-11-12 → 2025-11-13 (+1d) | 2025-11-19 → 2025-11-20 (+1d) | 209.9d → 210.26d |
| PG-11602 | Final Coat Painting | 2025-11-19 → 2025-11-20 (+1d) | 2025-12-11 → 2025-12-12 (+1d) | 209.9d → 210.26d |
| 1.3.1.2.4.26.3 | **Floor Finishing Works - Civil** | 2025-09-27 → 2025-09-29 (+2d) | 2025-11-19 → 2025-11-20 (+1d) |  |
| PG-11603 | Waterproofing for sunken areas | 2025-09-27 → 2025-09-29 (+2d) | 2025-10-01 → 2025-10-03 (+2d) | 228.57d → 228.93d |
| PG-11604 | Floor Tiling - Wet area | 2025-10-24 → 2025-10-25 (+1d) | 2025-10-30 → 2025-10-31 (+1d) | 209.9d → 210.26d |
| PG-11605 | Floor Tiling - Dry area | 2025-10-30 → 2025-10-31 (+1d) | 2025-11-06 → 2025-11-07 (+1d) | 209.9d → 210.26d |
| PG-11606 | Wooden doors | 2025-11-13 → 2025-11-14 (+1d) | 2025-11-19 → 2025-11-20 (+1d) | 209.9d → 210.26d |
| 1.3.1.2.4.27 | **Floor 24** | 2025-10-20 → 2025-10-21 (+1d) | 2026-01-01 → 2026-01-02 (+1d) |  |
| 1.3.1.2.4.27.1 | **Ceiling Finishing works - Civil** | 2025-10-28 → 2025-10-29 (+1d) | 2026-01-01 → 2026-01-02 (+1d) |  |
| PG-11607 | Gypsum Plastering | 2025-10-28 → 2025-10-29 (+1d) | 2025-11-05 → 2025-11-06 (+1d) | 239.4d → 239.76d |
| PG-11608 | Cornice fixing | 2025-11-15 → 2025-11-17 (+2d) | 2025-11-19 → 2025-11-20 (+1d) | 239.4d → 239.76d |
| PG-11610 | Toilet False ceiling | 2025-11-22 → 2025-11-24 (+2d) | 2025-11-27 → 2025-11-28 (+1d) | 216.24d → 216.6d |
| PG-11609 | Painting Works - Putty, Primer and 1st | 2025-12-03 → 2025-12-04 (+1d) | 2025-12-10 → 2025-12-11 (+1d) | 227.4d → 227.76d |
| PG-11611 | Final Coat Painting | 2025-12-10 → 2025-12-11 (+1d) | 2026-01-01 → 2026-01-02 (+1d) | 227.4d → 227.76d |
| 1.3.1.2.4.27.2 | **Wall Finishing works - Civil** | 2025-10-20 → 2025-10-21 (+1d) | 2026-01-01 → 2026-01-02 (+1d) |  |
| PG-11612 | Balcony Railing Fixing works | 2025-10-20 → 2025-10-21 (+1d) | 2025-10-24 → 2025-10-25 (+1d) | 219.4d → 219.76d |
| PG-11614 | Dadoing - Wet area | 2025-11-10 → 2025-11-11 (+1d) | 2025-11-15 → 2025-11-17 (+2d) | 190.74d → 191.1d |
| PG-11613 | UPVC Windows & Sliding doors | 2025-11-27 → 2025-11-28 (+1d) | 2025-12-03 → 2025-12-04 (+1d) | 190.74d → 191.1d |
| PG-11615 | Painting Works - Putty, Primer and 1st | 2025-12-03 → 2025-12-04 (+1d) | 2025-12-10 → 2025-12-11 (+1d) | 190.74d → 191.1d |
| PG-11616 | Final Coat Painting | 2025-12-10 → 2025-12-11 (+1d) | 2026-01-01 → 2026-01-02 (+1d) | 190.74d → 191.1d |
| 1.3.1.2.4.27.3 | **Floor Finishing Works - Civil** | 2025-10-20 → 2025-10-21 (+1d) | 2025-12-10 → 2025-12-11 (+1d) |  |
| PG-11617 | Waterproofing for sunken areas | 2025-10-20 → 2025-10-21 (+1d) | 2025-10-23 → 2025-10-24 (+1d) | 210.4d → 210.76d |
| PG-11618 | Floor Tiling - Wet area | 2025-11-15 → 2025-11-17 (+2d) | 2025-11-21 → 2025-11-22 (+1d) | 190.74d → 191.1d |
| PG-11619 | Floor Tiling - Dry area | 2025-11-21 → 2025-11-22 (+1d) | 2025-11-27 → 2025-11-28 (+1d) | 190.74d → 191.1d |
| PG-11620 | Wooden doors | 2025-12-04 → 2025-12-05 (+1d) | 2025-12-10 → 2025-12-11 (+1d) | 190.74d → 191.1d |
| 1.3.1.2.4.28 | **Floor 25** | 2025-11-11 → 2025-11-12 (+1d) | 2026-01-24 → 2026-01-27 (+3d) |  |
| 1.3.1.2.4.28.1 | **Ceiling Finishing works - Civil** | 2025-11-20 → 2025-11-21 (+1d) | 2026-01-24 → 2026-01-27 (+3d) |  |
| PG-11621 | Gypsum Plastering | 2025-11-20 → 2025-11-21 (+1d) | 2025-11-27 → 2025-11-28 (+1d) | 218.9d → 219.26d |
| PG-11622 | Cornice fixing | 2025-12-06 → 2025-12-08 (+2d) | 2025-12-11 → 2025-12-12 (+1d) | 218.9d → 219.26d |
| PG-11624 | Toilet False ceiling | 2025-12-15 → 2025-12-16 (+1d) | 2025-12-19 → 2025-12-20 (+1d) | 198.24d → 198.6d |
| PG-11623 | Painting Works - Putty, Primer and 1st | 2025-12-25 → 2025-12-26 (+1d) | 2026-01-01 → 2026-01-02 (+1d) | 206.9d → 207.26d |
| PG-11625 | Final Coat Painting | 2026-01-01 → 2026-01-02 (+1d) | 2026-01-24 → 2026-01-27 (+3d) | 206.9d → 207.26d |
| 1.3.1.2.4.28.2 | **Wall Finishing works - Civil** | 2025-11-11 → 2025-11-12 (+1d) | 2026-01-24 → 2026-01-27 (+3d) |  |
| PG-11626 | Balcony Railing Fixing works | 2025-11-11 → 2025-11-12 (+1d) | 2025-11-15 → 2025-11-17 (+2d) | 199.9d → 200.26d |
| PG-11628 | Dadoing - Wet area | 2025-12-02 → 2025-12-03 (+1d) | 2025-12-08 → 2025-12-09 (+1d) | 171.24d → 171.6d |
| PG-11627 | UPVC Windows & Sliding doors | 2025-12-19 → 2025-12-20 (+1d) | 2025-12-25 → 2025-12-26 (+1d) | 171.24d → 171.6d |
| PG-11629 | Painting Works - Putty, Primer and 1st | 2025-12-25 → 2025-12-26 (+1d) | 2026-01-01 → 2026-01-02 (+1d) | 171.24d → 171.6d |
| PG-11630 | Final Coat Painting | 2026-01-01 → 2026-01-02 (+1d) | 2026-01-24 → 2026-01-27 (+3d) | 171.24d → 171.6d |
| 1.3.1.2.4.28.3 | **Floor Finishing Works - Civil** | 2025-11-11 → 2025-11-12 (+1d) | 2026-01-01 → 2026-01-02 (+1d) |  |
| PG-11631 | Waterproofing for sunken areas | 2025-11-11 → 2025-11-12 (+1d) | 2025-11-14 → 2025-11-15 (+1d) | 190.9d → 191.26d |
| PG-11632 | Floor Tiling - Wet area | 2025-12-08 → 2025-12-09 (+1d) | 2025-12-13 → 2025-12-15 (+2d) | 171.24d → 171.6d |
| PG-11633 | Floor Tiling - Dry area | 2025-12-13 → 2025-12-15 (+2d) | 2025-12-19 → 2025-12-20 (+1d) | 171.24d → 171.6d |
| PG-11634 | Wooden doors | 2025-12-26 → 2025-12-27 (+1d) | 2026-01-01 → 2026-01-02 (+1d) | 171.24d → 171.6d |
| 1.3.1.2.4.29 | **Floor 26** | 2025-12-03 → 2025-12-04 (+1d) | 2026-02-16 → 2026-02-17 (+1d) |  |
| 1.3.1.2.4.29.1 | **Ceiling Finishing works - Civil** | 2025-12-12 → 2025-12-13 (+1d) | 2026-02-16 → 2026-02-17 (+1d) |  |
| PG-11635 | Gypsum Plastering | 2025-12-12 → 2025-12-13 (+1d) | 2025-12-19 → 2025-12-20 (+1d) | 201.9d → 202.26d |
| PG-11636 | Cornice fixing | 2025-12-29 → 2025-12-30 (+1d) | 2026-01-02 → 2026-01-03 (+1d) | 201.9d → 202.26d |
| PG-11638 | Toilet False ceiling | 2026-01-06 → 2026-01-07 (+1d) | 2026-01-10 → 2026-01-12 (+2d) | 149.74d → 150.1d |
| PG-11637 | Painting Works - Putty, Primer and 1st | 2026-01-16 → 2026-01-17 (+1d) | 2026-01-23 → 2026-01-24 (+1d) | 190.07d → 190.43d |
| PG-11639 | Final Coat Painting | 2026-01-23 → 2026-01-24 (+1d) | 2026-02-16 → 2026-02-17 (+1d) | 190.07d → 190.43d |
| 1.3.1.2.4.29.2 | **Wall Finishing works - Civil** | 2025-12-03 → 2025-12-04 (+1d) | 2026-02-16 → 2026-02-17 (+1d) |  |
| PG-11640 | Balcony Railing Fixing works | 2025-12-03 → 2025-12-04 (+1d) | 2025-12-08 → 2025-12-09 (+1d) | 152.4d → 152.76d |
| PG-11642 | Dadoing - Wet area | 2025-12-24 → 2025-12-25 (+1d) | 2025-12-30 → 2025-12-31 (+1d) | 123.74d → 124.1d |
| PG-11641 | UPVC Windows & Sliding doors | 2026-01-10 → 2026-01-12 (+2d) | 2026-01-16 → 2026-01-17 (+1d) | 123.74d → 124.1d |
| PG-11643 | Painting Works - Putty, Primer and 1st | 2026-01-16 → 2026-01-17 (+1d) | 2026-01-23 → 2026-01-24 (+1d) | 123.74d → 124.1d |
| PG-11644 | Final Coat Painting | 2026-01-23 → 2026-01-24 (+1d) | 2026-02-16 → 2026-02-17 (+1d) | 123.74d → 124.1d |
| 1.3.1.2.4.29.3 | **Floor Finishing Works - Civil** | 2025-12-03 → 2025-12-04 (+1d) | 2026-01-23 → 2026-01-24 (+1d) |  |
| PG-11645 | Waterproofing for sunken areas | 2025-12-03 → 2025-12-04 (+1d) | 2025-12-06 → 2025-12-08 (+2d) | 143.4d → 143.76d |
| PG-11646 | Floor Tiling - Wet area | 2025-12-30 → 2025-12-31 (+1d) | 2026-01-05 → 2026-01-06 (+1d) | 123.74d → 124.1d |
| PG-11647 | Floor Tiling - Dry area | 2026-01-05 → 2026-01-06 (+1d) | 2026-01-10 → 2026-01-12 (+2d) | 123.74d → 124.1d |
| PG-11648 | Wooden doors | 2026-01-17 → 2026-01-19 (+2d) | 2026-01-23 → 2026-01-24 (+1d) | 123.74d → 124.1d |
| 1.3.1.2.4.30 | **External Finishing works** | 2025-09-12 → 2025-09-13 (+1d) | 2026-01-09 → 2026-01-10 (+1d) |  |
| PG-11649 | External walls tie rod hole plugging with GP2 | 2025-09-12 → 2025-09-13 (+1d) | 2025-10-18 → 2025-10-20 (+2d) | 219.9d → 220.26d |
| PG-11650 | External walls grinding works | 2025-10-07 → 2025-10-08 (+1d) | 2025-11-24 → 2025-11-25 (+1d) | 219.9d → 220.26d |
| PG-11651 | Texture and painting works | 2025-11-18 → 2025-11-19 (+1d) | 2026-01-09 → 2026-01-10 (+1d) | 219.9d → 220.26d |

| ID | Task | Start | Finish | Total float |
| --- | --- | --- | --- | --- |
| 1.3.1.2.5 | **Corridor & Fire Staircase Finishing works** | 2025-11-19 → 2025-11-20 (+1d) | 2026-03-19 → 2026-03-20 (+1d) |  |
| 1.3.1.2.5.1 | **Ceiling Finishing works - Civil** | 2025-11-19 → 2025-11-20 (+1d) | 2026-02-12 → 2026-02-13 (+1d) |  |
| PG-11652 | Gypsum Plastering | 2025-11-19 → 2025-11-20 (+1d) | 2025-11-26 → 2025-11-27 (+1d) | 14.9d → 15.26d |
| PG-11653 | Cornice fixing | 2025-11-25 → 2025-11-26 (+1d) | 2025-11-29 → 2025-12-01 (+2d) | 145.4d → 145.76d |
| PG-11654 | Painting Works - Putty, Primer and 1st | 2025-12-13 → 2025-12-15 (+2d) | 2025-12-20 → 2025-12-22 (+2d) | 133.24d → 133.6d |
| PG-11655 | False ceiling | 2025-12-20 → 2025-12-22 (+2d) | 2026-01-24 → 2026-01-27 (+3d) | 133.24d → 133.6d |
| PG-11656 | Final Coat Painting | 2026-01-06 → 2026-01-07 (+1d) | 2026-02-12 → 2026-02-13 (+1d) | 163.24d → 163.6d |
| 1.3.1.2.5.2 | **Wall Finishing works - Civil** | 2025-12-25 → 2025-12-26 (+1d) | 2026-03-19 → 2026-03-20 (+1d) |  |
| PG-11657 | UPVC Windows & Sliding doors | 2025-12-25 → 2025-12-26 (+1d) | 2025-12-31 → 2026-01-01 (+1d) | 139.24d → 139.6d |
| PG-11658 | Wall Cladding Upto 1.2 Mts | 2026-01-12 → 2026-01-13 (+1d) | 2026-02-05 → 2026-02-06 (+1d) | 139.24d → 139.6d |
| PG-11659 | Painting Works - Texture & one coat Painting works | 2026-02-12 → 2026-02-13 (+1d) | 2026-03-02 → 2026-03-03 (+1d) | 133.24d → 133.6d |
| PG-11660 | Final Coat Painting | 2026-02-23 → 2026-02-24 (+1d) | 2026-03-19 → 2026-03-20 (+1d) | 133.24d → 133.6d |
| 1.3.1.2.5.3 | **Floor Finishing Works - Civil** | 2025-11-26 → 2025-11-27 (+1d) | 2025-12-25 → 2025-12-26 (+1d) |  |
| PG-11661 | Fire Doors installation | 2025-11-26 → 2025-11-27 (+1d) | 2025-12-08 → 2025-12-09 (+1d) | 183.74d → 184.1d |
| PG-11662 | Vitrified tile flooring works | 2025-12-08 → 2025-12-09 (+1d) | 2025-12-25 → 2025-12-26 (+1d) | 183.74d → 184.1d |
| 1.3.1.2.5.4 | **Fire Staircase Finishing Works - Civil** | 2025-11-26 → 2025-11-27 (+1d) | 2026-03-18 → 2026-03-19 (+1d) |  |
| PG-11663 | Staircase Railing Fixing works | 2025-11-26 → 2025-11-27 (+1d) | 2025-12-19 → 2025-12-20 (+1d) | 14.9d → 15.26d |
| PG-11664 | Wall and ceiling Gypsum plastering | 2025-12-08 → 2025-12-09 (+1d) | 2026-01-12 → 2026-01-13 (+1d) | 14.9d → 15.26d |
| PG-11665 | Staircase Flooring and Skirting Works | 2025-12-25 → 2025-12-26 (+1d) | 2026-02-11 → 2026-02-12 (+1d) | 14.9d → 15.26d |
| PG-11666 | UPVC Window fixing works | 2026-02-12 → 2026-02-13 (+1d) | 2026-02-28 → 2026-03-02 (+2d) | 14.9d → 15.26d |
| PG-11667 | Staircase Painting works | 2026-02-23 → 2026-02-24 (+1d) | 2026-03-18 → 2026-03-19 (+1d) | 14.9d → 15.26d |
| 1.3.1.2.6 | **MEP Civil Works (Shaft, Lift Shaft & OHT )** | 2025-08-29 → 2025-08-30 (+1d) | 2026-01-28 → 2026-01-29 (+1d) |  |
| 1.3.1.2.6.1 | **Lift Shaft Works** | 2025-08-29 → 2025-08-30 (+1d) | 2026-01-28 → 2026-01-29 (+1d) |  |
| PG-11668 | Tie rod hole packing | 2025-08-29 → 2025-08-30 (+1d) | 2025-09-08 → 2025-09-09 (+1d) | 120.4d → 120.76d |
| PG-11669 | Grinding works | 2025-09-08 → 2025-09-09 (+1d) | 2025-09-13 → 2025-09-15 (+2d) | 120.4d → 120.76d |
| PG-11670 | Lift pit water proofing works | 2025-09-13 → 2025-09-15 (+2d) | 2025-10-08 → 2025-10-09 (+1d) | 120.4d → 120.76d |
| PG-11671 | Shaft door opening finishing | 2025-10-08 → 2025-10-10 (+2d) | 2025-10-16 → 2025-10-17 (+1d) | 120.4d → 120.76d |
| PG-11672 | Painting works | 2025-10-16 → 2025-10-17 (+1d) | 2025-10-25 → 2025-10-27 (+2d) | 120.4d → 120.76d |
| PG-11673 | Lift Wall Cladding Works | 2026-01-10 → 2026-01-12 (+2d) | 2026-01-28 → 2026-01-29 (+1d) | 156.07d → 156.43d |
| 1.3.1.2.6.2 | **Electrical Shaft works** | 2025-08-29 → 2025-08-30 (+1d) | 2025-10-01 → 2025-10-03 (+2d) |  |
| PG-11674 | Tie rod hole packing | 2025-08-29 → 2025-08-30 (+1d) | 2025-09-08 → 2025-09-09 (+1d) | 227.07d → 227.43d |
| PG-11675 | Grinding works | 2025-09-08 → 2025-09-09 (+1d) | 2025-09-13 → 2025-09-15 (+2d) | 227.07d → 227.43d |
| PG-11676 | Shaft door opening finishing | 2025-09-13 → 2025-09-15 (+2d) | 2025-09-22 → 2025-09-23 (+1d) | 227.07d → 227.43d |
| PG-11677 | Painting works | 2025-09-22 → 2025-09-23 (+1d) | 2025-10-01 → 2025-10-03 (+2d) | 227.07d → 227.43d |
| 1.3.1.2.6.3 | **FPS Shaft works** | 2025-08-29 → 2025-08-30 (+1d) | 2025-10-01 → 2025-10-03 (+2d) |  |
| PG-11678 | Tie rod hole packing | 2025-08-29 → 2025-08-30 (+1d) | 2025-09-08 → 2025-09-09 (+1d) | 226.9d → 227.26d |
| PG-11679 | Grinding works | 2025-09-08 → 2025-09-09 (+1d) | 2025-09-13 → 2025-09-15 (+2d) | 226.9d → 227.26d |
| PG-11680 | Shaft door opening finishing | 2025-09-13 → 2025-09-15 (+2d) | 2025-09-22 → 2025-09-23 (+1d) | 226.9d → 227.26d |
| PG-11681 | Painting works | 2025-09-22 → 2025-09-23 (+1d) | 2025-10-01 → 2025-10-03 (+2d) | 226.9d → 227.26d |
| 1.3.1.2.6.4 | **PHE Shaft works** | 2025-08-29 → 2025-08-30 (+1d) | 2025-10-01 → 2025-10-03 (+2d) |  |
| PG-11682 | Tie rod hole packing | 2025-08-29 → 2025-08-30 (+1d) | 2025-09-08 → 2025-09-09 (+1d) | 185.74d → 186.1d |
| PG-11683 | Grinding works | 2025-09-08 → 2025-09-09 (+1d) | 2025-09-13 → 2025-09-15 (+2d) | 185.74d → 186.1d |
| PG-11684 | Shaft door opening finishing | 2025-09-13 → 2025-09-15 (+2d) | 2025-09-22 → 2025-09-23 (+1d) | 185.74d → 186.1d |
| PG-11685 | Painting works | 2025-09-22 → 2025-09-23 (+1d) | 2025-10-01 → 2025-10-03 (+2d) | 185.74d → 186.1d |
| 1.3.1.2.6.5 | **Data & Communication Shaft** | 2025-08-29 → 2025-08-30 (+1d) | 2025-09-29 → 2025-09-30 (+1d) |  |
| PG-11686 | Tie rod hole packing | 2025-08-29 → 2025-08-30 (+1d) | 2025-09-08 → 2025-09-09 (+1d) | 221.57d → 221.93d |
| PG-11687 | Grinding works | 2025-09-08 → 2025-09-09 (+1d) | 2025-09-13 → 2025-09-15 (+2d) | 221.57d → 221.93d |
| PG-11688 | Shaft door opening finishing | 2025-09-13 → 2025-09-15 (+2d) | 2025-09-19 → 2025-09-20 (+1d) | 221.57d → 221.93d |
| PG-11689 | Painting works | 2025-09-19 → 2025-09-20 (+1d) | 2025-09-29 → 2025-09-30 (+1d) | 221.57d → 221.93d |
| 1.3.1.2.6.6 | **OHT Works** | 2025-08-29 → 2025-08-30 (+1d) | 2025-10-18 → 2025-10-20 (+2d) |  |
| PG-11690 | Tank materials Supply & Shifting | 2025-08-29 → 2025-08-30 (+1d) | 2025-09-10 → 2025-09-11 (+1d) | 193.07d → 193.43d |
| PG-11691 | Assembling OHT FRP Tank | 2025-09-10 → 2025-09-11 (+1d) | 2025-09-22 → 2025-09-23 (+1d) | 193.07d → 193.43d |
| PG-11692 | Installation of OHT Tank | 2025-09-22 → 2025-09-23 (+1d) | 2025-10-10 → 2025-10-11 (+1d) | 193.07d → 193.43d |
| PG-11693 | Water tightness works and checking | 2025-10-10 → 2025-10-11 (+1d) | 2025-10-18 → 2025-10-20 (+2d) | 193.07d → 193.43d |
| 1.3.1.2.7 | **MEP Shaft works** | 2025-09-29 → 2025-09-30 (+1d) | 2025-12-22 → 2025-12-23 (+1d) |  |
| 1.3.1.2.7.1 | **Electrical** | 2025-10-01 → 2025-10-03 (+2d) | 2025-11-12 → 2025-11-13 (+1d) |  |
| PG-11694 | Tray Works | 2025-10-01 → 2025-10-03 (+2d) | 2025-10-14 → 2025-10-15 (+1d) | 227.07d → 227.43d |
| PG-11695 | Cable & Conducting works | 2025-10-14 → 2025-10-15 (+1d) | 2025-10-24 → 2025-10-25 (+1d) | 227.07d → 227.43d |
| PG-11696 | Wiring/DB/connector box installation and termination works | 2025-10-24 → 2025-10-25 (+1d) | 2025-11-12 → 2025-11-13 (+1d) | 227.07d → 227.43d |
| 1.3.1.2.7.2 | **FPS** | 2025-10-01 → 2025-10-03 (+2d) | 2025-11-12 → 2025-11-13 (+1d) |  |
| PG-11697 | Shaft MS Piping & fixtures installation | 2025-10-01 → 2025-10-03 (+2d) | 2025-10-25 → 2025-10-27 (+2d) | 226.9d → 227.26d |
| PG-11698 | Tray / cabling / conducting & wiring works | 2025-10-25 → 2025-10-27 (+2d) | 2025-11-12 → 2025-11-13 (+1d) | 226.9d → 227.26d |
| 1.3.1.2.7.3 | **Data & Communication** | 2025-09-29 → 2025-09-30 (+1d) | 2025-11-18 → 2025-11-19 (+1d) |  |
| PG-11699 | Tray Works | 2025-09-29 → 2025-09-30 (+1d) | 2025-10-14 → 2025-10-15 (+1d) | 221.57d → 221.93d |
| PG-11700 | Tray / cabling / conducting & wiring works | 2025-10-14 → 2025-10-15 (+1d) | 2025-10-30 → 2025-10-31 (+1d) | 221.57d → 221.93d |
| PG-11701 | Wiring/DB/connector box installation and termination works | 2025-10-30 → 2025-10-31 (+1d) | 2025-11-18 → 2025-11-19 (+1d) | 221.57d → 221.93d |
| 1.3.1.2.7.4 | **PHE** | 2025-10-01 → 2025-10-03 (+2d) | 2025-12-22 → 2025-12-23 (+1d) |  |
| PG-11702 | Bracket fixing works | 2025-10-01 → 2025-10-03 (+2d) | 2025-10-10 → 2025-10-11 (+1d) | 185.74d → 186.1d |
| PG-11703 | Piping Works | 2025-10-10 → 2025-10-11 (+1d) | 2025-10-27 → 2025-10-28 (+1d) | 185.74d → 186.1d |
| PG-11704 | Terrace Ring main & OHT Connection works | 2025-10-27 → 2025-10-29 (+2d) | 2025-12-13 → 2025-12-15 (+2d) | 185.74d → 186.1d |

| ID | Task | Start | Finish | Complete | Total float |
| --- | --- | --- | --- | --- | --- |
| PG-11705 | Commissioning | 2025-12-13 → 2025-12-16 (+3d) | 2025-12-22 → 2025-12-23 (+1d) |  | 185.74d → 186.1d |
| 1.3.1.2.8 | **Lift Installation and Testing works** | 2025-09-13 → 2025-09-15 (+2d) | 2026-04-15 → 2026-04-16 (+1d) |  |  |
| PG-11706 | Lift Shaft Survey works | 2025-09-13 → 2025-09-15 (+2d) | 2025-09-24 → 2025-09-25 (+1d) |  | 146.07d → 146.43d |
| PG-11707 | Guide Rails fixing works | 2025-10-25 → 2025-10-27 (+2d) | 2025-12-12 → 2025-12-13 (+1d) |  | 120.4d → 120.76d |
| PG-11708 | Lift Frame fixing works | 2025-12-12 → 2025-12-13 (+1d) | 2026-01-10 → 2026-01-12 (+2d) |  | 120.4d → 120.76d |
| PG-11709 | CAR Assembly works | 2026-01-10 → 2026-01-12 (+2d) | 2026-02-03 → 2026-02-04 (+1d) |  | 120.4d → 120.76d |
| PG-11710 | Lift Machine Room Works | 2026-02-03 → 2026-02-04 (+1d) | 2026-03-11 → 2026-03-12 (+1d) |  | 120.4d → 120.76d |
| PG-11711 | Slow Speed & High Speed Testing works | 2026-03-11 → 2026-03-12 (+1d) | 2026-04-15 → 2026-04-16 (+1d) |  | 120.4d → 120.76d |
| 1.3.1.2.9 | **Electrical Panel Works** | 2025-07-19 → 2025-07-22 (+3d) | 2026-02-24 → 2026-02-25 (+1d) |  |  |
| 1.3.1.2.9.1 | **Civil Finishing Works** | 2025-07-19 → 2025-07-22 (+3d) | 2025-09-02 → 2025-09-03 (+1d) |  |  |
| PG-11712 | Wall Tie rod hole packing & Grinding works. | 2025-07-19 → 2025-07-22 (+3d) | 2025-08-05 → 2025-08-06 (+1d) |  | 162.57d → 162.93d |
| PG-11713 | Window, Louver and Door fixing works | 2025-08-05 → 2025-08-06 (+1d) | 2025-08-13 → 2025-08-14 (+1d) |  | 162.57d → 162.93d |
| PG-11714 | Pedestal works | 2025-08-13 → 2025-08-14 (+1d) | 2025-08-25 → 2025-08-26 (+1d) |  | 162.57d → 162.93d |
| PG-11715 | Painting works | 2025-08-25 → 2025-08-27 (+2d) | 2025-09-02 → 2025-09-03 (+1d) |  | 162.57d → 162.93d |
| 1.3.1.2.9.2 | **Electrical Panel works** | 2025-09-02 → 2025-09-03 (+1d) | 2026-02-24 → 2026-02-25 (+1d) |  |  |
| PG-11716 | Electrical Panel assembly works | 2025-09-02 → 2025-09-03 (+1d) | 2025-11-11 → 2025-11-12 (+1d) |  | 162.57d → 162.93d |
| PG-11717 | Electrical Panel installation and cable termination. | 2025-11-11 → 2025-11-13 (+2d) | 2026-01-19 → 2026-01-20 (+1d) |  | 162.57d → 162.93d |
| PG-11718 | Electrical Panel Testing and commissioning works | 2026-01-19 → 2026-01-20 (+1d) | 2026-02-24 → 2026-02-25 (+1d) |  | 162.57d → 162.93d |
| 1.3.1.2.10 | **Entrance Lobby works** | 2026-03-18 → 2026-03-19 (+1d) | 2026-08-04 → 2026-08-05 (+1d) |  |  |
| PG-11719 | Flooring Works | 2026-03-18 → 2026-03-19 (+1d) | 2026-04-22 → 2026-04-23 (+1d) |  | 14.9d → 15.26d |
| PG-11720 | Glass Door and installation Works | 2026-04-22 → 2026-04-23 (+1d) | 2026-05-27 → 2026-05-28 (+1d) |  | 14.9d → 15.26d |
| PG-11722 | Canopy Works | 2026-04-22 → 2026-04-23 (+1d) | 2026-05-21 → 2026-05-22 (+1d) |  | 34.57d → 34.93d |
| PG-11721 | Painting Works | 2026-05-27 → 2026-05-28 (+1d) | 2026-06-13 → 2026-06-15 (+2d) |  | 14.9d → 15.26d |
| PG-11723 | Interior Works | 2026-06-13 → 2026-06-15 (+2d) | 2026-08-04 → 2026-08-05 (+1d) |  | 14.9d → 15.26d |
| 1.3.1.2.11 | **Lightening Arrester works** | 2026-01-09 → 2026-01-10 (+1d) | 2026-01-21 → 2026-01-22 (+1d) |  |  |
| PG-11724 | Conductor will be lifted with RCC Works, But Terrace works will be done once Parapet Painting done | 2026-01-09 → 2026-01-10 (+1d) | 2026-01-21 → 2026-01-22 (+1d) |  | 219.9d → 220.26d |
| 1.3.1.3 | **Tower 3 ( 2B+G+29 ) TYP 4 Units - 118 Units** |  | 2026-10-15 → 2026-10-16 (+1d) |  |  |
| 1.3.1.3.2 | **Structure works** |  | 2026-01-08 → 2026-01-09 (+1d) |  |  |
| 1.3.1.3.2.16 | **Floor 13** |  | 2025-04-30 → 2025-05-02 (+2d) |  |  |
| 1.3.1.3.2.16.2 | **Slab, Beams & Staircase** |  | 2025-04-30 → 2025-05-02 (+2d) |  |  |
| PG-11816 | Formwork |  | 2025-04-26 → 2025-04-28 A (+2d) | 51% → 100% | 0d → none |
| PG-11817 | Reinforcement | 2025-04-26 A | 2025-04-29 → 2025-05-02 A (+3d) | 0% → 100% | 0d → none |
| PG-11818 | Concrete | 2025-04-30 → 2025-05-02 A (+2d) | 2025-04-30 → 2025-05-02 (+2d) | 0% → 57% |  |
| 1.3.1.3.2.17 | **Floor 14** | 2025-05-01 → 2025-05-02 (+1d) | 2025-05-15 → 2025-05-17 (+2d) |  |  |
| 1.3.1.3.2.17.1 | **Columns / shear walls** | 2025-05-01 → 2025-05-02 (+1d) | 2025-05-09 → 2025-05-12 (+3d) |  |  |
| PG-11819 | Reinforcement | 2025-05-01 → 2025-05-02 (+1d) | 2025-05-05 → 2025-05-07 (+2d) |  |  |
| PG-11820 | Formwork | 2025-05-06 → 2025-05-07 (+1d) | 2025-05-09 → 2025-05-12 (+3d) |  |  |
| 1.3.1.3.2.17.2 | **Slab, Beams & Staircase** | 2025-05-09 → 2025-05-10 (+1d) | 2025-05-15 → 2025-05-17 (+2d) |  |  |
| PG-11821 | Formwork | 2025-05-09 → 2025-05-10 (+1d) | 2025-05-12 → 2025-05-14 (+2d) |  |  |
| PG-11822 | Reinforcement | 2025-05-12 → 2025-05-13 (+1d) | 2025-05-14 → 2025-05-16 (+2d) |  |  |
| PG-11823 | Concrete | 2025-05-15 → 2025-05-16 (+1d) | 2025-05-15 → 2025-05-17 (+2d) |  |  |
| 1.3.1.3.2.18 | **Floor 15** | 2025-05-16 → 2025-05-17 (+1d) | 2025-05-30 → 2025-06-02 (+3d) |  |  |
| 1.3.1.3.2.18.1 | **Columns / shear walls** | 2025-05-16 → 2025-05-17 (+1d) | 2025-05-24 → 2025-05-27 (+3d) |  |  |
| PG-11824 | Reinforcement | 2025-05-16 → 2025-05-17 (+1d) | 2025-05-20 → 2025-05-22 (+2d) |  |  |
| PG-11825 | Formwork | 2025-05-21 → 2025-05-22 (+1d) | 2025-05-24 → 2025-05-27 (+3d) |  |  |
| 1.3.1.3.2.18.2 | **Slab, Beams & Staircase** | 2025-05-24 → 2025-05-26 (+2d) | 2025-05-30 → 2025-06-02 (+3d) |  |  |
| PG-11826 | Formwork | 2025-05-24 → 2025-05-26 (+2d) | 2025-05-27 → 2025-05-29 (+2d) |  |  |
| PG-11827 | Reinforcement | 2025-05-27 → 2025-05-28 (+1d) | 2025-05-29 → 2025-05-31 (+2d) |  |  |
| PG-11828 | Concrete | 2025-05-30 → 2025-05-31 (+1d) | 2025-05-30 → 2025-06-02 (+3d) |  |  |
| 1.3.1.3.2.19 | **Floor 16** | 2025-05-31 → 2025-06-02 (+2d) | 2025-06-12 → 2025-06-14 (+2d) |  |  |
| 1.3.1.3.2.19.1 | **Columns / shear walls** | 2025-05-31 → 2025-06-02 (+2d) | 2025-06-06 → 2025-06-09 (+3d) |  |  |
| PG-11829 | Reinforcement | 2025-05-31 → 2025-06-02 (+2d) | 2025-06-04 → 2025-06-06 (+2d) |  |  |
| PG-11830 | Formwork | 2025-06-03 → 2025-06-04 (+1d) | 2025-06-06 → 2025-06-09 (+3d) |  |  |
| 1.3.1.3.2.19.2 | **Slab, Beams & Staircase** | 2025-06-06 → 2025-06-07 (+1d) | 2025-06-12 → 2025-06-14 (+2d) |  |  |
| PG-11831 | Formwork | 2025-06-06 → 2025-06-07 (+1d) | 2025-06-09 → 2025-06-11 (+2d) |  |  |
| PG-11832 | Reinforcement | 2025-06-09 → 2025-06-10 (+1d) | 2025-06-11 → 2025-06-13 (+2d) |  |  |
| PG-11833 | Concrete | 2025-06-12 → 2025-06-13 (+1d) | 2025-06-12 → 2025-06-14 (+2d) |  |  |
| 1.3.1.3.2.20 | **Floor 17** | 2025-06-13 → 2025-06-14 (+1d) | 2025-06-25 → 2025-06-27 (+2d) |  |  |
| 1.3.1.3.2.20.1 | **Columns / shear walls** | 2025-06-13 → 2025-06-14 (+1d) | 2025-06-19 → 2025-06-21 (+2d) |  |  |
| PG-11834 | Reinforcement | 2025-06-13 → 2025-06-14 (+1d) | 2025-06-17 → 2025-06-19 (+2d) |  |  |
| PG-11835 | Formwork | 2025-06-16 → 2025-06-17 (+1d) | 2025-06-19 → 2025-06-21 (+2d) |  |  |
| 1.3.1.3.2.20.2 | **Slab, Beams & Staircase** | 2025-06-19 → 2025-06-20 (+1d) | 2025-06-25 → 2025-06-27 (+2d) |  |  |
| PG-11836 | Formwork | 2025-06-19 → 2025-06-20 (+1d) | 2025-06-21 → 2025-06-24 (+3d) |  |  |
| PG-11837 | Reinforcement | 2025-06-21 → 2025-06-23 (+2d) | 2025-06-24 → 2025-06-26 (+2d) |  |  |
| PG-11838 | Concrete | 2025-06-25 → 2025-06-26 (+1d) | 2025-06-25 → 2025-06-27 (+2d) |  |  |
| 1.3.1.3.2.21 | **Floor 18** | 2025-06-26 → 2025-06-27 (+1d) | 2025-07-08 → 2025-07-10 (+2d) |  |  |
| 1.3.1.3.2.21.1 | **Columns / shear walls** | 2025-06-26 → 2025-06-27 (+1d) | 2025-07-02 → 2025-07-04 (+2d) |  |  |
| PG-11839 | Reinforcement | 2025-06-26 → 2025-06-27 (+1d) | 2025-06-30 → 2025-07-02 (+2d) |  |  |
| PG-11840 | Formwork | 2025-06-28 → 2025-06-30 (+2d) | 2025-07-02 → 2025-07-04 (+2d) |  |  |
| 1.3.1.3.2.21.2 | **Slab, Beams & Staircase** | 2025-07-02 → 2025-07-03 (+1d) | 2025-07-08 → 2025-07-10 (+2d) |  |  |

| ID | Task | Start | Finish |
| --- | --- | --- | --- |
| PG-11841 | Formwork | 2025-07-02 → 2025-07-03 (+1d) | 2025-07-04 → 2025-07-07 (+3d) |
| PG-11842 | Reinforcement | 2025-07-04 → 2025-07-05 (+1d) | 2025-07-07 → 2025-07-09 (+2d) |
| PG-11843 | Concrete | 2025-07-08 → 2025-07-09 (+1d) | 2025-07-08 → 2025-07-10 (+2d) |
| 1.3.1.3.2.22 | **Floor 19** | 2025-07-09 → 2025-07-10 (+1d) | 2025-07-21 → 2025-07-23 (+2d) |
| 1.3.1.3.2.22.1 | **Columns / shear walls** | 2025-07-09 → 2025-07-10 (+1d) | 2025-07-15 → 2025-07-17 (+2d) |
| PG-11844 | Reinforcement | 2025-07-09 → 2025-07-10 (+1d) | 2025-07-12 → 2025-07-15 (+3d) |
| PG-11845 | Formwork | 2025-07-11 → 2025-07-12 (+1d) | 2025-07-15 → 2025-07-17 (+2d) |
| 1.3.1.3.2.22.2 | **Slab, Beams & Staircase** | 2025-07-15 → 2025-07-16 (+1d) | 2025-07-21 → 2025-07-23 (+2d) |
| PG-11846 | Formwork | 2025-07-15 → 2025-07-16 (+1d) | 2025-07-17 → 2025-07-19 (+2d) |
| PG-11847 | Reinforcement | 2025-07-17 → 2025-07-18 (+1d) | 2025-07-19 → 2025-07-22 (+3d) |
| PG-11848 | Concrete | 2025-07-21 → 2025-07-22 (+1d) | 2025-07-21 → 2025-07-23 (+2d) |
| 1.3.1.3.2.23 | **Floor 20** | 2025-07-22 → 2025-07-23 (+1d) | 2025-08-02 → 2025-08-05 (+3d) |
| 1.3.1.3.2.23.1 | **Columns / shear walls** | 2025-07-22 → 2025-07-23 (+1d) | 2025-07-28 → 2025-07-30 (+2d) |
| PG-11849 | Reinforcement | 2025-07-22 → 2025-07-23 (+1d) | 2025-07-25 → 2025-07-28 (+3d) |
| PG-11850 | Formwork | 2025-07-24 → 2025-07-25 (+1d) | 2025-07-28 → 2025-07-30 (+2d) |
| 1.3.1.3.2.23.2 | **Slab, Beams & Staircase** | 2025-07-28 → 2025-07-29 (+1d) | 2025-08-02 → 2025-08-05 (+3d) |
| PG-11851 | Formwork | 2025-07-28 → 2025-07-29 (+1d) | 2025-07-30 → 2025-08-01 (+2d) |
| PG-11852 | Reinforcement | 2025-07-30 → 2025-07-31 (+1d) | 2025-08-01 → 2025-08-04 (+3d) |
| PG-11853 | Concrete | 2025-08-02 → 2025-08-04 (+2d) | 2025-08-02 → 2025-08-05 (+3d) |
| 1.3.1.3.2.24 | **Floor 21** | 2025-08-04 → 2025-08-05 (+1d) | 2025-08-16 → 2025-08-19 (+3d) |
| 1.3.1.3.2.24.1 | **Columns / shear walls** | 2025-08-04 → 2025-08-05 (+1d) | 2025-08-09 → 2025-08-12 (+3d) |
| PG-11854 | Reinforcement | 2025-08-04 → 2025-08-05 (+1d) | 2025-08-07 → 2025-08-09 (+2d) |
| PG-11855 | Formwork | 2025-08-06 → 2025-08-07 (+1d) | 2025-08-09 → 2025-08-12 (+3d) |
| 1.3.1.3.2.24.2 | **Slab, Beams & Staircase** | 2025-08-09 → 2025-08-11 (+2d) | 2025-08-16 → 2025-08-19 (+3d) |
| PG-11856 | Formwork | 2025-08-09 → 2025-08-11 (+2d) | 2025-08-12 → 2025-08-14 (+2d) |
| PG-11857 | Reinforcement | 2025-08-12 → 2025-08-13 (+1d) | 2025-08-14 → 2025-08-18 (+4d) |
| PG-11858 | Concrete | 2025-08-16 → 2025-08-18 (+2d) | 2025-08-16 → 2025-08-19 (+3d) |
| 1.3.1.3.2.25 | **Floor 22** | 2025-08-18 → 2025-08-19 (+1d) | 2025-08-29 → 2025-09-01 (+3d) |
| 1.3.1.3.2.25.1 | **Columns / shear walls** | 2025-08-18 → 2025-08-19 (+1d) | 2025-08-23 → 2025-08-26 (+3d) |
| PG-11859 | Reinforcement | 2025-08-18 → 2025-08-19 (+1d) | 2025-08-21 → 2025-08-23 (+2d) |
| PG-11860 | Formwork | 2025-08-20 → 2025-08-21 (+1d) | 2025-08-23 → 2025-08-26 (+3d) |
| 1.3.1.3.2.25.2 | **Slab, Beams & Staircase** | 2025-08-23 → 2025-08-25 (+2d) | 2025-08-29 → 2025-09-01 (+3d) |
| PG-11861 | Formwork | 2025-08-23 → 2025-08-25 (+2d) | 2025-08-26 → 2025-08-28 (+2d) |
| PG-11862 | Reinforcement | 2025-08-26 → 2025-08-27 (+1d) | 2025-08-28 → 2025-08-30 (+2d) |
| PG-11863 | Concrete | 2025-08-29 → 2025-08-30 (+1d) | 2025-08-29 → 2025-09-01 (+3d) |
| 1.3.1.3.2.26 | **Floor 23** | 2025-08-30 → 2025-09-01 (+2d) | 2025-09-11 → 2025-09-13 (+2d) |
| 1.3.1.3.2.26.1 | **Columns / shear walls** | 2025-08-30 → 2025-09-01 (+2d) | 2025-09-05 → 2025-09-08 (+3d) |
| PG-11864 | Reinforcement | 2025-08-30 → 2025-09-01 (+2d) | 2025-09-03 → 2025-09-05 (+2d) |
| PG-11865 | Formwork | 2025-09-02 → 2025-09-03 (+1d) | 2025-09-05 → 2025-09-08 (+3d) |
| 1.3.1.3.2.26.2 | **Slab, Beams & Staircase** | 2025-09-05 → 2025-09-06 (+1d) | 2025-09-11 → 2025-09-13 (+2d) |
| PG-11866 | Formwork | 2025-09-05 → 2025-09-06 (+1d) | 2025-09-08 → 2025-09-10 (+2d) |
| PG-11867 | Reinforcement | 2025-09-08 → 2025-09-09 (+1d) | 2025-09-10 → 2025-09-12 (+2d) |
| PG-11868 | Concrete | 2025-09-11 → 2025-09-12 (+1d) | 2025-09-11 → 2025-09-13 (+2d) |
| 1.3.1.3.2.27 | **Floor 24** | 2025-09-12 → 2025-09-13 (+1d) | 2025-09-24 → 2025-09-26 (+2d) |
| 1.3.1.3.2.27.1 | **Columns / shear walls** | 2025-09-12 → 2025-09-13 (+1d) | 2025-09-18 → 2025-09-20 (+2d) |
| PG-11869 | Reinforcement | 2025-09-12 → 2025-09-13 (+1d) | 2025-09-16 → 2025-09-18 (+2d) |
| PG-11870 | Formwork | 2025-09-15 → 2025-09-16 (+1d) | 2025-09-18 → 2025-09-20 (+2d) |
| 1.3.1.3.2.27.2 | **Slab, Beams & Staircase** | 2025-09-18 → 2025-09-19 (+1d) | 2025-09-24 → 2025-09-26 (+2d) |
| PG-11871 | Formwork | 2025-09-18 → 2025-09-19 (+1d) | 2025-09-20 → 2025-09-23 (+3d) |
| PG-11872 | Reinforcement | 2025-09-20 → 2025-09-22 (+2d) | 2025-09-23 → 2025-09-25 (+2d) |
| PG-11873 | Concrete | 2025-09-24 → 2025-09-25 (+1d) | 2025-09-24 → 2025-09-26 (+2d) |
| 1.3.1.3.2.28 | **Floor 25** | 2025-09-25 → 2025-09-26 (+1d) | 2025-10-08 → 2025-10-10 (+2d) |
| 1.3.1.3.2.28.1 | **Columns / shear walls** | 2025-09-25 → 2025-09-26 (+1d) | 2025-10-01 → 2025-10-04 (+3d) |
| PG-11874 | Reinforcement | 2025-09-25 → 2025-09-26 (+1d) | 2025-09-29 → 2025-10-01 (+2d) |
| PG-11875 | Formwork | 2025-09-27 → 2025-09-29 (+2d) | 2025-10-01 → 2025-10-04 (+3d) |
| 1.3.1.3.2.28.2 | **Slab, Beams & Staircase** | 2025-10-01 → 2025-10-03 (+2d) | 2025-10-08 → 2025-10-10 (+2d) |
| PG-11876 | Formwork | 2025-10-01 → 2025-10-03 (+2d) | 2025-10-04 → 2025-10-07 (+3d) |
| PG-11877 | Reinforcement | 2025-10-04 → 2025-10-06 (+2d) | 2025-10-07 → 2025-10-09 (+2d) |
| PG-11878 | Concrete | 2025-10-08 → 2025-10-09 (+1d) | 2025-10-08 → 2025-10-10 (+2d) |
| 1.3.1.3.2.29 | **Floor 26** | 2025-10-09 → 2025-10-10 (+1d) | 2025-10-21 → 2025-10-23 (+2d) |
| 1.3.1.3.2.29.1 | **Columns / shear walls** | 2025-10-09 → 2025-10-10 (+1d) | 2025-10-15 → 2025-10-17 (+2d) |
| PG-11879 | Reinforcement | 2025-10-09 → 2025-10-10 (+1d) | 2025-10-13 → 2025-10-15 (+2d) |
| PG-11880 | Formwork | 2025-10-11 → 2025-10-13 (+2d) | 2025-10-15 → 2025-10-17 (+2d) |
| 1.3.1.3.2.29.2 | **Slab, Beams & Staircase** | 2025-10-15 → 2025-10-16 (+1d) | 2025-10-21 → 2025-10-23 (+2d) |
| PG-11881 | Formwork | 2025-10-15 → 2025-10-16 (+1d) | 2025-10-17 → 2025-10-20 (+3d) |
| PG-11882 | Reinforcement | 2025-10-17 → 2025-10-18 (+1d) | 2025-10-20 → 2025-10-22 (+2d) |
| PG-11883 | Concrete | 2025-10-21 → 2025-10-22 (+1d) | 2025-10-21 → 2025-10-23 (+2d) |
| 1.3.1.3.2.30 | **Floor 27** | 2025-10-22 → 2025-10-23 (+1d) | 2025-11-04 → 2025-11-06 (+2d) |
| 1.3.1.3.2.30.1 | **Columns / shear walls** | 2025-10-22 → 2025-10-23 (+1d) | 2025-10-28 → 2025-10-30 (+2d) |
| PG-11884 | Reinforcement | 2025-10-22 → 2025-10-23 (+1d) | 2025-10-25 → 2025-10-28 (+3d) |

| ID | Task | Start | Finish | Complete | Total float |
| --- | --- | --- | --- | --- | --- |
| PG-11885 | Formwork | 2025-10-24 → 2025-10-25 (+1d) | 2025-10-28 → 2025-10-30 (+2d) |  |  |
| 1.3.1.3.2.30.2 | **Slab, Beams & Staircase** | 2025-10-28 → 2025-10-29 (+1d) | 2025-11-04 → 2025-11-06 (+2d) |  |  |
| PG-11886 | Formwork | 2025-10-28 → 2025-10-29 (+1d) | 2025-10-30 → 2025-11-03 (+4d) |  |  |
| PG-11887 | Reinforcement | 2025-10-30 → 2025-10-31 (+1d) | 2025-11-03 → 2025-11-05 (+2d) |  |  |
| PG-11888 | Concrete | 2025-11-04 → 2025-11-05 (+1d) | 2025-11-04 → 2025-11-06 (+2d) |  |  |
| 1.3.1.3.2.31 | **Floor 28** | 2025-11-05 → 2025-11-06 (+1d) | 2025-11-17 → 2025-11-19 (+2d) |  |  |
| 1.3.1.3.2.31.1 | **Columns / shear walls** | 2025-11-05 → 2025-11-06 (+1d) | 2025-11-11 → 2025-11-13 (+2d) |  |  |
| PG-11889 | Reinforcement | 2025-11-05 → 2025-11-06 (+1d) | 2025-11-08 → 2025-11-11 (+3d) |  |  |
| PG-11890 | Formwork | 2025-11-07 → 2025-11-08 (+1d) | 2025-11-11 → 2025-11-13 (+2d) |  |  |
| 1.3.1.3.2.31.2 | **Slab, Beams & Staircase** | 2025-11-11 → 2025-11-12 (+1d) | 2025-11-17 → 2025-11-19 (+2d) |  |  |
| PG-11891 | Formwork | 2025-11-11 → 2025-11-12 (+1d) | 2025-11-13 → 2025-11-15 (+2d) |  |  |
| PG-11892 | Reinforcement | 2025-11-13 → 2025-11-14 (+1d) | 2025-11-15 → 2025-11-18 (+3d) |  |  |
| PG-11893 | Concrete | 2025-11-17 → 2025-11-18 (+1d) | 2025-11-17 → 2025-11-19 (+2d) |  |  |
| 1.3.1.3.2.32 | **Floor 29** | 2025-11-17 → 2025-11-19 (+2d) | 2025-11-29 → 2025-12-02 (+3d) |  |  |
| 1.3.1.3.2.32.1 | **Columns / shear walls** | 2025-11-17 → 2025-11-19 (+2d) | 2025-11-24 → 2025-11-26 (+2d) |  |  |
| PG-11894 | Reinforcement | 2025-11-17 → 2025-11-19 (+2d) | 2025-11-21 → 2025-11-24 (+3d) |  |  |
| PG-11895 | Formwork | 2025-11-19 → 2025-11-21 (+2d) | 2025-11-24 → 2025-11-26 (+2d) |  |  |
| 1.3.1.3.2.32.2 | **Slab, Beams & Staircase** | 2025-11-22 → 2025-11-25 (+3d) | 2025-11-29 → 2025-12-02 (+3d) |  |  |
| PG-11896 | Formwork | 2025-11-22 → 2025-11-25 (+3d) | 2025-11-26 → 2025-11-28 (+2d) |  |  |
| PG-11897 | Reinforcement | 2025-11-25 → 2025-11-27 (+2d) | 2025-11-28 → 2025-12-01 (+3d) |  |  |
| PG-11898 | Concrete | 2025-11-28 → 2025-12-01 (+3d) | 2025-11-29 → 2025-12-02 (+3d) |  |  |
| 1.3.1.3.2.33 | **Above Terrace Floor** | 2025-11-29 → 2025-12-02 (+3d) | 2026-01-08 → 2026-01-09 (+1d) |  |  |
| 1.3.1.3.2.33.1 | **Columns / shear walls/Parapet Walls** | 2025-11-29 → 2025-12-02 (+3d) | 2025-12-13 → 2025-12-15 (+2d) |  |  |
| PG-11899 | Reinforcement | 2025-11-29 → 2025-12-02 (+3d) | 2025-12-04 → 2025-12-06 (+2d) |  |  |
| PG-11900 | Formwork | 2025-12-02 → 2025-12-04 (+2d) | 2025-12-08 → 2025-12-10 (+2d) |  |  |
| PG-11901 | Concrete | 2025-12-08 → 2025-12-10 (+2d) | 2025-12-13 → 2025-12-15 (+2d) |  |  |
| 1.3.1.3.2.33.2 | **Slab, Beams & Staircase Head rooms, Lift headroom** | 2025-12-04 → 2025-12-06 (+2d) | 2026-01-08 → 2026-01-09 (+1d) |  |  |
| PG-11905 | Terrace Waterproofing and Protective finishing. | 2025-12-04 → 2025-12-06 (+2d) | 2026-01-08 → 2026-01-09 (+1d) |  |  |
| PG-11902 | Formwork | 2025-12-13 → 2025-12-15 (+2d) | 2025-12-19 → 2025-12-20 (+1d) |  |  |
| PG-11903 | Reinforcement | 2025-12-19 → 2025-12-20 (+1d) | 2025-12-25 → 2025-12-26 (+1d) |  |  |
| PG-11904 | Concrete | 2025-12-25 → 2025-12-26 (+1d) | 2025-12-27 → 2025-12-29 (+2d) |  |  |
| 1.3.1.3.3 | **MEP Internal works** |  | 2026-06-08 → 2026-06-10 (+2d) |  |  |
| 1.3.1.3.3.6 | **Floor 3** |  | 2025-05-06 → 2025-05-08 (+2d) |  |  |
| 1.3.1.3.3.6.1 | **PHE Works** |  | 2025-05-06 → 2025-05-08 (+2d) |  |  |
| PG-11942 | Final Fix - CP & Sanitary fixtures | 2025-04-25 → 2025-04-26 A (+1d) | 2025-05-06 → 2025-05-08 (+2d) | 0% → 46% | 400.11d → 400.34d |
| 1.3.1.3.3.6.2 | **Fire Fighting Works** |  | 2025-05-06 → 2025-05-07 (+1d) |  |  |
| PG-11945 | Final Fix - Smoke & heat detectors, FHC , FAS Etc. | 2025-04-25 → 2025-04-26 A (+1d) | 2025-05-06 → 2025-05-07 (+1d) | 0% → 51% | 400.11d → 400.51d |
| 1.3.1.3.3.6.3 | **Electrical Works** |  | 2025-05-06 → 2025-05-07 (+1d) |  |  |
| PG-11948 | Final Fix - Electrical Fixtures | 2025-04-30 → 2025-05-01 A (+1d) | 2025-05-06 → 2025-05-07 (+1d) | 0% → 20% | 400.11d → 400.51d |
| PG-11953 | 2nd Fix - Sprinkler fixing & Pressure testing |  | 2025-04-25 → 2025-04-26 A (+1d) | 90% → 100% | 399.54d → none |
| 1.3.1.3.3.9 | **Floor 6** |  | 2025-06-17 → 2025-06-18 (+1d) |  |  |
| 1.3.1.3.3.9.1 | **PHE Works** |  | 2025-06-17 → 2025-06-18 (+1d) |  |  |
| PG-11969 | Final Fix - CP & Sanitary fixtures | 2025-06-06 → 2025-06-07 (+1d) | 2025-06-17 → 2025-06-18 (+1d) |  | 365.07d → 365.51d |
| 1.3.1.3.3.9.2 | **Fire Fighting Works** |  | 2025-06-17 → 2025-06-18 (+1d) |  |  |
| PG-11971 | 2nd Fix - Sprinkler fixing & Pressure testing | 2025-05-14 → 2025-05-15 (+1d) | 2025-05-26 → 2025-05-27 (+1d) |  | 375.07d → 375.51d |
| PG-11972 | Final Fix - Smoke & heat detectors, FHC , FAS Etc. | 2025-06-06 → 2025-06-07 (+1d) | 2025-06-17 → 2025-06-18 (+1d) |  | 365.07d → 365.51d |
| 1.3.1.3.3.9.3 | **Electrical Works** |  | 2025-06-17 → 2025-06-18 (+1d) |  |  |
| PG-11974 | 2nd Fix - Wiring works | 2025-05-08 → 2025-05-09 (+1d) | 2025-05-24 → 2025-05-26 (+2d) |  | 380.07d → 380.51d |
| PG-11975 | Final Fix - Electrical Fixtures | 2025-06-11 → 2025-06-12 (+1d) | 2025-06-17 → 2025-06-18 (+1d) |  | 365.07d → 365.51d |
| PG-11976 | 1st Fix - Piping works |  | 2025-04-28 → 2025-04-29 A (+1d) | 75% → 100% | 352.51d → none |
| PG-11977 | 2nd Fix - diverter fixing & Pressure testing |  | 2025-05-06 → 2025-05-07 (+1d) | 3% → 59% | 351.8d → 352.79d |
| PG-11978 | Final Fix - CP & Sanitary fixtures | 2025-06-24 → 2025-06-25 (+1d) |  |  | 351.8d → 352.79d |
| PG-11979 | 1st Fix - Piping and Shaft hydrant works |  |  | 3% → 54% | 397.85d → 399.24d |
| PG-11980 | 2nd Fix - Sprinkler fixing & Pressure testing | 2025-05-31 → 2025-06-02 (+2d) | 2025-06-12 → 2025-06-13 (+1d) |  | 361.8d → 362.79d |
| PG-11981 | Final Fix - Smoke & heat detectors, FHC , FAS Etc. | 2025-06-24 → 2025-06-25 (+1d) |  |  | 351.8d → 352.79d |
| PG-11983 | 2nd Fix - Wiring works |  | 2025-06-11 → 2025-06-12 (+1d) |  | 365.8d → 366.79d |
| PG-11984 | Final Fix - Electrical Fixtures | 2025-06-27 → 2025-06-28 (+1d) |  |  | 351.8d → 352.79d |
| 1.3.1.3.3.11 | **Floor 8** | 2025-05-01 → 2025-05-02 (+1d) | 2025-07-21 → 2025-07-22 (+1d) |  |  |
| 1.3.1.3.3.11.1 | **PHE Works** | 2025-05-01 → 2025-05-02 (+1d) | 2025-07-21 → 2025-07-22 (+1d) |  |  |
| PG-11985 | 1st Fix - Piping works | 2025-05-01 → 2025-05-02 (+1d) | 2025-05-14 → 2025-05-16 (+2d) |  |  |
| PG-11986 | 2nd Fix - diverter fixing & Pressure testing | 2025-05-10 → 2025-05-12 (+2d) | 2025-05-21 → 2025-05-23 (+2d) |  |  |
| PG-11987 | Final Fix - CP & Sanitary fixtures | 2025-07-10 → 2025-07-11 (+1d) | 2025-07-21 → 2025-07-22 (+1d) |  |  |
| 1.3.1.3.3.11.2 | **Fire Fighting Works** | 2025-05-09 → 2025-05-12 (+3d) | 2025-07-21 → 2025-07-22 (+1d) |  |  |
| PG-11988 | 1st Fix - Piping and Shaft hydrant works | 2025-05-09 → 2025-05-12 (+3d) | 2025-05-23 → 2025-05-26 (+3d) |  |  |
| PG-11989 | 2nd Fix - Sprinkler fixing & Pressure testing | 2025-06-17 → 2025-06-18 (+1d) | 2025-06-27 → 2025-06-30 (+3d) |  |  |
| PG-11990 | Final Fix - Smoke & heat detectors, FHC , FAS Etc. | 2025-07-10 → 2025-07-11 (+1d) | 2025-07-21 → 2025-07-22 (+1d) |  |  |
| 1.3.1.3.3.11.3 | **Electrical Works** | 2025-05-01 → 2025-05-02 (+1d) | 2025-07-21 → 2025-07-22 (+1d) |  |  |
| PG-11991 | 1st Fix - GI wire pulling | 2025-05-01 → 2025-05-02 (+1d) | 2025-05-09 → 2025-05-12 (+3d) |  |  |
| PG-11992 | 2nd Fix - Wiring works | 2025-06-11 → 2025-06-12 (+1d) | 2025-06-26 → 2025-06-28 (+2d) |  |  |
| PG-11993 | Final Fix - Electrical Fixtures | 2025-07-15 → 2025-07-16 (+1d) | 2025-07-21 → 2025-07-22 (+1d) |  |  |

| ID | Task | Start | Finish |
| --- | --- | --- | --- |
| 1.3.1.3.3.12 | **Floor 9** | 2025-05-16 → 2025-05-17 (+1d) | 2025-08-02 → 2025-08-04 (+2d) |
| 1.3.1.3.3.12.1 | **PHE Works** | 2025-05-16 → 2025-05-17 (+1d) | 2025-08-02 → 2025-08-04 (+2d) |
| PG-11994 | 1st Fix - Piping works | 2025-05-16 → 2025-05-17 (+1d) | 2025-05-29 → 2025-05-31 (+2d) |
| PG-11995 | 2nd Fix - diverter fixing & Pressure testing | 2025-05-26 → 2025-05-27 (+1d) | 2025-06-05 → 2025-06-07 (+2d) |
| PG-11996 | Final Fix - CP & Sanitary fixtures | 2025-07-23 → 2025-07-24 (+1d) | 2025-08-02 → 2025-08-04 (+2d) |
| 1.3.1.3.3.12.2 | **Fire Fighting Works** | 2025-05-24 → 2025-05-27 (+3d) | 2025-08-02 → 2025-08-04 (+2d) |
| PG-11997 | 1st Fix - Piping and Shaft hydrant works | 2025-05-24 → 2025-05-27 (+3d) | 2025-06-07 → 2025-06-10 (+3d) |
| PG-11998 | 2nd Fix - Sprinkler fixing & Pressure testing | 2025-07-02 → 2025-07-03 (+1d) | 2025-07-12 → 2025-07-15 (+3d) |
| PG-11999 | Final Fix - Smoke & heat detectors, FHC , FAS Etc. | 2025-07-23 → 2025-07-24 (+1d) | 2025-08-02 → 2025-08-04 (+2d) |
| 1.3.1.3.3.12.3 | **Electrical Works** | 2025-05-16 → 2025-05-17 (+1d) | 2025-08-02 → 2025-08-04 (+2d) |
| PG-12000 | 1st Fix - GI wire pulling | 2025-05-16 → 2025-05-17 (+1d) | 2025-05-24 → 2025-05-27 (+3d) |
| PG-12001 | 2nd Fix - Wiring works | 2025-06-26 → 2025-06-27 (+1d) | 2025-07-11 → 2025-07-14 (+3d) |
| PG-12002 | Final Fix - Electrical Fixtures | 2025-07-28 → 2025-07-29 (+1d) | 2025-08-02 → 2025-08-04 (+2d) |
| 1.3.1.3.3.13 | **Floor 10** | 2025-05-31 → 2025-06-02 (+2d) | 2025-08-20 → 2025-08-21 (+1d) |
| 1.3.1.3.3.13.1 | **PHE Works** | 2025-05-31 → 2025-06-02 (+2d) | 2025-08-20 → 2025-08-21 (+1d) |
| PG-12003 | 1st Fix - Piping works | 2025-05-31 → 2025-06-02 (+2d) | 2025-06-13 → 2025-06-16 (+3d) |
| PG-12004 | 2nd Fix - diverter fixing & Pressure testing | 2025-06-10 → 2025-06-11 (+1d) | 2025-06-20 → 2025-06-23 (+3d) |
| PG-12005 | Final Fix - CP & Sanitary fixtures | 2025-08-08 → 2025-08-09 (+1d) | 2025-08-20 → 2025-08-21 (+1d) |
| 1.3.1.3.3.13.2 | **Fire Fighting Works** | 2025-06-09 → 2025-06-11 (+2d) | 2025-08-20 → 2025-08-21 (+1d) |
| PG-12006 | 1st Fix - Piping and Shaft hydrant works | 2025-06-09 → 2025-06-11 (+2d) | 2025-06-23 → 2025-06-25 (+2d) |
| PG-12007 | 2nd Fix - Sprinkler fixing & Pressure testing | 2025-07-17 → 2025-07-18 (+1d) | 2025-07-28 → 2025-07-30 (+2d) |
| PG-12008 | Final Fix - Smoke & heat detectors, FHC , FAS Etc. | 2025-08-08 → 2025-08-09 (+1d) | 2025-08-20 → 2025-08-21 (+1d) |
| 1.3.1.3.3.13.3 | **Electrical Works** | 2025-05-31 → 2025-06-02 (+2d) | 2025-08-20 → 2025-08-21 (+1d) |
| PG-12009 | 1st Fix - GI wire pulling | 2025-05-31 → 2025-06-02 (+2d) | 2025-06-09 → 2025-06-11 (+2d) |
| PG-12010 | 2nd Fix - Wiring works | 2025-07-12 → 2025-07-14 (+2d) | 2025-07-26 → 2025-07-29 (+3d) |
| PG-12011 | Final Fix - Electrical Fixtures | 2025-08-13 → 2025-08-14 (+1d) | 2025-08-20 → 2025-08-21 (+1d) |
| 1.3.1.3.3.14 | **Floor 11** | 2025-06-13 → 2025-06-14 (+1d) | 2025-09-02 → 2025-09-03 (+1d) |
| 1.3.1.3.3.14.1 | **PHE Works** | 2025-06-13 → 2025-06-14 (+1d) | 2025-09-02 → 2025-09-03 (+1d) |
| PG-12012 | 1st Fix - Piping works | 2025-06-13 → 2025-06-14 (+1d) | 2025-06-26 → 2025-06-28 (+2d) |
| PG-12013 | 2nd Fix - diverter fixing & Pressure testing | 2025-06-23 → 2025-06-24 (+1d) | 2025-07-03 → 2025-07-05 (+2d) |
| PG-12014 | Final Fix - CP & Sanitary fixtures | 2025-08-22 → 2025-08-23 (+1d) | 2025-09-02 → 2025-09-03 (+1d) |
| 1.3.1.3.3.14.2 | **Fire Fighting Works** | 2025-06-21 → 2025-06-24 (+3d) | 2025-09-02 → 2025-09-03 (+1d) |
| PG-12015 | 1st Fix - Piping and Shaft hydrant works | 2025-06-21 → 2025-06-24 (+3d) | 2025-07-05 → 2025-07-08 (+3d) |
| PG-12016 | 2nd Fix - Sprinkler fixing & Pressure testing | 2025-07-30 → 2025-07-31 (+1d) | 2025-08-09 → 2025-08-12 (+3d) |
| PG-12017 | Final Fix - Smoke & heat detectors, FHC , FAS Etc. | 2025-08-22 → 2025-08-23 (+1d) | 2025-09-02 → 2025-09-03 (+1d) |
| 1.3.1.3.3.14.3 | **Electrical Works** | 2025-06-13 → 2025-06-14 (+1d) | 2025-09-02 → 2025-09-03 (+1d) |
| PG-12018 | 1st Fix - GI wire pulling | 2025-06-13 → 2025-06-14 (+1d) | 2025-06-21 → 2025-06-24 (+3d) |
| PG-12019 | 2nd Fix - Wiring works | 2025-07-25 → 2025-07-26 (+1d) | 2025-08-08 → 2025-08-11 (+3d) |
| PG-12020 | Final Fix - Electrical Fixtures | 2025-08-27 → 2025-08-28 (+1d) | 2025-09-02 → 2025-09-03 (+1d) |
| 1.3.1.3.3.15 | **Floor 12** | 2025-06-26 → 2025-06-27 (+1d) | 2025-09-18 → 2025-09-19 (+1d) |
| 1.3.1.3.3.15.1 | **PHE Works** | 2025-06-26 → 2025-06-27 (+1d) | 2025-09-18 → 2025-09-19 (+1d) |
| PG-12021 | 1st Fix - Piping works | 2025-06-26 → 2025-06-27 (+1d) | 2025-07-09 → 2025-07-11 (+2d) |
| PG-12022 | 2nd Fix - diverter fixing & Pressure testing | 2025-07-05 → 2025-07-07 (+2d) | 2025-07-16 → 2025-07-18 (+2d) |
| PG-12023 | Final Fix - CP & Sanitary fixtures | 2025-09-05 → 2025-09-06 (+1d) | 2025-09-18 → 2025-09-19 (+1d) |
| 1.3.1.3.3.15.2 | **Fire Fighting Works** | 2025-07-04 → 2025-07-07 (+3d) | 2025-09-18 → 2025-09-19 (+1d) |
| PG-12024 | 1st Fix - Piping and Shaft hydrant works | 2025-07-04 → 2025-07-07 (+3d) | 2025-07-18 → 2025-07-21 (+3d) |
| PG-12025 | 2nd Fix - Sprinkler fixing & Pressure testing | 2025-08-12 → 2025-08-13 (+1d) | 2025-08-23 → 2025-08-26 (+3d) |
| PG-12026 | Final Fix - Smoke & heat detectors, FHC , FAS Etc. | 2025-09-05 → 2025-09-06 (+1d) | 2025-09-18 → 2025-09-19 (+1d) |
| 1.3.1.3.3.15.3 | **Electrical Works** | 2025-06-26 → 2025-06-27 (+1d) | 2025-09-18 → 2025-09-19 (+1d) |
| PG-12027 | 1st Fix - GI wire pulling | 2025-06-26 → 2025-06-27 (+1d) | 2025-07-04 → 2025-07-07 (+3d) |
| PG-12028 | 2nd Fix - Wiring works | 2025-08-06 → 2025-08-07 (+1d) | 2025-08-22 → 2025-08-25 (+3d) |
| PG-12029 | Final Fix - Electrical Fixtures | 2025-09-12 → 2025-09-13 (+1d) | 2025-09-18 → 2025-09-19 (+1d) |
| 1.3.1.3.3.16 | **Floor 13** | 2025-07-09 → 2025-07-10 (+1d) | 2025-10-01 → 2025-10-03 (+2d) |
| 1.3.1.3.3.16.1 | **PHE Works** | 2025-07-09 → 2025-07-10 (+1d) | 2025-10-01 → 2025-10-03 (+2d) |
| PG-12030 | 1st Fix - Piping works | 2025-07-09 → 2025-07-10 (+1d) | 2025-07-22 → 2025-07-24 (+2d) |
| PG-12031 | 2nd Fix - diverter fixing & Pressure testing | 2025-07-18 → 2025-07-19 (+1d) | 2025-07-29 → 2025-07-31 (+2d) |
| PG-12032 | Final Fix - CP & Sanitary fixtures | 2025-09-19 → 2025-09-20 (+1d) | 2025-10-01 → 2025-10-03 (+2d) |
| 1.3.1.3.3.16.2 | **Fire Fighting Works** | 2025-07-17 → 2025-07-19 (+2d) | 2025-10-01 → 2025-10-03 (+2d) |
| PG-12033 | 1st Fix - Piping and Shaft hydrant works | 2025-07-17 → 2025-07-19 (+2d) | 2025-07-31 → 2025-08-02 (+2d) |
| PG-12034 | 2nd Fix - Sprinkler fixing & Pressure testing | 2025-08-26 → 2025-08-27 (+1d) | 2025-09-05 → 2025-09-08 (+3d) |
| PG-12035 | Final Fix - Smoke & heat detectors, FHC , FAS Etc. | 2025-09-19 → 2025-09-20 (+1d) | 2025-10-01 → 2025-10-03 (+2d) |
| 1.3.1.3.3.16.3 | **Electrical Works** | 2025-07-09 → 2025-07-10 (+1d) | 2025-10-01 → 2025-10-03 (+2d) |
| PG-12036 | 1st Fix - GI wire pulling | 2025-07-09 → 2025-07-10 (+1d) | 2025-07-17 → 2025-07-19 (+2d) |
| PG-12037 | 2nd Fix - Wiring works | 2025-08-20 → 2025-08-21 (+1d) | 2025-09-04 → 2025-09-06 (+2d) |
| PG-12038 | Final Fix - Electrical Fixtures | 2025-09-25 → 2025-09-26 (+1d) | 2025-10-01 → 2025-10-03 (+2d) |
| 1.3.1.3.3.17 | **Floor 14** | 2025-07-22 → 2025-07-23 (+1d) | 2025-10-13 → 2025-10-14 (+1d) |
| 1.3.1.3.3.17.1 | **PHE Works** | 2025-07-22 → 2025-07-23 (+1d) | 2025-10-13 → 2025-10-14 (+1d) |
| PG-12039 | 1st Fix - Piping works | 2025-07-22 → 2025-07-23 (+1d) | 2025-08-04 → 2025-08-06 (+2d) |
| PG-12040 | 2nd Fix - diverter fixing & Pressure testing | 2025-07-31 → 2025-08-01 (+1d) | 2025-08-11 → 2025-08-13 (+2d) |
| PG-12041 | Final Fix - CP & Sanitary fixtures | 2025-10-01 → 2025-10-03 (+2d) | 2025-10-13 → 2025-10-14 (+1d) |

| ID | Task | Start | Finish |
| --- | --- | --- | --- |
| 1.3.1.3.3.17.2 | **Fire Fighting Works** | 2025-07-30 → 2025-08-01 (+2d) | 2025-10-13 → 2025-10-14 (+1d) |
| PG-12042 | 1st Fix - Piping and Shaft hydrant works | 2025-07-30 → 2025-08-01 (+2d) | 2025-08-13 → 2025-08-16 (+3d) |
| PG-12043 | 2nd Fix - Sprinkler fixing & Pressure testing | 2025-09-08 → 2025-09-09 (+1d) | 2025-09-18 → 2025-09-20 (+2d) |
| PG-12044 | Final Fix - Smoke & heat detectors, FHC , FAS Etc. | 2025-10-01 → 2025-10-03 (+2d) | 2025-10-13 → 2025-10-14 (+1d) |
| 1.3.1.3.3.17.3 | **Electrical Works** | 2025-07-22 → 2025-07-23 (+1d) | 2025-10-13 → 2025-10-14 (+1d) |
| PG-12045 | 1st Fix - GI wire pulling | 2025-07-22 → 2025-07-23 (+1d) | 2025-07-30 → 2025-08-01 (+2d) |
| PG-12046 | 2nd Fix - Wiring works | 2025-09-01 → 2025-09-02 (+1d) | 2025-09-17 → 2025-09-19 (+2d) |
| PG-12047 | Final Fix - Electrical Fixtures | 2025-10-07 → 2025-10-08 (+1d) | 2025-10-13 → 2025-10-14 (+1d) |
| 1.3.1.3.3.18 | **Floor 15** | 2025-08-04 → 2025-08-05 (+1d) |  |
| 1.3.1.3.3.18.1 | **PHE Works** | 2025-08-04 → 2025-08-05 (+1d) |  |
| PG-12048 | 1st Fix - Piping works | 2025-08-04 → 2025-08-05 (+1d) | 2025-08-18 → 2025-08-20 (+2d) |
| PG-12049 | 2nd Fix - diverter fixing & Pressure testing | 2025-08-13 → 2025-08-14 (+1d) | 2025-08-25 → 2025-08-27 (+2d) |
| 1.3.1.3.3.18.2 | **Fire Fighting Works** | 2025-08-12 → 2025-08-14 (+2d) |  |
| PG-12051 | 1st Fix - Piping and Shaft hydrant works | 2025-08-12 → 2025-08-14 (+2d) | 2025-08-27 → 2025-08-29 (+2d) |
| 1.3.1.3.3.18.3 | **Electrical Works** | 2025-08-04 → 2025-08-05 (+1d) |  |
| PG-12054 | 1st Fix - GI wire pulling | 2025-08-04 → 2025-08-05 (+1d) | 2025-08-12 → 2025-08-14 (+2d) |
| 1.3.1.3.3.19 | **Floor 16** | 2025-08-18 → 2025-08-19 (+1d) | 2025-11-08 → 2025-11-11 (+3d) |
| 1.3.1.3.3.19.1 | **PHE Works** | 2025-08-18 → 2025-08-19 (+1d) | 2025-11-08 → 2025-11-11 (+3d) |
| PG-12057 | 1st Fix - Piping works | 2025-08-18 → 2025-08-19 (+1d) | 2025-08-30 → 2025-09-02 (+3d) |
| PG-12058 | 2nd Fix - diverter fixing & Pressure testing | 2025-08-27 → 2025-08-28 (+1d) | 2025-09-06 → 2025-09-09 (+3d) |
| PG-12059 | Final Fix - CP & Sanitary fixtures | 2025-10-27 → 2025-10-28 (+1d) | 2025-11-08 → 2025-11-11 (+3d) |
| 1.3.1.3.3.19.2 | **Fire Fighting Works** | 2025-08-26 → 2025-08-28 (+2d) | 2025-11-08 → 2025-11-11 (+3d) |
| PG-12060 | 1st Fix - Piping and Shaft hydrant works | 2025-08-26 → 2025-08-28 (+2d) | 2025-09-09 → 2025-09-11 (+2d) |
| PG-12061 | 2nd Fix - Sprinkler fixing & Pressure testing | 2025-10-04 → 2025-10-06 (+2d) | 2025-10-15 → 2025-10-17 (+2d) |
| PG-12062 | Final Fix - Smoke & heat detectors, FHC , FAS Etc. | 2025-10-27 → 2025-10-28 (+1d) | 2025-11-08 → 2025-11-11 (+3d) |
| 1.3.1.3.3.19.3 | **Electrical Works** | 2025-08-18 → 2025-08-19 (+1d) | 2025-11-08 → 2025-11-11 (+3d) |
| PG-12063 | 1st Fix - GI wire pulling | 2025-08-18 → 2025-08-19 (+1d) | 2025-08-26 → 2025-08-28 (+2d) |
| PG-12064 | 2nd Fix - Wiring works | 2025-09-29 → 2025-09-30 (+1d) | 2025-10-14 → 2025-10-16 (+2d) |
| PG-12065 | Final Fix - Electrical Fixtures | 2025-11-03 → 2025-11-04 (+1d) | 2025-11-08 → 2025-11-11 (+3d) |
| 1.3.1.3.3.20 | **Floor 17** | 2025-08-30 → 2025-09-01 (+2d) | 2025-11-20 → 2025-11-22 (+2d) |
| 1.3.1.3.3.20.1 | **PHE Works** | 2025-08-30 → 2025-09-01 (+2d) | 2025-11-20 → 2025-11-22 (+2d) |
| PG-12066 | 1st Fix - Piping works | 2025-08-30 → 2025-09-01 (+2d) | 2025-09-12 → 2025-09-15 (+3d) |
| PG-12067 | 2nd Fix - diverter fixing & Pressure testing | 2025-09-09 → 2025-09-10 (+1d) | 2025-09-19 → 2025-09-22 (+3d) |
| PG-12068 | Final Fix - CP & Sanitary fixtures | 2025-11-08 → 2025-11-10 (+2d) | 2025-11-20 → 2025-11-22 (+2d) |
| 1.3.1.3.3.20.2 | **Fire Fighting Works** | 2025-09-08 → 2025-09-10 (+2d) | 2025-11-20 → 2025-11-22 (+2d) |
| PG-12069 | 1st Fix - Piping and Shaft hydrant works | 2025-09-08 → 2025-09-10 (+2d) | 2025-09-22 → 2025-09-24 (+2d) |
| PG-12070 | 2nd Fix - Sprinkler fixing & Pressure testing | 2025-10-17 → 2025-10-18 (+1d) | 2025-10-28 → 2025-10-30 (+2d) |
| PG-12071 | Final Fix - Smoke & heat detectors, FHC , FAS Etc. | 2025-11-08 → 2025-11-10 (+2d) | 2025-11-20 → 2025-11-22 (+2d) |
| 1.3.1.3.3.20.3 | **Electrical Works** | 2025-08-30 → 2025-09-01 (+2d) | 2025-11-20 → 2025-11-22 (+2d) |
| PG-12072 | 1st Fix - GI wire pulling | 2025-08-30 → 2025-09-01 (+2d) | 2025-09-08 → 2025-09-10 (+2d) |
| PG-12073 | 2nd Fix - Wiring works | 2025-10-11 → 2025-10-13 (+2d) | 2025-10-27 → 2025-10-29 (+2d) |
| PG-12074 | Final Fix - Electrical Fixtures | 2025-11-14 → 2025-11-15 (+1d) | 2025-11-20 → 2025-11-22 (+2d) |
| 1.3.1.3.3.21 | **Floor 18** | 2025-09-12 → 2025-09-13 (+1d) | 2025-12-03 → 2025-12-05 (+2d) |
| 1.3.1.3.3.21.1 | **PHE Works** | 2025-09-12 → 2025-09-13 (+1d) | 2025-12-03 → 2025-12-05 (+2d) |
| PG-12075 | 1st Fix - Piping works | 2025-09-12 → 2025-09-13 (+1d) | 2025-09-25 → 2025-09-27 (+2d) |
| PG-12076 | 2nd Fix - diverter fixing & Pressure testing | 2025-09-22 → 2025-09-23 (+1d) | 2025-10-03 → 2025-10-06 (+3d) |
| PG-12077 | Final Fix - CP & Sanitary fixtures | 2025-11-21 → 2025-11-22 (+1d) | 2025-12-03 → 2025-12-05 (+2d) |
| 1.3.1.3.3.21.2 | **Fire Fighting Works** | 2025-09-20 → 2025-09-23 (+3d) | 2025-12-03 → 2025-12-05 (+2d) |
| PG-12078 | 1st Fix - Piping and Shaft hydrant works | 2025-09-20 → 2025-09-23 (+3d) | 2025-10-06 → 2025-10-08 (+2d) |
| PG-12079 | 2nd Fix - Sprinkler fixing & Pressure testing | 2025-10-30 → 2025-10-31 (+1d) | 2025-11-11 → 2025-11-13 (+2d) |
| PG-12080 | Final Fix - Smoke & heat detectors, FHC , FAS Etc. | 2025-11-21 → 2025-11-22 (+1d) | 2025-12-03 → 2025-12-05 (+2d) |
| 1.3.1.3.3.21.3 | **Electrical Works** | 2025-09-12 → 2025-09-13 (+1d) | 2025-12-03 → 2025-12-05 (+2d) |
| PG-12081 | 1st Fix - GI wire pulling | 2025-09-12 → 2025-09-13 (+1d) | 2025-09-20 → 2025-09-23 (+3d) |
| PG-12082 | 2nd Fix - Wiring works | 2025-10-24 → 2025-10-25 (+1d) | 2025-11-10 → 2025-11-12 (+2d) |
| PG-12083 | Final Fix - Electrical Fixtures | 2025-11-27 → 2025-11-28 (+1d) | 2025-12-03 → 2025-12-05 (+2d) |
| 1.3.1.3.3.22 | **Floor 19** | 2025-09-25 → 2025-09-26 (+1d) | 2025-12-16 → 2025-12-18 (+2d) |
| 1.3.1.3.3.22.1 | **PHE Works** | 2025-09-25 → 2025-09-26 (+1d) | 2025-12-16 → 2025-12-18 (+2d) |
| PG-12084 | 1st Fix - Piping works | 2025-09-25 → 2025-09-26 (+1d) | 2025-10-09 → 2025-10-11 (+2d) |
| PG-12085 | 2nd Fix - diverter fixing & Pressure testing | 2025-10-06 → 2025-10-07 (+1d) | 2025-10-16 → 2025-10-18 (+2d) |
| PG-12086 | Final Fix - CP & Sanitary fixtures | 2025-12-04 → 2025-12-05 (+1d) | 2025-12-16 → 2025-12-18 (+2d) |
| 1.3.1.3.3.22.2 | **Fire Fighting Works** | 2025-10-04 → 2025-10-07 (+3d) | 2025-12-16 → 2025-12-18 (+2d) |
| PG-12087 | 1st Fix - Piping and Shaft hydrant works | 2025-10-04 → 2025-10-07 (+3d) | 2025-10-18 → 2025-10-21 (+3d) |
| PG-12088 | 2nd Fix - Sprinkler fixing & Pressure testing | 2025-11-13 → 2025-11-14 (+1d) | 2025-11-24 → 2025-11-26 (+2d) |
| PG-12089 | Final Fix - Smoke & heat detectors, FHC , FAS Etc. | 2025-12-04 → 2025-12-05 (+1d) | 2025-12-16 → 2025-12-18 (+2d) |
| 1.3.1.3.3.22.3 | **Electrical Works** | 2025-09-25 → 2025-09-26 (+1d) | 2025-12-16 → 2025-12-18 (+2d) |
| PG-12090 | 1st Fix - GI wire pulling | 2025-09-25 → 2025-09-26 (+1d) | 2025-10-04 → 2025-10-07 (+3d) |
| PG-12091 | 2nd Fix - Wiring works | 2025-11-07 → 2025-11-08 (+1d) | 2025-11-22 → 2025-11-25 (+3d) |
| PG-12092 | Final Fix - Electrical Fixtures | 2025-12-10 → 2025-12-11 (+1d) | 2025-12-16 → 2025-12-18 (+2d) |
| 1.3.1.3.3.23 | **Floor 20** | 2025-10-09 → 2025-10-10 (+1d) | 2025-12-30 → 2025-12-31 (+1d) |
| 1.3.1.3.3.23.1 | **PHE Works** | 2025-10-09 → 2025-10-10 (+1d) | 2025-12-30 → 2025-12-31 (+1d) |

| ID | Task | Start | Finish |
| --- | --- | --- | --- |
| PG-12093 | 1st Fix - Piping works | 2025-10-09 → 2025-10-10 (+1d) | 2025-10-22 → 2025-10-24 (+2d) |
| PG-12094 | 2nd Fix - diverter fixing & Pressure testing | 2025-10-18 → 2025-10-20 (+2d) | 2025-10-29 → 2025-10-31 (+2d) |
| PG-12095 | Final Fix - CP & Sanitary fixtures | 2025-12-19 → 2025-12-20 (+1d) | 2025-12-30 → 2025-12-31 (+1d) |
| 1.3.1.3.3.23.2 | **Fire Fighting Works** | 2025-10-17 → 2025-10-20 (+3d) | 2025-12-30 → 2025-12-31 (+1d) |
| PG-12096 | 1st Fix - Piping and Shaft hydrant works | 2025-10-17 → 2025-10-20 (+3d) | 2025-10-31 → 2025-11-04 (+4d) |
| PG-12097 | 2nd Fix - Sprinkler fixing & Pressure testing | 2025-11-26 → 2025-11-27 (+1d) | 2025-12-06 → 2025-12-09 (+3d) |
| PG-12098 | Final Fix - Smoke & heat detectors, FHC , FAS Etc. | 2025-12-19 → 2025-12-20 (+1d) | 2025-12-30 → 2025-12-31 (+1d) |
| 1.3.1.3.3.23.3 | **Electrical Works** | 2025-10-09 → 2025-10-10 (+1d) | 2025-12-30 → 2025-12-31 (+1d) |
| PG-12099 | 1st Fix - GI wire pulling | 2025-10-09 → 2025-10-10 (+1d) | 2025-10-17 → 2025-10-20 (+3d) |
| PG-12100 | 2nd Fix - Wiring works | 2025-11-20 → 2025-11-21 (+1d) | 2025-12-05 → 2025-12-08 (+3d) |
| PG-12101 | Final Fix - Electrical Fixtures | 2025-12-24 → 2025-12-25 (+1d) | 2025-12-30 → 2025-12-31 (+1d) |
| 1.3.1.3.3.24 | **Floor 21** | 2025-10-22 → 2025-10-23 (+1d) | 2026-01-12 → 2026-01-13 (+1d) |
| 1.3.1.3.3.24.1 | **PHE Works** | 2025-10-22 → 2025-10-23 (+1d) | 2026-01-12 → 2026-01-13 (+1d) |
| PG-12102 | 1st Fix - Piping works | 2025-10-22 → 2025-10-23 (+1d) | 2025-11-05 → 2025-11-07 (+2d) |
| PG-12103 | 2nd Fix - diverter fixing & Pressure testing | 2025-11-03 → 2025-11-04 (+1d) | 2025-11-12 → 2025-11-14 (+2d) |
| PG-12104 | Final Fix - CP & Sanitary fixtures | 2025-12-30 → 2026-01-01 (+2d) | 2026-01-12 → 2026-01-13 (+1d) |
| 1.3.1.3.3.24.2 | **Fire Fighting Works** | 2025-10-30 → 2025-11-03 (+4d) | 2026-01-12 → 2026-01-13 (+1d) |
| PG-12105 | 1st Fix - Piping and Shaft hydrant works | 2025-10-30 → 2025-11-03 (+4d) | 2025-11-14 → 2025-11-17 (+3d) |
| PG-12106 | 2nd Fix - Sprinkler fixing & Pressure testing | 2025-12-09 → 2025-12-10 (+1d) | 2025-12-19 → 2025-12-22 (+3d) |
| PG-12107 | Final Fix - Smoke & heat detectors, FHC , FAS Etc. | 2025-12-30 → 2026-01-01 (+2d) | 2026-01-12 → 2026-01-13 (+1d) |
| 1.3.1.3.3.24.3 | **Electrical Works** | 2025-10-22 → 2025-10-23 (+1d) | 2025-12-30 → 2025-12-31 (+1d) |
| PG-12108 | 1st Fix - GI wire pulling | 2025-10-22 → 2025-10-23 (+1d) | 2025-10-30 → 2025-11-03 (+4d) |
| PG-12109 | 2nd Fix - Wiring works | 2025-11-20 → 2025-11-21 (+1d) | 2025-12-05 → 2025-12-08 (+3d) |
| PG-12110 | Final Fix - Electrical Fixtures | 2025-12-24 → 2025-12-25 (+1d) | 2025-12-30 → 2025-12-31 (+1d) |
| 1.3.1.3.3.25 | **Floor 22** | 2025-11-05 → 2025-11-06 (+1d) | 2026-01-24 → 2026-01-27 (+3d) |
| 1.3.1.3.3.25.1 | **PHE Works** | 2025-11-05 → 2025-11-06 (+1d) | 2026-01-24 → 2026-01-27 (+3d) |
| PG-12111 | 1st Fix - Piping works | 2025-11-05 → 2025-11-06 (+1d) | 2025-11-18 → 2025-11-20 (+2d) |
| PG-12112 | 2nd Fix - diverter fixing & Pressure testing | 2025-11-15 → 2025-11-17 (+2d) | 2025-11-25 → 2025-11-27 (+2d) |
| PG-12113 | Final Fix - CP & Sanitary fixtures | 2026-01-12 → 2026-01-14 (+2d) | 2026-01-24 → 2026-01-27 (+3d) |
| 1.3.1.3.3.25.2 | **Fire Fighting Works** | 2025-11-13 → 2025-11-15 (+2d) | 2026-01-24 → 2026-01-27 (+3d) |
| PG-12114 | 1st Fix - Piping and Shaft hydrant works | 2025-11-13 → 2025-11-15 (+2d) | 2025-11-27 → 2025-11-29 (+2d) |
| PG-12115 | 2nd Fix - Sprinkler fixing & Pressure testing | 2025-12-22 → 2025-12-23 (+1d) | 2026-01-01 → 2026-01-03 (+2d) |
| PG-12116 | Final Fix - Smoke & heat detectors, FHC , FAS Etc. | 2026-01-12 → 2026-01-14 (+2d) | 2026-01-24 → 2026-01-27 (+3d) |
| 1.3.1.3.3.25.3 | **Electrical Works** | 2025-11-05 → 2025-11-06 (+1d) | 2026-01-24 → 2026-01-27 (+3d) |
| PG-12117 | 1st Fix - GI wire pulling | 2025-11-05 → 2025-11-06 (+1d) | 2025-11-13 → 2025-11-15 (+2d) |
| PG-12118 | 2nd Fix - Wiring works | 2025-12-16 → 2025-12-17 (+1d) | 2025-12-31 → 2026-01-02 (+2d) |
| PG-12119 | Final Fix - Electrical Fixtures | 2026-01-17 → 2026-01-20 (+3d) | 2026-01-24 → 2026-01-27 (+3d) |
| 1.3.1.3.3.26 | **Floor 23** | 2025-11-17 → 2025-11-19 (+2d) | 2026-02-06 → 2026-02-09 (+3d) |
| 1.3.1.3.3.26.1 | **PHE Works** | 2025-11-17 → 2025-11-19 (+2d) | 2026-02-06 → 2026-02-09 (+3d) |
| PG-12120 | 1st Fix - Piping works | 2025-11-17 → 2025-11-19 (+2d) | 2025-11-29 → 2025-12-01 (+2d) |
| PG-12121 | 2nd Fix - diverter fixing & Pressure testing | 2025-11-25 → 2025-11-27 (+2d) | 2025-12-06 → 2025-12-08 (+2d) |
| PG-12122 | Final Fix - CP & Sanitary fixtures | 2026-01-27 → 2026-01-28 (+1d) | 2026-02-06 → 2026-02-09 (+3d) |
| 1.3.1.3.3.26.2 | **Fire Fighting Works** | 2025-11-25 → 2025-11-27 (+2d) | 2026-02-06 → 2026-02-09 (+3d) |
| PG-12123 | 1st Fix - Piping and Shaft hydrant works | 2025-11-25 → 2025-11-27 (+2d) | 2025-12-09 → 2025-12-11 (+2d) |
| PG-12124 | 2nd Fix - Sprinkler fixing & Pressure testing | 2025-12-31 → 2026-01-02 (+2d) | 2026-01-13 → 2026-01-14 (+1d) |
| PG-12125 | Final Fix - Smoke & heat detectors, FHC , FAS Etc. | 2026-01-27 → 2026-01-28 (+1d) | 2026-02-06 → 2026-02-09 (+3d) |
| 1.3.1.3.3.26.3 | **Electrical Works** | 2025-11-17 → 2025-11-19 (+2d) | 2026-02-06 → 2026-02-09 (+3d) |
| PG-12126 | 1st Fix - GI wire pulling | 2025-11-17 → 2025-11-19 (+2d) | 2025-11-25 → 2025-11-27 (+2d) |
| PG-12127 | 2nd Fix - Wiring works | 2025-12-25 → 2025-12-27 (+2d) | 2026-01-12 → 2026-01-13 (+1d) |
| PG-12128 | Final Fix - Electrical Fixtures | 2026-01-31 → 2026-02-02 (+2d) | 2026-02-06 → 2026-02-09 (+3d) |
| 1.3.1.3.3.27 | **Floor 24** | 2025-11-29 → 2025-12-02 (+3d) | 2026-02-20 → 2026-02-21 (+1d) |
| 1.3.1.3.3.27.1 | **PHE Works** | 2025-11-29 → 2025-12-02 (+3d) | 2026-02-20 → 2026-02-21 (+1d) |
| PG-12129 | 1st Fix - Piping works | 2025-11-29 → 2025-12-02 (+3d) | 2025-12-13 → 2025-12-15 (+2d) |
| PG-12130 | 2nd Fix - diverter fixing & Pressure testing | 2025-12-09 → 2025-12-11 (+2d) | 2025-12-20 → 2025-12-22 (+2d) |
| PG-12131 | Final Fix - CP & Sanitary fixtures | 2026-02-09 → 2026-02-10 (+1d) | 2026-02-20 → 2026-02-21 (+1d) |
| 1.3.1.3.3.27.2 | **Fire Fighting Works** | 2025-12-10 → 2025-12-11 (+1d) | 2026-02-20 → 2026-02-21 (+1d) |
| PG-12132 | 1st Fix - Piping and Shaft hydrant works | 2025-12-10 → 2025-12-11 (+1d) | 2025-12-23 → 2025-12-25 (+2d) |
| PG-12133 | 2nd Fix - Sprinkler fixing & Pressure testing | 2026-01-15 → 2026-01-16 (+1d) | 2026-01-28 → 2026-01-29 (+1d) |
| PG-12134 | Final Fix - Smoke & heat detectors, FHC , FAS Etc. | 2026-02-09 → 2026-02-10 (+1d) | 2026-02-20 → 2026-02-21 (+1d) |
| 1.3.1.3.3.27.3 | **Electrical Works** | 2025-11-29 → 2025-12-02 (+3d) | 2026-02-20 → 2026-02-21 (+1d) |
| PG-12135 | 1st Fix - GI wire pulling | 2025-11-29 → 2025-12-02 (+3d) | 2025-12-09 → 2025-12-11 (+2d) |
| PG-12136 | 2nd Fix - Wiring works | 2026-01-09 → 2026-01-10 (+1d) | 2026-01-27 → 2026-01-28 (+1d) |
| PG-12137 | Final Fix - Electrical Fixtures | 2026-02-13 → 2026-02-14 (+1d) | 2026-02-20 → 2026-02-21 (+1d) |
| 1.3.1.3.3.28 | **Floor 25** | 2025-12-22 → 2025-12-23 (+1d) | 2026-03-13 → 2026-03-14 (+1d) |
| 1.3.1.3.3.28.1 | **PHE Works** | 2025-12-22 → 2025-12-23 (+1d) | 2026-03-13 → 2026-03-14 (+1d) |
| PG-12138 | 1st Fix - Piping works | 2025-12-22 → 2025-12-23 (+1d) | 2026-01-03 → 2026-01-05 (+2d) |
| PG-12139 | 2nd Fix - diverter fixing & Pressure testing | 2025-12-31 → 2026-01-02 (+2d) | 2026-01-10 → 2026-01-12 (+2d) |
| PG-12140 | Final Fix - CP & Sanitary fixtures | 2026-03-03 → 2026-03-04 (+1d) | 2026-03-13 → 2026-03-14 (+1d) |
| 1.3.1.3.3.28.2 | **Fire Fighting Works** | 2025-12-31 → 2026-01-02 (+2d) | 2026-03-13 → 2026-03-14 (+1d) |
| PG-12141 | 1st Fix - Piping and Shaft hydrant works | 2025-12-31 → 2026-01-02 (+2d) | 2026-01-14 → 2026-01-15 (+1d) |

| ID | Task | Start | Finish | Complete | Total float |
| --- | --- | --- | --- | --- | --- |
| PG-12142 | 2nd Fix - Sprinkler fixing & Pressure testing | 2026-02-07 → 2026-02-09 (+2d) | 2026-02-18 → 2026-02-19 (+1d) |  |  |
| PG-12143 | Final Fix - Smoke & heat detectors, FHC , FAS Etc. | 2026-03-03 → 2026-03-04 (+1d) | 2026-03-13 → 2026-03-14 (+1d) |  |  |
| 1.3.1.3.3.28.3 | **Electrical Works** | 2025-12-22 → 2025-12-23 (+1d) | 2026-03-13 → 2026-03-14 (+1d) |  |  |
| PG-12144 | 1st Fix - GI wire pulling | 2025-12-22 → 2025-12-23 (+1d) | 2025-12-31 → 2026-01-01 (+1d) |  |  |
| PG-12145 | 2nd Fix - Wiring works | 2026-01-30 → 2026-01-31 (+1d) | 2026-02-17 → 2026-02-18 (+1d) |  |  |
| PG-12146 | Final Fix - Electrical Fixtures | 2026-03-07 → 2026-03-09 (+2d) | 2026-03-13 → 2026-03-14 (+1d) |  |  |
| 1.3.1.3.3.29 | **Floor 26** | 2026-01-12 → 2026-01-13 (+1d) | 2026-04-03 → 2026-04-04 (+1d) |  |  |
| 1.3.1.3.3.29.1 | **PHE Works** | 2026-01-12 → 2026-01-13 (+1d) | 2026-04-03 → 2026-04-04 (+1d) |  |  |
| PG-12147 | 1st Fix - Piping works | 2026-01-12 → 2026-01-13 (+1d) | 2026-01-27 → 2026-01-28 (+1d) |  |  |
| PG-12148 | 2nd Fix - diverter fixing & Pressure testing | 2026-01-20 → 2026-01-21 (+1d) | 2026-02-03 → 2026-02-04 (+1d) |  |  |
| PG-12149 | Final Fix - CP & Sanitary fixtures | 2026-03-25 → 2026-03-26 (+1d) | 2026-04-03 → 2026-04-04 (+1d) |  |  |
| 1.3.1.3.3.29.2 | **Fire Fighting Works** | 2026-01-21 → 2026-01-22 (+1d) | 2026-04-03 → 2026-04-04 (+1d) |  |  |
| PG-12150 | 1st Fix - Piping and Shaft hydrant works | 2026-01-21 → 2026-01-22 (+1d) | 2026-02-04 → 2026-02-06 (+2d) |  |  |
| PG-12151 | 2nd Fix - Sprinkler fixing & Pressure testing | 2026-02-27 → 2026-03-02 (+3d) | 2026-03-12 → 2026-03-13 (+1d) |  |  |
| PG-12152 | Final Fix - Smoke & heat detectors, FHC , FAS Etc. | 2026-03-25 → 2026-03-26 (+1d) | 2026-04-03 → 2026-04-04 (+1d) |  |  |
| 1.3.1.3.3.29.3 | **Electrical Works** | 2026-01-12 → 2026-01-13 (+1d) | 2026-04-03 → 2026-04-04 (+1d) |  |  |
| PG-12153 | 1st Fix - GI wire pulling | 2026-01-12 → 2026-01-13 (+1d) | 2026-01-20 → 2026-01-22 (+2d) |  |  |
| PG-12154 | 2nd Fix - Wiring works | 2026-02-20 → 2026-02-23 (+3d) | 2026-03-11 → 2026-03-12 (+1d) |  |  |
| PG-12155 | Final Fix - Electrical Fixtures | 2026-03-28 → 2026-03-30 (+2d) | 2026-04-03 → 2026-04-04 (+1d) |  |  |
| 1.3.1.3.3.30 | **Floor 27** | 2026-02-04 → 2026-02-05 (+1d) | 2026-04-25 → 2026-04-27 (+2d) |  |  |
| 1.3.1.3.3.30.1 | **PHE Works** | 2026-02-04 → 2026-02-05 (+1d) | 2026-04-25 → 2026-04-27 (+2d) |  |  |
| PG-12156 | 1st Fix - Piping works | 2026-02-04 → 2026-02-05 (+1d) | 2026-02-17 → 2026-02-19 (+2d) |  |  |
| PG-12157 | 2nd Fix - diverter fixing & Pressure testing | 2026-02-13 → 2026-02-14 (+1d) | 2026-02-24 → 2026-02-26 (+2d) |  |  |
| PG-12158 | Final Fix - CP & Sanitary fixtures | 2026-04-13 → 2026-04-15 (+2d) | 2026-04-25 → 2026-04-27 (+2d) |  |  |
| 1.3.1.3.3.30.2 | **Fire Fighting Works** | 2026-02-13 → 2026-02-14 (+1d) | 2026-04-25 → 2026-04-27 (+2d) |  |  |
| PG-12159 | 1st Fix - Piping and Shaft hydrant works | 2026-02-13 → 2026-02-14 (+1d) | 2026-02-26 → 2026-02-28 (+2d) |  |  |
| PG-12160 | 2nd Fix - Sprinkler fixing & Pressure testing | 2026-03-24 → 2026-03-25 (+1d) | 2026-04-02 → 2026-04-04 (+2d) |  |  |
| PG-12161 | Final Fix - Smoke & heat detectors, FHC , FAS Etc. | 2026-04-13 → 2026-04-15 (+2d) | 2026-04-25 → 2026-04-27 (+2d) |  |  |
| 1.3.1.3.3.30.3 | **Electrical Works** | 2026-02-04 → 2026-02-05 (+1d) | 2026-04-25 → 2026-04-27 (+2d) |  |  |
| PG-12162 | 1st Fix - GI wire pulling | 2026-02-04 → 2026-02-05 (+1d) | 2026-02-12 → 2026-02-14 (+2d) |  |  |
| PG-12163 | 2nd Fix - Wiring works | 2026-03-17 → 2026-03-18 (+1d) | 2026-04-01 → 2026-04-03 (+2d) |  |  |
| PG-12164 | Final Fix - Electrical Fixtures | 2026-04-18 → 2026-04-21 (+3d) | 2026-04-25 → 2026-04-27 (+2d) |  |  |
| 1.3.1.3.3.31 | **Floor 28** | 2026-02-25 → 2026-02-27 (+2d) | 2026-05-18 → 2026-05-19 (+1d) |  |  |
| 1.3.1.3.3.31.1 | **PHE Works** | 2026-02-25 → 2026-02-27 (+2d) | 2026-05-18 → 2026-05-19 (+1d) |  |  |
| PG-12165 | 1st Fix - Piping works | 2026-02-25 → 2026-02-27 (+2d) | 2026-03-11 → 2026-03-12 (+1d) |  |  |
| PG-12166 | 2nd Fix - diverter fixing & Pressure testing | 2026-03-06 → 2026-03-09 (+3d) | 2026-03-18 → 2026-03-19 (+1d) |  |  |
| PG-12167 | Final Fix - CP & Sanitary fixtures | 2026-05-06 → 2026-05-08 (+2d) | 2026-05-18 → 2026-05-19 (+1d) |  |  |
| 1.3.1.3.3.31.2 | **Fire Fighting Works** | 2026-03-06 → 2026-03-09 (+3d) | 2026-05-18 → 2026-05-19 (+1d) |  |  |
| PG-12168 | 1st Fix - Piping and Shaft hydrant works | 2026-03-06 → 2026-03-09 (+3d) | 2026-03-20 → 2026-03-21 (+1d) |  |  |
| PG-12169 | 2nd Fix - Sprinkler fixing & Pressure testing | 2026-04-14 → 2026-04-15 (+1d) | 2026-04-24 → 2026-04-25 (+1d) |  |  |
| PG-12170 | Final Fix - Smoke & heat detectors, FHC , FAS Etc. | 2026-05-06 → 2026-05-08 (+2d) | 2026-05-18 → 2026-05-19 (+1d) |  |  |
| 1.3.1.3.3.31.3 | **Electrical Works** | 2026-02-25 → 2026-02-27 (+2d) | 2026-05-18 → 2026-05-19 (+1d) |  |  |
| PG-12171 | 1st Fix - GI wire pulling | 2026-02-25 → 2026-02-27 (+2d) | 2026-03-06 → 2026-03-07 (+1d) |  |  |
| PG-12172 | 2nd Fix - Wiring works | 2026-04-07 → 2026-04-08 (+1d) | 2026-04-23 → 2026-04-24 (+1d) |  |  |
| PG-12173 | Final Fix - Electrical Fixtures | 2026-05-11 → 2026-05-13 (+2d) | 2026-05-18 → 2026-05-19 (+1d) |  |  |
| 1.3.1.3.3.32 | **Floor 29** | 2026-03-19 → 2026-03-20 (+1d) | 2026-06-08 → 2026-06-10 (+2d) |  |  |
| 1.3.1.3.3.32.1 | **PHE Works** | 2026-03-19 → 2026-03-20 (+1d) | 2026-06-08 → 2026-06-10 (+2d) |  |  |
| PG-12174 | 1st Fix - Piping works | 2026-03-19 → 2026-03-20 (+1d) | 2026-04-02 → 2026-04-03 (+1d) |  |  |
| PG-12175 | 2nd Fix - diverter fixing & Pressure testing | 2026-03-28 → 2026-03-30 (+2d) | 2026-04-09 → 2026-04-10 (+1d) |  |  |
| PG-12176 | Final Fix - CP & Sanitary fixtures | 2026-05-28 → 2026-05-29 (+1d) | 2026-06-08 → 2026-06-10 (+2d) |  |  |
| 1.3.1.3.3.32.2 | **Fire Fighting Works** | 2026-03-27 → 2026-03-30 (+3d) | 2026-06-08 → 2026-06-10 (+2d) |  |  |
| PG-12177 | 1st Fix - Piping and Shaft hydrant works | 2026-03-27 → 2026-03-30 (+3d) | 2026-04-11 → 2026-04-13 (+2d) |  |  |
| PG-12178 | 2nd Fix - Sprinkler fixing & Pressure testing | 2026-05-05 → 2026-05-07 (+2d) | 2026-05-16 → 2026-05-18 (+2d) |  |  |
| PG-12179 | Final Fix - Smoke & heat detectors, FHC , FAS Etc. | 2026-05-28 → 2026-05-29 (+1d) | 2026-06-08 → 2026-06-10 (+2d) |  |  |
| 1.3.1.3.3.32.3 | **Electrical Works** | 2026-03-19 → 2026-03-20 (+1d) | 2026-06-08 → 2026-06-10 (+2d) |  |  |
| PG-12180 | 1st Fix - GI wire pulling | 2026-03-19 → 2026-03-20 (+1d) | 2026-03-28 → 2026-03-30 (+2d) |  |  |
| PG-12181 | 2nd Fix - Wiring works | 2026-04-25 → 2026-04-28 (+3d) | 2026-05-15 → 2026-05-16 (+1d) |  |  |
| PG-12182 | Final Fix - Electrical Fixtures | 2026-06-02 → 2026-06-03 (+1d) | 2026-06-08 → 2026-06-10 (+2d) |  |  |
| 1.3.1.3.4 | **Civil Finishes - Units** |  | 2026-06-01 → 2026-06-03 (+2d) |  |  |
| 1.3.1.3.4.6 | **Floor 3** |  | 2025-04-29 → 2025-04-30 (+1d) |  |  |
| 1.3.1.3.4.6.1 | **Ceiling Finishing works - Civil** |  | 2025-04-28 → 2025-04-29 (+1d) |  |  |
| PG-12240 | Final Coat Painting |  | 2025-04-28 → 2025-04-29 A (+1d) | 87% → 100% | 437.18d → none |
| 1.3.1.3.4.6.2 | **Wall Finishing works - Civil** |  | 2025-04-29 → 2025-04-30 (+1d) |  |  |
| PG-12245 | Final Coat Painting |  | 2025-04-29 → 2025-04-30 A (+1d) | 80% → 100% | 400.11d → none |
| PG-12254 | Final Coat Painting |  |  | 17% → 50% | 424.51d → 425.94d |
| PG-12259 | Final Coat Painting |  |  | 16% → 49% | 387.62d → 389.05d |
| 1.3.1.3.4.9 | **Floor 6** |  | 2025-06-11 → 2025-06-12 (+1d) |  |  |
| 1.3.1.3.4.9.1 | **Ceiling Finishing works - Civil** |  | 2025-06-11 → 2025-06-12 (+1d) |  |  |
| PG-12279 | Cornice fixing |  | 2025-04-29 A | 26% → 100% | 410.42d → none |
| PG-12281 | Toilet False ceiling | 2025-05-01 → 2025-05-02 A (+1d) | 2025-05-06 → 2025-05-07 (+1d) | 0% → 7% | 392.07d → 392.51d |

| ID | Task | Start | Finish | Complete | Total float |
| --- | --- | --- | --- | --- | --- |
| PG-12280 | Painting Works - Putty, Primer and 1st | 2025-05-12 → 2025-05-13 (+1d) | 2025-05-19 → 2025-05-20 (+1d) |  | 399.74d → 400.18d |
| PG-12282 | Final Coat Painting | 2025-05-19 → 2025-05-20 (+1d) | 2025-06-11 → 2025-06-12 (+1d) |  | 399.74d → 400.18d |
| 1.3.1.3.4.9.2 | **Wall Finishing works - Civil** |  | 2025-06-10 → 2025-06-11 (+1d) |  |  |
| PG-12284 | UPVC Windows & Sliding doors | 2025-05-06 → 2025-05-07 (+1d) | 2025-05-12 → 2025-05-13 (+1d) |  | 365.07d → 365.51d |
| PG-12286 | Painting Works - Putty, Primer and 1st | 2025-05-12 → 2025-05-13 (+1d) | 2025-05-19 → 2025-05-20 (+1d) |  | 365.07d → 365.51d |
| PG-12287 | Final Coat Painting | 2025-05-19 → 2025-05-20 (+1d) | 2025-06-10 → 2025-06-11 (+1d) |  | 365.07d → 365.51d |
| 1.3.1.3.4.9.3 | **Floor Finishing Works - Civil** |  | 2025-05-19 → 2025-05-20 (+1d) |  |  |
| PG-12289 | Floor Tiling - Wet area |  | 2025-04-30 → 2025-05-01 A (+1d) | 11% → 100% | 365.07d → none |
| PG-12290 | Floor Tiling - Dry area | 2025-04-30 → 2025-05-01 A (+1d) | 2025-05-06 → 2025-05-07 (+1d) | 0% → 20% | 365.07d → 365.51d |
| PG-12291 | Wooden doors | 2025-05-13 → 2025-05-14 (+1d) | 2025-05-19 → 2025-05-20 (+1d) |  | 365.07d → 365.51d |
| PG-12292 | Gypsum Plastering |  | 2025-04-30 → 2025-05-01 A (+1d) | 27% → 100% | 398.8d → none |
| PG-12295 | Toilet False ceiling | 2025-05-19 → 2025-05-20 (+1d) | 2025-05-23 → 2025-05-24 (+1d) |  | 378.8d → 379.79d |
| PG-12294 | Painting Works - Putty, Primer and 1st | 2025-05-29 → 2025-05-30 (+1d) | 2025-06-05 → 2025-06-06 (+1d) |  | 385.47d → 386.46d |
| PG-12296 | Final Coat Painting | 2025-06-05 → 2025-06-06 (+1d) |  |  | 385.47d → 386.46d |
| PG-12299 | Dadoing - Wet area | 2025-05-06 → 2025-05-07 (+1d) | 2025-05-12 → 2025-05-13 (+1d) |  | 351.8d → 352.79d |
| PG-12298 | UPVC Windows & Sliding doors | 2025-05-23 → 2025-05-24 (+1d) | 2025-05-29 → 2025-05-30 (+1d) |  | 351.8d → 352.79d |
| PG-12300 | Painting Works - Putty, Primer and 1st | 2025-05-29 → 2025-05-30 (+1d) | 2025-06-05 → 2025-06-06 (+1d) |  | 351.8d → 352.79d |
| PG-12301 | Final Coat Painting | 2025-06-05 → 2025-06-06 (+1d) |  |  | 351.8d → 352.79d |
| 1.3.1.3.4.10.3 | **Floor Finishing Works - Civil** |  | 2025-06-05 → 2025-06-06 (+1d) |  |  |
| PG-12303 | Floor Tiling - Wet area | 2025-05-12 → 2025-05-13 (+1d) | 2025-05-17 → 2025-05-19 (+2d) |  | 351.8d → 352.79d |
| PG-12304 | Floor Tiling - Dry area | 2025-05-17 → 2025-05-19 (+2d) | 2025-05-23 → 2025-05-24 (+1d) |  | 351.8d → 352.79d |
| PG-12305 | Wooden doors | 2025-05-30 → 2025-05-31 (+1d) | 2025-06-05 → 2025-06-06 (+1d) |  | 351.8d → 352.79d |
| 1.3.1.3.4.11 | **Floor 8** | 2025-05-01 → 2025-05-02 (+1d) | 2025-07-15 → 2025-07-16 (+1d) |  |  |
| 1.3.1.3.4.11.1 | **Ceiling Finishing works - Civil** | 2025-05-09 → 2025-05-12 (+3d) | 2025-07-15 → 2025-07-16 (+1d) |  |  |
| PG-12306 | Gypsum Plastering | 2025-05-09 → 2025-05-12 (+3d) | 2025-05-16 → 2025-05-19 (+3d) |  |  |
| PG-12307 | Cornice fixing | 2025-05-26 → 2025-05-28 (+2d) | 2025-05-30 → 2025-06-02 (+3d) |  |  |
| PG-12309 | Toilet False ceiling | 2025-06-04 → 2025-06-05 (+1d) | 2025-06-07 → 2025-06-10 (+3d) |  |  |
| PG-12308 | Painting Works - Putty, Primer and 1st | 2025-06-14 → 2025-06-16 (+2d) | 2025-06-20 → 2025-06-23 (+3d) |  |  |
| PG-12310 | Final Coat Painting | 2025-06-21 → 2025-06-23 (+2d) | 2025-07-15 → 2025-07-16 (+1d) |  |  |
| 1.3.1.3.4.11.2 | **Wall Finishing works - Civil** | 2025-05-01 → 2025-05-02 (+1d) | 2025-07-14 → 2025-07-15 (+1d) |  |  |
| PG-12311 | Balcony Railing Fixing works | 2025-05-01 → 2025-05-02 (+1d) | 2025-05-05 → 2025-05-07 (+2d) |  |  |
| PG-12313 | Dadoing - Wet area | 2025-05-22 → 2025-05-23 (+1d) | 2025-05-27 → 2025-05-29 (+2d) |  |  |
| PG-12312 | UPVC Windows & Sliding doors | 2025-06-09 → 2025-06-10 (+1d) | 2025-06-13 → 2025-06-16 (+3d) |  |  |
| PG-12314 | Painting Works - Putty, Primer and 1st | 2025-06-14 → 2025-06-16 (+2d) | 2025-06-20 → 2025-06-23 (+3d) |  |  |
| PG-12315 | Final Coat Painting | 2025-06-21 → 2025-06-23 (+2d) | 2025-07-14 → 2025-07-15 (+1d) |  |  |
| 1.3.1.3.4.11.3 | **Floor Finishing Works - Civil** | 2025-05-01 → 2025-05-02 (+1d) | 2025-06-20 → 2025-06-23 (+3d) |  |  |
| PG-12316 | Waterproofing for sunken areas | 2025-05-01 → 2025-05-02 (+1d) | 2025-05-03 → 2025-05-06 (+3d) |  |  |
| PG-12317 | Floor Tiling - Wet area | 2025-05-28 → 2025-05-29 (+1d) | 2025-06-02 → 2025-06-04 (+2d) |  |  |
| PG-12318 | Floor Tiling - Dry area | 2025-06-03 → 2025-06-04 (+1d) | 2025-06-07 → 2025-06-10 (+3d) |  |  |
| PG-12319 | Wooden doors | 2025-06-16 → 2025-06-17 (+1d) | 2025-06-20 → 2025-06-23 (+3d) |  |  |
| 1.3.1.3.4.12 | **Floor 9** | 2025-05-16 → 2025-05-17 (+1d) | 2025-07-28 → 2025-07-30 (+2d) |  |  |
| 1.3.1.3.4.12.1 | **Ceiling Finishing works - Civil** | 2025-05-24 → 2025-05-27 (+3d) | 2025-07-28 → 2025-07-30 (+2d) |  |  |
| PG-12320 | Gypsum Plastering | 2025-05-24 → 2025-05-27 (+3d) | 2025-05-31 → 2025-06-03 (+3d) |  |  |
| PG-12321 | Cornice fixing | 2025-06-10 → 2025-06-12 (+2d) | 2025-06-14 → 2025-06-17 (+3d) |  |  |
| PG-12323 | Toilet False ceiling | 2025-06-19 → 2025-06-20 (+1d) | 2025-06-23 → 2025-06-25 (+2d) |  |  |
| PG-12322 | Painting Works - Putty, Primer and 1st | 2025-06-30 → 2025-07-01 (+1d) | 2025-07-05 → 2025-07-08 (+3d) |  |  |
| PG-12324 | Final Coat Painting | 2025-07-07 → 2025-07-08 (+1d) | 2025-07-28 → 2025-07-30 (+2d) |  |  |
| 1.3.1.3.4.12.2 | **Wall Finishing works - Civil** | 2025-05-16 → 2025-05-17 (+1d) | 2025-07-26 → 2025-07-28 (+2d) |  |  |
| PG-12325 | Balcony Railing Fixing works | 2025-05-16 → 2025-05-17 (+1d) | 2025-05-20 → 2025-05-22 (+2d) |  |  |
| PG-12327 | Dadoing - Wet area | 2025-06-06 → 2025-06-07 (+1d) | 2025-06-11 → 2025-06-13 (+2d) |  |  |
| PG-12326 | UPVC Windows & Sliding doors | 2025-06-24 → 2025-06-25 (+1d) | 2025-06-28 → 2025-07-01 (+3d) |  |  |
| PG-12328 | Painting Works - Putty, Primer and 1st | 2025-06-30 → 2025-07-01 (+1d) | 2025-07-05 → 2025-07-08 (+3d) |  |  |
| PG-12329 | Final Coat Painting | 2025-07-07 → 2025-07-08 (+1d) | 2025-07-26 → 2025-07-28 (+2d) |  |  |
| 1.3.1.3.4.12.3 | **Floor Finishing Works - Civil** | 2025-05-16 → 2025-05-17 (+1d) | 2025-07-05 → 2025-07-08 (+3d) |  |  |
| PG-12330 | Waterproofing for sunken areas | 2025-05-16 → 2025-05-17 (+1d) | 2025-05-19 → 2025-05-21 (+2d) |  |  |
| PG-12331 | Floor Tiling - Wet area | 2025-06-12 → 2025-06-13 (+1d) | 2025-06-17 → 2025-06-19 (+2d) |  |  |
| PG-12332 | Floor Tiling - Dry area | 2025-06-18 → 2025-06-19 (+1d) | 2025-06-23 → 2025-06-25 (+2d) |  |  |
| PG-12333 | Wooden doors | 2025-07-01 → 2025-07-02 (+1d) | 2025-07-05 → 2025-07-08 (+3d) |  |  |
| 1.3.1.3.4.13 | **Floor 10** | 2025-05-31 → 2025-06-02 (+2d) | 2025-08-13 → 2025-08-14 (+1d) |  |  |
| 1.3.1.3.4.13.1 | **Ceiling Finishing works - Civil** | 2025-06-09 → 2025-06-11 (+2d) | 2025-08-13 → 2025-08-14 (+1d) |  |  |
| PG-12334 | Gypsum Plastering | 2025-06-09 → 2025-06-11 (+2d) | 2025-06-16 → 2025-06-18 (+2d) |  |  |
| PG-12335 | Cornice fixing | 2025-06-25 → 2025-06-27 (+2d) | 2025-06-30 → 2025-07-02 (+2d) |  |  |
| PG-12337 | Toilet False ceiling | 2025-07-04 → 2025-07-05 (+1d) | 2025-07-08 → 2025-07-10 (+2d) |  |  |
| PG-12336 | Painting Works - Putty, Primer and 1st | 2025-07-15 → 2025-07-16 (+1d) | 2025-07-21 → 2025-07-23 (+2d) |  |  |
| PG-12338 | Final Coat Painting | 2025-07-22 → 2025-07-23 (+1d) | 2025-08-13 → 2025-08-14 (+1d) |  |  |
| 1.3.1.3.4.13.2 | **Wall Finishing works - Civil** | 2025-05-31 → 2025-06-02 (+2d) | 2025-08-12 → 2025-08-13 (+1d) |  |  |
| PG-12339 | Balcony Railing Fixing works | 2025-05-31 → 2025-06-02 (+2d) | 2025-06-04 → 2025-06-06 (+2d) |  |  |
| PG-12341 | Dadoing - Wet area | 2025-06-21 → 2025-06-23 (+2d) | 2025-06-26 → 2025-06-28 (+2d) |  |  |
| PG-12340 | UPVC Windows & Sliding doors | 2025-07-09 → 2025-07-10 (+1d) | 2025-07-14 → 2025-07-16 (+2d) |  |  |
| PG-12342 | Painting Works - Putty, Primer and 1st | 2025-07-15 → 2025-07-16 (+1d) | 2025-07-21 → 2025-07-23 (+2d) |  |  |

| ID | Task | Start | Finish |
| --- | --- | --- | --- |
| PG-12343 | Final Coat Painting | 2025-07-22 → 2025-07-23 (+1d) | 2025-08-12 → 2025-08-13 (+1d) |
| 1.3.1.3.4.13.3 | **Floor Finishing Works - Civil** | 2025-05-31 → 2025-06-02 (+2d) | 2025-07-21 → 2025-07-23 (+2d) |
| PG-12344 | Waterproofing for sunken areas | 2025-05-31 → 2025-06-02 (+2d) | 2025-06-03 → 2025-06-05 (+2d) |
| PG-12345 | Floor Tiling - Wet area | 2025-06-27 → 2025-06-28 (+1d) | 2025-07-02 → 2025-07-04 (+2d) |
| PG-12346 | Floor Tiling - Dry area | 2025-07-03 → 2025-07-04 (+1d) | 2025-07-08 → 2025-07-10 (+2d) |
| PG-12347 | Wooden doors | 2025-07-16 → 2025-07-17 (+1d) | 2025-07-21 → 2025-07-23 (+2d) |
| 1.3.1.3.4.14 | **Floor 11** | 2025-06-13 → 2025-06-14 (+1d) | 2025-08-27 → 2025-08-29 (+2d) |
| 1.3.1.3.4.14.1 | **Ceiling Finishing works - Civil** | 2025-06-21 → 2025-06-24 (+3d) | 2025-08-27 → 2025-08-29 (+2d) |
| PG-12348 | Gypsum Plastering | 2025-06-21 → 2025-06-24 (+3d) | 2025-06-28 → 2025-07-01 (+3d) |
| PG-12349 | Cornice fixing | 2025-07-08 → 2025-07-10 (+2d) | 2025-07-12 → 2025-07-15 (+3d) |
| PG-12351 | Toilet False ceiling | 2025-07-17 → 2025-07-18 (+1d) | 2025-07-21 → 2025-07-23 (+2d) |
| PG-12350 | Painting Works - Putty, Primer and 1st | 2025-07-28 → 2025-07-29 (+1d) | 2025-08-02 → 2025-08-05 (+3d) |
| PG-12352 | Final Coat Painting | 2025-08-04 → 2025-08-05 (+1d) | 2025-08-27 → 2025-08-29 (+2d) |
| 1.3.1.3.4.14.2 | **Wall Finishing works - Civil** | 2025-06-13 → 2025-06-14 (+1d) | 2025-08-26 → 2025-08-27 (+1d) |
| PG-12353 | Balcony Railing Fixing works | 2025-06-13 → 2025-06-14 (+1d) | 2025-06-17 → 2025-06-19 (+2d) |
| PG-12355 | Dadoing - Wet area | 2025-07-04 → 2025-07-05 (+1d) | 2025-07-09 → 2025-07-11 (+2d) |
| PG-12354 | UPVC Windows & Sliding doors | 2025-07-22 → 2025-07-23 (+1d) | 2025-07-26 → 2025-07-29 (+3d) |
| PG-12356 | Painting Works - Putty, Primer and 1st | 2025-07-28 → 2025-07-29 (+1d) | 2025-08-02 → 2025-08-05 (+3d) |
| PG-12357 | Final Coat Painting | 2025-08-04 → 2025-08-05 (+1d) | 2025-08-26 → 2025-08-27 (+1d) |
| 1.3.1.3.4.14.3 | **Floor Finishing Works - Civil** | 2025-06-13 → 2025-06-14 (+1d) | 2025-08-02 → 2025-08-05 (+3d) |
| PG-12358 | Waterproofing for sunken areas | 2025-06-13 → 2025-06-14 (+1d) | 2025-06-16 → 2025-06-18 (+2d) |
| PG-12359 | Floor Tiling - Wet area | 2025-07-10 → 2025-07-11 (+1d) | 2025-07-15 → 2025-07-17 (+2d) |
| PG-12360 | Floor Tiling - Dry area | 2025-07-16 → 2025-07-17 (+1d) | 2025-07-21 → 2025-07-23 (+2d) |
| PG-12361 | Wooden doors | 2025-07-29 → 2025-07-30 (+1d) | 2025-08-02 → 2025-08-05 (+3d) |
| 1.3.1.3.4.15 | **Floor 12** | 2025-06-26 → 2025-06-27 (+1d) | 2025-09-11 → 2025-09-12 (+1d) |
| 1.3.1.3.4.15.1 | **Ceiling Finishing works - Civil** | 2025-07-04 → 2025-07-07 (+3d) | 2025-09-11 → 2025-09-12 (+1d) |
| PG-12362 | Gypsum Plastering | 2025-07-04 → 2025-07-07 (+3d) | 2025-07-11 → 2025-07-14 (+3d) |
| PG-12363 | Cornice fixing | 2025-07-21 → 2025-07-23 (+2d) | 2025-07-25 → 2025-07-28 (+3d) |
| PG-12365 | Toilet False ceiling | 2025-07-30 → 2025-07-31 (+1d) | 2025-08-02 → 2025-08-05 (+3d) |
| PG-12364 | Painting Works - Putty, Primer and 1st | 2025-08-09 → 2025-08-11 (+2d) | 2025-08-16 → 2025-08-19 (+3d) |
| PG-12366 | Final Coat Painting | 2025-08-18 → 2025-08-19 (+1d) | 2025-09-11 → 2025-09-12 (+1d) |
| 1.3.1.3.4.15.2 | **Wall Finishing works - Civil** | 2025-06-26 → 2025-06-27 (+1d) | 2025-09-11 → 2025-09-12 (+1d) |
| PG-12367 | Balcony Railing Fixing works | 2025-06-26 → 2025-06-27 (+1d) | 2025-06-30 → 2025-07-02 (+2d) |
| PG-12369 | Dadoing - Wet area | 2025-07-17 → 2025-07-18 (+1d) | 2025-07-22 → 2025-07-24 (+2d) |
| PG-12368 | UPVC Windows & Sliding doors | 2025-08-04 → 2025-08-05 (+1d) | 2025-08-08 → 2025-08-11 (+3d) |
| PG-12370 | Painting Works - Putty, Primer and 1st | 2025-08-09 → 2025-08-11 (+2d) | 2025-08-16 → 2025-08-19 (+3d) |
| PG-12371 | Final Coat Painting | 2025-08-18 → 2025-08-19 (+1d) | 2025-09-11 → 2025-09-12 (+1d) |
| 1.3.1.3.4.15.3 | **Floor Finishing Works - Civil** | 2025-06-26 → 2025-06-27 (+1d) | 2025-08-16 → 2025-08-19 (+3d) |
| PG-12372 | Waterproofing for sunken areas | 2025-06-26 → 2025-06-27 (+1d) | 2025-06-28 → 2025-07-01 (+3d) |
| PG-12373 | Floor Tiling - Wet area | 2025-07-23 → 2025-07-24 (+1d) | 2025-07-28 → 2025-07-30 (+2d) |
| PG-12374 | Floor Tiling - Dry area | 2025-07-29 → 2025-07-30 (+1d) | 2025-08-02 → 2025-08-05 (+3d) |
| PG-12375 | Wooden doors | 2025-08-11 → 2025-08-12 (+1d) | 2025-08-16 → 2025-08-19 (+3d) |
| 1.3.1.3.4.16 | **Floor 13** | 2025-07-09 → 2025-07-10 (+1d) | 2025-09-24 → 2025-09-25 (+1d) |
| 1.3.1.3.4.16.1 | **Ceiling Finishing works - Civil** | 2025-07-17 → 2025-07-19 (+2d) | 2025-09-24 → 2025-09-25 (+1d) |
| PG-12376 | Gypsum Plastering | 2025-07-17 → 2025-07-19 (+2d) | 2025-07-24 → 2025-07-26 (+2d) |
| PG-12377 | Cornice fixing | 2025-08-02 → 2025-08-05 (+3d) | 2025-08-07 → 2025-08-09 (+2d) |
| PG-12379 | Toilet False ceiling | 2025-08-12 → 2025-08-13 (+1d) | 2025-08-16 → 2025-08-19 (+3d) |
| PG-12378 | Painting Works - Putty, Primer and 1st | 2025-08-23 → 2025-08-25 (+2d) | 2025-08-29 → 2025-09-01 (+3d) |
| PG-12380 | Final Coat Painting | 2025-08-30 → 2025-09-01 (+2d) | 2025-09-24 → 2025-09-25 (+1d) |
| 1.3.1.3.4.16.2 | **Wall Finishing works - Civil** | 2025-07-09 → 2025-07-10 (+1d) | 2025-09-24 → 2025-09-25 (+1d) |
| PG-12381 | Balcony Railing Fixing works | 2025-07-09 → 2025-07-10 (+1d) | 2025-07-12 → 2025-07-15 (+3d) |
| PG-12383 | Dadoing - Wet area | 2025-07-30 → 2025-07-31 (+1d) | 2025-08-04 → 2025-08-06 (+2d) |
| PG-12382 | UPVC Windows & Sliding doors | 2025-08-18 → 2025-08-19 (+1d) | 2025-08-22 → 2025-08-25 (+3d) |
| PG-12384 | Painting Works - Putty, Primer and 1st | 2025-08-23 → 2025-08-25 (+2d) | 2025-08-29 → 2025-09-01 (+3d) |
| PG-12385 | Final Coat Painting | 2025-08-30 → 2025-09-01 (+2d) | 2025-09-24 → 2025-09-25 (+1d) |
| 1.3.1.3.4.16.3 | **Floor Finishing Works - Civil** | 2025-07-09 → 2025-07-10 (+1d) | 2025-08-29 → 2025-09-01 (+3d) |
| PG-12386 | Waterproofing for sunken areas | 2025-07-09 → 2025-07-10 (+1d) | 2025-07-11 → 2025-07-14 (+3d) |
| PG-12387 | Floor Tiling - Wet area | 2025-08-05 → 2025-08-06 (+1d) | 2025-08-09 → 2025-08-12 (+3d) |
| PG-12388 | Floor Tiling - Dry area | 2025-08-11 → 2025-08-12 (+1d) | 2025-08-16 → 2025-08-19 (+3d) |
| PG-12389 | Wooden doors | 2025-08-25 → 2025-08-26 (+1d) | 2025-08-29 → 2025-09-01 (+3d) |
| 1.3.1.3.4.17 | **Floor 14** | 2025-07-22 → 2025-07-23 (+1d) | 2025-10-06 → 2025-10-07 (+1d) |
| 1.3.1.3.4.17.1 | **Ceiling Finishing works - Civil** | 2025-07-30 → 2025-08-01 (+2d) | 2025-10-06 → 2025-10-07 (+1d) |
| PG-12390 | Gypsum Plastering | 2025-07-30 → 2025-08-01 (+2d) | 2025-08-06 → 2025-08-08 (+2d) |
| PG-12391 | Cornice fixing | 2025-08-16 → 2025-08-19 (+3d) | 2025-08-21 → 2025-08-23 (+2d) |
| PG-12393 | Toilet False ceiling | 2025-08-26 → 2025-08-27 (+1d) | 2025-08-29 → 2025-09-01 (+3d) |
| PG-12392 | Painting Works - Putty, Primer and 1st | 2025-09-05 → 2025-09-06 (+1d) | 2025-09-11 → 2025-09-13 (+2d) |
| PG-12394 | Final Coat Painting | 2025-09-12 → 2025-09-13 (+1d) | 2025-10-06 → 2025-10-07 (+1d) |
| 1.3.1.3.4.17.2 | **Wall Finishing works - Civil** | 2025-07-22 → 2025-07-23 (+1d) | 2025-10-06 → 2025-10-07 (+1d) |
| PG-12395 | Balcony Railing Fixing works | 2025-07-22 → 2025-07-23 (+1d) | 2025-07-25 → 2025-07-28 (+3d) |
| PG-12397 | Dadoing - Wet area | 2025-08-12 → 2025-08-13 (+1d) | 2025-08-18 → 2025-08-20 (+2d) |

| ID | Task | Start | Finish |
| --- | --- | --- | --- |
| PG-12396 | UPVC Windows & Sliding doors | 2025-08-30 → 2025-09-01 (+2d) | 2025-09-04 → 2025-09-06 (+2d) |
| PG-12398 | Painting Works - Putty, Primer and 1st | 2025-09-05 → 2025-09-06 (+1d) | 2025-09-11 → 2025-09-13 (+2d) |
| PG-12399 | Final Coat Painting | 2025-09-12 → 2025-09-13 (+1d) | 2025-10-06 → 2025-10-07 (+1d) |
| 1.3.1.3.4.17.3 | **Floor Finishing Works - Civil** | 2025-07-22 → 2025-07-23 (+1d) | 2025-09-11 → 2025-09-13 (+2d) |
| PG-12400 | Waterproofing for sunken areas | 2025-07-22 → 2025-07-23 (+1d) | 2025-07-24 → 2025-07-26 (+2d) |
| PG-12401 | Floor Tiling - Wet area | 2025-08-19 → 2025-08-20 (+1d) | 2025-08-23 → 2025-08-26 (+3d) |
| PG-12402 | Floor Tiling - Dry area | 2025-08-25 → 2025-08-26 (+1d) | 2025-08-29 → 2025-09-01 (+3d) |
| PG-12403 | Wooden doors | 2025-09-06 → 2025-09-08 (+2d) | 2025-09-11 → 2025-09-13 (+2d) |
| 1.3.1.3.4.18 | **Floor 15** | 2025-08-04 → 2025-08-05 (+1d) |  |
| 1.3.1.3.4.18.1 | **Ceiling Finishing works - Civil** | 2025-08-12 → 2025-08-14 (+2d) |  |
| PG-12404 | Gypsum Plastering | 2025-08-12 → 2025-08-14 (+2d) | 2025-08-20 → 2025-08-22 (+2d) |
| PG-12405 | Cornice fixing | 2025-08-29 → 2025-09-01 (+3d) | 2025-09-03 → 2025-09-05 (+2d) |
| 1.3.1.3.4.18.2 | **Wall Finishing works - Civil** | 2025-08-04 → 2025-08-05 (+1d) |  |
| PG-12409 | Balcony Railing Fixing works | 2025-08-04 → 2025-08-05 (+1d) | 2025-08-07 → 2025-08-09 (+2d) |
| 1.3.1.3.4.18.3 | **Floor Finishing Works - Civil** | 2025-08-04 → 2025-08-05 (+1d) |  |
| PG-12414 | Waterproofing for sunken areas | 2025-08-04 → 2025-08-05 (+1d) | 2025-08-06 → 2025-08-08 (+2d) |
| 1.3.1.3.4.19 | **Floor 16** | 2025-08-18 → 2025-08-19 (+1d) | 2025-10-31 → 2025-11-04 (+4d) |
| 1.3.1.3.4.19.1 | **Ceiling Finishing works - Civil** | 2025-08-26 → 2025-08-28 (+2d) | 2025-10-31 → 2025-11-03 (+3d) |
| PG-12418 | Gypsum Plastering | 2025-08-26 → 2025-08-28 (+2d) | 2025-09-02 → 2025-09-04 (+2d) |
| PG-12419 | Cornice fixing | 2025-09-11 → 2025-09-13 (+2d) | 2025-09-16 → 2025-09-18 (+2d) |
| PG-12421 | Toilet False ceiling | 2025-09-20 → 2025-09-22 (+2d) | 2025-09-24 → 2025-09-26 (+2d) |
| PG-12420 | Painting Works - Putty, Primer and 1st | 2025-10-01 → 2025-10-03 (+2d) | 2025-10-08 → 2025-10-10 (+2d) |
| PG-12422 | Final Coat Painting | 2025-10-09 → 2025-10-10 (+1d) | 2025-10-31 → 2025-11-03 (+3d) |
| 1.3.1.3.4.19.2 | **Wall Finishing works - Civil** | 2025-08-18 → 2025-08-19 (+1d) | 2025-10-31 → 2025-11-04 (+4d) |
| PG-12423 | Balcony Railing Fixing works | 2025-08-18 → 2025-08-19 (+1d) | 2025-08-21 → 2025-08-23 (+2d) |
| PG-12425 | Dadoing - Wet area | 2025-09-08 → 2025-09-09 (+1d) | 2025-09-12 → 2025-09-15 (+3d) |
| PG-12424 | UPVC Windows & Sliding doors | 2025-09-25 → 2025-09-26 (+1d) | 2025-09-30 → 2025-10-03 (+3d) |
| PG-12426 | Painting Works - Putty, Primer and 1st | 2025-10-01 → 2025-10-03 (+2d) | 2025-10-08 → 2025-10-10 (+2d) |
| PG-12427 | Final Coat Painting | 2025-10-09 → 2025-10-10 (+1d) | 2025-10-31 → 2025-11-04 (+4d) |
| 1.3.1.3.4.19.3 | **Floor Finishing Works - Civil** | 2025-08-18 → 2025-08-19 (+1d) | 2025-10-08 → 2025-10-10 (+2d) |
| PG-12428 | Waterproofing for sunken areas | 2025-08-18 → 2025-08-19 (+1d) | 2025-08-20 → 2025-08-22 (+2d) |
| PG-12429 | Floor Tiling - Wet area | 2025-09-13 → 2025-09-15 (+2d) | 2025-09-18 → 2025-09-20 (+2d) |
| PG-12430 | Floor Tiling - Dry area | 2025-09-19 → 2025-09-20 (+1d) | 2025-09-24 → 2025-09-26 (+2d) |
| PG-12431 | Wooden doors | 2025-10-03 → 2025-10-04 (+1d) | 2025-10-08 → 2025-10-10 (+2d) |
| 1.3.1.3.4.20 | **Floor 17** | 2025-08-30 → 2025-09-01 (+2d) | 2025-11-13 → 2025-11-15 (+2d) |
| 1.3.1.3.4.20.1 | **Ceiling Finishing works - Civil** | 2025-09-08 → 2025-09-10 (+2d) | 2025-11-13 → 2025-11-15 (+2d) |
| PG-12432 | Gypsum Plastering | 2025-09-08 → 2025-09-10 (+2d) | 2025-09-15 → 2025-09-17 (+2d) |
| PG-12433 | Cornice fixing | 2025-09-24 → 2025-09-26 (+2d) | 2025-09-29 → 2025-10-01 (+2d) |
| PG-12435 | Toilet False ceiling | 2025-10-04 → 2025-10-06 (+2d) | 2025-10-08 → 2025-10-10 (+2d) |
| PG-12434 | Painting Works - Putty, Primer and 1st | 2025-10-15 → 2025-10-16 (+1d) | 2025-10-21 → 2025-10-23 (+2d) |
| PG-12436 | Final Coat Painting | 2025-10-22 → 2025-10-23 (+1d) | 2025-11-13 → 2025-11-15 (+2d) |
| 1.3.1.3.4.20.2 | **Wall Finishing works - Civil** | 2025-08-30 → 2025-09-01 (+2d) | 2025-11-13 → 2025-11-15 (+2d) |
| PG-12437 | Balcony Railing Fixing works | 2025-08-30 → 2025-09-01 (+2d) | 2025-09-03 → 2025-09-05 (+2d) |
| PG-12439 | Dadoing - Wet area | 2025-09-20 → 2025-09-22 (+2d) | 2025-09-25 → 2025-09-27 (+2d) |
| PG-12438 | UPVC Windows & Sliding doors | 2025-10-09 → 2025-10-10 (+1d) | 2025-10-14 → 2025-10-16 (+2d) |
| PG-12440 | Painting Works - Putty, Primer and 1st | 2025-10-15 → 2025-10-16 (+1d) | 2025-10-21 → 2025-10-23 (+2d) |
| PG-12441 | Final Coat Painting | 2025-10-22 → 2025-10-23 (+1d) | 2025-11-13 → 2025-11-15 (+2d) |
| 1.3.1.3.4.20.3 | **Floor Finishing Works - Civil** | 2025-08-30 → 2025-09-01 (+2d) | 2025-10-21 → 2025-10-23 (+2d) |
| PG-12442 | Waterproofing for sunken areas | 2025-08-30 → 2025-09-01 (+2d) | 2025-09-02 → 2025-09-04 (+2d) |
| PG-12443 | Floor Tiling - Wet area | 2025-09-26 → 2025-09-27 (+1d) | 2025-10-01 → 2025-10-04 (+3d) |
| PG-12444 | Floor Tiling - Dry area | 2025-10-03 → 2025-10-04 (+1d) | 2025-10-08 → 2025-10-10 (+2d) |
| PG-12445 | Wooden doors | 2025-10-16 → 2025-10-17 (+1d) | 2025-10-21 → 2025-10-23 (+2d) |
| 1.3.1.3.4.21 | **Floor 18** | 2025-09-12 → 2025-09-13 (+1d) | 2025-11-26 → 2025-11-28 (+2d) |
| 1.3.1.3.4.21.1 | **Ceiling Finishing works - Civil** | 2025-09-20 → 2025-09-23 (+3d) | 2025-11-26 → 2025-11-28 (+2d) |
| PG-12446 | Gypsum Plastering | 2025-09-20 → 2025-09-23 (+3d) | 2025-09-27 → 2025-09-30 (+3d) |
| PG-12447 | Cornice fixing | 2025-10-08 → 2025-10-10 (+2d) | 2025-10-13 → 2025-10-15 (+2d) |
| PG-12449 | Toilet False ceiling | 2025-10-17 → 2025-10-18 (+1d) | 2025-10-21 → 2025-10-23 (+2d) |
| PG-12448 | Painting Works - Putty, Primer and 1st | 2025-10-28 → 2025-10-29 (+1d) | 2025-11-04 → 2025-11-06 (+2d) |
| PG-12450 | Final Coat Painting | 2025-11-05 → 2025-11-06 (+1d) | 2025-11-26 → 2025-11-28 (+2d) |
| 1.3.1.3.4.21.2 | **Wall Finishing works - Civil** | 2025-09-12 → 2025-09-13 (+1d) | 2025-11-26 → 2025-11-28 (+2d) |
| PG-12451 | Balcony Railing Fixing works | 2025-09-12 → 2025-09-13 (+1d) | 2025-09-16 → 2025-09-18 (+2d) |
| PG-12453 | Dadoing - Wet area | 2025-10-04 → 2025-10-06 (+2d) | 2025-10-09 → 2025-10-11 (+2d) |
| PG-12452 | UPVC Windows & Sliding doors | 2025-10-22 → 2025-10-23 (+1d) | 2025-10-27 → 2025-10-29 (+2d) |
| PG-12454 | Painting Works - Putty, Primer and 1st | 2025-10-28 → 2025-10-29 (+1d) | 2025-11-04 → 2025-11-06 (+2d) |
| PG-12455 | Final Coat Painting | 2025-11-05 → 2025-11-06 (+1d) | 2025-11-26 → 2025-11-28 (+2d) |
| 1.3.1.3.4.21.3 | **Floor Finishing Works - Civil** | 2025-09-12 → 2025-09-13 (+1d) | 2025-11-04 → 2025-11-06 (+2d) |
| PG-12456 | Waterproofing for sunken areas | 2025-09-12 → 2025-09-13 (+1d) | 2025-09-15 → 2025-09-17 (+2d) |
| PG-12457 | Floor Tiling - Wet area | 2025-10-10 → 2025-10-11 (+1d) | 2025-10-15 → 2025-10-17 (+2d) |
| PG-12458 | Floor Tiling - Dry area | 2025-10-16 → 2025-10-17 (+1d) | 2025-10-21 → 2025-10-23 (+2d) |
| PG-12459 | Wooden doors | 2025-10-29 → 2025-10-30 (+1d) | 2025-11-04 → 2025-11-06 (+2d) |

| ID | Task | Start | Finish |
| --- | --- | --- | --- |
| 1.3.1.3.4.22 | **Floor 19** | 2025-09-25 → 2025-09-26 (+1d) | 2025-12-09 → 2025-12-11 (+2d) |
| 1.3.1.3.4.22.1 | **Ceiling Finishing works - Civil** | 2025-10-04 → 2025-10-07 (+3d) | 2025-12-09 → 2025-12-11 (+2d) |
| PG-12460 | Gypsum Plastering | 2025-10-04 → 2025-10-07 (+3d) | 2025-10-11 → 2025-10-14 (+3d) |
| PG-12461 | Cornice fixing | 2025-10-21 → 2025-10-23 (+2d) | 2025-10-25 → 2025-10-28 (+3d) |
| PG-12463 | Toilet False ceiling | 2025-10-30 → 2025-10-31 (+1d) | 2025-11-04 → 2025-11-06 (+2d) |
| PG-12462 | Painting Works - Putty, Primer and 1st | 2025-11-11 → 2025-11-12 (+1d) | 2025-11-17 → 2025-11-19 (+2d) |
| PG-12464 | Final Coat Painting | 2025-11-18 → 2025-11-19 (+1d) | 2025-12-09 → 2025-12-11 (+2d) |
| 1.3.1.3.4.22.2 | **Wall Finishing works - Civil** | 2025-09-25 → 2025-09-26 (+1d) | 2025-12-09 → 2025-12-11 (+2d) |
| PG-12465 | Balcony Railing Fixing works | 2025-09-25 → 2025-09-26 (+1d) | 2025-09-29 → 2025-10-01 (+2d) |
| PG-12467 | Dadoing - Wet area | 2025-10-17 → 2025-10-18 (+1d) | 2025-10-22 → 2025-10-24 (+2d) |
| PG-12466 | UPVC Windows & Sliding doors | 2025-11-05 → 2025-11-06 (+1d) | 2025-11-10 → 2025-11-12 (+2d) |
| PG-12468 | Painting Works - Putty, Primer and 1st | 2025-11-11 → 2025-11-12 (+1d) | 2025-11-17 → 2025-11-19 (+2d) |
| PG-12469 | Final Coat Painting | 2025-11-18 → 2025-11-19 (+1d) | 2025-12-09 → 2025-12-11 (+2d) |
| 1.3.1.3.4.22.3 | **Floor Finishing Works - Civil** | 2025-09-25 → 2025-09-26 (+1d) | 2025-11-17 → 2025-11-19 (+2d) |
| PG-12470 | Waterproofing for sunken areas | 2025-09-25 → 2025-09-26 (+1d) | 2025-09-27 → 2025-09-30 (+3d) |
| PG-12471 | Floor Tiling - Wet area | 2025-10-23 → 2025-10-24 (+1d) | 2025-10-28 → 2025-10-30 (+2d) |
| PG-12472 | Floor Tiling - Dry area | 2025-10-29 → 2025-10-30 (+1d) | 2025-11-04 → 2025-11-06 (+2d) |
| PG-12473 | Wooden doors | 2025-11-12 → 2025-11-13 (+1d) | 2025-11-17 → 2025-11-19 (+2d) |
| 1.3.1.3.4.23 | **Floor 20** | 2025-10-09 → 2025-10-10 (+1d) | 2025-12-23 → 2025-12-24 (+1d) |
| 1.3.1.3.4.23.1 | **Ceiling Finishing works - Civil** | 2025-10-17 → 2025-10-20 (+3d) | 2025-12-23 → 2025-12-24 (+1d) |
| PG-12474 | Gypsum Plastering | 2025-10-17 → 2025-10-20 (+3d) | 2025-10-24 → 2025-10-27 (+3d) |
| PG-12475 | Cornice fixing | 2025-11-04 → 2025-11-06 (+2d) | 2025-11-08 → 2025-11-11 (+3d) |
| PG-12477 | Toilet False ceiling | 2025-11-13 → 2025-11-14 (+1d) | 2025-11-17 → 2025-11-19 (+2d) |
| PG-12476 | Painting Works - Putty, Primer and 1st | 2025-11-24 → 2025-11-25 (+1d) | 2025-11-29 → 2025-12-02 (+3d) |
| PG-12478 | Final Coat Painting | 2025-12-01 → 2025-12-02 (+1d) | 2025-12-23 → 2025-12-24 (+1d) |
| 1.3.1.3.4.23.2 | **Wall Finishing works - Civil** | 2025-10-09 → 2025-10-10 (+1d) | 2025-12-23 → 2025-12-24 (+1d) |
| PG-12479 | Balcony Railing Fixing works | 2025-10-09 → 2025-10-10 (+1d) | 2025-10-13 → 2025-10-15 (+2d) |
| PG-12481 | Dadoing - Wet area | 2025-10-30 → 2025-10-31 (+1d) | 2025-11-05 → 2025-11-07 (+2d) |
| PG-12480 | UPVC Windows & Sliding doors | 2025-11-18 → 2025-11-19 (+1d) | 2025-11-22 → 2025-11-25 (+3d) |
| PG-12482 | Painting Works - Putty, Primer and 1st | 2025-11-24 → 2025-11-25 (+1d) | 2025-11-29 → 2025-12-02 (+3d) |
| PG-12483 | Final Coat Painting | 2025-12-01 → 2025-12-02 (+1d) | 2025-12-23 → 2025-12-24 (+1d) |
| 1.3.1.3.4.23.3 | **Floor Finishing Works - Civil** | 2025-10-09 → 2025-10-10 (+1d) | 2025-11-29 → 2025-12-02 (+3d) |
| PG-12484 | Waterproofing for sunken areas | 2025-10-09 → 2025-10-10 (+1d) | 2025-10-11 → 2025-10-14 (+3d) |
| PG-12485 | Floor Tiling - Wet area | 2025-11-06 → 2025-11-07 (+1d) | 2025-11-11 → 2025-11-13 (+2d) |
| PG-12486 | Floor Tiling - Dry area | 2025-11-12 → 2025-11-13 (+1d) | 2025-11-17 → 2025-11-19 (+2d) |
| PG-12487 | Wooden doors | 2025-11-25 → 2025-11-26 (+1d) | 2025-11-29 → 2025-12-02 (+3d) |
| 1.3.1.3.4.24 | **Floor 21** | 2025-10-22 → 2025-10-23 (+1d) | 2026-01-05 → 2026-01-06 (+1d) |
| 1.3.1.3.4.24.1 | **Ceiling Finishing works - Civil** | 2025-10-30 → 2025-11-03 (+4d) | 2026-01-05 → 2026-01-06 (+1d) |
| PG-12488 | Gypsum Plastering | 2025-10-30 → 2025-11-03 (+4d) | 2025-11-07 → 2025-11-10 (+3d) |
| PG-12489 | Cornice fixing | 2025-11-17 → 2025-11-19 (+2d) | 2025-11-21 → 2025-11-24 (+3d) |
| PG-12491 | Toilet False ceiling | 2025-11-25 → 2025-11-27 (+2d) | 2025-11-29 → 2025-12-02 (+3d) |
| PG-12490 | Painting Works - Putty, Primer and 1st | 2025-12-05 → 2025-12-08 (+3d) | 2025-12-12 → 2025-12-15 (+3d) |
| PG-12492 | Final Coat Painting | 2025-12-12 → 2025-12-15 (+3d) | 2026-01-05 → 2026-01-06 (+1d) |
| 1.3.1.3.4.24.2 | **Wall Finishing works - Civil** | 2025-10-22 → 2025-10-23 (+1d) | 2026-01-05 → 2026-01-06 (+1d) |
| PG-12493 | Balcony Railing Fixing works | 2025-10-22 → 2025-10-23 (+1d) | 2025-10-25 → 2025-10-28 (+3d) |
| PG-12495 | Dadoing - Wet area | 2025-11-12 → 2025-11-14 (+2d) | 2025-11-18 → 2025-11-20 (+2d) |
| PG-12494 | UPVC Windows & Sliding doors | 2025-11-29 → 2025-12-02 (+3d) | 2025-12-05 → 2025-12-08 (+3d) |
| PG-12496 | Painting Works - Putty, Primer and 1st | 2025-12-05 → 2025-12-08 (+3d) | 2025-12-12 → 2025-12-15 (+3d) |
| PG-12497 | Final Coat Painting | 2025-12-12 → 2025-12-15 (+3d) | 2026-01-05 → 2026-01-06 (+1d) |
| 1.3.1.3.4.24.3 | **Floor Finishing Works - Civil** | 2025-10-22 → 2025-10-23 (+1d) | 2025-12-12 → 2025-12-15 (+3d) |
| PG-12498 | Waterproofing for sunken areas | 2025-10-22 → 2025-10-23 (+1d) | 2025-10-24 → 2025-10-27 (+3d) |
| PG-12499 | Floor Tiling - Wet area | 2025-11-18 → 2025-11-20 (+2d) | 2025-11-24 → 2025-11-26 (+2d) |
| PG-12500 | Floor Tiling - Dry area | 2025-11-24 → 2025-11-26 (+2d) | 2025-11-29 → 2025-12-02 (+3d) |
| PG-12501 | Wooden doors | 2025-12-06 → 2025-12-09 (+3d) | 2025-12-12 → 2025-12-15 (+3d) |
| 1.3.1.3.4.25 | **Floor 22** | 2025-11-05 → 2025-11-06 (+1d) | 2026-01-17 → 2026-01-19 (+2d) |
| 1.3.1.3.4.25.1 | **Ceiling Finishing works - Civil** | 2025-11-13 → 2025-11-15 (+2d) | 2026-01-17 → 2026-01-19 (+2d) |
| PG-12502 | Gypsum Plastering | 2025-11-13 → 2025-11-15 (+2d) | 2025-11-20 → 2025-11-22 (+2d) |
| PG-12503 | Cornice fixing | 2025-11-29 → 2025-12-02 (+3d) | 2025-12-04 → 2025-12-06 (+2d) |
| PG-12505 | Toilet False ceiling | 2025-12-08 → 2025-12-10 (+2d) | 2025-12-12 → 2025-12-15 (+3d) |
| PG-12504 | Painting Works - Putty, Primer and 1st | 2025-12-18 → 2025-12-20 (+2d) | 2025-12-25 → 2025-12-27 (+2d) |
| PG-12506 | Final Coat Painting | 2025-12-25 → 2025-12-27 (+2d) | 2026-01-17 → 2026-01-19 (+2d) |
| 1.3.1.3.4.25.2 | **Wall Finishing works - Civil** | 2025-11-05 → 2025-11-06 (+1d) | 2026-01-17 → 2026-01-19 (+2d) |
| PG-12507 | Balcony Railing Fixing works | 2025-11-05 → 2025-11-06 (+1d) | 2025-11-08 → 2025-11-11 (+3d) |
| PG-12509 | Dadoing - Wet area | 2025-11-25 → 2025-11-27 (+2d) | 2025-12-01 → 2025-12-03 (+2d) |
| PG-12508 | UPVC Windows & Sliding doors | 2025-12-12 → 2025-12-15 (+3d) | 2025-12-18 → 2025-12-20 (+2d) |
| PG-12510 | Painting Works - Putty, Primer and 1st | 2025-12-18 → 2025-12-20 (+2d) | 2025-12-25 → 2025-12-27 (+2d) |
| PG-12511 | Final Coat Painting | 2025-12-25 → 2025-12-27 (+2d) | 2026-01-17 → 2026-01-19 (+2d) |
| 1.3.1.3.4.25.3 | **Floor Finishing Works - Civil** | 2025-11-05 → 2025-11-06 (+1d) | 2025-12-25 → 2025-12-27 (+2d) |
| PG-12512 | Waterproofing for sunken areas | 2025-11-05 → 2025-11-06 (+1d) | 2025-11-07 → 2025-11-10 (+3d) |
| PG-12513 | Floor Tiling - Wet area | 2025-12-01 → 2025-12-03 (+2d) | 2025-12-06 → 2025-12-09 (+3d) |

| ID | Task | Start | Finish |
| --- | --- | --- | --- |
| PG-12514 | Floor Tiling - Dry area | 2025-12-06 → 2025-12-09 (+3d) | 2025-12-12 → 2025-12-15 (+3d) |
| PG-12515 | Wooden doors | 2025-12-19 → 2025-12-22 (+3d) | 2025-12-25 → 2025-12-27 (+2d) |
| 1.3.1.3.4.26 | **Floor 23** | 2025-11-17 → 2025-11-19 (+2d) | 2026-01-30 → 2026-02-02 (+3d) |
| 1.3.1.3.4.26.1 | **Ceiling Finishing works - Civil** | 2025-11-25 → 2025-11-27 (+2d) | 2026-01-30 → 2026-02-02 (+3d) |
| PG-12516 | Gypsum Plastering | 2025-11-25 → 2025-11-27 (+2d) | 2025-12-02 → 2025-12-04 (+2d) |
| PG-12517 | Cornice fixing | 2025-12-11 → 2025-12-13 (+2d) | 2025-12-16 → 2025-12-18 (+2d) |
| PG-12519 | Toilet False ceiling | 2025-12-19 → 2025-12-20 (+1d) | 2025-12-24 → 2025-12-25 (+1d) |
| PG-12518 | Painting Works - Putty, Primer and 1st | 2025-12-30 → 2025-12-31 (+1d) | 2026-01-06 → 2026-01-07 (+1d) |
| PG-12520 | Final Coat Painting | 2026-01-06 → 2026-01-07 (+1d) | 2026-01-30 → 2026-02-02 (+3d) |
| 1.3.1.3.4.26.2 | **Wall Finishing works - Civil** | 2025-11-17 → 2025-11-19 (+2d) | 2026-01-30 → 2026-02-02 (+3d) |
| PG-12521 | Balcony Railing Fixing works | 2025-11-17 → 2025-11-19 (+2d) | 2025-11-21 → 2025-11-24 (+3d) |
| PG-12523 | Dadoing - Wet area | 2025-12-06 → 2025-12-08 (+2d) | 2025-12-12 → 2025-12-13 (+1d) |
| PG-12522 | UPVC Windows & Sliding doors | 2025-12-24 → 2025-12-25 (+1d) | 2025-12-30 → 2025-12-31 (+1d) |
| PG-12524 | Painting Works - Putty, Primer and 1st | 2025-12-30 → 2025-12-31 (+1d) | 2026-01-06 → 2026-01-07 (+1d) |
| PG-12525 | Final Coat Painting | 2026-01-06 → 2026-01-07 (+1d) | 2026-01-30 → 2026-02-02 (+3d) |
| 1.3.1.3.4.26.3 | **Floor Finishing Works - Civil** | 2025-11-17 → 2025-11-19 (+2d) | 2026-01-06 → 2026-01-07 (+1d) |
| PG-12526 | Waterproofing for sunken areas | 2025-11-17 → 2025-11-19 (+2d) | 2025-11-20 → 2025-11-22 (+2d) |
| PG-12527 | Floor Tiling - Wet area | 2025-12-12 → 2025-12-13 (+1d) | 2025-12-18 → 2025-12-19 (+1d) |
| PG-12528 | Floor Tiling - Dry area | 2025-12-18 → 2025-12-19 (+1d) | 2025-12-24 → 2025-12-25 (+1d) |
| PG-12529 | Wooden doors | 2025-12-31 → 2026-01-01 (+1d) | 2026-01-06 → 2026-01-07 (+1d) |
| 1.3.1.3.4.27 | **Floor 24** | 2025-11-29 → 2025-12-02 (+3d) | 2026-02-13 → 2026-02-14 (+1d) |
| 1.3.1.3.4.27.1 | **Ceiling Finishing works - Civil** | 2025-12-09 → 2025-12-11 (+2d) | 2026-02-13 → 2026-02-14 (+1d) |
| PG-12530 | Gypsum Plastering | 2025-12-09 → 2025-12-11 (+2d) | 2025-12-16 → 2025-12-18 (+2d) |
| PG-12531 | Cornice fixing | 2025-12-25 → 2025-12-27 (+2d) | 2025-12-30 → 2026-01-01 (+2d) |
| PG-12533 | Toilet False ceiling | 2026-01-02 → 2026-01-03 (+1d) | 2026-01-07 → 2026-01-08 (+1d) |
| PG-12532 | Painting Works - Putty, Primer and 1st | 2026-01-13 → 2026-01-14 (+1d) | 2026-01-20 → 2026-01-21 (+1d) |
| PG-12534 | Final Coat Painting | 2026-01-20 → 2026-01-21 (+1d) | 2026-02-13 → 2026-02-14 (+1d) |
| 1.3.1.3.4.27.2 | **Wall Finishing works - Civil** | 2025-11-29 → 2025-12-02 (+3d) | 2026-02-13 → 2026-02-14 (+1d) |
| PG-12535 | Balcony Railing Fixing works | 2025-11-29 → 2025-12-02 (+3d) | 2025-12-04 → 2025-12-06 (+2d) |
| PG-12537 | Dadoing - Wet area | 2025-12-20 → 2025-12-22 (+2d) | 2025-12-26 → 2025-12-27 (+1d) |
| PG-12536 | UPVC Windows & Sliding doors | 2026-01-07 → 2026-01-08 (+1d) | 2026-01-13 → 2026-01-14 (+1d) |
| PG-12538 | Painting Works - Putty, Primer and 1st | 2026-01-13 → 2026-01-14 (+1d) | 2026-01-20 → 2026-01-21 (+1d) |
| PG-12539 | Final Coat Painting | 2026-01-20 → 2026-01-21 (+1d) | 2026-02-13 → 2026-02-14 (+1d) |
| 1.3.1.3.4.27.3 | **Floor Finishing Works - Civil** | 2025-11-29 → 2025-12-02 (+3d) | 2026-01-20 → 2026-01-21 (+1d) |
| PG-12540 | Waterproofing for sunken areas | 2025-11-29 → 2025-12-02 (+3d) | 2025-12-03 → 2025-12-05 (+2d) |
| PG-12541 | Floor Tiling - Wet area | 2025-12-26 → 2025-12-27 (+1d) | 2026-01-01 → 2026-01-02 (+1d) |
| PG-12542 | Floor Tiling - Dry area | 2026-01-01 → 2026-01-02 (+1d) | 2026-01-07 → 2026-01-08 (+1d) |
| PG-12543 | Wooden doors | 2026-01-14 → 2026-01-15 (+1d) | 2026-01-20 → 2026-01-21 (+1d) |
| 1.3.1.3.4.28 | **Floor 25** | 2025-12-22 → 2025-12-23 (+1d) | 2026-03-06 → 2026-03-07 (+1d) |
| 1.3.1.3.4.28.1 | **Ceiling Finishing works - Civil** | 2025-12-31 → 2026-01-01 (+1d) | 2026-03-06 → 2026-03-07 (+1d) |
| PG-12544 | Gypsum Plastering | 2025-12-31 → 2026-01-01 (+1d) | 2026-01-07 → 2026-01-08 (+1d) |
| PG-12545 | Cornice fixing | 2026-01-16 → 2026-01-17 (+1d) | 2026-01-21 → 2026-01-22 (+1d) |
| PG-12547 | Toilet False ceiling | 2026-01-23 → 2026-01-24 (+1d) | 2026-01-29 → 2026-01-30 (+1d) |
| PG-12546 | Painting Works - Putty, Primer and 1st | 2026-02-04 → 2026-02-05 (+1d) | 2026-02-11 → 2026-02-12 (+1d) |
| PG-12548 | Final Coat Painting | 2026-02-11 → 2026-02-12 (+1d) | 2026-03-06 → 2026-03-07 (+1d) |
| 1.3.1.3.4.28.2 | **Wall Finishing works - Civil** | 2025-12-22 → 2025-12-23 (+1d) | 2026-03-06 → 2026-03-07 (+1d) |
| PG-12549 | Balcony Railing Fixing works | 2025-12-22 → 2025-12-23 (+1d) | 2025-12-26 → 2025-12-27 (+1d) |
| PG-12551 | Dadoing - Wet area | 2026-01-10 → 2026-01-12 (+2d) | 2026-01-16 → 2026-01-17 (+1d) |
| PG-12550 | UPVC Windows & Sliding doors | 2026-01-29 → 2026-01-30 (+1d) | 2026-02-04 → 2026-02-05 (+1d) |
| PG-12552 | Painting Works - Putty, Primer and 1st | 2026-02-04 → 2026-02-05 (+1d) | 2026-02-11 → 2026-02-12 (+1d) |
| PG-12553 | Final Coat Painting | 2026-02-11 → 2026-02-12 (+1d) | 2026-03-06 → 2026-03-07 (+1d) |
| 1.3.1.3.4.28.3 | **Floor Finishing Works - Civil** | 2025-12-22 → 2025-12-23 (+1d) | 2026-02-11 → 2026-02-12 (+1d) |
| PG-12554 | Waterproofing for sunken areas | 2025-12-22 → 2025-12-23 (+1d) | 2025-12-25 → 2025-12-26 (+1d) |
| PG-12555 | Floor Tiling - Wet area | 2026-01-16 → 2026-01-17 (+1d) | 2026-01-22 → 2026-01-23 (+1d) |
| PG-12556 | Floor Tiling - Dry area | 2026-01-22 → 2026-01-23 (+1d) | 2026-01-29 → 2026-01-30 (+1d) |
| PG-12557 | Wooden doors | 2026-02-05 → 2026-02-06 (+1d) | 2026-02-11 → 2026-02-12 (+1d) |
| 1.3.1.3.4.29 | **Floor 26** | 2026-01-12 → 2026-01-13 (+1d) | 2026-03-28 → 2026-03-30 (+2d) |
| 1.3.1.3.4.29.1 | **Ceiling Finishing works - Civil** | 2026-01-21 → 2026-01-22 (+1d) | 2026-03-28 → 2026-03-30 (+2d) |
| PG-12558 | Gypsum Plastering | 2026-01-21 → 2026-01-22 (+1d) | 2026-01-28 → 2026-01-30 (+2d) |
| PG-12559 | Cornice fixing | 2026-02-07 → 2026-02-09 (+2d) | 2026-02-11 → 2026-02-13 (+2d) |
| PG-12561 | Toilet False ceiling | 2026-02-16 → 2026-02-17 (+1d) | 2026-02-20 → 2026-02-21 (+1d) |
| PG-12560 | Painting Works - Putty, Primer and 1st | 2026-02-26 → 2026-02-27 (+1d) | 2026-03-05 → 2026-03-06 (+1d) |
| PG-12562 | Final Coat Painting | 2026-03-05 → 2026-03-06 (+1d) | 2026-03-28 → 2026-03-30 (+2d) |
| 1.3.1.3.4.29.2 | **Wall Finishing works - Civil** | 2026-01-12 → 2026-01-13 (+1d) | 2026-03-27 → 2026-03-28 (+1d) |
| PG-12563 | Balcony Railing Fixing works | 2026-01-12 → 2026-01-13 (+1d) | 2026-01-16 → 2026-01-17 (+1d) |
| PG-12565 | Dadoing - Wet area | 2026-02-03 → 2026-02-04 (+1d) | 2026-02-09 → 2026-02-10 (+1d) |
| PG-12564 | UPVC Windows & Sliding doors | 2026-02-20 → 2026-02-21 (+1d) | 2026-02-26 → 2026-02-27 (+1d) |
| PG-12566 | Painting Works - Putty, Primer and 1st | 2026-02-26 → 2026-02-27 (+1d) | 2026-03-05 → 2026-03-06 (+1d) |
| PG-12567 | Final Coat Painting | 2026-03-05 → 2026-03-06 (+1d) | 2026-03-27 → 2026-03-28 (+1d) |
| 1.3.1.3.4.29.3 | **Floor Finishing Works - Civil** | 2026-01-12 → 2026-01-13 (+1d) | 2026-03-05 → 2026-03-06 (+1d) |

| ID | Task | Start | Finish |
| --- | --- | --- | --- |
| PG-12568 | Waterproofing for sunken areas | 2026-01-12 → 2026-01-13 (+1d) | 2026-01-15 → 2026-01-16 (+1d) |
| PG-12569 | Floor Tiling - Wet area | 2026-02-09 → 2026-02-10 (+1d) | 2026-02-14 → 2026-02-16 (+2d) |
| PG-12570 | Floor Tiling - Dry area | 2026-02-14 → 2026-02-16 (+2d) | 2026-02-20 → 2026-02-21 (+1d) |
| PG-12571 | Wooden doors | 2026-02-27 → 2026-02-28 (+1d) | 2026-03-05 → 2026-03-06 (+1d) |
| 1.3.1.3.4.30 | **Floor 27** | 2026-02-04 → 2026-02-05 (+1d) | 2026-04-18 → 2026-04-20 (+2d) |
| 1.3.1.3.4.30.1 | **Ceiling Finishing works - Civil** | 2026-02-12 → 2026-02-14 (+2d) | 2026-04-18 → 2026-04-20 (+2d) |
| PG-12572 | Gypsum Plastering | 2026-02-12 → 2026-02-14 (+2d) | 2026-02-19 → 2026-02-21 (+2d) |
| PG-12573 | Cornice fixing | 2026-02-28 → 2026-03-03 (+3d) | 2026-03-05 → 2026-03-07 (+2d) |
| PG-12575 | Toilet False ceiling | 2026-03-09 → 2026-03-11 (+2d) | 2026-03-13 → 2026-03-16 (+3d) |
| PG-12574 | Painting Works - Putty, Primer and 1st | 2026-03-19 → 2026-03-21 (+2d) | 2026-03-26 → 2026-03-28 (+2d) |
| PG-12576 | Final Coat Painting | 2026-03-26 → 2026-03-28 (+2d) | 2026-04-18 → 2026-04-20 (+2d) |
| 1.3.1.3.4.30.2 | **Wall Finishing works - Civil** | 2026-02-04 → 2026-02-05 (+1d) | 2026-04-18 → 2026-04-20 (+2d) |
| PG-12577 | Balcony Railing Fixing works | 2026-02-04 → 2026-02-05 (+1d) | 2026-02-09 → 2026-02-10 (+1d) |
| PG-12579 | Dadoing - Wet area | 2026-02-24 → 2026-02-26 (+2d) | 2026-03-02 → 2026-03-04 (+2d) |
| PG-12578 | UPVC Windows & Sliding doors | 2026-03-13 → 2026-03-16 (+3d) | 2026-03-19 → 2026-03-21 (+2d) |
| PG-12580 | Painting Works - Putty, Primer and 1st | 2026-03-19 → 2026-03-21 (+2d) | 2026-03-26 → 2026-03-28 (+2d) |
| PG-12581 | Final Coat Painting | 2026-03-26 → 2026-03-28 (+2d) | 2026-04-18 → 2026-04-20 (+2d) |
| 1.3.1.3.4.30.3 | **Floor Finishing Works - Civil** | 2026-02-04 → 2026-02-05 (+1d) | 2026-03-26 → 2026-03-28 (+2d) |
| PG-12582 | Waterproofing for sunken areas | 2026-02-04 → 2026-02-05 (+1d) | 2026-02-07 → 2026-02-09 (+2d) |
| PG-12583 | Floor Tiling - Wet area | 2026-03-02 → 2026-03-04 (+2d) | 2026-03-07 → 2026-03-10 (+3d) |
| PG-12584 | Floor Tiling - Dry area | 2026-03-07 → 2026-03-10 (+3d) | 2026-03-13 → 2026-03-16 (+3d) |
| PG-12585 | Wooden doors | 2026-03-20 → 2026-03-23 (+3d) | 2026-03-26 → 2026-03-28 (+2d) |
| 1.3.1.3.4.31 | **Floor 28** | 2026-02-25 → 2026-02-27 (+2d) | 2026-05-11 → 2026-05-12 (+1d) |
| 1.3.1.3.4.31.1 | **Ceiling Finishing works - Civil** | 2026-03-06 → 2026-03-07 (+1d) | 2026-05-11 → 2026-05-12 (+1d) |
| PG-12586 | Gypsum Plastering | 2026-03-06 → 2026-03-07 (+1d) | 2026-03-13 → 2026-03-14 (+1d) |
| PG-12587 | Cornice fixing | 2026-03-23 → 2026-03-25 (+2d) | 2026-03-27 → 2026-03-28 (+1d) |
| PG-12589 | Toilet False ceiling | 2026-03-31 → 2026-04-01 (+1d) | 2026-04-04 → 2026-04-06 (+2d) |
| PG-12588 | Painting Works - Putty, Primer and 1st | 2026-04-10 → 2026-04-11 (+1d) | 2026-04-17 → 2026-04-18 (+1d) |
| PG-12590 | Final Coat Painting | 2026-04-17 → 2026-04-18 (+1d) | 2026-05-11 → 2026-05-12 (+1d) |
| 1.3.1.3.4.31.2 | **Wall Finishing works - Civil** | 2026-02-25 → 2026-02-27 (+2d) | 2026-05-11 → 2026-05-12 (+1d) |
| PG-12591 | Balcony Railing Fixing works | 2026-02-25 → 2026-02-27 (+2d) | 2026-03-02 → 2026-03-04 (+2d) |
| PG-12593 | Dadoing - Wet area | 2026-03-18 → 2026-03-19 (+1d) | 2026-03-24 → 2026-03-25 (+1d) |
| PG-12592 | UPVC Windows & Sliding doors | 2026-04-04 → 2026-04-06 (+2d) | 2026-04-10 → 2026-04-11 (+1d) |
| PG-12594 | Painting Works - Putty, Primer and 1st | 2026-04-10 → 2026-04-11 (+1d) | 2026-04-17 → 2026-04-18 (+1d) |
| PG-12595 | Final Coat Painting | 2026-04-17 → 2026-04-18 (+1d) | 2026-05-11 → 2026-05-12 (+1d) |
| 1.3.1.3.4.31.3 | **Floor Finishing Works - Civil** | 2026-02-25 → 2026-02-27 (+2d) | 2026-04-17 → 2026-04-18 (+1d) |
| PG-12596 | Waterproofing for sunken areas | 2026-02-25 → 2026-02-27 (+2d) | 2026-02-28 → 2026-03-03 (+3d) |
| PG-12597 | Floor Tiling - Wet area | 2026-03-24 → 2026-03-25 (+1d) | 2026-03-30 → 2026-03-31 (+1d) |
| PG-12598 | Floor Tiling - Dry area | 2026-03-30 → 2026-03-31 (+1d) | 2026-04-04 → 2026-04-06 (+2d) |
| PG-12599 | Wooden doors | 2026-04-11 → 2026-04-13 (+2d) | 2026-04-17 → 2026-04-18 (+1d) |
| 1.3.1.3.4.32 | **Floor 29** | 2026-03-19 → 2026-03-20 (+1d) | 2026-06-01 → 2026-06-03 (+2d) |
| 1.3.1.3.4.32.1 | **Ceiling Finishing works - Civil** | 2026-03-28 → 2026-03-30 (+2d) | 2026-06-01 → 2026-06-03 (+2d) |
| PG-12600 | Gypsum Plastering | 2026-03-28 → 2026-03-30 (+2d) | 2026-04-04 → 2026-04-06 (+2d) |
| PG-12601 | Cornice fixing | 2026-04-21 → 2026-04-22 (+1d) | 2026-04-25 → 2026-04-27 (+2d) |
| PG-12603 | Toilet False ceiling | 2026-04-22 → 2026-04-23 (+1d) | 2026-04-27 → 2026-04-28 (+1d) |
| PG-12602 | Painting Works - Putty, Primer and 1st | 2026-05-02 → 2026-05-04 (+2d) | 2026-05-09 → 2026-05-11 (+2d) |
| PG-12604 | Final Coat Painting | 2026-05-09 → 2026-05-11 (+2d) | 2026-06-01 → 2026-06-03 (+2d) |
| 1.3.1.3.4.32.2 | **Wall Finishing works - Civil** | 2026-03-19 → 2026-03-20 (+1d) | 2026-06-01 → 2026-06-03 (+2d) |
| PG-12605 | Balcony Railing Fixing works | 2026-03-19 → 2026-03-20 (+1d) | 2026-03-24 → 2026-03-25 (+1d) |
| PG-12607 | Dadoing - Wet area | 2026-04-09 → 2026-04-10 (+1d) | 2026-04-15 → 2026-04-16 (+1d) |
| PG-12606 | UPVC Windows & Sliding doors | 2026-04-27 → 2026-04-28 (+1d) | 2026-05-02 → 2026-05-04 (+2d) |
| PG-12608 | Painting Works - Putty, Primer and 1st | 2026-05-02 → 2026-05-04 (+2d) | 2026-05-09 → 2026-05-11 (+2d) |
| PG-12609 | Final Coat Painting | 2026-05-09 → 2026-05-11 (+2d) | 2026-06-01 → 2026-06-03 (+2d) |
| 1.3.1.3.4.32.3 | **Floor Finishing Works - Civil** | 2026-03-19 → 2026-03-20 (+1d) | 2026-05-09 → 2026-05-11 (+2d) |
| PG-12610 | Waterproofing for sunken areas | 2026-03-19 → 2026-03-20 (+1d) | 2026-03-23 → 2026-03-24 (+1d) |
| PG-12611 | Floor Tiling - Wet area | 2026-04-15 → 2026-04-16 (+1d) | 2026-04-21 → 2026-04-22 (+1d) |
| PG-12612 | Floor Tiling - Dry area | 2026-04-21 → 2026-04-22 (+1d) | 2026-04-27 → 2026-04-28 (+1d) |
| PG-12613 | Wooden doors | 2026-05-04 → 2026-05-05 (+1d) | 2026-05-09 → 2026-05-11 (+2d) |
| 1.3.1.3.4.33 | **External Finishing works** | 2025-12-27 → 2025-12-29 (+2d) | 2026-04-24 → 2026-04-25 (+1d) |
| PG-12614 | External walls tie rod hole plugging with GP2 | 2025-12-27 → 2025-12-29 (+2d) | 2026-02-02 → 2026-02-03 (+1d) |
| PG-12615 | External walls grinding works | 2026-01-20 → 2026-01-21 (+1d) | 2026-03-09 → 2026-03-10 (+1d) |
| PG-12616 | Texture and painting works | 2026-03-03 → 2026-03-04 (+1d) | 2026-04-24 → 2026-04-25 (+1d) |
| 1.3.1.3.5 | **Corridor & Fire Staircase Finishing works** | 2026-03-05 → 2026-03-06 (+1d) | 2026-07-01 → 2026-07-02 (+1d) |
| 1.3.1.3.5.1 | **Ceiling Finishing works - Civil** | 2026-03-05 → 2026-03-06 (+1d) | 2026-05-27 → 2026-05-28 (+1d) |
| PG-12617 | Gypsum Plastering | 2026-03-05 → 2026-03-06 (+1d) | 2026-03-12 → 2026-03-13 (+1d) |
| PG-12618 | Cornice fixing | 2026-03-11 → 2026-03-12 (+1d) | 2026-03-16 → 2026-03-17 (+1d) |
| PG-12619 | Painting Works - Putty, Primer and 1st | 2026-03-28 → 2026-03-30 (+2d) | 2026-04-04 → 2026-04-06 (+2d) |
| PG-12620 | False ceiling | 2026-04-04 → 2026-04-06 (+2d) | 2026-05-09 → 2026-05-11 (+2d) |
| PG-12621 | Final Coat Painting | 2026-04-21 → 2026-04-23 (+2d) | 2026-05-27 → 2026-05-28 (+1d) |
| 1.3.1.3.5.2 | **Wall Finishing works - Civil** | 2026-04-09 → 2026-04-10 (+1d) | 2026-07-01 → 2026-07-02 (+1d) |

| ID | Task | Start | Finish |
| --- | --- | --- | --- |
| PG-12622 | UPVC Windows & Sliding doors | 2026-04-09 → 2026-04-10 (+1d) | 2026-04-15 → 2026-04-16 (+1d) |
| PG-12623 | Wall Cladding Upto 1.2 Mts | 2026-04-27 → 2026-04-28 (+1d) | 2026-05-20 → 2026-05-21 (+1d) |
| PG-12624 | Painting Works - Texture & one coat Painting works | 2026-05-27 → 2026-05-28 (+1d) | 2026-06-13 → 2026-06-15 (+2d) |
| PG-12625 | Final Coat Painting | 2026-06-08 → 2026-06-10 (+2d) | 2026-07-01 → 2026-07-02 (+1d) |
| 1.3.1.3.5.3 | **Floor Finishing Works - Civil** | 2026-03-12 → 2026-03-13 (+1d) | 2026-04-10 → 2026-04-11 (+1d) |
| PG-12626 | Fire Doors installation | 2026-03-12 → 2026-03-13 (+1d) | 2026-03-24 → 2026-03-25 (+1d) |
| PG-12627 | Vitrified tile flooring works | 2026-03-24 → 2026-03-25 (+1d) | 2026-04-10 → 2026-04-11 (+1d) |
| 1.3.1.3.5.4 | **Fire Staircase Finishing Works - Civil** | 2026-03-12 → 2026-03-13 (+1d) | 2026-07-01 → 2026-07-02 (+1d) |
| PG-12628 | Staircase Railing Fixing works | 2026-03-12 → 2026-03-13 (+1d) | 2026-04-04 → 2026-04-06 (+2d) |
| PG-12629 | Wall and ceiling Gypsum plastering | 2026-03-21 → 2026-03-24 (+3d) | 2026-04-28 → 2026-04-29 (+1d) |
| PG-12630 | Staircase Flooring and Skirting Works | 2026-04-10 → 2026-04-13 (+3d) | 2026-05-27 → 2026-05-28 (+1d) |
| PG-12631 | UPVC Window fixing works | 2026-05-26 → 2026-05-28 (+2d) | 2026-06-13 → 2026-06-15 (+2d) |
| PG-12632 | Staircase Painting works | 2026-06-08 → 2026-06-09 (+1d) | 2026-07-01 → 2026-07-02 (+1d) |
| 1.3.1.3.6 | **MEP Civil Works (Shaft, Lift Shaft & OHT )** | 2025-12-13 → 2025-12-15 (+2d) | 2026-05-13 → 2026-05-15 (+2d) |
| 1.3.1.3.6.1 | **Lift Shaft Works** | 2025-12-13 → 2025-12-15 (+2d) | 2026-05-13 → 2026-05-15 (+2d) |
| PG-12633 | Tie rod hole packing | 2025-12-13 → 2025-12-15 (+2d) | 2025-12-23 → 2025-12-24 (+1d) |
| PG-12634 | Grinding works | 2025-12-23 → 2025-12-24 (+1d) | 2025-12-29 → 2025-12-30 (+1d) |
| PG-12635 | Lift pit water proofing works | 2025-12-29 → 2025-12-30 (+1d) | 2026-01-22 → 2026-01-23 (+1d) |
| PG-12636 | Shaft door opening finishing | 2026-01-22 → 2026-01-23 (+1d) | 2026-01-30 → 2026-02-02 (+3d) |
| PG-12637 | Painting works | 2026-01-30 → 2026-02-02 (+3d) | 2026-02-09 → 2026-02-11 (+2d) |
| PG-12638 | Lift Wall Cladding Works | 2026-04-25 → 2026-04-27 (+2d) | 2026-05-13 → 2026-05-15 (+2d) |
| 1.3.1.3.6.2 | **Electrical Shaft works** | 2025-12-13 → 2025-12-15 (+2d) | 2026-01-15 → 2026-01-16 (+1d) |
| PG-12639 | Tie rod hole packing | 2025-12-13 → 2025-12-15 (+2d) | 2025-12-23 → 2025-12-24 (+1d) |
| PG-12640 | Grinding works | 2025-12-23 → 2025-12-24 (+1d) | 2025-12-29 → 2025-12-30 (+1d) |
| PG-12641 | Shaft door opening finishing | 2025-12-29 → 2025-12-30 (+1d) | 2026-01-06 → 2026-01-07 (+1d) |
| PG-12642 | Painting works | 2026-01-06 → 2026-01-07 (+1d) | 2026-01-15 → 2026-01-16 (+1d) |
| 1.3.1.3.6.3 | **FPS Shaft works** | 2025-12-13 → 2025-12-15 (+2d) | 2026-01-15 → 2026-01-16 (+1d) |
| PG-12643 | Tie rod hole packing | 2025-12-13 → 2025-12-15 (+2d) | 2025-12-23 → 2025-12-24 (+1d) |
| PG-12644 | Grinding works | 2025-12-23 → 2025-12-24 (+1d) | 2025-12-29 → 2025-12-30 (+1d) |
| PG-12645 | Shaft door opening finishing | 2025-12-29 → 2025-12-30 (+1d) | 2026-01-06 → 2026-01-07 (+1d) |
| PG-12646 | Painting works | 2026-01-06 → 2026-01-07 (+1d) | 2026-01-15 → 2026-01-16 (+1d) |
| 1.3.1.3.6.4 | **PHE Shaft works** | 2025-12-13 → 2025-12-15 (+2d) | 2026-01-15 → 2026-01-16 (+1d) |
| PG-12647 | Tie rod hole packing | 2025-12-13 → 2025-12-15 (+2d) | 2025-12-23 → 2025-12-24 (+1d) |
| PG-12648 | Grinding works | 2025-12-23 → 2025-12-24 (+1d) | 2025-12-29 → 2025-12-30 (+1d) |
| PG-12649 | Shaft door opening finishing | 2025-12-29 → 2025-12-30 (+1d) | 2026-01-06 → 2026-01-07 (+1d) |
| PG-12650 | Painting works | 2026-01-06 → 2026-01-07 (+1d) | 2026-01-15 → 2026-01-16 (+1d) |
| 1.3.1.3.6.5 | **Data & Communication Shaft** | 2025-12-13 → 2025-12-15 (+2d) | 2026-01-13 → 2026-01-14 (+1d) |
| PG-12651 | Tie rod hole packing | 2025-12-13 → 2025-12-15 (+2d) | 2025-12-23 → 2025-12-24 (+1d) |
| PG-12652 | Grinding works | 2025-12-23 → 2025-12-24 (+1d) | 2025-12-29 → 2025-12-30 (+1d) |
| PG-12653 | Shaft door opening finishing | 2025-12-29 → 2025-12-30 (+1d) | 2026-01-03 → 2026-01-05 (+2d) |
| PG-12654 | Painting works | 2026-01-03 → 2026-01-05 (+2d) | 2026-01-13 → 2026-01-14 (+1d) |
| 1.3.1.3.6.6 | **OHT Works** | 2025-12-13 → 2025-12-15 (+2d) | 2026-02-02 → 2026-02-03 (+1d) |
| PG-12655 | Tank materials Supply & Shifting | 2025-12-13 → 2025-12-15 (+2d) | 2025-12-25 → 2025-12-26 (+1d) |
| PG-12656 | Assembling OHT FRP Tank | 2025-12-25 → 2025-12-26 (+1d) | 2026-01-06 → 2026-01-07 (+1d) |
| PG-12657 | Installation of OHT Tank | 2026-01-06 → 2026-01-07 (+1d) | 2026-01-23 → 2026-01-24 (+1d) |
| PG-12658 | Water tightness works and checking | 2026-01-23 → 2026-01-24 (+1d) | 2026-02-02 → 2026-02-03 (+1d) |
| 1.3.1.3.7 | **MEP Shaft works** | 2026-01-13 → 2026-01-14 (+1d) | 2026-04-04 → 2026-04-07 (+3d) |
| 1.3.1.3.7.1 | **Electrical** | 2026-01-15 → 2026-01-16 (+1d) | 2026-02-25 → 2026-02-26 (+1d) |
| PG-12659 | Tray Works | 2026-01-15 → 2026-01-16 (+1d) | 2026-01-27 → 2026-01-29 (+2d) |
| PG-12660 | Cable & Conducting works | 2026-01-27 → 2026-01-29 (+2d) | 2026-02-07 → 2026-02-10 (+3d) |
| PG-12661 | Wiring/DB/connector box installation and termination works | 2026-02-07 → 2026-02-10 (+3d) | 2026-02-25 → 2026-02-26 (+1d) |
| 1.3.1.3.7.2 | **FPS** | 2026-01-15 → 2026-01-16 (+1d) | 2026-02-25 → 2026-02-26 (+1d) |
| PG-12662 | Shaft MS Piping & fixtures installation | 2026-01-15 → 2026-01-16 (+1d) | 2026-02-07 → 2026-02-10 (+3d) |
| PG-12663 | Tray / cabling / conducting & wiring works | 2026-02-09 → 2026-02-10 (+1d) | 2026-02-25 → 2026-02-26 (+1d) |
| 1.3.1.3.7.3 | **Data & Communication** | 2026-01-13 → 2026-01-14 (+1d) | 2026-03-03 → 2026-03-04 (+1d) |
| PG-12664 | Tray Works | 2026-01-13 → 2026-01-14 (+1d) | 2026-01-28 → 2026-01-29 (+1d) |
| PG-12665 | Tray / cabling / conducting & wiring works | 2026-01-28 → 2026-01-29 (+1d) | 2026-02-13 → 2026-02-16 (+3d) |
| PG-12666 | Wiring/DB/connector box installation and termination works | 2026-02-13 → 2026-02-16 (+3d) | 2026-03-03 → 2026-03-04 (+1d) |
| 1.3.1.3.7.4 | **PHE** | 2026-01-15 → 2026-01-16 (+1d) | 2026-04-04 → 2026-04-07 (+3d) |
| PG-12667 | Bracket fixing works | 2026-01-15 → 2026-01-16 (+1d) | 2026-01-22 → 2026-01-24 (+2d) |
| PG-12668 | Piping Works | 2026-01-22 → 2026-01-24 (+2d) | 2026-02-10 → 2026-02-11 (+1d) |
| PG-12669 | Terrace Ring main & OHT Connection works | 2026-02-10 → 2026-02-11 (+1d) | 2026-03-28 → 2026-03-30 (+2d) |
| PG-12670 | Commissioning | 2026-03-28 → 2026-03-30 (+2d) | 2026-04-04 → 2026-04-07 (+3d) |
| 1.3.1.3.8 | **Lift Installation and Testing works** | 2025-12-29 → 2025-12-30 (+1d) | 2026-07-27 → 2026-07-29 (+2d) |
| PG-12671 | Lift Shaft Survey works | 2025-12-29 → 2025-12-30 (+1d) | 2026-01-09 → 2026-01-10 (+1d) |
| PG-12672 | Guide Rails fixing works | 2026-02-09 → 2026-02-11 (+2d) | 2026-03-28 → 2026-03-31 (+3d) |
| PG-12673 | Lift Frame fixing works | 2026-03-28 → 2026-03-31 (+3d) | 2026-04-24 → 2026-04-27 (+3d) |
| PG-12674 | CAR Assembly works | 2026-04-25 → 2026-04-27 (+2d) | 2026-05-19 → 2026-05-21 (+2d) |
| PG-12675 | Lift Machine Room Works | 2026-05-19 → 2026-05-21 (+2d) | 2026-06-22 → 2026-06-24 (+2d) |
| PG-12676 | Slow Speed & High Speed Testing works | 2026-06-23 → 2026-06-24 (+1d) | 2026-07-27 → 2026-07-29 (+2d) |

| ID | Task | Start | Finish | Complete | Total float |
| --- | --- | --- | --- | --- | --- |
| 1.3.1.3.10 | **Entrance Lobby works** | 2026-07-01 → 2026-07-02 (+1d) | 2026-10-15 → 2026-10-16 (+1d) |  |  |
| PG-12684 | Flooring Works | 2026-07-01 → 2026-07-02 (+1d) | 2026-07-17 → 2026-07-20 (+3d) |  |  |
| PG-12685 | Glass Door and installation Works | 2026-07-17 → 2026-07-20 (+3d) | 2026-08-10 → 2026-08-11 (+1d) |  |  |
| PG-12687 | Canopy Works | 2026-07-17 → 2026-07-20 (+3d) | 2026-08-17 → 2026-08-18 (+1d) |  |  |
| PG-12686 | Painting Works | 2026-08-10 → 2026-08-11 (+1d) | 2026-08-21 → 2026-08-24 (+3d) |  |  |
| PG-12688 | Interior Works | 2026-08-21 → 2026-08-24 (+3d) | 2026-10-15 → 2026-10-16 (+1d) |  |  |
| 1.3.1.3.11 | **Lightening Arrester works** | 2026-04-24 → 2026-04-25 (+1d) | 2026-05-05 → 2026-05-07 (+2d) |  |  |
| PG-12689 | Conductor will be lifted with RCC Works, But Terrace works will be done once Parapet Painting done | 2026-04-24 → 2026-04-25 (+1d) | 2026-05-05 → 2026-05-07 (+2d) |  |  |
| 1.3.1.5 | **Landscape and Hardscape works** | 2026-04-24 → 2026-04-25 (+1d) | 2026-08-06 → 2026-08-08 (+2d) |  |  |
| PG-12715 | Hardscape ( Granite, Planter, Walkways Etc..) | 2026-04-24 → 2026-04-25 (+1d) | 2026-06-16 → 2026-06-17 (+1d) |  |  |
| PG-12716 | Filter media and soil filling works | 2026-06-10 → 2026-06-12 (+2d) | 2026-07-03 → 2026-07-04 (+1d) |  |  |
| PG-12717 | Irrigation piping works | 2026-06-22 → 2026-06-24 (+2d) | 2026-07-15 → 2026-07-16 (+1d) |  |  |
| PG-12718 | Planting works | 2026-07-15 → 2026-07-16 (+1d) | 2026-08-06 → 2026-08-08 (+2d) |  |  |
| 1.3.9 | **Project Infrastructure Works ( Services/MEP )** |  | 2026-09-23 → 2026-09-25 (+2d) |  |  |
| 1.3.9.1 | **Civil & Services Works ( Transformer, DG,STP )** |  | 2026-09-23 → 2026-09-25 (+2d) |  |  |
| 1.3.9.1.1 | **Transformer Yard Civil Works** | 2026-03-19 → 2026-03-21 (+2d) | 2026-05-28 → 2026-05-30 (+2d) |  |  |
| 1.3.9.1.1.1 | **Transformer 01** | 2026-03-19 → 2026-03-21 (+2d) | 2026-05-28 → 2026-05-30 (+2d) |  |  |
| PG-30428 | Footing and Pedestal Excavation Works | 2026-03-19 → 2026-03-21 (+2d) | 2026-04-01 → 2026-04-02 (+1d) |  |  |
| PG-30429 | Footing and Pedestal Reinforcement works | 2026-04-02 → 2026-04-04 (+2d) | 2026-04-07 → 2026-04-08 (+1d) |  |  |
| PG-30430 | Footing and Pedestal Concrete works | 2026-04-07 → 2026-04-08 (+1d) | 2026-04-17 → 2026-04-20 (+3d) |  |  |
| PG-30431 | Fencing Retaining wall footing reinforcement works | 2026-04-17 → 2026-04-20 (+3d) | 2026-04-25 → 2026-04-27 (+2d) |  |  |
| PG-30432 | Fencing Retaining wall footing formwork and concrete works | 2026-04-25 → 2026-04-27 (+2d) | 2026-05-02 → 2026-05-04 (+2d) |  |  |
| PG-30434 | Fencing works MS/GRC | 2026-04-30 → 2026-05-01 (+1d) | 2026-05-25 → 2026-05-26 (+1d) |  |  |
| PG-30433 | Retaining wall upto low level concrete works | 2026-05-02 → 2026-05-04 (+2d) | 2026-05-07 → 2026-05-08 (+1d) |  |  |
| PG-30435 | Floor Aggregates spreading works | 2026-05-25 → 2026-05-26 (+1d) | 2026-05-28 → 2026-05-30 (+2d) |  |  |
| 1.3.9.1.2 | **Transformer Yard Electrical works** | 2026-08-07 → 2026-08-08 (+1d) | 2026-09-23 → 2026-09-25 (+2d) |  |  |
| 1.3.9.1.2.1 | **Transformer 01** | 2026-08-07 → 2026-08-08 (+1d) | 2026-09-23 → 2026-09-25 (+2d) |  |  |
| PG-30460 | Cable Trench works | 2026-08-07 → 2026-08-08 (+1d) | 2026-08-19 → 2026-08-20 (+1d) |  |  |
| PG-30461 | LTQS Installation Works | 2026-08-19 → 2026-08-20 (+1d) | 2026-08-28 → 2026-08-29 (+1d) |  |  |
| PG-30462 | Cable laying works | 2026-08-28 → 2026-08-29 (+1d) | 2026-09-12 → 2026-09-15 (+3d) |  |  |
| PG-30463 | Cable Termination works | 2026-09-12 → 2026-09-15 (+3d) | 2026-09-17 → 2026-09-18 (+1d) |  |  |
| PG-30464 | Testing and commissioning works | 2026-09-17 → 2026-09-18 (+1d) | 2026-09-23 → 2026-09-25 (+2d) |  |  |
| PG-30542 | piping for Excess Treated water discharge | 2025-11-29 → 2025-12-01 (+2d) | 2025-12-06 → 2025-12-08 (+2d) |  | 215.83d → 216.35d |
| PG-30543 | Equipment installation and Pump Fixing Works | 2025-12-06 → 2025-12-08 (+2d) | 2025-12-24 → 2025-12-25 (+1d) |  | 215.83d → 216.35d |
| PG-30544 | Electrical Cabling works for Pumps | 2025-12-24 → 2025-12-25 (+1d) | 2026-01-05 → 2026-01-06 (+1d) |  | 215.83d → 216.35d |
| PG-30545 | Electrical Conducting/Wiring and fixture installation | 2026-01-05 → 2026-01-06 (+1d) |  |  | 215.83d → 216.35d |
| PG-30709 | Painting Works |  |  | 28% → 48% | 303.56d → 304.99d |
| 1.6 | **Testing And Commissioning Works** |  | 2026-10-28 → 2026-10-30 (+2d) |  |  |
| 1.6.1.1 | **Tower 1** |  | 2026-04-18 → 2026-04-20 (+2d) |  |  |
| 1.6.1.1.1 | **Units** |  | 2026-02-20 → 2026-02-21 (+1d) |  |  |
| PG-30736 | T&C - Floor 5 |  |  | 62% → 82% | 429.15d → 430.58d |
| PG-30737 | T&C - Floor 6 |  |  | 23% → 44% | 417.8d → 419.23d |
| PG-30741 | T&C - Floor 10 | 2025-06-12 → 2025-06-13 (+1d) | 2025-07-18 → 2025-07-19 (+1d) |  | 368.27d → 368.68d |
| PG-30743 | T&C - Floor 12 | 2025-07-09 → 2025-07-10 (+1d) | 2025-08-12 → 2025-08-13 (+1d) |  | 347.08d → 347.73d |
| PG-30744 | T&C - Floor 13 | 2025-07-24 → 2025-07-25 (+1d) |  |  | 334.66d → 335.18d |
| PG-30745 | T&C - Floor 14 | 2025-08-06 → 2025-08-07 (+1d) |  |  | 323.66d → 324.18d |
| PG-30746 | T&C - Floor 15 | 2025-08-19 → 2025-08-20 (+1d) |  |  | 313.66d → 314.18d |
| PG-30747 | T&C - Floor 16 | 2025-09-01 → 2025-09-02 (+1d) |  |  | 302.66d → 303.18d |
| PG-30748 | T&C - Floor 17 | 2025-09-13 → 2025-09-15 (+2d) |  |  | 291.66d → 292.18d |
| PG-30749 | T&C - Floor 18 | 2025-09-26 → 2025-09-27 (+1d) |  |  | 280.66d → 281.18d |
| PG-30750 | T&C - Floor 19 | 2025-10-22 → 2025-10-23 (+1d) |  |  | 259.66d → 260.18d |
| PG-30751 | T&C - Floor 20 | 2025-11-13 → 2025-11-14 (+1d) | 2025-12-17 → 2025-12-18 (+1d) |  | 240.49d → 241.01d |
| PG-30752 | T&C - Floor 21 | 2025-12-05 → 2025-12-06 (+1d) | 2026-01-08 → 2026-01-09 (+1d) |  | 221.49d → 222.01d |
| PG-30753 | T&C - Floor 22 | 2025-12-27 → 2025-12-29 (+2d) |  |  | 201.49d → 202.01d |
| PG-30754 | T&C - Floor 23 | 2026-01-16 → 2026-01-17 (+1d) | 2026-02-20 → 2026-02-21 (+1d) |  | 185.49d → 186.01d |
| 1.6.1.1.2 | **Common Areas** | 2025-10-04 → 2025-10-06 (+2d) | 2026-04-18 → 2026-04-20 (+2d) |  |  |
| PG-30755 | T&C - Internal Electrical Works | 2025-10-04 → 2025-10-06 (+2d) | 2025-10-20 → 2025-10-21 (+1d) |  | 261.16d → 261.68d |
| PG-30756 | T&C - Internal FPS Works | 2025-10-04 → 2025-10-06 (+2d) | 2025-10-20 → 2025-10-21 (+1d) |  | 260.83d → 261.35d |
| PG-30757 | T&C - Data & Communication Works | 2025-10-10 → 2025-10-11 (+1d) | 2025-10-25 → 2025-10-27 (+2d) |  | 255.83d → 256.35d |
| PG-30758 | T&C - Internal PHE Works including OHT | 2025-11-14 → 2025-11-15 (+1d) | 2025-12-08 → 2025-12-09 (+1d) |  | 217.83d → 218.35d |
| PG-30761 | T&C - Lightining Arrestor works | 2025-12-15 → 2025-12-16 (+1d) |  |  | 249.66d → 250.18d |
| PG-30760 | T&C - Electrical Panel Works | 2026-02-25 → 2026-02-26 (+1d) | 2026-03-21 → 2026-03-23 (+2d) |  | 131.16d → 131.68d |
| PG-30759 | T&C - Lift Works | 2026-03-27 → 2026-03-28 (+1d) | 2026-04-18 → 2026-04-20 (+2d) |  | 106.97d → 107.43d |
| 1.6.1.2 | **Tower 2** |  | 2026-05-08 → 2026-05-09 (+1d) |  |  |
| 1.6.1.2.1 | **Units** |  | 2026-03-31 → 2026-04-01 (+1d) |  |  |
| PG-30766 | T&C - Floor 4 |  | 2025-04-25 → 2025-04-26 A (+1d) | 98% → 100% | 439.1d → none |
| PG-30767 | T&C - Floor 5 |  |  | 68% → 89% | 430.26d → 431.69d |
| PG-30768 | T&C - Floor 6 |  |  | 15% → 36% | 415.4d → 416.83d |
| PG-30769 | T&C - Floor 7 | 2025-05-01 A | 2025-06-05 → 2025-06-04 (-1d) | 0% → 4% | 405.33d → 407.59d |
| PG-30772 | T&C - Floor 10 | 2025-06-13 → 2025-06-14 (+1d) | 2025-07-18 → 2025-07-19 (+1d) |  | 367.93d → 368.35d |

| ID | Task | Start | Finish | Complete | Total float |
| --- | --- | --- | --- | --- | --- |
| PG-30773 | T&C - Floor 11 | 2025-06-28 → 2025-06-27 (-1d) |  |  | 355.75d → 357.91d |
| PG-30774 | T&C - Floor 12 | 2025-07-10 → 2025-07-11 (+1d) |  |  | 345.27d → 346.28d |
| PG-30775 | T&C - Floor 13 | 2025-07-24 → 2025-07-25 (+1d) | 2025-08-28 → 2025-08-29 (+1d) |  | 334.57d → 334.93d |
| PG-30776 | T&C - Floor 14 | 2025-08-06 → 2025-08-07 (+1d) | 2025-09-10 → 2025-09-11 (+1d) |  | 323.57d → 323.93d |
| PG-30777 | T&C - Floor 15 | 2025-08-19 → 2025-08-20 (+1d) | 2025-09-22 → 2025-09-23 (+1d) |  | 313.57d → 313.93d |
| PG-30778 | T&C - Floor 16 | 2025-08-30 → 2025-09-01 (+2d) | 2025-10-04 → 2025-10-06 (+2d) |  | 303.24d → 303.6d |
| PG-30779 | T&C - Floor 17 | 2025-09-12 → 2025-09-13 (+1d) | 2025-10-17 → 2025-10-18 (+1d) |  | 292.24d → 292.6d |
| PG-30780 | T&C - Floor 18 | 2025-09-26 → 2025-09-27 (+1d) | 2025-11-03 → 2025-11-04 (+1d) |  | 280.4d → 280.76d |
| PG-30781 | T&C - Floor 19 | 2025-10-10 → 2025-10-11 (+1d) | 2025-11-15 → 2025-11-17 (+2d) |  | 269.4d → 269.76d |
| PG-30782 | T&C - Floor 20 | 2025-10-24 → 2025-10-25 (+1d) | 2025-11-29 → 2025-12-01 (+2d) |  | 257.4d → 257.76d |
| PG-30783 | T&C - Floor 21 | 2025-11-06 → 2025-11-07 (+1d) | 2025-12-10 → 2025-12-11 (+1d) |  | 247.74d → 248.1d |
| PG-30784 | T&C - Floor 22 | 2025-11-28 → 2025-11-29 (+1d) | 2025-12-31 → 2026-01-01 (+1d) |  | 227.9d → 228.26d |
| PG-30785 | T&C - Floor 23 | 2025-12-18 → 2025-12-19 (+1d) | 2026-01-22 → 2026-01-23 (+1d) |  | 209.9d → 210.26d |
| PG-30786 | T&C - Floor 24 | 2026-01-08 → 2026-01-09 (+1d) | 2026-02-13 → 2026-02-14 (+1d) |  | 190.74d → 191.1d |
| PG-30787 | T&C - Floor 25 | 2026-02-02 → 2026-02-03 (+1d) | 2026-03-09 → 2026-03-10 (+1d) |  | 171.24d → 171.6d |
| PG-30788 | T&C - Floor 26 | 2026-02-23 → 2026-02-24 (+1d) | 2026-03-31 → 2026-04-01 (+1d) |  | 123.74d → 124.1d |
| 1.6.1.2.2 | **Common Areas** | 2025-11-12 → 2025-11-13 (+1d) | 2026-05-08 → 2026-05-09 (+1d) |  |  |
| PG-30790 | T&C - Internal FPS Works | 2025-11-12 → 2025-11-13 (+1d) | 2025-11-28 → 2025-11-29 (+1d) |  | 226.9d → 227.26d |
| PG-30789 | T&C - Internal Electrical Works | 2025-11-12 → 2025-11-13 (+1d) | 2025-11-28 → 2025-11-29 (+1d) |  | 227.07d → 227.43d |
| PG-30791 | T&C - Data & Communication Works | 2025-11-18 → 2025-11-19 (+1d) | 2025-12-05 → 2025-12-06 (+1d) |  | 221.57d → 221.93d |
| PG-30792 | T&C - Internal PHE Works including OHT | 2025-12-22 → 2025-12-23 (+1d) | 2026-01-15 → 2026-01-16 (+1d) |  | 185.74d → 186.1d |
| PG-30795 | T&C - Lightining Arrestor works | 2026-01-21 → 2026-01-23 (+2d) | 2026-01-30 → 2026-01-31 (+1d) |  | 219.9d → 220.26d |
| PG-30794 | T&C - Electrical Panel Works | 2026-02-24 → 2026-02-25 (+1d) | 2026-03-20 → 2026-03-21 (+1d) |  | 162.57d → 162.93d |
| PG-30793 | T&C - Lift Works | 2026-04-15 → 2026-04-17 (+2d) | 2026-05-08 → 2026-05-09 (+1d) |  | 120.4d → 120.76d |
| 1.6.1.3.1 | **Units** |  | 2026-07-13 → 2026-07-14 (+1d) |  |  |
| PG-30797 | T&C - Floor 1 |  |  | 65% → 85% | 429.23d → 430.66d |
| PG-30798 | T&C - Floor 2 |  |  | 25% → 45% | 416.95d → 418.38d |
| PG-30799 | T&C - Floor 3 | 2025-05-06 → 2025-05-08 (+2d) | 2025-06-10 → 2025-06-11 (+1d) |  | 400.11d → 400.34d |
| PG-30802 | T&C - Floor 6 | 2025-06-17 → 2025-06-18 (+1d) | 2025-07-22 → 2025-07-23 (+1d) |  | 365.07d → 365.51d |
| PG-30803 | T&C - Floor 7 |  | 2025-08-06 → 2025-08-07 (+1d) |  | 351.8d → 352.79d |
| PG-30804 | T&C - Floor 8 | 2025-07-21 → 2025-07-22 (+1d) | 2025-08-25 → 2025-08-26 (+1d) |  |  |
| PG-30805 | T&C - Floor 9 | 2025-08-02 → 2025-08-04 (+2d) | 2025-09-06 → 2025-09-08 (+2d) |  |  |
| PG-30806 | T&C - Floor 10 | 2025-08-20 → 2025-08-21 (+1d) | 2025-09-24 → 2025-09-25 (+1d) |  |  |
| PG-30807 | T&C - Floor 11 | 2025-09-02 → 2025-09-03 (+1d) | 2025-10-08 → 2025-10-09 (+1d) |  |  |
| PG-30808 | T&C - Floor 12 | 2025-09-18 → 2025-09-19 (+1d) | 2025-10-23 → 2025-10-24 (+1d) |  |  |
| PG-30809 | T&C - Floor 13 | 2025-10-01 → 2025-10-03 (+2d) | 2025-11-06 → 2025-11-07 (+1d) |  |  |
| PG-30810 | T&C - Floor 14 | 2025-10-13 → 2025-10-14 (+1d) | 2025-11-17 → 2025-11-18 (+1d) |  |  |
| PG-30812 | T&C - Floor 16 | 2025-11-08 → 2025-11-11 (+3d) | 2025-12-12 → 2025-12-13 (+1d) |  |  |
| PG-30813 | T&C - Floor 17 | 2025-11-20 → 2025-11-22 (+2d) | 2025-12-25 → 2025-12-26 (+1d) |  |  |
| PG-30814 | T&C - Floor 18 | 2025-12-03 → 2025-12-05 (+2d) | 2026-01-07 → 2026-01-08 (+1d) |  |  |
| PG-30815 | T&C - Floor 19 | 2025-12-16 → 2025-12-18 (+2d) | 2026-01-20 → 2026-01-21 (+1d) |  |  |
| PG-30816 | T&C - Floor 20 | 2025-12-30 → 2025-12-31 (+1d) | 2026-02-03 → 2026-02-05 (+2d) |  |  |
| PG-30817 | T&C - Floor 21 | 2026-01-12 → 2026-01-13 (+1d) | 2026-02-16 → 2026-02-18 (+2d) |  |  |
| PG-30818 | T&C - Floor 22 | 2026-01-24 → 2026-01-27 (+3d) | 2026-02-28 → 2026-03-03 (+3d) |  |  |
| PG-30819 | T&C - Floor 23 | 2026-02-06 → 2026-02-09 (+3d) | 2026-03-13 → 2026-03-14 (+1d) |  |  |
| PG-30820 | T&C - Floor 24 | 2026-02-20 → 2026-02-21 (+1d) | 2026-03-26 → 2026-03-28 (+2d) |  |  |
| PG-30821 | T&C - Floor 25 | 2026-03-13 → 2026-03-14 (+1d) | 2026-04-16 → 2026-04-18 (+2d) |  |  |
| PG-30822 | T&C - Floor 26 | 2026-04-03 → 2026-04-04 (+1d) | 2026-05-11 → 2026-05-12 (+1d) |  |  |
| PG-30823 | T&C - Floor 27 | 2026-04-25 → 2026-04-27 (+2d) | 2026-06-01 → 2026-06-02 (+1d) |  |  |
| PG-30824 | T&C - Floor 28 | 2026-05-18 → 2026-05-19 (+1d) | 2026-06-22 → 2026-06-23 (+1d) |  |  |
| PG-30825 | T&C - Floor 29 | 2026-06-08 → 2026-06-10 (+2d) | 2026-07-13 → 2026-07-14 (+1d) |  |  |
| 1.6.1.3.2 | **Common Areas** | 2026-02-25 → 2026-02-26 (+1d) |  |  |  |
| PG-30826 | T&C - Internal Electrical Works | 2026-02-25 → 2026-02-26 (+1d) | 2026-03-13 → 2026-03-16 (+3d) |  |  |
| PG-30827 | T&C - Internal FPS Works | 2026-02-25 → 2026-02-26 (+1d) | 2026-03-14 → 2026-03-16 (+2d) |  |  |
| PG-30828 | T&C - Data & Communication Works | 2026-03-03 → 2026-03-04 (+1d) | 2026-03-19 → 2026-03-21 (+2d) |  |  |
| PG-30829 | T&C - Internal PHE Works including OHT | 2026-04-04 → 2026-04-07 (+3d) | 2026-04-29 → 2026-04-30 (+1d) |  |  |
| PG-30832 | T&C - Lightining Arrestor works | 2026-05-05 → 2026-05-07 (+2d) | 2026-05-13 → 2026-05-14 (+1d) |  |  |
| PG-30830 | T&C - Lift Works | 2026-07-27 → 2026-07-29 (+2d) | 2026-08-07 → 2026-08-08 (+1d) |  |  |
| 1.6.9 | **Project InfraStructure Works ( Services & MEP )** |  | 2026-10-28 → 2026-10-30 (+2d) |  |  |
| 1.6.9.1 | **Transformer Works** | 2026-09-24 → 2026-09-25 (+1d) | 2026-10-28 → 2026-10-30 (+2d) |  |  |
| PG-31514 | T&C - Transformer 01 ( Building 01 & 02 ) | 2026-09-24 → 2026-09-25 (+1d) | 2026-10-28 → 2026-10-30 (+2d) |  |  |
| 1.7 | **Snagging De Snagging** |  | 2026-12-02 → 2026-12-04 (+2d) |  |  |
| 1.7.1 | **Building 1** |  | 2026-11-02 → 2026-11-03 (+1d) |  |  |
| 1.7.1.1.1 | **Units** |  | 2026-03-27 → 2026-03-28 (+1d) |  |  |
| PG-31536 | Floor 2 |  | 2025-04-28 → 2025-04-29 A (+1d) | 91% → 100% | 467.47d → none |
| PG-31537 | Floor 3 |  |  | 63% → 82% | 458.88d → 460.31d |
| PG-31538 | Floor 4 |  |  | 20% → 39% | 445.75d → 447.18d |
| PG-31541 | Floor 7 |  | 2025-07-09 → 2025-07-10 (+1d) |  | 405.43d → 406.68d |
| PG-31543 | Floor 9 |  | 2025-08-06 → 2025-08-07 (+1d) |  | 381.52d → 382.65d |
| PG-31544 | Floor 10 | 2025-07-18 → 2025-07-19 (+1d) | 2025-08-23 → 2025-08-25 (+2d) |  | 368.27d → 368.68d |

| ID | Task | Start | Finish | Complete | Total float |
| --- | --- | --- | --- | --- | --- |
| PG-31546 | Floor 12 | 2025-08-12 → 2025-08-13 (+1d) | 2025-09-17 → 2025-09-18 (+1d) |  | 347.08d → 347.73d |
| PG-31547 | Floor 13 |  | 2025-10-01 → 2025-10-03 (+2d) |  | 334.66d → 335.18d |
| PG-31548 | Floor 14 |  | 2025-10-15 → 2025-10-16 (+1d) |  | 323.66d → 324.18d |
| PG-31549 | Floor 15 |  | 2025-10-27 → 2025-10-28 (+1d) |  | 313.66d → 314.18d |
| PG-31550 | Floor 16 |  | 2025-11-10 → 2025-11-11 (+1d) |  | 302.66d → 303.18d |
| PG-31551 | Floor 17 |  | 2025-11-22 → 2025-11-24 (+2d) |  | 291.66d → 292.18d |
| PG-31552 | Floor 18 |  | 2025-12-05 → 2025-12-06 (+1d) |  | 280.66d → 281.18d |
| PG-31553 | Floor 19 |  | 2025-12-30 → 2025-12-31 (+1d) |  | 259.66d → 260.18d |
| PG-31554 | Floor 20 | 2025-12-17 → 2025-12-18 (+1d) | 2026-01-21 → 2026-01-22 (+1d) |  | 240.49d → 241.01d |
| PG-31555 | Floor 21 | 2026-01-08 → 2026-01-09 (+1d) | 2026-02-13 → 2026-02-14 (+1d) |  | 221.49d → 222.01d |
| PG-31556 | Floor 22 |  | 2026-03-09 → 2026-03-10 (+1d) |  | 201.49d → 202.01d |
| PG-31557 | Floor 23 | 2026-02-20 → 2026-02-21 (+1d) | 2026-03-27 → 2026-03-28 (+1d) |  | 185.49d → 186.01d |
| 1.7.1.1.2 | **Common Areas** | 2025-10-20 → 2025-10-21 (+1d) |  |  |  |
| PG-31559 | Internal Electrical Works | 2025-10-20 → 2025-10-21 (+1d) | 2025-12-29 → 2025-12-30 (+1d) |  | 261.16d → 261.68d |
| PG-31560 | Internal FPS Works | 2025-10-20 → 2025-10-21 (+1d) | 2025-12-29 → 2025-12-30 (+1d) |  | 260.83d → 261.35d |
| PG-31561 | Data & Communication Works | 2025-10-25 → 2025-10-27 (+2d) | 2026-01-03 → 2026-01-05 (+2d) |  | 255.83d → 256.35d |
| PG-31562 | Internal PHE Works including OHT | 2025-12-08 → 2025-12-09 (+1d) | 2026-02-18 → 2026-02-19 (+1d) |  | 217.83d → 218.35d |
| PG-31565 | Lightining Arrestor works |  | 2026-01-10 → 2026-01-12 (+2d) |  | 249.66d → 250.18d |
| PG-31564 | Electrical Panel Works | 2026-03-21 → 2026-03-23 (+2d) | 2026-05-30 → 2026-06-01 (+2d) |  | 131.16d → 131.68d |
| PG-31563 | Lift Works | 2026-04-18 → 2026-04-20 (+2d) | 2026-06-27 → 2026-06-29 (+2d) |  | 106.97d → 107.43d |
| 1.7.1.2 | **Tower 2** |  | 2026-10-15 → 2026-10-16 (+1d) |  |  |
| 1.7.1.2.1 | **Units** |  | 2026-05-04 → 2026-05-05 (+1d) |  |  |
| PG-31569 | Floor 3 |  |  | 58% → 77% | 457.33d → 458.76d |
| PG-31570 | Floor 4 | 2025-04-25 → 2025-04-26 A (+1d) | 2025-05-31 → 2025-05-30 (-1d) | 0% → 18% | 439.1d → 440.76d |
| PG-31573 | Floor 7 | 2025-06-05 → 2025-06-04 (-1d) |  |  | 405.33d → 407.59d |
| PG-31575 | Floor 9 |  | 2025-08-06 → 2025-08-07 (+1d) |  | 381.35d → 382.31d |
| PG-31576 | Floor 10 | 2025-07-18 → 2025-07-19 (+1d) | 2025-08-23 → 2025-08-25 (+2d) |  | 367.93d → 368.35d |
| PG-31577 | Floor 11 |  | 2025-09-06 → 2025-09-05 (-1d) |  | 355.75d → 357.91d |
| PG-31579 | Floor 13 | 2025-08-28 → 2025-08-29 (+1d) | 2025-10-01 → 2025-10-03 (+2d) |  | 334.57d → 334.93d |
| PG-31580 | Floor 14 | 2025-09-10 → 2025-09-11 (+1d) | 2025-10-15 → 2025-10-16 (+1d) |  | 323.57d → 323.93d |
| PG-31581 | Floor 15 | 2025-09-22 → 2025-09-23 (+1d) | 2025-10-27 → 2025-10-28 (+1d) |  | 313.57d → 313.93d |
| PG-31582 | Floor 16 | 2025-10-04 → 2025-10-06 (+2d) | 2025-11-10 → 2025-11-11 (+1d) |  | 303.24d → 303.6d |
| PG-31583 | Floor 17 | 2025-10-17 → 2025-10-18 (+1d) | 2025-11-22 → 2025-11-24 (+2d) |  | 292.24d → 292.6d |
| PG-31584 | Floor 18 | 2025-11-03 → 2025-11-04 (+1d) | 2025-12-05 → 2025-12-06 (+1d) |  | 280.4d → 280.76d |
| PG-31585 | Floor 19 | 2025-11-15 → 2025-11-17 (+2d) | 2025-12-18 → 2025-12-19 (+1d) |  | 269.4d → 269.76d |
| PG-31586 | Floor 20 | 2025-11-29 → 2025-12-01 (+2d) | 2026-01-01 → 2026-01-02 (+1d) |  | 257.4d → 257.76d |
| PG-31587 | Floor 21 | 2025-12-10 → 2025-12-12 (+2d) | 2026-01-13 → 2026-01-14 (+1d) |  | 247.74d → 248.1d |
| PG-31588 | Floor 22 | 2025-12-31 → 2026-01-01 (+1d) | 2026-02-06 → 2026-02-07 (+1d) |  | 227.9d → 228.26d |
| PG-31589 | Floor 23 | 2026-01-22 → 2026-01-23 (+1d) | 2026-02-27 → 2026-02-28 (+1d) |  | 209.9d → 210.26d |
| PG-31590 | Floor 24 | 2026-02-13 → 2026-02-16 (+3d) | 2026-03-21 → 2026-03-23 (+2d) |  | 190.74d → 191.1d |
| PG-31591 | Floor 25 | 2026-03-09 → 2026-03-10 (+1d) | 2026-04-14 → 2026-04-15 (+1d) |  | 171.24d → 171.6d |
| PG-31592 | Floor 26 | 2026-03-31 → 2026-04-01 (+1d) | 2026-05-04 → 2026-05-05 (+1d) |  | 153.4d → 153.76d |
| 1.7.1.2.2 | **Comman Areas** | 2025-11-28 → 2025-11-29 (+1d) | 2026-10-15 → 2026-10-16 (+1d) |  |  |
| PG-31595 | Internal FPS Works | 2025-11-28 → 2025-11-29 (+1d) | 2026-02-07 → 2026-02-09 (+2d) |  | 226.9d → 227.26d |
| PG-31596 | Data & Communication Works | 2025-12-05 → 2025-12-06 (+1d) | 2026-02-13 → 2026-02-14 (+1d) |  | 221.57d → 221.93d |
| PG-31597 | Internal PHE Works including OHT | 2026-01-15 → 2026-01-16 (+1d) | 2026-03-27 → 2026-03-28 (+1d) |  | 185.74d → 186.1d |
| PG-31600 | Lightining Arrestor works | 2026-01-30 → 2026-01-31 (+1d) | 2026-02-16 → 2026-02-17 (+1d) |  | 219.9d → 220.26d |
| PG-31599 | Electrical Panel Works | 2026-03-20 → 2026-03-21 (+1d) | 2026-04-23 → 2026-04-24 (+1d) |  | 162.57d → 162.93d |
| PG-31594 | Internal Electrical Works | 2026-03-31 → 2026-04-01 (+1d) | 2026-06-08 → 2026-06-09 (+1d) |  | 123.74d → 124.1d |
| PG-31598 | Lift Works | 2026-05-08 → 2026-05-09 (+1d) | 2026-06-11 → 2026-06-12 (+1d) |  | 120.4d → 120.76d |
| PG-31593 | Common Area Civil Works | 2026-08-04 → 2026-08-05 (+1d) | 2026-10-15 → 2026-10-16 (+1d) |  | 14.9d → 15.26d |
| 1.7.1.3 | **Tower 3** |  | 2026-11-02 → 2026-11-03 (+1d) |  |  |
| 1.7.1.3.1 | **Units** |  | 2026-08-18 → 2026-08-19 (+1d) |  |  |
| PG-31601 | Ground Floor |  | 2025-05-28 → 2025-05-30 (+2d) | 3% → 19% | 441.55d → 441.74d |
| PG-31604 | Floor 3 | 2025-06-10 → 2025-06-11 (+1d) | 2025-07-16 → 2025-07-17 (+1d) |  | 400.11d → 400.34d |
| PG-31607 | Floor 6 | 2025-07-22 → 2025-07-23 (+1d) | 2025-08-27 → 2025-08-28 (+1d) |  | 365.07d → 365.51d |
| PG-31608 | Floor 7 | 2025-08-06 → 2025-08-07 (+1d) |  |  | 351.8d → 352.79d |
| PG-31609 | Floor 8 | 2025-08-25 → 2025-08-26 (+1d) | 2025-09-29 → 2025-10-01 (+2d) |  |  |
| PG-31610 | Floor 9 | 2025-09-06 → 2025-09-08 (+2d) | 2025-10-13 → 2025-10-15 (+2d) |  |  |
| PG-31611 | Floor 10 | 2025-09-24 → 2025-09-25 (+1d) | 2025-10-30 → 2025-10-31 (+1d) |  |  |
| PG-31612 | Floor 11 | 2025-10-08 → 2025-10-09 (+1d) | 2025-11-12 → 2025-11-14 (+2d) |  |  |
| PG-31613 | Floor 12 | 2025-10-23 → 2025-10-24 (+1d) | 2025-11-28 → 2025-11-29 (+1d) |  |  |
| PG-31614 | Floor 13 | 2025-11-06 → 2025-11-07 (+1d) | 2025-12-10 → 2025-12-12 (+2d) |  |  |
| PG-31615 | Floor 14 | 2025-11-17 → 2025-11-18 (+1d) | 2025-12-20 → 2025-12-23 (+3d) |  |  |
| PG-31617 | Floor 16 | 2025-12-12 → 2025-12-13 (+1d) | 2026-01-15 → 2026-01-17 (+2d) |  |  |
| PG-31618 | Floor 17 | 2025-12-25 → 2025-12-26 (+1d) | 2026-01-29 → 2026-01-31 (+2d) |  |  |
| PG-31619 | Floor 18 | 2026-01-07 → 2026-01-08 (+1d) | 2026-02-11 → 2026-02-13 (+2d) |  |  |
| PG-31620 | Floor 19 | 2026-01-20 → 2026-01-21 (+1d) | 2026-02-24 → 2026-02-26 (+2d) |  |  |
| PG-31621 | Floor 20 | 2026-02-04 → 2026-02-05 (+1d) | 2026-03-10 → 2026-03-12 (+2d) |  |  |
| PG-31622 | Floor 21 | 2026-02-16 → 2026-02-18 (+2d) | 2026-03-23 → 2026-03-24 (+1d) |  |  |

| ID | Task | Start | Finish | Complete | Total float |
| --- | --- | --- | --- | --- | --- |
| PG-31623 | Floor 22 | 2026-02-28 → 2026-03-03 (+3d) | 2026-04-04 → 2026-04-06 (+2d) |  |  |
| PG-31624 | Floor 23 | 2026-03-13 → 2026-03-14 (+1d) | 2026-04-17 → 2026-04-18 (+1d) |  |  |
| PG-31625 | Floor 24 | 2026-03-26 → 2026-03-28 (+2d) | 2026-04-30 → 2026-05-01 (+1d) |  |  |
| PG-31626 | Floor 25 | 2026-04-17 → 2026-04-18 (+1d) | 2026-05-22 → 2026-05-25 (+3d) |  |  |
| PG-31627 | Floor 26 | 2026-05-11 → 2026-05-12 (+1d) | 2026-06-13 → 2026-06-16 (+3d) |  |  |
| PG-31628 | Floor 27 | 2026-06-01 → 2026-06-02 (+1d) | 2026-07-04 → 2026-07-07 (+3d) |  |  |
| PG-31629 | Floor 28 | 2026-06-22 → 2026-06-23 (+1d) | 2026-07-25 → 2026-07-28 (+3d) |  |  |
| PG-31630 | Floor 29 | 2026-07-13 → 2026-07-14 (+1d) | 2026-08-18 → 2026-08-19 (+1d) |  |  |
| 1.7.1.3.2 | **Common Areas** | 2026-03-13 → 2026-03-16 (+3d) | 2026-11-02 → 2026-11-03 (+1d) |  |  |
| PG-31632 | Internal Electrical Works | 2026-03-13 → 2026-03-16 (+3d) | 2026-04-01 → 2026-04-02 (+1d) |  |  |
| PG-31633 | Internal FPS Works | 2026-03-14 → 2026-03-16 (+2d) | 2026-04-01 → 2026-04-03 (+2d) |  |  |
| PG-31634 | Data & Communication Works | 2026-03-20 → 2026-03-21 (+1d) | 2026-04-06 → 2026-04-08 (+2d) |  |  |
| PG-31635 | Internal PHE Works including OHT | 2026-04-29 → 2026-04-30 (+1d) | 2026-05-21 → 2026-05-23 (+2d) |  |  |
| PG-31638 | Lightining Arrestor works | 2026-05-13 → 2026-05-14 (+1d) | 2026-05-21 → 2026-05-22 (+1d) |  |  |
| PG-31636 | Lift Works | 2026-08-07 → 2026-08-08 (+1d) | 2026-09-01 → 2026-09-03 (+2d) |  |  |
| PG-31631 | Common Area Civil Works | 2026-10-15 → 2026-10-16 (+1d) | 2026-11-02 → 2026-11-03 (+1d) |  |  |
| 1.7.1.4 | **Basements** |  | 2025-04-26 → 2025-04-28 (+2d) |  |  |
| PG-31640 | UBF |  | 2025-04-26 → 2025-04-28 A (+2d) | 87% → 100% | 468.42d → none |
| 1.7.9 | **Project InfraStructure Works ( Services & MEP )** |  | 2026-12-02 → 2026-12-04 (+2d) |  |  |
| 1.7.9.1 | **Transformer Works** | 2026-10-28 → 2026-10-30 (+2d) | 2026-12-02 → 2026-12-04 (+2d) |  |  |
| PG-32336 | Transformer 01 ( Building 01 & 02 ) | 2026-10-28 → 2026-10-30 (+2d) | 2026-12-02 → 2026-12-04 (+2d) |  |  |
| 1.8 | **Handing Over** |  | 2027-02-09 → 2027-02-11 (+2d) |  |  |
| PG-32378 | Building 1 | 2026-11-02 → 2026-11-03 (+1d) | 2026-11-12 → 2026-11-14 (+2d) |  |  |
| PG-32386 | Project InfraStructure Works ( Services & MEP ) | 2027-01-22 → 2027-01-23 (+1d) | 2027-02-09 → 2027-02-11 (+2d) |  |  |
| 1.10 | **Post Construction Statutory Approvals** |  | 2027-02-27 → 2027-03-01 (+2d) |  |  |
| PG-32396 | Pollution Control board clearance for STP |  | 2026-05-30 → 2026-06-01 (+2d) |  | 215.83d → 216.35d |
| PG-32394 | CEIG Approval - Lift | 2026-11-13 → 2026-11-14 (+1d) | 2026-12-17 → 2026-12-18 (+1d) |  |  |
| PG-32395 | Pollution Control board CFO | 2026-12-17 → 2026-12-18 (+1d) | 2027-01-22 → 2027-01-23 (+1d) |  |  |
| PG-32397 | Occupation Certificate | 2026-12-17 → 2026-12-18 (+1d) | 2027-02-27 → 2027-03-01 (+2d) |  |  |
| 2 | **Milestone** |  | 2027-02-27 → 2027-03-01 (+2d) |  |  |
| MS-1001 | Tower 1 - Structure Complete | 2025-08-16 → 2025-08-18 (+2d) | 2025-08-16 → 2025-08-18 (+2d) |  | 478.33d → 478.85d |
| MS-0105 | Electrical Panels Delivered | 2025-08-23 → 2025-08-25 (+2d) | 2025-08-23 → 2025-08-25 (+2d) |  | 472.66d → 473.18d |
| MS-2001 | Tower 2 - Structure Complete | 2025-09-24 → 2025-09-25 (+1d) | 2025-09-24 → 2025-09-25 (+1d) |  | 445.57d → 445.93d |
| MS-1002 | Tower 1 - MEP 1st Fix Complete | 2025-11-21 → 2025-11-22 (+1d) | 2025-11-21 → 2025-11-22 (+1d) |  | 397.33d → 397.85d |
| MS-0102 | Lifts Delivered to Site | 2025-11-24 → 2025-11-25 (+1d) | 2025-11-24 → 2025-11-25 (+1d) |  | 395.97d → 396.43d |
| MS-0107 | FRP Water Tanks Delivered | 2025-11-29 → 2025-12-01 (+2d) | 2025-11-29 → 2025-12-01 (+2d) |  | 390.66d → 391.18d |
| MS-2002 | Tower 2 - MEP 1st Fix Complete | 2025-12-26 → 2025-12-27 (+1d) | 2025-12-26 → 2025-12-27 (+1d) |  | 367.9d → 368.26d |
| MS-1003 | Tower 1 - MEP 2nd Fix Complete | 2025-12-26 → 2025-12-27 (+1d) | 2025-12-26 → 2025-12-27 (+1d) |  | 367.33d → 367.85d |
| MS-3001 | Tower 3 - Structure Complete | 2026-01-08 → 2026-01-09 (+1d) | 2026-01-08 → 2026-01-09 (+1d) |  |  |
| MS-1005 | Tower 1 - MEP Final Fix Complete | 2026-01-16 → 2026-01-17 (+1d) | 2026-01-16 → 2026-01-17 (+1d) |  | 349.83d → 350.35d |
| MS-2003 | Tower 2 - MEP 2nd Fix Complete | 2026-01-31 → 2026-02-02 (+2d) | 2026-01-31 → 2026-02-02 (+2d) |  | 338.07d → 338.43d |
| MS-2005 | Tower 2 - MEP Final Fix Complete | 2026-02-23 → 2026-02-24 (+1d) | 2026-02-23 → 2026-02-24 (+1d) |  | 318.74d → 319.1d |
| MS-2004 | Tower 2 - Internal Finishes Complete | 2026-03-19 → 2026-03-20 (+1d) | 2026-03-19 → 2026-03-20 (+1d) |  | 297.74d → 298.1d |
| MS-1006 | Tower 1 - Lifts Commissioned | 2026-03-27 → 2026-03-28 (+1d) | 2026-03-27 → 2026-03-28 (+1d) |  | 290.63d → 291.1d |
| MS-3002 | Tower 3 - MEP 1st Fix Complete | 2026-04-11 → 2026-04-13 (+2d) | 2026-04-11 → 2026-04-13 (+2d) |  |  |
| MS-2006 | Tower 2 - Lifts Commissioned | 2026-04-15 → 2026-04-16 (+1d) | 2026-04-15 → 2026-04-16 (+1d) |  | 274.24d → 274.6d |
| MS-1007 | Tower 1 - T&C Complete | 2026-04-18 → 2026-04-20 (+2d) | 2026-04-18 → 2026-04-20 (+2d) |  | 271.3d → 271.76d |
| MS-2007 | Tower 2 - T&C Complete | 2026-05-08 → 2026-05-09 (+1d) | 2026-05-08 → 2026-05-09 (+1d) |  | 254.74d → 255.1d |
| MS-3003 | Tower 3 - MEP 2nd Fix Complete | 2026-05-16 → 2026-05-18 (+2d) | 2026-05-16 → 2026-05-18 (+2d) |  |  |
| MS-3005 | Tower 3 - MEP Final Fix Complete | 2026-06-08 → 2026-06-10 (+2d) | 2026-06-08 → 2026-06-10 (+2d) |  |  |
| MS-3004 | Tower 3 - Internal Finishes Complete | 2026-07-01 → 2026-07-02 (+1d) | 2026-07-01 → 2026-07-02 (+1d) |  |  |
| MS-0103 | Transformer Delivered to Site | 2026-07-25 → 2026-07-28 (+3d) | 2026-07-25 → 2026-07-28 (+3d) |  |  |
| MS-3006 | Tower 3 - Lifts Commissioned | 2026-07-27 → 2026-07-29 (+2d) | 2026-07-27 → 2026-07-29 (+2d) |  |  |
| MS-9007 | Landscape Complete | 2026-08-06 → 2026-08-08 (+2d) | 2026-08-06 → 2026-08-08 (+2d) |  |  |
| MS-9002 | Transformer Charged | 2026-10-28 → 2026-10-30 (+2d) | 2026-10-28 → 2026-10-30 (+2d) |  |  |
| MS-9990 | Snagging Complete | 2026-12-02 → 2026-12-04 (+2d) | 2026-12-02 → 2026-12-04 (+2d) |  |  |
| MS-9999 | Project Finish / Handover | 2027-02-09 → 2027-02-11 (+2d) | 2027-02-09 → 2027-02-11 (+2d) |  |  |
| MS-9991 | Statutory Approvals Obtained | 2027-02-27 → 2027-03-01 (+2d) | 2027-02-27 → 2027-03-01 (+2d) |  |  |

## Version 9 (data date 2025-05-09, saved 2026-09-20, file APX_2025-05-09.xer)

Last finish 2027-03-06 → 2027-03-08 (+2d). Complete tasks 1147 → 1188.

Changed:

| ID | Task | Start | Finish | Complete | Total float |
| --- | --- | --- | --- | --- | --- |
| 1 | **Project Genisis** |  | 2027-03-06 → 2027-03-08 (+2d) |  |  |
| PG-32433 | Project Close Out | 2027-03-01 → 2027-03-02 (+1d) | 2027-03-06 → 2027-03-08 (+2d) |  |  |
| 1.2 | **Procurement and Materials requirement to Site** |  | 2026-07-28 → 2026-07-29 (+1d) |  |  |
| PG-10024 | Purchase Order works | 2025-05-05 A |  | 0% → 53% | 216.35d → 217.62d |
| 1.2.6 | **Electrical Panel Supply** |  | 2025-08-25 → 2025-08-23 (-2d) |  |  |
| PG-10032 | Materials Supply to site |  | 2025-08-25 → 2025-08-23 (-2d) |  | 140.35d → 141.95d |
| 1.2.8 | **Transformer Supply** | 2026-02-26 → 2026-02-27 (+1d) | 2026-07-28 → 2026-07-29 (+1d) |  |  |
| PG-10035 | Purchase Order works | 2026-02-26 → 2026-02-27 (+1d) | 2026-03-10 → 2026-03-11 (+1d) |  |  |
| PG-10036 | Materials Supply to site | 2026-06-23 → 2026-06-24 (+1d) | 2026-07-28 → 2026-07-29 (+1d) |  |  |
| 1.3 | **Construction** |  | 2026-10-16 → 2026-10-17 (+1d) |  |  |
| 1.3.1 | **Building 1** |  | 2026-10-16 → 2026-10-17 (+1d) |  |  |
| PG-10164 | Reinforcement |  | 2025-05-03 A | 70% → 100% | 45.35d → none |
| PG-10165 | Concrete | 2025-05-03 A | 2025-05-05 A | 0% → 100% | 45.35d → none |
| PG-10166 | Reinforcement | 2025-05-05 A |  | 0% → 97% | 45.35d → 46.95d |
| PG-10167 | Formwork | 2025-05-07 → 2025-05-08 A (+1d) |  | 0% → 50% | 45.35d → 46.95d |
| 1.3.1.1.3 | **MEP Internal works** |  | 2026-01-17 → 2026-01-16 (-1d) |  |  |
| 1.3.1.1.3.10 | **Floor 7** |  | 2025-05-02 → 2025-05-03 (+1d) |  |  |
| 1.3.1.1.3.10.1 | **PHE Works** |  | 2025-05-02 → 2025-05-03 (+1d) |  |  |
| PG-10270 | Final Fix - CP & Sanitary fixtures |  | 2025-05-02 → 2025-05-03 A (+1d) | 94% → 100% | 406.68d → none |
| 1.3.1.1.3.10.3 | **Electrical Works** |  | 2025-05-02 → 2025-05-03 (+1d) |  |  |
| PG-10276 | Final Fix - Electrical Fixtures |  | 2025-05-02 → 2025-05-03 A (+1d) | 98% → 100% | 406.68d → none |
| PG-10279 | Final Fix - CP & Sanitary fixtures | 2025-05-05 → 2025-05-06 A (+1d) |  | 0% → 35% | 393.07d → 394d |
| PG-10282 | Final Fix - Smoke & heat detectors, FHC , FAS Etc. | 2025-05-05 → 2025-05-06 A (+1d) |  | 0% → 31% | 393.07d → 393.67d |
| 1.3.1.1.3.12 | **Floor 9** |  | 2025-05-29 → 2025-05-31 (+2d) |  |  |
| 1.3.1.1.3.12.1 | **PHE Works** |  | 2025-05-29 → 2025-05-31 (+2d) |  |  |
| PG-10288 | Final Fix - CP & Sanitary fixtures | 2025-05-17 → 2025-05-20 (+3d) | 2025-05-29 → 2025-05-31 (+2d) |  | 382.65d → 382.03d |
| 1.3.1.1.3.12.2 | **Fire Fighting Works** |  | 2025-05-29 → 2025-05-31 (+2d) |  |  |
| PG-10290 | 2nd Fix - Sprinkler fixing & Pressure testing |  | 2025-05-08 → 2025-05-09 A (+1d) | 40% → 100% | 390.43d → none |
| PG-10291 | Final Fix - Smoke & heat detectors, FHC , FAS Etc. | 2025-05-17 → 2025-05-20 (+3d) | 2025-05-29 → 2025-05-31 (+2d) |  | 382.65d → 382.03d |
| 1.3.1.1.3.12.3 | **Electrical Works** |  | 2025-05-29 → 2025-05-31 (+2d) |  |  |
| PG-10293 | 2nd Fix - Wiring works |  | 2025-05-07 A | 80% → 100% | 395.93d → none |
| PG-10294 | Final Fix - Electrical Fixtures | 2025-05-23 → 2025-05-24 (+1d) | 2025-05-29 → 2025-05-31 (+2d) |  | 382.65d → 382.03d |
| 1.3.1.1.3.13 | **Floor 10** |  | 2025-06-13 → 2025-06-14 (+1d) |  |  |
| 1.3.1.1.3.13.1 | **PHE Works** |  | 2025-06-13 → 2025-06-14 (+1d) |  |  |
| PG-10297 | Final Fix - CP & Sanitary fixtures |  | 2025-06-13 → 2025-06-14 (+1d) |  | 368.68d → 369.25d |
| 1.3.1.1.3.13.2 | **Fire Fighting Works** |  | 2025-06-13 → 2025-06-14 (+1d) |  |  |
| PG-10300 | Final Fix - Smoke & heat detectors, FHC , FAS Etc. |  | 2025-06-13 → 2025-06-14 (+1d) |  | 368.68d → 369.25d |
| 1.3.1.1.3.13.3 | **Electrical Works** |  | 2025-06-13 → 2025-06-14 (+1d) |  |  |
| PG-10302 | 2nd Fix - Wiring works | 2025-05-06 → 2025-05-07 A (+1d) |  | 0% → 13% | 381.35d → 381.81d |
| PG-10303 | Final Fix - Electrical Fixtures |  | 2025-06-13 → 2025-06-14 (+1d) |  | 368.68d → 369.25d |
| PG-10313 | 1st Fix - Piping works |  | 2025-05-05 → 2025-05-06 A (+1d) | 76% → 100% | 348.51d → none |
| PG-10314 | 2nd Fix - diverter fixing & Pressure testing |  |  | 3% → 61% | 347.73d → 348.49d |
| PG-10316 | 1st Fix - Piping and Shaft hydrant works |  | 2025-05-14 → 2025-05-15 (+1d) | 9% → 60% | 395.52d → 396.08d |
| 1.3.1.1.3.16 | **Floor 13** |  | 2025-07-25 → 2025-07-23 (-2d) |  |  |
| 1.3.1.1.3.16.1 | **PHE Works** |  | 2025-07-25 → 2025-07-23 (-2d) |  |  |
| PG-10322 | 1st Fix - Piping works | 2025-05-05 A | 2025-05-19 → 2025-05-17 (-2d) | 0% → 38% | 335.18d → 337.48d |
| PG-10323 | 2nd Fix - diverter fixing & Pressure testing | 2025-05-14 → 2025-05-13 (-1d) | 2025-05-26 → 2025-05-24 (-2d) |  | 335.18d → 337.48d |
| PG-10324 | Final Fix - CP & Sanitary fixtures | 2025-07-14 → 2025-07-11 (-3d) | 2025-07-25 → 2025-07-23 (-2d) |  | 335.18d → 337.48d |
| 1.3.1.1.3.16.2 | **Fire Fighting Works** | 2025-05-14 → 2025-05-13 (-1d) | 2025-07-25 → 2025-07-23 (-2d) |  |  |
| PG-10325 | 1st Fix - Piping and Shaft hydrant works | 2025-05-14 → 2025-05-13 (-1d) | 2025-05-28 → 2025-05-27 (-1d) |  | 379.85d → 381.65d |
| PG-10326 | 2nd Fix - Sprinkler fixing & Pressure testing | 2025-06-20 → 2025-06-19 (-1d) | 2025-07-02 → 2025-07-01 (-1d) |  | 345.18d → 347.48d |
| PG-10327 | Final Fix - Smoke & heat detectors, FHC , FAS Etc. | 2025-07-14 → 2025-07-12 (-2d) | 2025-07-25 → 2025-07-23 (-2d) |  | 335.18d → 337.48d |
| 1.3.1.1.3.16.3 | **Electrical Works** |  | 2025-07-25 → 2025-07-23 (-2d) |  |  |
| PG-10328 | 1st Fix - GI wire pulling | 2025-05-05 A | 2025-05-14 → 2025-05-13 (-1d) | 0% → 51% | 379.85d → 381.65d |
| PG-10329 | 2nd Fix - Wiring works | 2025-06-13 → 2025-06-12 (-1d) | 2025-07-01 → 2025-06-30 (-1d) |  | 350.18d → 352.48d |
| PG-10330 | Final Fix - Electrical Fixtures | 2025-07-18 → 2025-07-17 (-1d) | 2025-07-25 → 2025-07-23 (-2d) |  | 335.18d → 337.48d |
| 1.3.1.1.3.17 | **Floor 14** |  | 2025-08-07 → 2025-08-06 (-1d) |  |  |
| 1.3.1.1.3.17.1 | **PHE Works** |  | 2025-08-07 → 2025-08-06 (-1d) |  |  |
| PG-10333 | Final Fix - CP & Sanitary fixtures |  | 2025-08-07 → 2025-08-06 (-1d) |  | 324.18d → 325.79d |
| 1.3.1.1.3.17.2 | **Fire Fighting Works** |  | 2025-08-07 → 2025-08-06 (-1d) |  |  |
| PG-10336 | Final Fix - Smoke & heat detectors, FHC , FAS Etc. |  | 2025-08-07 → 2025-08-06 (-1d) |  | 324.18d → 325.79d |
| 1.3.1.1.3.17.3 | **Electrical Works** |  | 2025-08-07 → 2025-08-06 (-1d) |  |  |
| PG-10339 | Final Fix - Electrical Fixtures |  | 2025-08-07 → 2025-08-06 (-1d) |  | 324.18d → 325.79d |
| 1.3.1.1.3.18 | **Floor 15** |  | 2025-08-20 → 2025-08-19 (-1d) |  |  |
| 1.3.1.1.3.18.1 | **PHE Works** |  | 2025-08-20 → 2025-08-19 (-1d) |  |  |
| PG-10342 | Final Fix - CP & Sanitary fixtures |  | 2025-08-20 → 2025-08-19 (-1d) |  | 314.18d → 315.79d |
| 1.3.1.1.3.18.2 | **Fire Fighting Works** |  | 2025-08-20 → 2025-08-19 (-1d) |  |  |
| PG-10345 | Final Fix - Smoke & heat detectors, FHC , FAS Etc. |  | 2025-08-20 → 2025-08-19 (-1d) |  | 314.18d → 315.79d |
| 1.3.1.1.3.18.3 | **Electrical Works** |  | 2025-08-20 → 2025-08-19 (-1d) |  |  |
| PG-10348 | Final Fix - Electrical Fixtures |  | 2025-08-20 → 2025-08-19 (-1d) |  | 314.18d → 315.79d |

| ID | Task | Start | Finish | Complete | Total float |
| --- | --- | --- | --- | --- | --- |
| 1.3.1.1.3.19 | **Floor 16** |  | 2025-09-02 → 2025-09-01 (-1d) |  |  |
| 1.3.1.1.3.19.1 | **PHE Works** |  | 2025-09-02 → 2025-09-01 (-1d) |  |  |
| PG-10351 | Final Fix - CP & Sanitary fixtures |  | 2025-09-02 → 2025-09-01 (-1d) |  | 303.18d → 304.79d |
| 1.3.1.1.3.19.2 | **Fire Fighting Works** |  | 2025-09-02 → 2025-09-01 (-1d) |  |  |
| PG-10354 | Final Fix - Smoke & heat detectors, FHC , FAS Etc. |  | 2025-09-02 → 2025-09-01 (-1d) |  | 303.18d → 304.79d |
| 1.3.1.1.3.19.3 | **Electrical Works** |  | 2025-09-02 → 2025-09-01 (-1d) |  |  |
| PG-10357 | Final Fix - Electrical Fixtures |  | 2025-09-02 → 2025-09-01 (-1d) |  | 303.18d → 304.79d |
| 1.3.1.1.3.20 | **Floor 17** |  | 2025-09-15 → 2025-09-13 (-2d) |  |  |
| 1.3.1.1.3.20.1 | **PHE Works** |  | 2025-09-15 → 2025-09-13 (-2d) |  |  |
| PG-10360 | Final Fix - CP & Sanitary fixtures |  | 2025-09-15 → 2025-09-13 (-2d) |  | 292.18d → 293.79d |
| 1.3.1.1.3.20.2 | **Fire Fighting Works** |  | 2025-09-15 → 2025-09-13 (-2d) |  |  |
| PG-10363 | Final Fix - Smoke & heat detectors, FHC , FAS Etc. |  | 2025-09-15 → 2025-09-13 (-2d) |  | 292.18d → 293.79d |
| 1.3.1.1.3.20.3 | **Electrical Works** |  | 2025-09-15 → 2025-09-13 (-2d) |  |  |
| PG-10366 | Final Fix - Electrical Fixtures |  | 2025-09-15 → 2025-09-13 (-2d) |  | 292.18d → 293.79d |
| 1.3.1.1.3.21 | **Floor 18** |  | 2025-09-27 → 2025-09-26 (-1d) |  |  |
| 1.3.1.1.3.21.1 | **PHE Works** |  | 2025-09-27 → 2025-09-26 (-1d) |  |  |
| PG-10369 | Final Fix - CP & Sanitary fixtures |  | 2025-09-27 → 2025-09-26 (-1d) |  | 281.18d → 282.79d |
| 1.3.1.1.3.21.2 | **Fire Fighting Works** |  | 2025-09-27 → 2025-09-26 (-1d) |  |  |
| PG-10372 | Final Fix - Smoke & heat detectors, FHC , FAS Etc. |  | 2025-09-27 → 2025-09-26 (-1d) |  | 281.18d → 282.79d |
| 1.3.1.1.3.21.3 | **Electrical Works** |  | 2025-09-27 → 2025-09-26 (-1d) |  |  |
| PG-10375 | Final Fix - Electrical Fixtures |  | 2025-09-27 → 2025-09-26 (-1d) |  | 281.18d → 282.79d |
| 1.3.1.1.3.22 | **Floor 19** |  | 2025-10-23 → 2025-10-22 (-1d) |  |  |
| 1.3.1.1.3.22.1 | **PHE Works** |  | 2025-10-23 → 2025-10-22 (-1d) |  |  |
| PG-10378 | Final Fix - CP & Sanitary fixtures |  | 2025-10-23 → 2025-10-22 (-1d) |  | 260.18d → 261.79d |
| 1.3.1.1.3.22.2 | **Fire Fighting Works** |  | 2025-10-23 → 2025-10-22 (-1d) |  |  |
| PG-10381 | Final Fix - Smoke & heat detectors, FHC , FAS Etc. |  | 2025-10-23 → 2025-10-22 (-1d) |  | 260.18d → 261.79d |
| 1.3.1.1.3.22.3 | **Electrical Works** |  | 2025-10-23 → 2025-10-22 (-1d) |  |  |
| PG-10384 | Final Fix - Electrical Fixtures |  | 2025-10-23 → 2025-10-22 (-1d) |  | 260.18d → 261.79d |
| 1.3.1.1.3.23 | **Floor 20** |  | 2025-11-14 → 2025-11-13 (-1d) |  |  |
| 1.3.1.1.3.23.1 | **PHE Works** |  | 2025-11-14 → 2025-11-13 (-1d) |  |  |
| PG-10387 | Final Fix - CP & Sanitary fixtures | 2025-11-03 → 2025-10-31 (-3d) | 2025-11-14 → 2025-11-13 (-1d) |  | 241.01d → 242.62d |
| 1.3.1.1.3.23.2 | **Fire Fighting Works** |  | 2025-11-14 → 2025-11-13 (-1d) |  |  |
| PG-10390 | Final Fix - Smoke & heat detectors, FHC , FAS Etc. | 2025-11-03 → 2025-10-31 (-3d) | 2025-11-14 → 2025-11-13 (-1d) |  | 241.01d → 242.62d |
| 1.3.1.1.3.23.3 | **Electrical Works** |  | 2025-11-14 → 2025-11-13 (-1d) |  |  |
| PG-10393 | Final Fix - Electrical Fixtures |  | 2025-11-14 → 2025-11-13 (-1d) |  | 241.01d → 242.62d |
| 1.3.1.1.3.24 | **Floor 21** |  | 2025-12-06 → 2025-12-05 (-1d) |  |  |
| 1.3.1.1.3.24.1 | **PHE Works** |  | 2025-12-06 → 2025-12-05 (-1d) |  |  |
| PG-10396 | Final Fix - CP & Sanitary fixtures |  | 2025-12-06 → 2025-12-05 (-1d) |  | 222.01d → 223.62d |
| 1.3.1.1.3.24.2 | **Fire Fighting Works** |  | 2025-12-06 → 2025-12-05 (-1d) |  |  |
| PG-10399 | Final Fix - Smoke & heat detectors, FHC , FAS Etc. |  | 2025-12-06 → 2025-12-05 (-1d) |  | 222.01d → 223.62d |
| 1.3.1.1.3.24.3 | **Electrical Works** |  | 2025-12-06 → 2025-12-05 (-1d) |  |  |
| PG-10402 | Final Fix - Electrical Fixtures |  | 2025-12-06 → 2025-12-05 (-1d) |  | 222.01d → 223.62d |
| 1.3.1.1.3.25 | **Floor 22** |  | 2025-12-29 → 2025-12-27 (-2d) |  |  |
| 1.3.1.1.3.25.1 | **PHE Works** |  | 2025-12-29 → 2025-12-27 (-2d) |  |  |
| PG-10405 | Final Fix - CP & Sanitary fixtures |  | 2025-12-29 → 2025-12-27 (-2d) |  | 202.01d → 203.62d |
| 1.3.1.1.3.25.2 | **Fire Fighting Works** |  | 2025-12-29 → 2025-12-27 (-2d) |  |  |
| PG-10408 | Final Fix - Smoke & heat detectors, FHC , FAS Etc. |  | 2025-12-29 → 2025-12-27 (-2d) |  | 202.01d → 203.62d |
| 1.3.1.1.3.25.3 | **Electrical Works** |  | 2025-12-29 → 2025-12-27 (-2d) |  |  |
| PG-10411 | Final Fix - Electrical Fixtures |  | 2025-12-29 → 2025-12-27 (-2d) |  | 202.01d → 203.62d |
| 1.3.1.1.3.26 | **Floor 23** |  | 2026-01-17 → 2026-01-16 (-1d) |  |  |
| 1.3.1.1.3.26.1 | **PHE Works** |  | 2026-01-17 → 2026-01-16 (-1d) |  |  |
| PG-10414 | Final Fix - CP & Sanitary fixtures | 2026-01-06 → 2026-01-05 (-1d) | 2026-01-17 → 2026-01-16 (-1d) |  | 186.01d → 187.62d |
| 1.3.1.1.3.26.2 | **Fire Fighting Works** |  | 2026-01-17 → 2026-01-16 (-1d) |  |  |
| PG-10417 | Final Fix - Smoke & heat detectors, FHC , FAS Etc. | 2026-01-06 → 2026-01-05 (-1d) | 2026-01-17 → 2026-01-16 (-1d) |  | 186.01d → 187.62d |
| 1.3.1.1.3.26.3 | **Electrical Works** |  | 2026-01-17 → 2026-01-16 (-1d) |  |  |
| PG-10420 | Final Fix - Electrical Fixtures | 2026-01-10 → 2026-01-09 (-1d) | 2026-01-17 → 2026-01-16 (-1d) |  | 186.01d → 187.62d |
| 1.3.1.1.4 | **Civil Finishes - Units** |  | 2026-01-13 → 2026-01-12 (-1d) |  |  |
| 1.3.1.1.4.11.1 | **Ceiling Finishing works - Civil** |  | 2025-05-07 → 2025-05-09 (+2d) |  |  |
| PG-10548 | Final Coat Painting |  | 2025-05-07 → 2025-05-09 A (+2d) | 73% → 100% | 429.1d → none |
| PG-10553 | Final Coat Painting |  |  | 66% → 98% | 393.07d → 394.06d |
| 1.3.1.1.4.12 | **Floor 9** |  | 2025-05-22 → 2025-05-24 (+2d) |  |  |
| 1.3.1.1.4.12.1 | **Ceiling Finishing works - Civil** |  | 2025-05-22 → 2025-05-23 (+1d) |  |  |
| PG-10562 | Final Coat Painting |  | 2025-05-22 → 2025-05-23 (+1d) | 3% → 32% | 417.32d → 417.56d |
| 1.3.1.1.4.12.2 | **Wall Finishing works - Civil** |  | 2025-05-22 → 2025-05-24 (+2d) |  |  |
| PG-10567 | Final Coat Painting |  | 2025-05-22 → 2025-05-24 (+2d) | 3% → 27% | 382.65d → 382.03d |
| 1.3.1.1.4.13 | **Floor 10** |  | 2025-06-06 → 2025-06-07 (+1d) |  |  |
| 1.3.1.1.4.13.1 | **Ceiling Finishing works - Civil** |  | 2025-06-06 → 2025-06-07 (+1d) |  |  |
| PG-10575 | Toilet False ceiling |  | 2025-05-05 A | 59% → 100% | 393.51d → none |
| PG-10576 | Final Coat Painting |  | 2025-06-06 → 2025-06-07 (+1d) |  | 405.35d → 405.92d |
| 1.3.1.1.4.13.2 | **Wall Finishing works - Civil** |  | 2025-06-06 → 2025-06-07 (+1d) |  |  |

| ID | Task | Start | Finish | Complete | Total float |
| --- | --- | --- | --- | --- | --- |
| PG-10578 | UPVC Windows & Sliding doors | 2025-05-05 A |  | 0% → 78% | 368.68d → 369.25d |
| PG-10581 | Final Coat Painting |  | 2025-06-06 → 2025-06-07 (+1d) |  | 368.68d → 369.25d |
| PG-10584 | Floor Tiling - Dry area |  | 2025-05-05 A | 64% → 100% | 368.68d → none |
| PG-10587 | Cornice fixing | 2025-05-05 A | 2025-05-08 → 2025-05-09 A (+1d) | 0% → 100% | 406.6d → none |
| PG-10593 | Dadoing - Wet area |  | 2025-05-07 → 2025-05-08 A (+1d) | 12% → 100% | 356.55d → none |
| PG-10597 | Floor Tiling - Wet area | 2025-05-07 → 2025-05-08 A (+1d) |  | 0% → 35% | 356.55d → 357.65d |
| PG-10600 | Gypsum Plastering |  | 2025-05-07 → 2025-05-08 A (+1d) | 30% → 100% | 396.07d → none |
| PG-10601 | Cornice fixing | 2025-05-16 → 2025-05-17 (+1d) | 2025-05-21 → 2025-05-22 (+1d) |  | 395.52d → 396.08d |
| 1.3.1.1.4.16 | **Floor 13** |  | 2025-07-21 → 2025-07-18 (-3d) |  |  |
| 1.3.1.1.4.16.1 | **Ceiling Finishing works - Civil** | 2025-05-14 → 2025-05-13 (-1d) | 2025-07-21 → 2025-07-18 (-3d) |  |  |
| PG-10614 | Gypsum Plastering | 2025-05-14 → 2025-05-13 (-1d) | 2025-05-21 → 2025-05-20 (-1d) |  | 379.85d → 381.65d |
| PG-10615 | Cornice fixing | 2025-05-30 → 2025-05-29 (-1d) | 2025-06-04 → 2025-06-03 (-1d) |  | 379.85d → 381.65d |
| PG-10617 | Toilet False ceiling | 2025-06-07 → 2025-06-06 (-1d) | 2025-06-12 → 2025-06-11 (-1d) |  | 361.68d → 363.98d |
| PG-10616 | Painting Works - Putty, Primer and 1st | 2025-06-18 → 2025-06-17 (-1d) | 2025-06-25 → 2025-06-24 (-1d) |  | 367.85d → 370.14d |
| PG-10618 | Final Coat Painting | 2025-06-25 → 2025-06-24 (-1d) | 2025-07-21 → 2025-07-18 (-3d) |  | 367.85d → 370.14d |
| 1.3.1.1.4.16.2 | **Wall Finishing works - Civil** |  | 2025-07-18 → 2025-07-16 (-2d) |  |  |
| PG-10619 | Balcony Railing Fixing works | 2025-05-05 A | 2025-05-09 A | 0% → 100% | 364.18d → none |
| PG-10621 | Dadoing - Wet area | 2025-05-26 → 2025-05-24 (-2d) | 2025-05-31 → 2025-05-30 (-1d) |  | 335.18d → 337.48d |
| PG-10620 | UPVC Windows & Sliding doors | 2025-06-12 → 2025-06-11 (-1d) | 2025-06-18 → 2025-06-17 (-1d) |  | 335.18d → 337.48d |
| PG-10622 | Painting Works - Putty, Primer and 1st | 2025-06-18 → 2025-06-17 (-1d) | 2025-06-25 → 2025-06-24 (-1d) |  | 335.18d → 337.48d |
| PG-10623 | Final Coat Painting | 2025-06-25 → 2025-06-24 (-1d) | 2025-07-18 → 2025-07-16 (-2d) |  | 335.18d → 337.48d |
| 1.3.1.1.4.16.3 | **Floor Finishing Works - Civil** |  | 2025-06-25 → 2025-06-24 (-1d) |  |  |
| PG-10624 | Waterproofing for sunken areas | 2025-05-05 A | 2025-05-08 A | 0% → 100% | 355.18d → none |
| PG-10625 | Floor Tiling - Wet area | 2025-05-31 → 2025-05-30 (-1d) | 2025-06-06 → 2025-06-05 (-1d) |  | 335.18d → 337.48d |
| PG-10626 | Floor Tiling - Dry area | 2025-06-06 → 2025-06-05 (-1d) | 2025-06-12 → 2025-06-11 (-1d) |  | 335.18d → 337.48d |
| PG-10627 | Wooden doors | 2025-06-19 → 2025-06-18 (-1d) | 2025-06-25 → 2025-06-24 (-1d) |  | 335.18d → 337.48d |
| 1.3.1.1.4.17 | **Floor 14** |  | 2025-07-31 → 2025-07-30 (-1d) |  |  |
| 1.3.1.1.4.17.1 | **Ceiling Finishing works - Civil** |  | 2025-07-31 → 2025-07-30 (-1d) |  |  |
| PG-10632 | Final Coat Painting |  | 2025-07-31 → 2025-07-30 (-1d) |  | 358.85d → 360.45d |
| 1.3.1.1.4.17.2 | **Wall Finishing works - Civil** |  | 2025-07-31 → 2025-07-30 (-1d) |  |  |
| PG-10637 | Final Coat Painting |  | 2025-07-31 → 2025-07-30 (-1d) |  | 324.18d → 325.79d |
| 1.3.1.1.4.18 | **Floor 15** |  | 2025-08-12 → 2025-08-11 (-1d) |  |  |
| 1.3.1.1.4.18.1 | **Ceiling Finishing works - Civil** |  | 2025-08-12 → 2025-08-11 (-1d) |  |  |
| PG-10646 | Final Coat Painting |  | 2025-08-12 → 2025-08-11 (-1d) |  | 348.85d → 350.45d |
| 1.3.1.1.4.18.2 | **Wall Finishing works - Civil** |  | 2025-08-12 → 2025-08-11 (-1d) |  |  |
| PG-10651 | Final Coat Painting |  | 2025-08-12 → 2025-08-11 (-1d) |  | 314.18d → 315.79d |
| 1.3.1.1.4.19 | **Floor 16** |  | 2025-08-26 → 2025-08-25 (-1d) |  |  |
| 1.3.1.1.4.19.1 | **Ceiling Finishing works - Civil** |  | 2025-08-26 → 2025-08-25 (-1d) |  |  |
| PG-10660 | Final Coat Painting |  | 2025-08-26 → 2025-08-25 (-1d) |  | 337.85d → 339.45d |
| 1.3.1.1.4.19.2 | **Wall Finishing works - Civil** |  | 2025-08-26 → 2025-08-25 (-1d) |  |  |
| PG-10665 | Final Coat Painting |  | 2025-08-26 → 2025-08-25 (-1d) |  | 303.18d → 304.79d |
| 1.3.1.1.4.20 | **Floor 17** |  | 2025-09-08 → 2025-09-06 (-2d) |  |  |
| 1.3.1.1.4.20.1 | **Ceiling Finishing works - Civil** |  | 2025-09-08 → 2025-09-06 (-2d) |  |  |
| PG-10674 | Final Coat Painting |  | 2025-09-08 → 2025-09-06 (-2d) |  | 326.85d → 328.45d |
| 1.3.1.1.4.20.2 | **Wall Finishing works - Civil** |  | 2025-09-08 → 2025-09-06 (-2d) |  |  |
| PG-10679 | Final Coat Painting |  | 2025-09-08 → 2025-09-06 (-2d) |  | 292.18d → 293.79d |
| 1.3.1.1.4.21 | **Floor 18** |  | 2025-09-20 → 2025-09-19 (-1d) |  |  |
| 1.3.1.1.4.21.1 | **Ceiling Finishing works - Civil** |  | 2025-09-20 → 2025-09-19 (-1d) |  |  |
| PG-10688 | Final Coat Painting |  | 2025-09-20 → 2025-09-19 (-1d) |  | 315.85d → 317.45d |
| 1.3.1.1.4.21.2 | **Wall Finishing works - Civil** |  | 2025-09-20 → 2025-09-19 (-1d) |  |  |
| PG-10693 | Final Coat Painting |  | 2025-09-20 → 2025-09-19 (-1d) |  | 281.18d → 282.79d |
| 1.3.1.1.4.22 | **Floor 19** |  | 2025-10-16 → 2025-10-15 (-1d) |  |  |
| 1.3.1.1.4.22.1 | **Ceiling Finishing works - Civil** |  | 2025-10-16 → 2025-10-15 (-1d) |  |  |
| PG-10702 | Final Coat Painting |  | 2025-10-16 → 2025-10-15 (-1d) |  | 294.85d → 296.45d |
| 1.3.1.1.4.22.2 | **Wall Finishing works - Civil** |  | 2025-10-16 → 2025-10-15 (-1d) |  |  |
| PG-10707 | Final Coat Painting |  | 2025-10-16 → 2025-10-15 (-1d) |  | 260.18d → 261.79d |
| 1.3.1.1.4.23 | **Floor 20** |  | 2025-11-07 → 2025-11-06 (-1d) |  |  |
| 1.3.1.1.4.23.1 | **Ceiling Finishing works - Civil** |  | 2025-11-07 → 2025-11-06 (-1d) |  |  |
| PG-10716 | Final Coat Painting |  | 2025-11-07 → 2025-11-06 (-1d) |  | 275.68d → 277.29d |
| 1.3.1.1.4.23.2 | **Wall Finishing works - Civil** |  | 2025-11-07 → 2025-11-06 (-1d) |  |  |
| PG-10721 | Final Coat Painting |  | 2025-11-07 → 2025-11-06 (-1d) |  | 241.01d → 242.62d |
| 1.3.1.1.4.24 | **Floor 21** |  | 2025-11-29 → 2025-11-28 (-1d) |  |  |
| 1.3.1.1.4.24.1 | **Ceiling Finishing works - Civil** |  | 2025-11-29 → 2025-11-28 (-1d) |  |  |
| PG-10730 | Final Coat Painting |  | 2025-11-29 → 2025-11-28 (-1d) |  | 256.68d → 258.29d |
| 1.3.1.1.4.24.2 | **Wall Finishing works - Civil** |  | 2025-11-29 → 2025-11-28 (-1d) |  |  |
| PG-10735 | Final Coat Painting |  | 2025-11-29 → 2025-11-28 (-1d) |  | 222.01d → 223.62d |
| 1.3.1.1.4.25 | **Floor 22** |  | 2025-12-22 → 2025-12-20 (-2d) |  |  |
| 1.3.1.1.4.25.1 | **Ceiling Finishing works - Civil** |  | 2025-12-22 → 2025-12-20 (-2d) |  |  |
| PG-10744 | Final Coat Painting |  | 2025-12-22 → 2025-12-20 (-2d) |  | 237.68d → 239.29d |
| 1.3.1.1.4.25.2 | **Wall Finishing works - Civil** |  | 2025-12-22 → 2025-12-20 (-2d) |  |  |

| ID | Task | Start | Finish | Complete | Total float |
| --- | --- | --- | --- | --- | --- |
| PG-10749 | Final Coat Painting |  | 2025-12-22 → 2025-12-20 (-2d) |  | 202.01d → 203.62d |
| 1.3.1.1.4.26 | **Floor 23** |  | 2026-01-13 → 2026-01-12 (-1d) |  |  |
| 1.3.1.1.4.26.1 | **Ceiling Finishing works - Civil** |  | 2026-01-13 → 2026-01-12 (-1d) |  |  |
| PG-10758 | Final Coat Painting |  | 2026-01-13 → 2026-01-12 (-1d) |  | 218.85d → 220.45d |
| 1.3.1.1.4.26.2 | **Wall Finishing works - Civil** |  | 2026-01-10 → 2026-01-09 (-1d) |  |  |
| PG-10763 | Final Coat Painting |  | 2026-01-10 → 2026-01-09 (-1d) |  | 186.01d → 187.62d |
| PG-10823 | Terrace Ring main & OHT Connection works |  | 2025-11-10 → 2025-11-08 (-2d) |  | 218.35d → 219.62d |
| PG-10824 | Commissioning | 2025-11-10 → 2025-11-08 (-2d) |  |  | 218.35d → 219.62d |
| PG-10825 | Lift Shaft Survey works |  | 2025-08-19 → 2025-08-18 (-1d) |  | 149.35d → 150.95d |
| 1.3.1.1.9.1 | **Civil Finishing Works** |  | 2025-09-04 → 2025-09-03 (-1d) |  |  |
| PG-10832 | Window, Louver and Door fixing works |  | 2025-08-16 → 2025-08-14 (-2d) |  | 131.68d → 133.29d |
| PG-10833 | Pedestal works | 2025-08-16 → 2025-08-14 (-2d) | 2025-08-28 → 2025-08-27 (-1d) |  | 131.68d → 133.29d |
| PG-10834 | Painting works | 2025-08-28 → 2025-08-27 (-1d) | 2025-09-04 → 2025-09-03 (-1d) |  | 131.68d → 133.29d |
| 1.3.1.1.9.2 | **Electrical Panel works** | 2025-09-04 → 2025-09-03 (-1d) |  |  |  |
| PG-10835 | Electrical Panel assembly works | 2025-09-04 → 2025-09-03 (-1d) | 2025-11-13 → 2025-11-12 (-1d) |  | 131.68d → 133.29d |
| PG-10836 | Electrical Panel installation and cable termination. | 2025-11-13 → 2025-11-12 (-1d) | 2026-01-22 → 2026-01-21 (-1d) |  | 131.68d → 133.29d |
| PG-10837 | Electrical Panel Testing and commissioning works | 2026-01-22 → 2026-01-21 (-1d) |  |  | 131.68d → 133.29d |
| PG-10838 | Flooring Works |  | 2026-03-18 → 2026-03-17 (-1d) |  | 45.35d → 46.95d |
| PG-10839 | Glass Door and False ceiling Works | 2026-03-18 → 2026-03-17 (-1d) | 2026-04-22 → 2026-04-21 (-1d) |  | 45.35d → 46.95d |
| PG-10841 | Canopy Works | 2026-03-18 → 2026-03-17 (-1d) | 2026-04-17 → 2026-04-16 (-1d) |  | 64.18d → 65.79d |
| PG-10840 | Painting Works | 2026-04-22 → 2026-04-21 (-1d) |  |  | 45.35d → 46.95d |
| 1.3.1.1.11 | **Lightening Arrester works** |  | 2025-12-16 → 2025-12-15 (-1d) |  |  |
| PG-10843 | Conductor will be lifted with RCC Works, But Terrace works will be done once Parapet Painting done |  | 2025-12-16 → 2025-12-15 (-1d) |  | 250.18d → 251.79d |
| 1.3.1.2.2.21 | **Floor 18** |  | 2025-05-05 → 2025-05-06 (+1d) |  |  |
| 1.3.1.2.2.21.2 | **Slab, Beams & Staircase** |  | 2025-05-05 → 2025-05-06 (+1d) |  |  |
| PG-10961 | Reinforcement |  | 2025-05-03 → 2025-05-05 A (+2d) | 46% → 100% | 15.26d → none |
| PG-10962 | Concrete | 2025-05-05 A | 2025-05-05 → 2025-05-06 A (+1d) | 0% → 100% | 15.26d → none |
| PG-10963 | Reinforcement | 2025-05-06 A |  | 0% → 81% | 15.26d → 16.49d |
| PG-10964 | Formwork | 2025-05-08 A |  | 0% → 29% | 15.26d → 16.4d |
| 1.3.1.2.2.22.2 | **Slab, Beams & Staircase** | 2025-05-12 → 2025-05-10 (-2d) |  |  |  |
| PG-10965 | Formwork | 2025-05-12 → 2025-05-10 (-2d) |  |  | 15.26d → 16.4d |
| PG-10966 | Reinforcement | 2025-05-14 → 2025-05-13 (-1d) |  |  | 15.26d → 16.4d |
| PG-10967 | Concrete | 2025-05-17 → 2025-05-16 (-1d) |  |  | 15.26d → 16.4d |
| 1.3.1.2.2.23 | **Floor 20** | 2025-05-19 → 2025-05-17 (-2d) |  |  |  |
| 1.3.1.2.2.23.1 | **Columns / shear walls** | 2025-05-19 → 2025-05-17 (-2d) |  |  |  |
| PG-10968 | Reinforcement | 2025-05-19 → 2025-05-17 (-2d) |  |  | 15.26d → 16.4d |
| PG-10969 | Formwork | 2025-05-21 → 2025-05-20 (-1d) |  |  | 15.26d → 16.4d |
| 1.3.1.2.2.23.2 | **Slab, Beams & Staircase** | 2025-05-24 → 2025-05-23 (-1d) |  |  |  |
| PG-10970 | Formwork | 2025-05-24 → 2025-05-23 (-1d) |  |  | 15.26d → 16.4d |
| PG-10971 | Reinforcement | 2025-05-27 → 2025-05-26 (-1d) |  |  | 15.26d → 16.4d |
| PG-10972 | Concrete | 2025-05-30 → 2025-05-29 (-1d) |  |  | 15.26d → 16.4d |
| 1.3.1.2.2.24 | **Floor 21** | 2025-05-31 → 2025-05-30 (-1d) |  |  |  |
| 1.3.1.2.2.24.1 | **Columns / shear walls** | 2025-05-31 → 2025-05-30 (-1d) |  |  |  |
| PG-10973 | Reinforcement | 2025-05-31 → 2025-05-30 (-1d) |  |  | 15.26d → 16.4d |
| PG-10974 | Formwork | 2025-06-03 → 2025-06-02 (-1d) |  |  | 15.26d → 16.4d |
| 1.3.1.2.2.24.2 | **Slab, Beams & Staircase** | 2025-06-06 → 2025-06-05 (-1d) |  |  |  |
| PG-10975 | Formwork | 2025-06-06 → 2025-06-05 (-1d) |  |  | 15.26d → 16.4d |
| PG-10976 | Reinforcement | 2025-06-09 → 2025-06-07 (-2d) |  |  | 15.26d → 16.4d |
| PG-10977 | Concrete | 2025-06-12 → 2025-06-11 (-1d) |  |  | 15.26d → 16.4d |
| 1.3.1.2.2.25 | **Floor 22** | 2025-06-13 → 2025-06-12 (-1d) |  |  |  |
| 1.3.1.2.2.25.1 | **Columns / shear walls** | 2025-06-13 → 2025-06-12 (-1d) |  |  |  |
| PG-10978 | Reinforcement | 2025-06-13 → 2025-06-12 (-1d) |  |  | 15.26d → 16.4d |
| PG-10979 | Formwork | 2025-06-16 → 2025-06-14 (-2d) |  |  | 15.26d → 16.4d |
| 1.3.1.2.2.25.2 | **Slab, Beams & Staircase** | 2025-06-19 → 2025-06-18 (-1d) |  |  |  |
| PG-10980 | Formwork | 2025-06-19 → 2025-06-18 (-1d) |  |  | 15.26d → 16.4d |
| PG-10981 | Reinforcement | 2025-06-21 → 2025-06-20 (-1d) |  |  | 15.26d → 16.4d |
| PG-10982 | Concrete | 2025-06-25 → 2025-06-24 (-1d) |  |  | 15.26d → 16.4d |
| 1.3.1.2.2.26 | **Floor 23** | 2025-06-26 → 2025-06-25 (-1d) |  |  |  |
| 1.3.1.2.2.26.1 | **Columns / shear walls** | 2025-06-26 → 2025-06-25 (-1d) |  |  |  |
| PG-10983 | Reinforcement | 2025-06-26 → 2025-06-25 (-1d) |  |  | 15.26d → 16.4d |
| PG-10984 | Formwork | 2025-06-28 → 2025-06-27 (-1d) |  |  | 15.26d → 16.4d |
| 1.3.1.2.2.26.2 | **Slab, Beams & Staircase** | 2025-07-02 → 2025-07-01 (-1d) |  |  |  |
| PG-10985 | Formwork | 2025-07-02 → 2025-07-01 (-1d) |  |  | 15.26d → 16.4d |
| PG-10986 | Reinforcement | 2025-07-04 → 2025-07-03 (-1d) |  |  | 15.26d → 16.4d |
| PG-10987 | Concrete | 2025-07-08 → 2025-07-07 (-1d) |  |  | 15.26d → 16.4d |
| 1.3.1.2.2.27 | **Floor 24** | 2025-07-09 → 2025-07-08 (-1d) |  |  |  |
| 1.3.1.2.2.27.1 | **Columns / shear walls** | 2025-07-09 → 2025-07-08 (-1d) |  |  |  |
| PG-10988 | Reinforcement | 2025-07-09 → 2025-07-08 (-1d) |  |  | 15.26d → 16.4d |
| PG-10989 | Formwork | 2025-07-11 → 2025-07-10 (-1d) |  |  | 15.26d → 16.4d |
| 1.3.1.2.2.27.2 | **Slab, Beams & Staircase** | 2025-07-15 → 2025-07-14 (-1d) |  |  |  |

| ID | Task | Start | Finish | Complete | Total float |
| --- | --- | --- | --- | --- | --- |
| PG-10990 | Formwork | 2025-07-15 → 2025-07-14 (-1d) |  |  | 15.26d → 16.4d |
| PG-10991 | Reinforcement | 2025-07-17 → 2025-07-16 (-1d) |  |  | 15.26d → 16.4d |
| PG-10992 | Concrete | 2025-07-21 → 2025-07-19 (-2d) |  |  | 15.26d → 16.4d |
| 1.3.1.2.2.28 | **Floor 25** | 2025-07-22 → 2025-07-21 (-1d) |  |  |  |
| 1.3.1.2.2.28.1 | **Columns / shear walls** | 2025-07-22 → 2025-07-21 (-1d) |  |  |  |
| PG-10993 | Reinforcement | 2025-07-22 → 2025-07-21 (-1d) |  |  | 15.26d → 16.4d |
| PG-10994 | Formwork | 2025-07-24 → 2025-07-23 (-1d) |  |  | 15.26d → 16.4d |
| 1.3.1.2.2.28.2 | **Slab, Beams & Staircase** | 2025-07-28 → 2025-07-26 (-2d) |  |  |  |
| PG-10995 | Formwork | 2025-07-28 → 2025-07-26 (-2d) |  |  | 15.26d → 16.4d |
| PG-10996 | Reinforcement | 2025-07-30 → 2025-07-29 (-1d) |  |  | 15.26d → 16.4d |
| PG-10997 | Concrete | 2025-08-02 → 2025-08-01 (-1d) |  |  | 15.26d → 16.4d |
| 1.3.1.2.2.29 | **Floor 26** | 2025-08-04 → 2025-08-02 (-2d) |  |  |  |
| 1.3.1.2.2.29.1 | **Columns / shear walls** | 2025-08-04 → 2025-08-02 (-2d) |  |  |  |
| PG-10998 | Reinforcement | 2025-08-04 → 2025-08-02 (-2d) |  |  | 15.26d → 16.4d |
| PG-10999 | Formwork | 2025-08-06 → 2025-08-05 (-1d) |  |  | 15.26d → 16.4d |
| 1.3.1.2.2.29.2 | **Slab, Beams & Staircase** | 2025-08-09 → 2025-08-08 (-1d) |  |  |  |
| PG-11000 | Formwork | 2025-08-09 → 2025-08-08 (-1d) |  |  | 15.26d → 16.4d |
| PG-11001 | Reinforcement | 2025-08-12 → 2025-08-11 (-1d) |  |  | 15.26d → 16.4d |
| PG-11002 | Concrete | 2025-08-16 → 2025-08-14 (-2d) |  |  | 15.26d → 16.4d |
| 1.3.1.2.2.30 | **Above Terrace Floor** | 2025-08-18 → 2025-08-16 (-2d) |  |  |  |
| 1.3.1.2.2.30.1 | **Columns / shear walls/Parapet Walls** | 2025-08-18 → 2025-08-16 (-2d) |  |  |  |
| PG-11003 | Reinforcement | 2025-08-18 → 2025-08-16 (-2d) |  |  | 120.76d → 121.9d |
| PG-11004 | Formwork | 2025-08-20 → 2025-08-19 (-1d) |  |  | 120.76d → 121.9d |
| PG-11005 | Concrete | 2025-08-26 → 2025-08-25 (-1d) |  |  | 120.76d → 121.9d |
| 1.3.1.2.2.30.2 | **Slab, Beams & Staircase Head rooms, Lift headroom** | 2025-08-23 → 2025-08-22 (-1d) |  |  |  |
| PG-11009 | Terrace Waterproofing and Protective finishing. | 2025-08-23 → 2025-08-22 (-1d) |  |  | 213.43d → 214.57d |
| PG-11091 | Final Fix - CP & Sanitary fixtures | 2025-05-08 → 2025-05-09 A (+1d) |  | 0% → 8% | 390.77d → 391.76d |
| 1.3.1.2.3.12 | **Floor 9** |  | 2025-05-29 → 2025-05-30 (+1d) |  |  |
| 1.3.1.2.3.12.1 | **PHE Works** |  | 2025-05-29 → 2025-05-30 (+1d) |  |  |
| PG-11100 | Final Fix - CP & Sanitary fixtures |  | 2025-05-29 → 2025-05-30 (+1d) |  | 382.31d → 383.21d |
| 1.3.1.2.3.12.2 | **Fire Fighting Works** |  | 2025-05-29 → 2025-05-30 (+1d) |  |  |
| PG-11102 | 2nd Fix - Sprinkler fixing & Pressure testing |  | 2025-05-08 → 2025-05-09 A (+1d) | 47% → 100% | 390.93d → none |
| PG-11103 | Final Fix - Smoke & heat detectors, FHC , FAS Etc. |  | 2025-05-29 → 2025-05-30 (+1d) |  | 382.31d → 383.21d |
| 1.3.1.2.3.12.3 | **Electrical Works** |  | 2025-05-29 → 2025-05-30 (+1d) |  |  |
| PG-11105 | 2nd Fix - Wiring works |  | 2025-05-08 → 2025-05-09 A (+1d) | 63% → 100% | 395.45d → none |
| PG-11106 | Final Fix - Electrical Fixtures |  | 2025-05-29 → 2025-05-30 (+1d) |  | 382.31d → 383.21d |
| 1.3.1.2.3.13 | **Floor 10** |  | 2025-06-14 → 2025-06-16 (+2d) |  |  |
| 1.3.1.2.3.13.1 | **PHE Works** |  | 2025-06-14 → 2025-06-16 (+2d) |  |  |
| PG-11109 | Final Fix - CP & Sanitary fixtures | 2025-06-03 → 2025-06-04 (+1d) | 2025-06-14 → 2025-06-16 (+2d) |  | 368.35d → 368.75d |
| 1.3.1.2.3.13.2 | **Fire Fighting Works** |  | 2025-06-14 → 2025-06-16 (+2d) |  |  |
| PG-11111 | 2nd Fix - Sprinkler fixing & Pressure testing | 2025-05-13 → 2025-05-14 (+1d) | 2025-05-24 → 2025-05-26 (+2d) |  | 376.18d → 376.58d |
| PG-11112 | Final Fix - Smoke & heat detectors, FHC , FAS Etc. | 2025-06-03 → 2025-06-04 (+1d) | 2025-06-14 → 2025-06-16 (+2d) |  | 368.35d → 368.75d |
| 1.3.1.2.3.13.3 | **Electrical Works** |  | 2025-06-14 → 2025-06-16 (+2d) |  |  |
| PG-11114 | 2nd Fix - Wiring works | 2025-05-08 → 2025-05-09 A (+1d) | 2025-05-23 → 2025-05-24 (+1d) | 0% → 3% | 382.01d → 382.42d |
| PG-11115 | Final Fix - Electrical Fixtures |  | 2025-06-14 → 2025-06-16 (+2d) |  | 368.35d → 368.75d |
| PG-11118 | Final Fix - CP & Sanitary fixtures | 2025-06-14 → 2025-06-16 (+2d) |  |  | 357.91d → 358.72d |
| PG-11121 | Final Fix - Smoke & heat detectors, FHC , FAS Etc. | 2025-06-14 → 2025-06-16 (+2d) |  |  | 357.91d → 358.72d |
| PG-11125 | 1st Fix - Piping works |  | 2025-05-06 → 2025-05-07 A (+1d) | 73% → 100% | 346.7d → none |
| PG-11126 | 2nd Fix - diverter fixing & Pressure testing |  | 2025-05-13 → 2025-05-14 (+1d) | 4% → 64% | 346.28d → 346.67d |
| PG-11127 | Final Fix - CP & Sanitary fixtures | 2025-06-30 → 2025-07-01 (+1d) |  |  | 346.28d → 346.67d |
| 1.3.1.2.3.15.2 | **Fire Fighting Works** | 2025-05-02 → 2025-05-03 (+1d) |  |  |  |
| PG-11128 | 1st Fix - Piping and Shaft hydrant works | 2025-05-02 → 2025-05-03 A (+1d) |  | 0% → 60% | 394.41d → 394.42d |
| PG-11129 | 2nd Fix - Sprinkler fixing & Pressure testing | 2025-06-07 → 2025-06-09 (+2d) | 2025-06-19 → 2025-06-20 (+1d) |  | 355.28d → 355.67d |
| PG-11130 | Final Fix - Smoke & heat detectors, FHC , FAS Etc. | 2025-06-30 → 2025-07-01 (+1d) |  |  | 346.28d → 346.67d |
| PG-11132 | 2nd Fix - Wiring works | 2025-06-03 → 2025-06-04 (+1d) | 2025-06-18 → 2025-06-19 (+1d) |  | 360.28d → 360.67d |
| PG-11133 | Final Fix - Electrical Fixtures | 2025-07-04 → 2025-07-05 (+1d) |  |  | 346.28d → 346.67d |
| 1.3.1.2.3.16 | **Floor 13** |  | 2025-07-25 → 2025-07-24 (-1d) |  |  |
| 1.3.1.2.3.16.1 | **PHE Works** |  | 2025-07-25 → 2025-07-24 (-1d) |  |  |
| PG-11134 | 1st Fix - Piping works | 2025-05-06 A |  | 0% → 29% | 334.93d → 336.42d |
| PG-11135 | 2nd Fix - diverter fixing & Pressure testing | 2025-05-15 → 2025-05-14 (-1d) |  |  | 334.93d → 336.42d |
| PG-11136 | Final Fix - CP & Sanitary fixtures | 2025-07-14 → 2025-07-12 (-2d) | 2025-07-25 → 2025-07-24 (-1d) |  | 334.93d → 336.42d |
| 1.3.1.2.3.16.2 | **Fire Fighting Works** |  | 2025-07-25 → 2025-07-24 (-1d) |  |  |
| PG-11138 | 2nd Fix - Sprinkler fixing & Pressure testing | 2025-06-21 → 2025-06-20 (-1d) |  |  | 343.93d → 345.42d |
| PG-11139 | Final Fix - Smoke & heat detectors, FHC , FAS Etc. | 2025-07-14 → 2025-07-12 (-2d) | 2025-07-25 → 2025-07-24 (-1d) |  | 334.93d → 336.42d |
| 1.3.1.2.3.16.3 | **Electrical Works** |  | 2025-07-25 → 2025-07-24 (-1d) |  |  |
| PG-11140 | 1st Fix - GI wire pulling | 2025-05-06 A |  | 0% → 42% | 381.93d → 383.15d |
| PG-11141 | 2nd Fix - Wiring works | 2025-06-17 → 2025-06-16 (-1d) |  |  | 349.93d → 351.42d |
| PG-11142 | Final Fix - Electrical Fixtures | 2025-07-19 → 2025-07-18 (-1d) | 2025-07-25 → 2025-07-24 (-1d) |  | 334.93d → 336.42d |
| 1.3.1.2.3.17 | **Floor 14** | 2025-05-19 → 2025-05-17 (-2d) |  |  |  |
| 1.3.1.2.3.17.1 | **PHE Works** | 2025-05-19 → 2025-05-17 (-2d) |  |  |  |

| ID | Task | Start | Finish | Complete | Total float |
| --- | --- | --- | --- | --- | --- |
| PG-11143 | 1st Fix - Piping works | 2025-05-19 → 2025-05-17 (-2d) |  |  | 323.93d → 325.07d |
| PG-11144 | 2nd Fix - diverter fixing & Pressure testing | 2025-05-28 → 2025-05-27 (-1d) |  |  | 323.93d → 325.07d |
| PG-11145 | Final Fix - CP & Sanitary fixtures | 2025-07-28 → 2025-07-26 (-2d) |  |  | 323.93d → 325.07d |
| PG-11147 | 2nd Fix - Sprinkler fixing & Pressure testing | 2025-07-04 → 2025-07-03 (-1d) |  |  | 333.93d → 335.07d |
| PG-11148 | Final Fix - Smoke & heat detectors, FHC , FAS Etc. | 2025-07-28 → 2025-07-26 (-2d) |  |  | 323.93d → 325.07d |
| 1.3.1.2.3.17.3 | **Electrical Works** | 2025-05-19 → 2025-05-17 (-2d) |  |  |  |
| PG-11149 | 1st Fix - GI wire pulling | 2025-05-19 → 2025-05-17 (-2d) |  |  | 369.93d → 371.07d |
| PG-11151 | Final Fix - Electrical Fixtures | 2025-08-01 → 2025-07-31 (-1d) |  |  | 323.93d → 325.07d |
| 1.3.1.2.3.18 | **Floor 15** | 2025-05-31 → 2025-05-30 (-1d) |  |  |  |
| 1.3.1.2.3.18.1 | **PHE Works** | 2025-05-31 → 2025-05-30 (-1d) |  |  |  |
| PG-11152 | 1st Fix - Piping works | 2025-05-31 → 2025-05-30 (-1d) |  |  | 162.93d → 164.07d |
| PG-11153 | 2nd Fix - diverter fixing & Pressure testing | 2025-06-10 → 2025-06-09 (-1d) |  |  | 162.93d → 164.07d |
| PG-11154 | Final Fix - CP & Sanitary fixtures | 2025-08-08 → 2025-08-07 (-1d) |  |  | 313.93d → 315.07d |
| PG-11156 | 2nd Fix - Sprinkler fixing & Pressure testing | 2025-07-17 → 2025-07-16 (-1d) |  |  | 322.93d → 324.07d |
| PG-11157 | Final Fix - Smoke & heat detectors, FHC , FAS Etc. | 2025-08-08 → 2025-08-07 (-1d) |  |  | 313.93d → 315.07d |
| 1.3.1.2.3.18.3 | **Electrical Works** | 2025-05-31 → 2025-05-30 (-1d) |  |  |  |
| PG-11158 | 1st Fix - GI wire pulling | 2025-05-31 → 2025-05-30 (-1d) |  |  | 360.6d → 361.73d |
| PG-11160 | Final Fix - Electrical Fixtures | 2025-08-13 → 2025-08-12 (-1d) |  |  | 313.93d → 315.07d |
| 1.3.1.2.3.19 | **Floor 16** | 2025-06-13 → 2025-06-12 (-1d) |  |  |  |
| 1.3.1.2.3.19.1 | **PHE Works** | 2025-06-13 → 2025-06-12 (-1d) |  |  |  |
| PG-11161 | 1st Fix - Piping works | 2025-06-13 → 2025-06-12 (-1d) |  |  | 303.6d → 304.73d |
| PG-11162 | 2nd Fix - diverter fixing & Pressure testing | 2025-06-23 → 2025-06-21 (-2d) |  |  | 303.6d → 304.73d |
| PG-11165 | 2nd Fix - Sprinkler fixing & Pressure testing | 2025-07-30 → 2025-07-29 (-1d) |  |  | 310.76d → 311.9d |
| 1.3.1.2.3.19.3 | **Electrical Works** | 2025-06-13 → 2025-06-12 (-1d) |  |  |  |
| PG-11167 | 1st Fix - GI wire pulling | 2025-06-13 → 2025-06-12 (-1d) |  |  | 349.43d → 350.57d |
| PG-11169 | Final Fix - Electrical Fixtures | 2025-08-26 → 2025-08-25 (-1d) |  |  | 303.6d → 304.73d |
| 1.3.1.2.3.20 | **Floor 17** | 2025-06-26 → 2025-06-25 (-1d) |  |  |  |
| 1.3.1.2.3.20.1 | **PHE Works** | 2025-06-26 → 2025-06-25 (-1d) |  |  |  |
| PG-11170 | 1st Fix - Piping works | 2025-06-26 → 2025-06-25 (-1d) |  |  | 292.6d → 293.73d |
| PG-11171 | 2nd Fix - diverter fixing & Pressure testing | 2025-07-05 → 2025-07-04 (-1d) |  |  | 292.6d → 293.73d |
| PG-11174 | 2nd Fix - Sprinkler fixing & Pressure testing | 2025-08-12 → 2025-08-11 (-1d) |  |  | 299.76d → 300.9d |
| 1.3.1.2.3.20.3 | **Electrical Works** | 2025-06-26 → 2025-06-25 (-1d) |  |  |  |
| PG-11176 | 1st Fix - GI wire pulling | 2025-06-26 → 2025-06-25 (-1d) |  |  | 338.43d → 339.57d |
| PG-11178 | Final Fix - Electrical Fixtures | 2025-09-08 → 2025-09-06 (-2d) |  |  | 292.6d → 293.73d |
| 1.3.1.2.3.21 | **Floor 18** | 2025-07-09 → 2025-07-08 (-1d) |  |  |  |
| 1.3.1.2.3.21.1 | **PHE Works** | 2025-07-09 → 2025-07-08 (-1d) |  |  |  |
| PG-11179 | 1st Fix - Piping works | 2025-07-09 → 2025-07-08 (-1d) |  |  | 280.76d → 281.9d |
| PG-11180 | 2nd Fix - diverter fixing & Pressure testing | 2025-07-19 → 2025-07-18 (-1d) |  |  | 280.76d → 281.9d |
| 1.3.1.2.3.21.3 | **Electrical Works** | 2025-07-09 → 2025-07-08 (-1d) |  |  |  |
| PG-11185 | 1st Fix - GI wire pulling | 2025-07-09 → 2025-07-08 (-1d) |  |  | 328.43d → 329.57d |
| 1.3.1.2.3.22 | **Floor 19** | 2025-07-22 → 2025-07-21 (-1d) |  |  |  |
| 1.3.1.2.3.22.1 | **PHE Works** | 2025-07-22 → 2025-07-21 (-1d) |  |  |  |
| PG-11188 | 1st Fix - Piping works | 2025-07-22 → 2025-07-21 (-1d) |  |  | 269.76d → 270.9d |
| PG-11189 | 2nd Fix - diverter fixing & Pressure testing | 2025-08-01 → 2025-07-31 (-1d) |  |  | 269.76d → 270.9d |
| 1.3.1.2.3.22.3 | **Electrical Works** | 2025-07-22 → 2025-07-21 (-1d) |  |  |  |
| PG-11194 | 1st Fix - GI wire pulling | 2025-07-22 → 2025-07-21 (-1d) |  |  | 317.43d → 318.57d |
| 1.3.1.2.3.23 | **Floor 20** | 2025-08-04 → 2025-08-02 (-2d) |  |  |  |
| 1.3.1.2.3.23.1 | **PHE Works** | 2025-08-04 → 2025-08-02 (-2d) |  |  |  |
| PG-11197 | 1st Fix - Piping works | 2025-08-04 → 2025-08-02 (-2d) |  |  | 257.76d → 258.9d |
| PG-11198 | 2nd Fix - diverter fixing & Pressure testing | 2025-08-16 → 2025-08-14 (-2d) |  |  | 257.76d → 258.9d |
| 1.3.1.2.3.23.3 | **Electrical Works** | 2025-08-04 → 2025-08-02 (-2d) |  |  |  |
| PG-11203 | 1st Fix - GI wire pulling | 2025-08-04 → 2025-08-02 (-2d) |  |  | 305.6d → 306.73d |
| 1.3.1.2.3.24 | **Floor 21** | 2025-08-18 → 2025-08-16 (-2d) |  |  |  |
| 1.3.1.2.3.24.1 | **PHE Works** | 2025-08-18 → 2025-08-16 (-2d) |  |  |  |
| PG-11206 | 1st Fix - Piping works | 2025-08-18 → 2025-08-16 (-2d) |  |  | 15.26d → 16.4d |
| PG-11207 | 2nd Fix - diverter fixing & Pressure testing | 2025-08-26 → 2025-08-25 (-1d) |  |  | 248.1d → 249.23d |
| 1.3.1.2.3.24.2 | **Fire Fighting Works** | 2025-08-26 → 2025-08-25 (-1d) |  |  |  |
| PG-11209 | 1st Fix - Piping and Shaft hydrant works | 2025-08-26 → 2025-08-25 (-1d) |  |  | 295.76d → 296.9d |
| 1.3.1.2.3.24.3 | **Electrical Works** | 2025-08-18 → 2025-08-16 (-2d) |  |  |  |
| PG-11212 | 1st Fix - GI wire pulling | 2025-08-18 → 2025-08-16 (-2d) |  |  | 295.76d → 296.9d |
| PG-11219 | 2nd Fix - Sprinkler fixing & Pressure testing | 2025-10-24 → 2025-10-23 (-1d) |  |  | 238.26d → 239.4d |
| PG-11222 | 2nd Fix - Wiring works | 2025-10-17 → 2025-10-16 (-1d) |  |  | 243.26d → 244.4d |
| PG-11387 | Final Coat Painting |  |  | 46% → 75% | 423.96d → 424.94d |
| PG-11392 | Final Coat Painting |  |  | 50% → 81% | 390.77d → 391.76d |
| PG-11401 | Final Coat Painting |  |  | 3% → 36% | 416.9d → 417.89d |
| 1.3.1.2.4.12.2 | **Wall Finishing works - Civil** |  | 2025-05-22 → 2025-05-23 (+1d) |  |  |
| PG-11406 | Final Coat Painting |  | 2025-05-22 → 2025-05-23 (+1d) | 3% → 35% | 382.31d → 383.21d |
| PG-11414 | Toilet False ceiling |  | 2025-05-05 A | 54% → 100% | 393.18d → none |
| PG-11413 | Painting Works - Putty, Primer and 1st | 2025-05-10 → 2025-05-12 (+2d) | 2025-05-17 → 2025-05-19 (+2d) |  | 403.68d → 404.08d |
| PG-11415 | Final Coat Painting | 2025-05-17 → 2025-05-19 (+2d) |  |  | 403.68d → 404.08d |

| ID | Task | Start | Finish | Complete | Total float |
| --- | --- | --- | --- | --- | --- |
| 1.3.1.2.4.13.2 | **Wall Finishing works - Civil** |  | 2025-06-07 → 2025-06-09 (+2d) |  |  |
| PG-11417 | UPVC Windows & Sliding doors | 2025-05-05 → 2025-05-06 A (+1d) | 2025-05-10 → 2025-05-12 (+2d) | 0% → 71% | 368.35d → 368.75d |
| PG-11419 | Painting Works - Putty, Primer and 1st | 2025-05-10 → 2025-05-12 (+2d) | 2025-05-17 → 2025-05-19 (+2d) |  | 368.35d → 368.75d |
| PG-11420 | Final Coat Painting | 2025-05-17 → 2025-05-19 (+2d) | 2025-06-07 → 2025-06-09 (+2d) |  | 368.35d → 368.75d |
| 1.3.1.2.4.13.3 | **Floor Finishing Works - Civil** |  | 2025-05-17 → 2025-05-19 (+2d) |  |  |
| PG-11423 | Floor Tiling - Dry area |  | 2025-05-05 → 2025-05-06 A (+1d) | 56% → 100% | 368.35d → none |
| PG-11424 | Wooden doors | 2025-05-12 → 2025-05-13 (+1d) | 2025-05-17 → 2025-05-19 (+2d) |  | 368.35d → 368.75d |
| PG-11426 | Cornice fixing | 2025-05-05 A | 2025-05-08 → 2025-05-09 A (+1d) | 0% → 100% | 405.26d → none |
| PG-11432 | Dadoing - Wet area |  | 2025-05-06 → 2025-05-07 A (+1d) | 40% → 100% | 357.91d → none |
| PG-11436 | Floor Tiling - Wet area | 2025-05-06 → 2025-05-07 A (+1d) |  | 0% → 56% | 357.91d → 358.72d |
| PG-11439 | Gypsum Plastering |  | 2025-05-08 → 2025-05-09 A (+1d) | 16% → 100% | 394.41d → none |
| PG-11440 | Cornice fixing | 2025-05-17 → 2025-05-19 (+2d) |  |  | 394.41d → 394.42d |
| PG-11442 | Toilet False ceiling | 2025-05-26 → 2025-05-27 (+1d) | 2025-05-30 → 2025-05-31 (+1d) |  | 372.28d → 372.67d |
| PG-11441 | Painting Works - Putty, Primer and 1st | 2025-06-05 → 2025-06-06 (+1d) | 2025-06-12 → 2025-06-13 (+1d) |  | 381.78d → 382.17d |
| PG-11443 | Final Coat Painting | 2025-06-12 → 2025-06-13 (+1d) |  |  | 381.78d → 382.17d |
| PG-11446 | Dadoing - Wet area | 2025-05-13 → 2025-05-14 (+1d) | 2025-05-19 → 2025-05-20 (+1d) |  | 346.28d → 346.67d |
| PG-11445 | UPVC Windows & Sliding doors | 2025-05-30 → 2025-05-31 (+1d) | 2025-06-05 → 2025-06-06 (+1d) |  | 346.28d → 346.67d |
| PG-11447 | Painting Works - Putty, Primer and 1st | 2025-06-05 → 2025-06-06 (+1d) | 2025-06-12 → 2025-06-13 (+1d) |  | 346.28d → 346.67d |
| PG-11448 | Final Coat Painting | 2025-06-12 → 2025-06-13 (+1d) |  |  | 346.28d → 346.67d |
| 1.3.1.2.4.15.3 | **Floor Finishing Works - Civil** |  | 2025-06-12 → 2025-06-13 (+1d) |  |  |
| PG-11450 | Floor Tiling - Wet area | 2025-05-19 → 2025-05-20 (+1d) | 2025-05-24 → 2025-05-26 (+2d) |  | 346.28d → 346.67d |
| PG-11451 | Floor Tiling - Dry area | 2025-05-24 → 2025-05-26 (+2d) | 2025-05-30 → 2025-05-31 (+1d) |  | 346.28d → 346.67d |
| PG-11452 | Wooden doors | 2025-06-06 → 2025-06-07 (+1d) | 2025-06-12 → 2025-06-13 (+1d) |  | 346.28d → 346.67d |
| 1.3.1.2.4.16 | **Floor 13** |  | 2025-07-18 → 2025-07-17 (-1d) |  |  |
| 1.3.1.2.4.16.1 | **Ceiling Finishing works - Civil** |  | 2025-07-18 → 2025-07-17 (-1d) |  |  |
| PG-11456 | Toilet False ceiling | 2025-06-09 → 2025-06-07 (-2d) |  |  | 360.93d → 362.42d |
| PG-11455 | Painting Works - Putty, Primer and 1st | 2025-06-19 → 2025-06-18 (-1d) |  |  | 369.6d → 371.08d |
| PG-11457 | Final Coat Painting | 2025-06-26 → 2025-06-25 (-1d) | 2025-07-18 → 2025-07-17 (-1d) |  | 369.6d → 371.08d |
| 1.3.1.2.4.16.2 | **Wall Finishing works - Civil** |  | 2025-07-18 → 2025-07-17 (-1d) |  |  |
| PG-11458 | Balcony Railing Fixing works | 2025-05-06 A |  | 0% → 84% | 363.93d → 365.26d |
| PG-11460 | Dadoing - Wet area | 2025-05-27 → 2025-05-26 (-1d) |  |  | 334.93d → 336.42d |
| PG-11459 | UPVC Windows & Sliding doors | 2025-06-13 → 2025-06-12 (-1d) |  |  | 334.93d → 336.42d |
| PG-11461 | Painting Works - Putty, Primer and 1st | 2025-06-19 → 2025-06-18 (-1d) |  |  | 334.93d → 336.42d |
| PG-11462 | Final Coat Painting | 2025-06-26 → 2025-06-25 (-1d) | 2025-07-18 → 2025-07-17 (-1d) |  | 334.93d → 336.42d |
| PG-11463 | Waterproofing for sunken areas | 2025-05-06 A | 2025-05-08 → 2025-05-09 A (+1d) | 0% → 100% | 354.93d → none |
| PG-11464 | Floor Tiling - Wet area | 2025-06-02 → 2025-05-31 (-2d) |  |  | 334.93d → 336.42d |
| PG-11465 | Floor Tiling - Dry area | 2025-06-07 → 2025-06-06 (-1d) |  |  | 334.93d → 336.42d |
| PG-11466 | Wooden doors | 2025-06-20 → 2025-06-19 (-1d) |  |  | 334.93d → 336.42d |
| 1.3.1.2.4.17 | **Floor 14** | 2025-05-19 → 2025-05-17 (-2d) |  |  |  |
| PG-11470 | Toilet False ceiling | 2025-06-21 → 2025-06-20 (-1d) |  |  | 350.93d → 352.07d |
| PG-11469 | Painting Works - Putty, Primer and 1st | 2025-07-02 → 2025-07-01 (-1d) |  |  | 358.6d → 359.73d |
| PG-11471 | Final Coat Painting | 2025-07-09 → 2025-07-08 (-1d) |  |  | 358.6d → 359.73d |
| 1.3.1.2.4.17.2 | **Wall Finishing works - Civil** | 2025-05-19 → 2025-05-17 (-2d) |  |  |  |
| PG-11472 | Balcony Railing Fixing works | 2025-05-19 → 2025-05-17 (-2d) |  |  | 352.93d → 354.07d |
| PG-11474 | Dadoing - Wet area | 2025-06-09 → 2025-06-07 (-2d) |  |  | 323.93d → 325.07d |
| PG-11473 | UPVC Windows & Sliding doors | 2025-06-26 → 2025-06-25 (-1d) |  |  | 323.93d → 325.07d |
| PG-11475 | Painting Works - Putty, Primer and 1st | 2025-07-02 → 2025-07-01 (-1d) |  |  | 323.93d → 325.07d |
| PG-11476 | Final Coat Painting | 2025-07-09 → 2025-07-08 (-1d) |  |  | 323.93d → 325.07d |
| 1.3.1.2.4.17.3 | **Floor Finishing Works - Civil** | 2025-05-19 → 2025-05-17 (-2d) |  |  |  |
| PG-11477 | Waterproofing for sunken areas | 2025-05-19 → 2025-05-17 (-2d) |  |  | 343.93d → 345.07d |
| PG-11478 | Floor Tiling - Wet area | 2025-06-14 → 2025-06-13 (-1d) |  |  | 323.93d → 325.07d |
| PG-11479 | Floor Tiling - Dry area | 2025-06-20 → 2025-06-19 (-1d) |  |  | 323.93d → 325.07d |
| PG-11480 | Wooden doors | 2025-07-03 → 2025-07-02 (-1d) |  |  | 323.93d → 325.07d |
| 1.3.1.2.4.18 | **Floor 15** | 2025-05-31 → 2025-05-30 (-1d) |  |  |  |
| PG-11484 | Toilet False ceiling | 2025-07-04 → 2025-07-03 (-1d) |  |  | 339.93d → 341.07d |
| PG-11483 | Painting Works - Putty, Primer and 1st | 2025-07-15 → 2025-07-14 (-1d) |  |  | 348.43d → 349.57d |
| PG-11485 | Final Coat Painting | 2025-07-22 → 2025-07-21 (-1d) |  |  | 348.43d → 349.57d |
| 1.3.1.2.4.18.2 | **Wall Finishing works - Civil** | 2025-05-31 → 2025-05-30 (-1d) |  |  |  |
| PG-11486 | Balcony Railing Fixing works | 2025-05-31 → 2025-05-30 (-1d) |  |  | 191.93d → 193.07d |
| PG-11488 | Dadoing - Wet area | 2025-06-21 → 2025-06-20 (-1d) |  |  | 162.93d → 164.07d |
| PG-11487 | UPVC Windows & Sliding doors | 2025-07-09 → 2025-07-08 (-1d) |  |  | 162.93d → 164.07d |
| PG-11489 | Painting Works - Putty, Primer and 1st | 2025-07-15 → 2025-07-14 (-1d) |  |  | 162.93d → 164.07d |
| PG-11490 | Final Coat Painting | 2025-07-22 → 2025-07-21 (-1d) |  |  | 313.93d → 315.07d |
| 1.3.1.2.4.18.3 | **Floor Finishing Works - Civil** | 2025-05-31 → 2025-05-30 (-1d) |  |  |  |
| PG-11491 | Waterproofing for sunken areas | 2025-05-31 → 2025-05-30 (-1d) |  |  | 182.93d → 184.07d |
| PG-11492 | Floor Tiling - Wet area | 2025-06-27 → 2025-06-26 (-1d) |  |  | 162.93d → 164.07d |
| PG-11493 | Floor Tiling - Dry area | 2025-07-03 → 2025-07-02 (-1d) |  |  | 162.93d → 164.07d |
| PG-11494 | Wooden doors | 2025-07-16 → 2025-07-15 (-1d) |  |  | 162.93d → 164.07d |
| 1.3.1.2.4.19 | **Floor 16** | 2025-06-13 → 2025-06-12 (-1d) |  |  |  |
| PG-11498 | Toilet False ceiling | 2025-07-17 → 2025-07-16 (-1d) |  |  | 327.76d → 328.9d |

| ID | Task | Start | Finish | Complete | Total float |
| --- | --- | --- | --- | --- | --- |
| PG-11497 | Painting Works - Putty, Primer and 1st | 2025-07-28 → 2025-07-26 (-2d) |  |  | 337.26d → 338.4d |
| PG-11499 | Final Coat Painting | 2025-08-04 → 2025-08-02 (-2d) |  |  | 337.26d → 338.4d |
| 1.3.1.2.4.19.2 | **Wall Finishing works - Civil** | 2025-06-13 → 2025-06-12 (-1d) |  |  |  |
| PG-11500 | Balcony Railing Fixing works | 2025-06-13 → 2025-06-12 (-1d) |  |  | 332.6d → 333.73d |
| PG-11502 | Dadoing - Wet area | 2025-07-04 → 2025-07-03 (-1d) |  |  | 303.6d → 304.73d |
| PG-11501 | UPVC Windows & Sliding doors | 2025-07-22 → 2025-07-21 (-1d) |  |  | 303.6d → 304.73d |
| PG-11503 | Painting Works - Putty, Primer and 1st | 2025-07-28 → 2025-07-26 (-2d) |  |  | 303.6d → 304.73d |
| PG-11504 | Final Coat Painting | 2025-08-04 → 2025-08-02 (-2d) |  |  | 303.6d → 304.73d |
| 1.3.1.2.4.19.3 | **Floor Finishing Works - Civil** | 2025-06-13 → 2025-06-12 (-1d) |  |  |  |
| PG-11505 | Waterproofing for sunken areas | 2025-06-13 → 2025-06-12 (-1d) |  |  | 323.6d → 324.73d |
| PG-11506 | Floor Tiling - Wet area | 2025-07-10 → 2025-07-09 (-1d) |  |  | 303.6d → 304.73d |
| PG-11507 | Floor Tiling - Dry area | 2025-07-16 → 2025-07-15 (-1d) |  |  | 303.6d → 304.73d |
| PG-11508 | Wooden doors | 2025-07-29 → 2025-07-28 (-1d) |  |  | 303.6d → 304.73d |
| 1.3.1.2.4.20 | **Floor 17** | 2025-06-26 → 2025-06-25 (-1d) |  |  |  |
| PG-11512 | Toilet False ceiling | 2025-07-30 → 2025-07-29 (-1d) |  |  | 316.76d → 317.9d |
| PG-11511 | Painting Works - Putty, Primer and 1st | 2025-08-09 → 2025-08-08 (-1d) |  |  | 326.26d → 327.4d |
| PG-11513 | Final Coat Painting | 2025-08-18 → 2025-08-16 (-2d) |  |  | 326.26d → 327.4d |
| 1.3.1.2.4.20.2 | **Wall Finishing works - Civil** | 2025-06-26 → 2025-06-25 (-1d) |  |  |  |
| PG-11514 | Balcony Railing Fixing works | 2025-06-26 → 2025-06-25 (-1d) |  |  | 321.6d → 322.73d |
| PG-11516 | Dadoing - Wet area | 2025-07-17 → 2025-07-16 (-1d) |  |  | 292.6d → 293.73d |
| PG-11515 | UPVC Windows & Sliding doors | 2025-08-04 → 2025-08-02 (-2d) |  |  | 292.6d → 293.73d |
| PG-11517 | Painting Works - Putty, Primer and 1st | 2025-08-09 → 2025-08-08 (-1d) |  |  | 292.6d → 293.73d |
| PG-11518 | Final Coat Painting | 2025-08-18 → 2025-08-16 (-2d) |  |  | 292.6d → 293.73d |
| 1.3.1.2.4.20.3 | **Floor Finishing Works - Civil** | 2025-06-26 → 2025-06-25 (-1d) |  |  |  |
| PG-11519 | Waterproofing for sunken areas | 2025-06-26 → 2025-06-25 (-1d) |  |  | 312.6d → 313.73d |
| PG-11520 | Floor Tiling - Wet area | 2025-07-23 → 2025-07-22 (-1d) |  |  | 292.6d → 293.73d |
| PG-11521 | Floor Tiling - Dry area | 2025-07-29 → 2025-07-28 (-1d) |  |  | 292.6d → 293.73d |
| PG-11522 | Wooden doors | 2025-08-11 → 2025-08-09 (-2d) |  |  | 292.6d → 293.73d |
| 1.3.1.2.4.21 | **Floor 18** | 2025-07-09 → 2025-07-08 (-1d) |  |  |  |
| 1.3.1.2.4.21.2 | **Wall Finishing works - Civil** | 2025-07-09 → 2025-07-08 (-1d) |  |  |  |
| PG-11528 | Balcony Railing Fixing works | 2025-07-09 → 2025-07-08 (-1d) |  |  | 309.43d → 310.57d |
| 1.3.1.2.4.21.3 | **Floor Finishing Works - Civil** | 2025-07-09 → 2025-07-08 (-1d) |  |  |  |
| PG-11533 | Waterproofing for sunken areas | 2025-07-09 → 2025-07-08 (-1d) |  |  | 300.43d → 301.57d |
| 1.3.1.2.4.22 | **Floor 19** | 2025-07-22 → 2025-07-21 (-1d) |  |  |  |
| 1.3.1.2.4.22.2 | **Wall Finishing works - Civil** | 2025-07-22 → 2025-07-21 (-1d) |  |  |  |
| PG-11542 | Balcony Railing Fixing works | 2025-07-22 → 2025-07-21 (-1d) |  |  | 298.43d → 299.57d |
| 1.3.1.2.4.22.3 | **Floor Finishing Works - Civil** | 2025-07-22 → 2025-07-21 (-1d) |  |  |  |
| PG-11547 | Waterproofing for sunken areas | 2025-07-22 → 2025-07-21 (-1d) |  |  | 289.43d → 290.57d |
| 1.3.1.2.4.23 | **Floor 20** | 2025-08-04 → 2025-08-02 (-2d) |  |  |  |
| PG-11552 | Cornice fixing | 2025-09-01 → 2025-08-30 (-2d) |  |  | 305.6d → 306.73d |
| 1.3.1.2.4.23.2 | **Wall Finishing works - Civil** | 2025-08-04 → 2025-08-02 (-2d) |  |  |  |
| PG-11556 | Balcony Railing Fixing works | 2025-08-04 → 2025-08-02 (-2d) |  |  | 287.43d → 288.57d |
| 1.3.1.2.4.23.3 | **Floor Finishing Works - Civil** | 2025-08-04 → 2025-08-02 (-2d) |  |  |  |
| PG-11561 | Waterproofing for sunken areas | 2025-08-04 → 2025-08-02 (-2d) |  |  | 278.43d → 279.57d |
| 1.3.1.2.4.24 | **Floor 21** | 2025-08-18 → 2025-08-16 (-2d) |  |  |  |
| PG-11566 | Cornice fixing | 2025-09-11 → 2025-09-10 (-1d) |  |  | 295.76d → 296.9d |
| 1.3.1.2.4.24.2 | **Wall Finishing works - Civil** | 2025-08-18 → 2025-08-16 (-2d) |  |  |  |
| PG-11570 | Balcony Railing Fixing works | 2025-08-18 → 2025-08-16 (-2d) |  |  | 275.76d → 276.9d |
| 1.3.1.2.4.24.3 | **Floor Finishing Works - Civil** | 2025-08-18 → 2025-08-16 (-2d) |  |  |  |
| PG-11575 | Waterproofing for sunken areas | 2025-08-18 → 2025-08-16 (-2d) |  |  | 266.76d → 267.9d |
| PG-11671 | Shaft door opening finishing | 2025-10-10 → 2025-10-09 (-1d) |  |  | 120.76d → 121.9d |
| PG-11704 | Terrace Ring main & OHT Connection works | 2025-10-29 → 2025-10-28 (-1d) |  |  | 186.1d → 187.23d |
| PG-11705 | Commissioning | 2025-12-16 → 2025-12-15 (-1d) |  |  | 186.1d → 187.23d |
| 1.3.1.2.9 | **Electrical Panel Works** | 2025-07-22 → 2025-07-21 (-1d) |  |  |  |
| 1.3.1.2.9.1 | **Civil Finishing Works** | 2025-07-22 → 2025-07-21 (-1d) |  |  |  |
| PG-11712 | Wall Tie rod hole packing & Grinding works. | 2025-07-22 → 2025-07-21 (-1d) |  |  | 162.93d → 164.07d |
| PG-11715 | Painting works | 2025-08-27 → 2025-08-26 (-1d) |  |  | 162.93d → 164.07d |
| PG-11717 | Electrical Panel installation and cable termination. | 2025-11-13 → 2025-11-12 (-1d) |  |  | 162.93d → 164.07d |
| 1.3.1.3 | **Tower 3 ( 2B+G+29 ) TYP 4 Units - 118 Units** |  | 2026-10-16 → 2026-10-17 (+1d) |  |  |
| 1.3.1.3.2 | **Structure works** |  | 2026-01-09 → 2026-01-10 (+1d) |  |  |
| 1.3.1.3.2.16 | **Floor 13** |  | 2025-05-02 → 2025-05-03 (+1d) |  |  |
| 1.3.1.3.2.16.2 | **Slab, Beams & Staircase** |  | 2025-05-02 → 2025-05-03 (+1d) |  |  |
| PG-11818 | Concrete |  | 2025-05-02 → 2025-05-03 A (+1d) | 57% → 100% | 0d → none |
| 1.3.1.3.2.17 | **Floor 14** | 2025-05-02 → 2025-05-03 (+1d) | 2025-05-17 → 2025-05-19 (+2d) |  |  |
| 1.3.1.3.2.17.1 | **Columns / shear walls** | 2025-05-02 → 2025-05-03 (+1d) | 2025-05-12 → 2025-05-13 (+1d) |  |  |
| PG-11819 | Reinforcement | 2025-05-02 → 2025-05-03 A (+1d) | 2025-05-07 → 2025-05-08 A (+1d) | 0% → 100% | 0d → none |
| PG-11820 | Formwork | 2025-05-07 → 2025-05-08 A (+1d) | 2025-05-12 → 2025-05-13 (+1d) | 0% → 33% |  |
| 1.3.1.3.2.17.2 | **Slab, Beams & Staircase** | 2025-05-10 → 2025-05-12 (+2d) | 2025-05-17 → 2025-05-19 (+2d) |  |  |
| PG-11821 | Formwork | 2025-05-10 → 2025-05-12 (+2d) | 2025-05-14 → 2025-05-15 (+1d) |  |  |
| PG-11822 | Reinforcement | 2025-05-13 → 2025-05-14 (+1d) | 2025-05-16 → 2025-05-17 (+1d) |  |  |

| ID | Task | Start | Finish |
| --- | --- | --- | --- |
| PG-11823 | Concrete | 2025-05-16 → 2025-05-17 (+1d) | 2025-05-17 → 2025-05-19 (+2d) |
| 1.3.1.3.2.18 | **Floor 15** | 2025-05-17 → 2025-05-19 (+2d) | 2025-06-02 → 2025-06-03 (+1d) |
| 1.3.1.3.2.18.1 | **Columns / shear walls** | 2025-05-17 → 2025-05-19 (+2d) | 2025-05-27 → 2025-05-28 (+1d) |
| PG-11824 | Reinforcement | 2025-05-17 → 2025-05-19 (+2d) | 2025-05-22 → 2025-05-23 (+1d) |
| PG-11825 | Formwork | 2025-05-22 → 2025-05-23 (+1d) | 2025-05-27 → 2025-05-28 (+1d) |
| 1.3.1.3.2.18.2 | **Slab, Beams & Staircase** | 2025-05-26 → 2025-05-27 (+1d) | 2025-06-02 → 2025-06-03 (+1d) |
| PG-11826 | Formwork | 2025-05-26 → 2025-05-27 (+1d) | 2025-05-29 → 2025-05-30 (+1d) |
| PG-11827 | Reinforcement | 2025-05-28 → 2025-05-29 (+1d) | 2025-05-31 → 2025-06-02 (+2d) |
| PG-11828 | Concrete | 2025-05-31 → 2025-06-02 (+2d) | 2025-06-02 → 2025-06-03 (+1d) |
| 1.3.1.3.2.19 | **Floor 16** | 2025-06-02 → 2025-06-03 (+1d) | 2025-06-14 → 2025-06-16 (+2d) |
| 1.3.1.3.2.19.1 | **Columns / shear walls** | 2025-06-02 → 2025-06-03 (+1d) | 2025-06-09 → 2025-06-10 (+1d) |
| PG-11829 | Reinforcement | 2025-06-02 → 2025-06-03 (+1d) | 2025-06-06 → 2025-06-07 (+1d) |
| PG-11830 | Formwork | 2025-06-04 → 2025-06-05 (+1d) | 2025-06-09 → 2025-06-10 (+1d) |
| 1.3.1.3.2.19.2 | **Slab, Beams & Staircase** | 2025-06-07 → 2025-06-09 (+2d) | 2025-06-14 → 2025-06-16 (+2d) |
| PG-11831 | Formwork | 2025-06-07 → 2025-06-09 (+2d) | 2025-06-11 → 2025-06-12 (+1d) |
| PG-11832 | Reinforcement | 2025-06-10 → 2025-06-11 (+1d) | 2025-06-13 → 2025-06-14 (+1d) |
| PG-11833 | Concrete | 2025-06-13 → 2025-06-14 (+1d) | 2025-06-14 → 2025-06-16 (+2d) |
| 1.3.1.3.2.20 | **Floor 17** | 2025-06-14 → 2025-06-16 (+2d) | 2025-06-27 → 2025-06-28 (+1d) |
| 1.3.1.3.2.20.1 | **Columns / shear walls** | 2025-06-14 → 2025-06-16 (+2d) | 2025-06-21 → 2025-06-23 (+2d) |
| PG-11834 | Reinforcement | 2025-06-14 → 2025-06-16 (+2d) | 2025-06-19 → 2025-06-20 (+1d) |
| PG-11835 | Formwork | 2025-06-17 → 2025-06-18 (+1d) | 2025-06-21 → 2025-06-23 (+2d) |
| 1.3.1.3.2.20.2 | **Slab, Beams & Staircase** | 2025-06-20 → 2025-06-21 (+1d) | 2025-06-27 → 2025-06-28 (+1d) |
| PG-11836 | Formwork | 2025-06-20 → 2025-06-21 (+1d) | 2025-06-24 → 2025-06-25 (+1d) |
| PG-11837 | Reinforcement | 2025-06-23 → 2025-06-24 (+1d) | 2025-06-26 → 2025-06-27 (+1d) |
| PG-11838 | Concrete | 2025-06-26 → 2025-06-27 (+1d) | 2025-06-27 → 2025-06-28 (+1d) |
| 1.3.1.3.2.21 | **Floor 18** | 2025-06-27 → 2025-06-28 (+1d) | 2025-07-10 → 2025-07-11 (+1d) |
| 1.3.1.3.2.21.1 | **Columns / shear walls** | 2025-06-27 → 2025-06-28 (+1d) | 2025-07-04 → 2025-07-05 (+1d) |
| PG-11839 | Reinforcement | 2025-06-27 → 2025-06-28 (+1d) | 2025-07-02 → 2025-07-03 (+1d) |
| PG-11840 | Formwork | 2025-06-30 → 2025-07-01 (+1d) | 2025-07-04 → 2025-07-05 (+1d) |
| 1.3.1.3.2.21.2 | **Slab, Beams & Staircase** | 2025-07-03 → 2025-07-04 (+1d) | 2025-07-10 → 2025-07-11 (+1d) |
| PG-11841 | Formwork | 2025-07-03 → 2025-07-04 (+1d) | 2025-07-07 → 2025-07-08 (+1d) |
| PG-11842 | Reinforcement | 2025-07-05 → 2025-07-07 (+2d) | 2025-07-09 → 2025-07-10 (+1d) |
| PG-11843 | Concrete | 2025-07-09 → 2025-07-10 (+1d) | 2025-07-10 → 2025-07-11 (+1d) |
| 1.3.1.3.2.22 | **Floor 19** | 2025-07-10 → 2025-07-11 (+1d) | 2025-07-23 → 2025-07-24 (+1d) |
| 1.3.1.3.2.22.1 | **Columns / shear walls** | 2025-07-10 → 2025-07-11 (+1d) | 2025-07-17 → 2025-07-18 (+1d) |
| PG-11844 | Reinforcement | 2025-07-10 → 2025-07-11 (+1d) | 2025-07-15 → 2025-07-16 (+1d) |
| PG-11845 | Formwork | 2025-07-12 → 2025-07-14 (+2d) | 2025-07-17 → 2025-07-18 (+1d) |
| 1.3.1.3.2.22.2 | **Slab, Beams & Staircase** | 2025-07-16 → 2025-07-17 (+1d) | 2025-07-23 → 2025-07-24 (+1d) |
| PG-11846 | Formwork | 2025-07-16 → 2025-07-17 (+1d) | 2025-07-19 → 2025-07-21 (+2d) |
| PG-11847 | Reinforcement | 2025-07-18 → 2025-07-19 (+1d) | 2025-07-22 → 2025-07-23 (+1d) |
| PG-11848 | Concrete | 2025-07-22 → 2025-07-23 (+1d) | 2025-07-23 → 2025-07-24 (+1d) |
| 1.3.1.3.2.23 | **Floor 20** | 2025-07-23 → 2025-07-24 (+1d) | 2025-08-05 → 2025-08-06 (+1d) |
| 1.3.1.3.2.23.1 | **Columns / shear walls** | 2025-07-23 → 2025-07-24 (+1d) | 2025-07-30 → 2025-07-31 (+1d) |
| PG-11849 | Reinforcement | 2025-07-23 → 2025-07-24 (+1d) | 2025-07-28 → 2025-07-29 (+1d) |
| PG-11850 | Formwork | 2025-07-25 → 2025-07-26 (+1d) | 2025-07-30 → 2025-07-31 (+1d) |
| 1.3.1.3.2.23.2 | **Slab, Beams & Staircase** | 2025-07-29 → 2025-07-30 (+1d) | 2025-08-05 → 2025-08-06 (+1d) |
| PG-11851 | Formwork | 2025-07-29 → 2025-07-30 (+1d) | 2025-08-01 → 2025-08-02 (+1d) |
| PG-11852 | Reinforcement | 2025-07-31 → 2025-08-01 (+1d) | 2025-08-04 → 2025-08-05 (+1d) |
| PG-11853 | Concrete | 2025-08-04 → 2025-08-05 (+1d) | 2025-08-05 → 2025-08-06 (+1d) |
| 1.3.1.3.2.24 | **Floor 21** | 2025-08-05 → 2025-08-06 (+1d) | 2025-08-19 → 2025-08-20 (+1d) |
| 1.3.1.3.2.24.1 | **Columns / shear walls** | 2025-08-05 → 2025-08-06 (+1d) | 2025-08-12 → 2025-08-13 (+1d) |
| PG-11854 | Reinforcement | 2025-08-05 → 2025-08-06 (+1d) | 2025-08-09 → 2025-08-11 (+2d) |
| PG-11855 | Formwork | 2025-08-07 → 2025-08-08 (+1d) | 2025-08-12 → 2025-08-13 (+1d) |
| 1.3.1.3.2.24.2 | **Slab, Beams & Staircase** | 2025-08-11 → 2025-08-12 (+1d) | 2025-08-19 → 2025-08-20 (+1d) |
| PG-11856 | Formwork | 2025-08-11 → 2025-08-12 (+1d) | 2025-08-14 → 2025-08-16 (+2d) |
| PG-11857 | Reinforcement | 2025-08-13 → 2025-08-14 (+1d) | 2025-08-18 → 2025-08-19 (+1d) |
| PG-11858 | Concrete | 2025-08-18 → 2025-08-19 (+1d) | 2025-08-19 → 2025-08-20 (+1d) |
| 1.3.1.3.2.25 | **Floor 22** | 2025-08-19 → 2025-08-20 (+1d) | 2025-09-01 → 2025-09-02 (+1d) |
| 1.3.1.3.2.25.1 | **Columns / shear walls** | 2025-08-19 → 2025-08-20 (+1d) | 2025-08-26 → 2025-08-27 (+1d) |
| PG-11859 | Reinforcement | 2025-08-19 → 2025-08-20 (+1d) | 2025-08-23 → 2025-08-25 (+2d) |
| PG-11860 | Formwork | 2025-08-21 → 2025-08-22 (+1d) | 2025-08-26 → 2025-08-27 (+1d) |
| 1.3.1.3.2.25.2 | **Slab, Beams & Staircase** | 2025-08-25 → 2025-08-26 (+1d) | 2025-09-01 → 2025-09-02 (+1d) |
| PG-11861 | Formwork | 2025-08-25 → 2025-08-26 (+1d) | 2025-08-28 → 2025-08-29 (+1d) |
| PG-11862 | Reinforcement | 2025-08-27 → 2025-08-28 (+1d) | 2025-08-30 → 2025-09-01 (+2d) |
| PG-11863 | Concrete | 2025-08-30 → 2025-09-01 (+2d) | 2025-09-01 → 2025-09-02 (+1d) |
| 1.3.1.3.2.26 | **Floor 23** | 2025-09-01 → 2025-09-02 (+1d) | 2025-09-13 → 2025-09-15 (+2d) |
| 1.3.1.3.2.26.1 | **Columns / shear walls** | 2025-09-01 → 2025-09-02 (+1d) | 2025-09-08 → 2025-09-09 (+1d) |
| PG-11864 | Reinforcement | 2025-09-01 → 2025-09-02 (+1d) | 2025-09-05 → 2025-09-06 (+1d) |
| PG-11865 | Formwork | 2025-09-03 → 2025-09-04 (+1d) | 2025-09-08 → 2025-09-09 (+1d) |
| 1.3.1.3.2.26.2 | **Slab, Beams & Staircase** | 2025-09-06 → 2025-09-08 (+2d) | 2025-09-13 → 2025-09-15 (+2d) |

| ID | Task | Start | Finish | Complete | Total float |
| --- | --- | --- | --- | --- | --- |
| PG-11866 | Formwork | 2025-09-06 → 2025-09-08 (+2d) | 2025-09-10 → 2025-09-11 (+1d) |  |  |
| PG-11867 | Reinforcement | 2025-09-09 → 2025-09-10 (+1d) | 2025-09-12 → 2025-09-13 (+1d) |  |  |
| PG-11868 | Concrete | 2025-09-12 → 2025-09-13 (+1d) | 2025-09-13 → 2025-09-15 (+2d) |  |  |
| 1.3.1.3.2.27 | **Floor 24** | 2025-09-13 → 2025-09-15 (+2d) | 2025-09-26 → 2025-09-27 (+1d) |  |  |
| 1.3.1.3.2.27.1 | **Columns / shear walls** | 2025-09-13 → 2025-09-15 (+2d) | 2025-09-20 → 2025-09-22 (+2d) |  |  |
| PG-11869 | Reinforcement | 2025-09-13 → 2025-09-15 (+2d) | 2025-09-18 → 2025-09-19 (+1d) |  |  |
| PG-11870 | Formwork | 2025-09-16 → 2025-09-17 (+1d) | 2025-09-20 → 2025-09-22 (+2d) |  |  |
| 1.3.1.3.2.27.2 | **Slab, Beams & Staircase** | 2025-09-19 → 2025-09-20 (+1d) | 2025-09-26 → 2025-09-27 (+1d) |  |  |
| PG-11871 | Formwork | 2025-09-19 → 2025-09-20 (+1d) | 2025-09-23 → 2025-09-24 (+1d) |  |  |
| PG-11872 | Reinforcement | 2025-09-22 → 2025-09-23 (+1d) | 2025-09-25 → 2025-09-26 (+1d) |  |  |
| PG-11873 | Concrete | 2025-09-25 → 2025-09-26 (+1d) | 2025-09-26 → 2025-09-27 (+1d) |  |  |
| 1.3.1.3.2.28 | **Floor 25** | 2025-09-26 → 2025-09-27 (+1d) | 2025-10-10 → 2025-10-11 (+1d) |  |  |
| 1.3.1.3.2.28.1 | **Columns / shear walls** | 2025-09-26 → 2025-09-27 (+1d) | 2025-10-04 → 2025-10-06 (+2d) |  |  |
| PG-11874 | Reinforcement | 2025-09-26 → 2025-09-27 (+1d) | 2025-10-01 → 2025-10-03 (+2d) |  |  |
| PG-11875 | Formwork | 2025-09-29 → 2025-09-30 (+1d) | 2025-10-04 → 2025-10-06 (+2d) |  |  |
| 1.3.1.3.2.28.2 | **Slab, Beams & Staircase** | 2025-10-03 → 2025-10-04 (+1d) | 2025-10-10 → 2025-10-11 (+1d) |  |  |
| PG-11876 | Formwork | 2025-10-03 → 2025-10-04 (+1d) | 2025-10-07 → 2025-10-08 (+1d) |  |  |
| PG-11877 | Reinforcement | 2025-10-06 → 2025-10-07 (+1d) | 2025-10-09 → 2025-10-10 (+1d) |  |  |
| PG-11878 | Concrete | 2025-10-09 → 2025-10-10 (+1d) | 2025-10-10 → 2025-10-11 (+1d) |  |  |
| 1.3.1.3.2.29 | **Floor 26** | 2025-10-10 → 2025-10-11 (+1d) | 2025-10-23 → 2025-10-24 (+1d) |  |  |
| 1.3.1.3.2.29.1 | **Columns / shear walls** | 2025-10-10 → 2025-10-11 (+1d) | 2025-10-17 → 2025-10-18 (+1d) |  |  |
| PG-11879 | Reinforcement | 2025-10-10 → 2025-10-11 (+1d) | 2025-10-15 → 2025-10-16 (+1d) |  |  |
| PG-11880 | Formwork | 2025-10-13 → 2025-10-14 (+1d) | 2025-10-17 → 2025-10-18 (+1d) |  |  |
| 1.3.1.3.2.29.2 | **Slab, Beams & Staircase** | 2025-10-16 → 2025-10-17 (+1d) | 2025-10-23 → 2025-10-24 (+1d) |  |  |
| PG-11881 | Formwork | 2025-10-16 → 2025-10-17 (+1d) | 2025-10-20 → 2025-10-21 (+1d) |  |  |
| PG-11882 | Reinforcement | 2025-10-18 → 2025-10-20 (+2d) | 2025-10-22 → 2025-10-23 (+1d) |  |  |
| PG-11883 | Concrete | 2025-10-22 → 2025-10-23 (+1d) | 2025-10-23 → 2025-10-24 (+1d) |  |  |
| 1.3.1.3.2.30 | **Floor 27** | 2025-10-23 → 2025-10-24 (+1d) | 2025-11-06 → 2025-11-07 (+1d) |  |  |
| 1.3.1.3.2.30.1 | **Columns / shear walls** | 2025-10-23 → 2025-10-24 (+1d) | 2025-10-30 → 2025-10-31 (+1d) |  |  |
| PG-11884 | Reinforcement | 2025-10-23 → 2025-10-24 (+1d) | 2025-10-28 → 2025-10-29 (+1d) |  |  |
| PG-11885 | Formwork | 2025-10-25 → 2025-10-27 (+2d) | 2025-10-30 → 2025-10-31 (+1d) |  |  |
| 1.3.1.3.2.30.2 | **Slab, Beams & Staircase** | 2025-10-29 → 2025-10-30 (+1d) | 2025-11-06 → 2025-11-07 (+1d) |  |  |
| PG-11886 | Formwork | 2025-10-29 → 2025-10-30 (+1d) | 2025-11-03 → 2025-11-04 (+1d) |  |  |
| PG-11887 | Reinforcement | 2025-10-31 → 2025-11-03 (+3d) | 2025-11-05 → 2025-11-06 (+1d) |  |  |
| PG-11888 | Concrete | 2025-11-05 → 2025-11-06 (+1d) | 2025-11-06 → 2025-11-07 (+1d) |  |  |
| 1.3.1.3.2.31 | **Floor 28** | 2025-11-06 → 2025-11-07 (+1d) | 2025-11-19 → 2025-11-20 (+1d) |  |  |
| 1.3.1.3.2.31.1 | **Columns / shear walls** | 2025-11-06 → 2025-11-07 (+1d) | 2025-11-13 → 2025-11-14 (+1d) |  |  |
| PG-11889 | Reinforcement | 2025-11-06 → 2025-11-07 (+1d) | 2025-11-11 → 2025-11-12 (+1d) |  |  |
| PG-11890 | Formwork | 2025-11-08 → 2025-11-10 (+2d) | 2025-11-13 → 2025-11-14 (+1d) |  |  |
| 1.3.1.3.2.31.2 | **Slab, Beams & Staircase** | 2025-11-12 → 2025-11-13 (+1d) | 2025-11-19 → 2025-11-20 (+1d) |  |  |
| PG-11891 | Formwork | 2025-11-12 → 2025-11-13 (+1d) | 2025-11-15 → 2025-11-17 (+2d) |  |  |
| PG-11892 | Reinforcement | 2025-11-14 → 2025-11-15 (+1d) | 2025-11-18 → 2025-11-19 (+1d) |  |  |
| PG-11893 | Concrete | 2025-11-18 → 2025-11-19 (+1d) | 2025-11-19 → 2025-11-20 (+1d) |  |  |
| 1.3.1.3.2.32 | **Floor 29** | 2025-11-19 → 2025-11-20 (+1d) | 2025-12-02 → 2025-12-03 (+1d) |  |  |
| 1.3.1.3.2.32.1 | **Columns / shear walls** | 2025-11-19 → 2025-11-20 (+1d) | 2025-11-26 → 2025-11-27 (+1d) |  |  |
| PG-11894 | Reinforcement | 2025-11-19 → 2025-11-20 (+1d) | 2025-11-24 → 2025-11-25 (+1d) |  |  |
| PG-11895 | Formwork | 2025-11-21 → 2025-11-22 (+1d) | 2025-11-26 → 2025-11-27 (+1d) |  |  |
| 1.3.1.3.2.32.2 | **Slab, Beams & Staircase** | 2025-11-25 → 2025-11-26 (+1d) | 2025-12-02 → 2025-12-03 (+1d) |  |  |
| PG-11896 | Formwork | 2025-11-25 → 2025-11-26 (+1d) | 2025-11-28 → 2025-11-29 (+1d) |  |  |
| PG-11897 | Reinforcement | 2025-11-27 → 2025-11-28 (+1d) | 2025-12-01 → 2025-12-02 (+1d) |  |  |
| PG-11898 | Concrete | 2025-12-01 → 2025-12-02 (+1d) | 2025-12-02 → 2025-12-03 (+1d) |  |  |
| 1.3.1.3.2.33 | **Above Terrace Floor** | 2025-12-02 → 2025-12-03 (+1d) | 2026-01-09 → 2026-01-10 (+1d) |  |  |
| 1.3.1.3.2.33.1 | **Columns / shear walls/Parapet Walls** | 2025-12-02 → 2025-12-03 (+1d) | 2025-12-15 → 2025-12-16 (+1d) |  |  |
| PG-11899 | Reinforcement | 2025-12-02 → 2025-12-03 (+1d) | 2025-12-06 → 2025-12-08 (+2d) |  |  |
| PG-11900 | Formwork | 2025-12-04 → 2025-12-05 (+1d) | 2025-12-10 → 2025-12-11 (+1d) |  |  |
| PG-11901 | Concrete | 2025-12-10 → 2025-12-11 (+1d) | 2025-12-15 → 2025-12-16 (+1d) |  |  |
| 1.3.1.3.2.33.2 | **Slab, Beams & Staircase Head rooms, Lift headroom** | 2025-12-06 → 2025-12-08 (+2d) | 2026-01-09 → 2026-01-10 (+1d) |  |  |
| PG-11905 | Terrace Waterproofing and Protective finishing. | 2025-12-06 → 2025-12-08 (+2d) | 2026-01-09 → 2026-01-10 (+1d) |  |  |
| PG-11902 | Formwork | 2025-12-15 → 2025-12-16 (+1d) | 2025-12-20 → 2025-12-22 (+2d) |  |  |
| PG-11903 | Reinforcement | 2025-12-20 → 2025-12-22 (+2d) | 2025-12-26 → 2025-12-27 (+1d) |  |  |
| PG-11904 | Concrete | 2025-12-26 → 2025-12-27 (+1d) | 2025-12-29 → 2025-12-30 (+1d) |  |  |
| 1.3.1.3.3 | **MEP Internal works** |  | 2026-06-10 → 2026-06-11 (+1d) |  |  |
| 1.3.1.3.3.6 | **Floor 3** |  | 2025-05-08 → 2025-05-09 (+1d) |  |  |
| 1.3.1.3.3.6.1 | **PHE Works** |  | 2025-05-08 → 2025-05-09 (+1d) |  |  |
| PG-11942 | Final Fix - CP & Sanitary fixtures |  | 2025-05-08 → 2025-05-09 A (+1d) | 46% → 100% | 400.34d → none |
| 1.3.1.3.3.6.2 | **Fire Fighting Works** |  | 2025-05-07 → 2025-05-08 (+1d) |  |  |
| PG-11945 | Final Fix - Smoke & heat detectors, FHC , FAS Etc. |  | 2025-05-07 → 2025-05-08 A (+1d) | 51% → 100% | 400.51d → none |
| 1.3.1.3.3.6.3 | **Electrical Works** |  | 2025-05-07 → 2025-05-08 (+1d) |  |  |
| PG-11948 | Final Fix - Electrical Fixtures |  | 2025-05-07 → 2025-05-08 A (+1d) | 20% → 100% | 400.51d → none |
| 1.3.1.3.3.9 | **Floor 6** |  | 2025-06-18 → 2025-06-19 (+1d) |  |  |

| ID | Task | Start | Finish | Complete | Total float |
| --- | --- | --- | --- | --- | --- |
| 1.3.1.3.3.9.1 | **PHE Works** |  | 2025-06-18 → 2025-06-19 (+1d) |  |  |
| PG-11969 | Final Fix - CP & Sanitary fixtures | 2025-06-07 → 2025-06-09 (+2d) | 2025-06-18 → 2025-06-19 (+1d) |  | 365.51d → 365.92d |
| 1.3.1.3.3.9.2 | **Fire Fighting Works** |  | 2025-06-18 → 2025-06-19 (+1d) |  |  |
| PG-11971 | 2nd Fix - Sprinkler fixing & Pressure testing | 2025-05-15 → 2025-05-16 (+1d) |  |  | 375.51d → 375.92d |
| PG-11972 | Final Fix - Smoke & heat detectors, FHC , FAS Etc. | 2025-06-07 → 2025-06-09 (+2d) | 2025-06-18 → 2025-06-19 (+1d) |  | 365.51d → 365.92d |
| 1.3.1.3.3.9.3 | **Electrical Works** |  | 2025-06-18 → 2025-06-19 (+1d) |  |  |
| PG-11974 | 2nd Fix - Wiring works | 2025-05-09 → 2025-05-10 (+1d) |  |  | 380.51d → 380.92d |
| PG-11975 | Final Fix - Electrical Fixtures | 2025-06-12 → 2025-06-13 (+1d) | 2025-06-18 → 2025-06-19 (+1d) |  | 365.51d → 365.92d |
| PG-11977 | 2nd Fix - diverter fixing & Pressure testing |  | 2025-05-07 → 2025-05-08 A (+1d) | 59% → 100% | 352.79d → none |
| PG-11979 | 1st Fix - Piping and Shaft hydrant works |  | 2025-05-08 → 2025-05-09 A (+1d) | 54% → 100% | 399.24d → none |
| 1.3.1.3.3.11 | **Floor 8** | 2025-05-02 → 2025-05-03 (+1d) | 2025-07-22 → 2025-07-23 (+1d) |  |  |
| 1.3.1.3.3.11.1 | **PHE Works** | 2025-05-02 → 2025-05-03 (+1d) | 2025-07-22 → 2025-07-23 (+1d) |  |  |
| PG-11985 | 1st Fix - Piping works | 2025-05-02 → 2025-05-03 A (+1d) |  | 0% → 44% | 336.5d → 337.17d |
| PG-11987 | Final Fix - CP & Sanitary fixtures |  | 2025-07-22 → 2025-07-23 (+1d) |  | 336.5d → 337.17d |
| 1.3.1.3.3.11.2 | **Fire Fighting Works** | 2025-05-12 → 2025-05-10 (-2d) | 2025-07-22 → 2025-07-23 (+1d) |  |  |
| PG-11988 | 1st Fix - Piping and Shaft hydrant works | 2025-05-12 → 2025-05-10 (-2d) | 2025-05-26 → 2025-05-24 (-2d) |  | 382.5d → 383.61d |
| PG-11990 | Final Fix - Smoke & heat detectors, FHC , FAS Etc. |  | 2025-07-22 → 2025-07-23 (+1d) |  | 336.5d → 337.17d |
| 1.3.1.3.3.11.3 | **Electrical Works** | 2025-05-02 → 2025-05-03 (+1d) | 2025-07-22 → 2025-07-23 (+1d) |  |  |
| PG-11991 | 1st Fix - GI wire pulling | 2025-05-02 → 2025-05-03 A (+1d) | 2025-05-12 → 2025-05-10 (-2d) | 0% → 74% | 382.5d → 383.61d |
| PG-11992 | 2nd Fix - Wiring works | 2025-06-12 → 2025-06-13 (+1d) |  |  | 351.5d → 352.17d |
| PG-11993 | Final Fix - Electrical Fixtures |  | 2025-07-22 → 2025-07-23 (+1d) |  | 336.5d → 337.17d |
| 1.3.1.3.3.12 | **Floor 9** | 2025-05-17 → 2025-05-19 (+2d) | 2025-08-04 → 2025-08-05 (+1d) |  |  |
| 1.3.1.3.3.12.1 | **PHE Works** | 2025-05-17 → 2025-05-19 (+2d) | 2025-08-04 → 2025-08-05 (+1d) |  |  |
| PG-11994 | 1st Fix - Piping works | 2025-05-17 → 2025-05-19 (+2d) | 2025-05-31 → 2025-06-02 (+2d) |  |  |
| PG-11995 | 2nd Fix - diverter fixing & Pressure testing | 2025-05-27 → 2025-05-28 (+1d) | 2025-06-07 → 2025-06-09 (+2d) |  |  |
| PG-11996 | Final Fix - CP & Sanitary fixtures | 2025-07-24 → 2025-07-25 (+1d) | 2025-08-04 → 2025-08-05 (+1d) |  |  |
| 1.3.1.3.3.12.2 | **Fire Fighting Works** | 2025-05-27 → 2025-05-28 (+1d) | 2025-08-04 → 2025-08-05 (+1d) |  |  |
| PG-11997 | 1st Fix - Piping and Shaft hydrant works | 2025-05-27 → 2025-05-28 (+1d) | 2025-06-10 → 2025-06-11 (+1d) |  |  |
| PG-11998 | 2nd Fix - Sprinkler fixing & Pressure testing | 2025-07-03 → 2025-07-04 (+1d) | 2025-07-15 → 2025-07-16 (+1d) |  |  |
| PG-11999 | Final Fix - Smoke & heat detectors, FHC , FAS Etc. | 2025-07-24 → 2025-07-25 (+1d) | 2025-08-04 → 2025-08-05 (+1d) |  |  |
| 1.3.1.3.3.12.3 | **Electrical Works** | 2025-05-17 → 2025-05-19 (+2d) | 2025-08-04 → 2025-08-05 (+1d) |  |  |
| PG-12000 | 1st Fix - GI wire pulling | 2025-05-17 → 2025-05-19 (+2d) | 2025-05-27 → 2025-05-28 (+1d) |  |  |
| PG-12001 | 2nd Fix - Wiring works | 2025-06-27 → 2025-06-28 (+1d) | 2025-07-14 → 2025-07-15 (+1d) |  |  |
| PG-12002 | Final Fix - Electrical Fixtures | 2025-07-29 → 2025-07-30 (+1d) | 2025-08-04 → 2025-08-05 (+1d) |  |  |
| 1.3.1.3.3.13 | **Floor 10** | 2025-06-02 → 2025-06-03 (+1d) | 2025-08-21 → 2025-08-22 (+1d) |  |  |
| 1.3.1.3.3.13.1 | **PHE Works** | 2025-06-02 → 2025-06-03 (+1d) | 2025-08-21 → 2025-08-22 (+1d) |  |  |
| PG-12003 | 1st Fix - Piping works | 2025-06-02 → 2025-06-03 (+1d) | 2025-06-16 → 2025-06-17 (+1d) |  |  |
| PG-12004 | 2nd Fix - diverter fixing & Pressure testing | 2025-06-11 → 2025-06-12 (+1d) | 2025-06-23 → 2025-06-24 (+1d) |  |  |
| PG-12005 | Final Fix - CP & Sanitary fixtures | 2025-08-09 → 2025-08-11 (+2d) | 2025-08-21 → 2025-08-22 (+1d) |  |  |
| 1.3.1.3.3.13.2 | **Fire Fighting Works** | 2025-06-11 → 2025-06-12 (+1d) | 2025-08-21 → 2025-08-22 (+1d) |  |  |
| PG-12006 | 1st Fix - Piping and Shaft hydrant works | 2025-06-11 → 2025-06-12 (+1d) | 2025-06-25 → 2025-06-26 (+1d) |  |  |
| PG-12007 | 2nd Fix - Sprinkler fixing & Pressure testing | 2025-07-18 → 2025-07-19 (+1d) | 2025-07-30 → 2025-07-31 (+1d) |  |  |
| PG-12008 | Final Fix - Smoke & heat detectors, FHC , FAS Etc. | 2025-08-09 → 2025-08-11 (+2d) | 2025-08-21 → 2025-08-22 (+1d) |  |  |
| 1.3.1.3.3.13.3 | **Electrical Works** | 2025-06-02 → 2025-06-03 (+1d) | 2025-08-21 → 2025-08-22 (+1d) |  |  |
| PG-12009 | 1st Fix - GI wire pulling | 2025-06-02 → 2025-06-03 (+1d) | 2025-06-11 → 2025-06-12 (+1d) |  |  |
| PG-12010 | 2nd Fix - Wiring works | 2025-07-14 → 2025-07-15 (+1d) | 2025-07-29 → 2025-07-30 (+1d) |  |  |
| PG-12011 | Final Fix - Electrical Fixtures | 2025-08-14 → 2025-08-16 (+2d) | 2025-08-21 → 2025-08-22 (+1d) |  |  |
| 1.3.1.3.3.14 | **Floor 11** | 2025-06-14 → 2025-06-16 (+2d) | 2025-09-03 → 2025-09-04 (+1d) |  |  |
| 1.3.1.3.3.14.1 | **PHE Works** | 2025-06-14 → 2025-06-16 (+2d) | 2025-09-03 → 2025-09-04 (+1d) |  |  |
| PG-12012 | 1st Fix - Piping works | 2025-06-14 → 2025-06-16 (+2d) | 2025-06-28 → 2025-06-30 (+2d) |  |  |
| PG-12013 | 2nd Fix - diverter fixing & Pressure testing | 2025-06-24 → 2025-06-25 (+1d) | 2025-07-05 → 2025-07-07 (+2d) |  |  |
| PG-12014 | Final Fix - CP & Sanitary fixtures | 2025-08-23 → 2025-08-25 (+2d) | 2025-09-03 → 2025-09-04 (+1d) |  |  |
| 1.3.1.3.3.14.2 | **Fire Fighting Works** | 2025-06-24 → 2025-06-25 (+1d) | 2025-09-03 → 2025-09-04 (+1d) |  |  |
| PG-12015 | 1st Fix - Piping and Shaft hydrant works | 2025-06-24 → 2025-06-25 (+1d) | 2025-07-08 → 2025-07-09 (+1d) |  |  |
| PG-12016 | 2nd Fix - Sprinkler fixing & Pressure testing | 2025-07-31 → 2025-08-01 (+1d) | 2025-08-12 → 2025-08-13 (+1d) |  |  |
| PG-12017 | Final Fix - Smoke & heat detectors, FHC , FAS Etc. | 2025-08-23 → 2025-08-25 (+2d) | 2025-09-03 → 2025-09-04 (+1d) |  |  |
| 1.3.1.3.3.14.3 | **Electrical Works** | 2025-06-14 → 2025-06-16 (+2d) | 2025-09-03 → 2025-09-04 (+1d) |  |  |
| PG-12018 | 1st Fix - GI wire pulling | 2025-06-14 → 2025-06-16 (+2d) | 2025-06-24 → 2025-06-25 (+1d) |  |  |
| PG-12019 | 2nd Fix - Wiring works | 2025-07-26 → 2025-07-28 (+2d) | 2025-08-11 → 2025-08-12 (+1d) |  |  |
| PG-12020 | Final Fix - Electrical Fixtures | 2025-08-28 → 2025-08-29 (+1d) | 2025-09-03 → 2025-09-04 (+1d) |  |  |
| 1.3.1.3.3.15 | **Floor 12** | 2025-06-27 → 2025-06-28 (+1d) | 2025-09-19 → 2025-09-20 (+1d) |  |  |
| 1.3.1.3.3.15.1 | **PHE Works** | 2025-06-27 → 2025-06-28 (+1d) | 2025-09-19 → 2025-09-20 (+1d) |  |  |
| PG-12021 | 1st Fix - Piping works | 2025-06-27 → 2025-06-28 (+1d) | 2025-07-11 → 2025-07-12 (+1d) |  |  |
| PG-12022 | 2nd Fix - diverter fixing & Pressure testing | 2025-07-07 → 2025-07-08 (+1d) | 2025-07-18 → 2025-07-19 (+1d) |  |  |
| PG-12023 | Final Fix - CP & Sanitary fixtures | 2025-09-06 → 2025-09-08 (+2d) | 2025-09-19 → 2025-09-20 (+1d) |  |  |
| 1.3.1.3.3.15.2 | **Fire Fighting Works** | 2025-07-07 → 2025-07-08 (+1d) | 2025-09-19 → 2025-09-20 (+1d) |  |  |
| PG-12024 | 1st Fix - Piping and Shaft hydrant works | 2025-07-07 → 2025-07-08 (+1d) | 2025-07-21 → 2025-07-22 (+1d) |  |  |
| PG-12025 | 2nd Fix - Sprinkler fixing & Pressure testing | 2025-08-13 → 2025-08-14 (+1d) | 2025-08-26 → 2025-08-27 (+1d) |  |  |
| PG-12026 | Final Fix - Smoke & heat detectors, FHC , FAS Etc. | 2025-09-06 → 2025-09-08 (+2d) | 2025-09-19 → 2025-09-20 (+1d) |  |  |
| 1.3.1.3.3.15.3 | **Electrical Works** | 2025-06-27 → 2025-06-28 (+1d) | 2025-09-19 → 2025-09-20 (+1d) |  |  |

| ID | Task | Start | Finish |
| --- | --- | --- | --- |
| PG-12027 | 1st Fix - GI wire pulling | 2025-06-27 → 2025-06-28 (+1d) | 2025-07-07 → 2025-07-08 (+1d) |
| PG-12028 | 2nd Fix - Wiring works | 2025-08-07 → 2025-08-08 (+1d) | 2025-08-25 → 2025-08-26 (+1d) |
| PG-12029 | Final Fix - Electrical Fixtures | 2025-09-13 → 2025-09-15 (+2d) | 2025-09-19 → 2025-09-20 (+1d) |
| 1.3.1.3.3.16 | **Floor 13** | 2025-07-10 → 2025-07-11 (+1d) | 2025-10-03 → 2025-10-04 (+1d) |
| 1.3.1.3.3.16.1 | **PHE Works** | 2025-07-10 → 2025-07-11 (+1d) | 2025-10-03 → 2025-10-04 (+1d) |
| PG-12030 | 1st Fix - Piping works | 2025-07-10 → 2025-07-11 (+1d) | 2025-07-24 → 2025-07-25 (+1d) |
| PG-12031 | 2nd Fix - diverter fixing & Pressure testing | 2025-07-19 → 2025-07-21 (+2d) | 2025-07-31 → 2025-08-01 (+1d) |
| PG-12032 | Final Fix - CP & Sanitary fixtures | 2025-09-20 → 2025-09-22 (+2d) | 2025-10-03 → 2025-10-04 (+1d) |
| 1.3.1.3.3.16.2 | **Fire Fighting Works** | 2025-07-19 → 2025-07-21 (+2d) | 2025-10-03 → 2025-10-04 (+1d) |
| PG-12033 | 1st Fix - Piping and Shaft hydrant works | 2025-07-19 → 2025-07-21 (+2d) | 2025-08-02 → 2025-08-04 (+2d) |
| PG-12034 | 2nd Fix - Sprinkler fixing & Pressure testing | 2025-08-27 → 2025-08-28 (+1d) | 2025-09-08 → 2025-09-09 (+1d) |
| PG-12035 | Final Fix - Smoke & heat detectors, FHC , FAS Etc. | 2025-09-20 → 2025-09-22 (+2d) | 2025-10-03 → 2025-10-04 (+1d) |
| 1.3.1.3.3.16.3 | **Electrical Works** | 2025-07-10 → 2025-07-11 (+1d) | 2025-10-03 → 2025-10-04 (+1d) |
| PG-12036 | 1st Fix - GI wire pulling | 2025-07-10 → 2025-07-11 (+1d) | 2025-07-19 → 2025-07-21 (+2d) |
| PG-12037 | 2nd Fix - Wiring works | 2025-08-21 → 2025-08-22 (+1d) | 2025-09-06 → 2025-09-08 (+2d) |
| PG-12038 | Final Fix - Electrical Fixtures | 2025-09-26 → 2025-09-27 (+1d) | 2025-10-03 → 2025-10-04 (+1d) |
| 1.3.1.3.3.17 | **Floor 14** | 2025-07-23 → 2025-07-24 (+1d) | 2025-10-14 → 2025-10-15 (+1d) |
| 1.3.1.3.3.17.1 | **PHE Works** | 2025-07-23 → 2025-07-24 (+1d) | 2025-10-14 → 2025-10-15 (+1d) |
| PG-12039 | 1st Fix - Piping works | 2025-07-23 → 2025-07-24 (+1d) | 2025-08-06 → 2025-08-07 (+1d) |
| PG-12040 | 2nd Fix - diverter fixing & Pressure testing | 2025-08-01 → 2025-08-02 (+1d) | 2025-08-13 → 2025-08-14 (+1d) |
| PG-12041 | Final Fix - CP & Sanitary fixtures | 2025-10-03 → 2025-10-04 (+1d) | 2025-10-14 → 2025-10-15 (+1d) |
| 1.3.1.3.3.17.2 | **Fire Fighting Works** | 2025-08-01 → 2025-08-02 (+1d) | 2025-10-14 → 2025-10-15 (+1d) |
| PG-12042 | 1st Fix - Piping and Shaft hydrant works | 2025-08-01 → 2025-08-02 (+1d) | 2025-08-16 → 2025-08-18 (+2d) |
| PG-12043 | 2nd Fix - Sprinkler fixing & Pressure testing | 2025-09-09 → 2025-09-10 (+1d) | 2025-09-20 → 2025-09-22 (+2d) |
| PG-12044 | Final Fix - Smoke & heat detectors, FHC , FAS Etc. | 2025-10-03 → 2025-10-04 (+1d) | 2025-10-14 → 2025-10-15 (+1d) |
| 1.3.1.3.3.17.3 | **Electrical Works** | 2025-07-23 → 2025-07-24 (+1d) | 2025-10-14 → 2025-10-15 (+1d) |
| PG-12045 | 1st Fix - GI wire pulling | 2025-07-23 → 2025-07-24 (+1d) | 2025-08-01 → 2025-08-02 (+1d) |
| PG-12046 | 2nd Fix - Wiring works | 2025-09-02 → 2025-09-03 (+1d) | 2025-09-19 → 2025-09-20 (+1d) |
| PG-12047 | Final Fix - Electrical Fixtures | 2025-10-08 → 2025-10-09 (+1d) | 2025-10-14 → 2025-10-15 (+1d) |
| 1.3.1.3.3.18 | **Floor 15** | 2025-08-05 → 2025-08-06 (+1d) |  |
| 1.3.1.3.3.18.1 | **PHE Works** | 2025-08-05 → 2025-08-06 (+1d) |  |
| PG-12048 | 1st Fix - Piping works | 2025-08-05 → 2025-08-06 (+1d) | 2025-08-20 → 2025-08-21 (+1d) |
| PG-12049 | 2nd Fix - diverter fixing & Pressure testing | 2025-08-14 → 2025-08-16 (+2d) | 2025-08-27 → 2025-08-28 (+1d) |
| 1.3.1.3.3.18.2 | **Fire Fighting Works** | 2025-08-14 → 2025-08-16 (+2d) |  |
| PG-12051 | 1st Fix - Piping and Shaft hydrant works | 2025-08-14 → 2025-08-16 (+2d) | 2025-08-29 → 2025-08-30 (+1d) |
| 1.3.1.3.3.18.3 | **Electrical Works** | 2025-08-05 → 2025-08-06 (+1d) |  |
| PG-12054 | 1st Fix - GI wire pulling | 2025-08-05 → 2025-08-06 (+1d) | 2025-08-14 → 2025-08-16 (+2d) |
| 1.3.1.3.3.19 | **Floor 16** | 2025-08-19 → 2025-08-20 (+1d) | 2025-11-11 → 2025-11-12 (+1d) |
| 1.3.1.3.3.19.1 | **PHE Works** | 2025-08-19 → 2025-08-20 (+1d) | 2025-11-11 → 2025-11-12 (+1d) |
| PG-12057 | 1st Fix - Piping works | 2025-08-19 → 2025-08-20 (+1d) | 2025-09-02 → 2025-09-03 (+1d) |
| PG-12058 | 2nd Fix - diverter fixing & Pressure testing | 2025-08-28 → 2025-08-29 (+1d) | 2025-09-09 → 2025-09-10 (+1d) |
| PG-12059 | Final Fix - CP & Sanitary fixtures | 2025-10-28 → 2025-10-29 (+1d) | 2025-11-11 → 2025-11-12 (+1d) |
| 1.3.1.3.3.19.2 | **Fire Fighting Works** | 2025-08-28 → 2025-08-29 (+1d) | 2025-11-11 → 2025-11-12 (+1d) |
| PG-12060 | 1st Fix - Piping and Shaft hydrant works | 2025-08-28 → 2025-08-29 (+1d) | 2025-09-11 → 2025-09-12 (+1d) |
| PG-12061 | 2nd Fix - Sprinkler fixing & Pressure testing | 2025-10-06 → 2025-10-07 (+1d) | 2025-10-17 → 2025-10-18 (+1d) |
| PG-12062 | Final Fix - Smoke & heat detectors, FHC , FAS Etc. | 2025-10-28 → 2025-10-29 (+1d) | 2025-11-11 → 2025-11-12 (+1d) |
| 1.3.1.3.3.19.3 | **Electrical Works** | 2025-08-19 → 2025-08-20 (+1d) | 2025-11-11 → 2025-11-12 (+1d) |
| PG-12063 | 1st Fix - GI wire pulling | 2025-08-19 → 2025-08-20 (+1d) | 2025-08-28 → 2025-08-29 (+1d) |
| PG-12064 | 2nd Fix - Wiring works | 2025-09-30 → 2025-10-01 (+1d) | 2025-10-16 → 2025-10-17 (+1d) |
| PG-12065 | Final Fix - Electrical Fixtures | 2025-11-04 → 2025-11-05 (+1d) | 2025-11-11 → 2025-11-12 (+1d) |
| 1.3.1.3.3.20 | **Floor 17** | 2025-09-01 → 2025-09-02 (+1d) | 2025-11-22 → 2025-11-24 (+2d) |
| 1.3.1.3.3.20.1 | **PHE Works** | 2025-09-01 → 2025-09-02 (+1d) | 2025-11-22 → 2025-11-24 (+2d) |
| PG-12066 | 1st Fix - Piping works | 2025-09-01 → 2025-09-02 (+1d) | 2025-09-15 → 2025-09-16 (+1d) |
| PG-12067 | 2nd Fix - diverter fixing & Pressure testing | 2025-09-10 → 2025-09-11 (+1d) | 2025-09-22 → 2025-09-23 (+1d) |
| PG-12068 | Final Fix - CP & Sanitary fixtures | 2025-11-10 → 2025-11-11 (+1d) | 2025-11-22 → 2025-11-24 (+2d) |
| 1.3.1.3.3.20.2 | **Fire Fighting Works** | 2025-09-10 → 2025-09-11 (+1d) | 2025-11-22 → 2025-11-24 (+2d) |
| PG-12069 | 1st Fix - Piping and Shaft hydrant works | 2025-09-10 → 2025-09-11 (+1d) | 2025-09-24 → 2025-09-25 (+1d) |
| PG-12070 | 2nd Fix - Sprinkler fixing & Pressure testing | 2025-10-18 → 2025-10-20 (+2d) | 2025-10-30 → 2025-10-31 (+1d) |
| PG-12071 | Final Fix - Smoke & heat detectors, FHC , FAS Etc. | 2025-11-10 → 2025-11-11 (+1d) | 2025-11-22 → 2025-11-24 (+2d) |
| 1.3.1.3.3.20.3 | **Electrical Works** | 2025-09-01 → 2025-09-02 (+1d) | 2025-11-22 → 2025-11-24 (+2d) |
| PG-12072 | 1st Fix - GI wire pulling | 2025-09-01 → 2025-09-02 (+1d) | 2025-09-10 → 2025-09-11 (+1d) |
| PG-12073 | 2nd Fix - Wiring works | 2025-10-13 → 2025-10-14 (+1d) | 2025-10-29 → 2025-10-30 (+1d) |
| PG-12074 | Final Fix - Electrical Fixtures | 2025-11-15 → 2025-11-17 (+2d) | 2025-11-22 → 2025-11-24 (+2d) |
| 1.3.1.3.3.21 | **Floor 18** | 2025-09-13 → 2025-09-15 (+2d) | 2025-12-05 → 2025-12-06 (+1d) |
| 1.3.1.3.3.21.1 | **PHE Works** | 2025-09-13 → 2025-09-15 (+2d) | 2025-12-05 → 2025-12-06 (+1d) |
| PG-12075 | 1st Fix - Piping works | 2025-09-13 → 2025-09-15 (+2d) | 2025-09-27 → 2025-09-29 (+2d) |
| PG-12076 | 2nd Fix - diverter fixing & Pressure testing | 2025-09-23 → 2025-09-24 (+1d) | 2025-10-06 → 2025-10-07 (+1d) |
| PG-12077 | Final Fix - CP & Sanitary fixtures | 2025-11-22 → 2025-11-24 (+2d) | 2025-12-05 → 2025-12-06 (+1d) |
| 1.3.1.3.3.21.2 | **Fire Fighting Works** | 2025-09-23 → 2025-09-24 (+1d) | 2025-12-05 → 2025-12-06 (+1d) |
| PG-12078 | 1st Fix - Piping and Shaft hydrant works | 2025-09-23 → 2025-09-24 (+1d) | 2025-10-08 → 2025-10-09 (+1d) |

| ID | Task | Start | Finish |
| --- | --- | --- | --- |
| PG-12079 | 2nd Fix - Sprinkler fixing & Pressure testing | 2025-10-31 → 2025-11-03 (+3d) | 2025-11-13 → 2025-11-14 (+1d) |
| PG-12080 | Final Fix - Smoke & heat detectors, FHC , FAS Etc. | 2025-11-22 → 2025-11-24 (+2d) | 2025-12-05 → 2025-12-06 (+1d) |
| 1.3.1.3.3.21.3 | **Electrical Works** | 2025-09-13 → 2025-09-15 (+2d) | 2025-12-05 → 2025-12-06 (+1d) |
| PG-12081 | 1st Fix - GI wire pulling | 2025-09-13 → 2025-09-15 (+2d) | 2025-09-23 → 2025-09-24 (+1d) |
| PG-12082 | 2nd Fix - Wiring works | 2025-10-25 → 2025-10-27 (+2d) | 2025-11-12 → 2025-11-13 (+1d) |
| PG-12083 | Final Fix - Electrical Fixtures | 2025-11-28 → 2025-11-29 (+1d) | 2025-12-05 → 2025-12-06 (+1d) |
| 1.3.1.3.3.22 | **Floor 19** | 2025-09-26 → 2025-09-27 (+1d) | 2025-12-18 → 2025-12-19 (+1d) |
| 1.3.1.3.3.22.1 | **PHE Works** | 2025-09-26 → 2025-09-27 (+1d) | 2025-12-18 → 2025-12-19 (+1d) |
| PG-12084 | 1st Fix - Piping works | 2025-09-26 → 2025-09-27 (+1d) | 2025-10-11 → 2025-10-13 (+2d) |
| PG-12085 | 2nd Fix - diverter fixing & Pressure testing | 2025-10-07 → 2025-10-08 (+1d) | 2025-10-18 → 2025-10-20 (+2d) |
| PG-12086 | Final Fix - CP & Sanitary fixtures | 2025-12-05 → 2025-12-06 (+1d) | 2025-12-18 → 2025-12-19 (+1d) |
| 1.3.1.3.3.22.2 | **Fire Fighting Works** | 2025-10-07 → 2025-10-08 (+1d) | 2025-12-18 → 2025-12-19 (+1d) |
| PG-12087 | 1st Fix - Piping and Shaft hydrant works | 2025-10-07 → 2025-10-08 (+1d) | 2025-10-21 → 2025-10-22 (+1d) |
| PG-12088 | 2nd Fix - Sprinkler fixing & Pressure testing | 2025-11-14 → 2025-11-15 (+1d) | 2025-11-26 → 2025-11-27 (+1d) |
| PG-12089 | Final Fix - Smoke & heat detectors, FHC , FAS Etc. | 2025-12-05 → 2025-12-06 (+1d) | 2025-12-18 → 2025-12-19 (+1d) |
| 1.3.1.3.3.22.3 | **Electrical Works** | 2025-09-26 → 2025-09-27 (+1d) | 2025-12-18 → 2025-12-19 (+1d) |
| PG-12090 | 1st Fix - GI wire pulling | 2025-09-26 → 2025-09-27 (+1d) | 2025-10-07 → 2025-10-08 (+1d) |
| PG-12091 | 2nd Fix - Wiring works | 2025-11-08 → 2025-11-10 (+2d) | 2025-11-25 → 2025-11-26 (+1d) |
| PG-12092 | Final Fix - Electrical Fixtures | 2025-12-11 → 2025-12-12 (+1d) | 2025-12-18 → 2025-12-19 (+1d) |
| 1.3.1.3.3.23 | **Floor 20** | 2025-10-10 → 2025-10-11 (+1d) | 2025-12-31 → 2026-01-01 (+1d) |
| 1.3.1.3.3.23.1 | **PHE Works** | 2025-10-10 → 2025-10-11 (+1d) | 2025-12-31 → 2026-01-01 (+1d) |
| PG-12093 | 1st Fix - Piping works | 2025-10-10 → 2025-10-11 (+1d) | 2025-10-24 → 2025-10-25 (+1d) |
| PG-12094 | 2nd Fix - diverter fixing & Pressure testing | 2025-10-20 → 2025-10-21 (+1d) | 2025-10-31 → 2025-11-03 (+3d) |
| PG-12095 | Final Fix - CP & Sanitary fixtures | 2025-12-20 → 2025-12-22 (+2d) | 2025-12-31 → 2026-01-01 (+1d) |
| 1.3.1.3.3.23.2 | **Fire Fighting Works** | 2025-10-20 → 2025-10-21 (+1d) | 2025-12-31 → 2026-01-01 (+1d) |
| PG-12096 | 1st Fix - Piping and Shaft hydrant works | 2025-10-20 → 2025-10-21 (+1d) | 2025-11-04 → 2025-11-05 (+1d) |
| PG-12097 | 2nd Fix - Sprinkler fixing & Pressure testing | 2025-11-27 → 2025-11-28 (+1d) | 2025-12-09 → 2025-12-10 (+1d) |
| PG-12098 | Final Fix - Smoke & heat detectors, FHC , FAS Etc. | 2025-12-20 → 2025-12-22 (+2d) | 2025-12-31 → 2026-01-01 (+1d) |
| 1.3.1.3.3.23.3 | **Electrical Works** | 2025-10-10 → 2025-10-11 (+1d) | 2025-12-31 → 2026-01-01 (+1d) |
| PG-12099 | 1st Fix - GI wire pulling | 2025-10-10 → 2025-10-11 (+1d) | 2025-10-20 → 2025-10-21 (+1d) |
| PG-12100 | 2nd Fix - Wiring works | 2025-11-21 → 2025-11-22 (+1d) | 2025-12-08 → 2025-12-09 (+1d) |
| PG-12101 | Final Fix - Electrical Fixtures | 2025-12-25 → 2025-12-26 (+1d) | 2025-12-31 → 2026-01-01 (+1d) |
| 1.3.1.3.3.24 | **Floor 21** | 2025-10-23 → 2025-10-24 (+1d) | 2026-01-13 → 2026-01-14 (+1d) |
| 1.3.1.3.3.24.1 | **PHE Works** | 2025-10-23 → 2025-10-24 (+1d) | 2026-01-13 → 2026-01-14 (+1d) |
| PG-12102 | 1st Fix - Piping works | 2025-10-23 → 2025-10-24 (+1d) | 2025-11-07 → 2025-11-08 (+1d) |
| PG-12103 | 2nd Fix - diverter fixing & Pressure testing | 2025-11-04 → 2025-11-05 (+1d) | 2025-11-14 → 2025-11-15 (+1d) |
| PG-12104 | Final Fix - CP & Sanitary fixtures | 2026-01-01 → 2026-01-02 (+1d) | 2026-01-13 → 2026-01-14 (+1d) |
| 1.3.1.3.3.24.2 | **Fire Fighting Works** | 2025-11-03 → 2025-11-04 (+1d) | 2026-01-13 → 2026-01-14 (+1d) |
| PG-12105 | 1st Fix - Piping and Shaft hydrant works | 2025-11-03 → 2025-11-04 (+1d) | 2025-11-17 → 2025-11-18 (+1d) |
| PG-12106 | 2nd Fix - Sprinkler fixing & Pressure testing | 2025-12-10 → 2025-12-11 (+1d) | 2025-12-22 → 2025-12-23 (+1d) |
| PG-12107 | Final Fix - Smoke & heat detectors, FHC , FAS Etc. | 2026-01-01 → 2026-01-02 (+1d) | 2026-01-13 → 2026-01-14 (+1d) |
| 1.3.1.3.3.24.3 | **Electrical Works** | 2025-10-23 → 2025-10-24 (+1d) | 2025-12-31 → 2026-01-01 (+1d) |
| PG-12108 | 1st Fix - GI wire pulling | 2025-10-23 → 2025-10-24 (+1d) | 2025-11-03 → 2025-11-04 (+1d) |
| PG-12109 | 2nd Fix - Wiring works | 2025-11-21 → 2025-11-22 (+1d) | 2025-12-08 → 2025-12-09 (+1d) |
| PG-12110 | Final Fix - Electrical Fixtures | 2025-12-25 → 2025-12-26 (+1d) | 2025-12-31 → 2026-01-01 (+1d) |
| 1.3.1.3.3.25 | **Floor 22** | 2025-11-06 → 2025-11-07 (+1d) | 2026-01-27 → 2026-01-28 (+1d) |
| 1.3.1.3.3.25.1 | **PHE Works** | 2025-11-06 → 2025-11-07 (+1d) | 2026-01-27 → 2026-01-28 (+1d) |
| PG-12111 | 1st Fix - Piping works | 2025-11-06 → 2025-11-07 (+1d) | 2025-11-20 → 2025-11-21 (+1d) |
| PG-12112 | 2nd Fix - diverter fixing & Pressure testing | 2025-11-17 → 2025-11-18 (+1d) | 2025-11-27 → 2025-11-28 (+1d) |
| PG-12113 | Final Fix - CP & Sanitary fixtures | 2026-01-14 → 2026-01-15 (+1d) | 2026-01-27 → 2026-01-28 (+1d) |
| 1.3.1.3.3.25.2 | **Fire Fighting Works** | 2025-11-15 → 2025-11-17 (+2d) | 2026-01-27 → 2026-01-28 (+1d) |
| PG-12114 | 1st Fix - Piping and Shaft hydrant works | 2025-11-15 → 2025-11-17 (+2d) | 2025-11-29 → 2025-12-01 (+2d) |
| PG-12115 | 2nd Fix - Sprinkler fixing & Pressure testing | 2025-12-23 → 2025-12-24 (+1d) | 2026-01-03 → 2026-01-05 (+2d) |
| PG-12116 | Final Fix - Smoke & heat detectors, FHC , FAS Etc. | 2026-01-14 → 2026-01-15 (+1d) | 2026-01-27 → 2026-01-28 (+1d) |
| 1.3.1.3.3.25.3 | **Electrical Works** | 2025-11-06 → 2025-11-07 (+1d) | 2026-01-27 → 2026-01-28 (+1d) |
| PG-12117 | 1st Fix - GI wire pulling | 2025-11-06 → 2025-11-07 (+1d) | 2025-11-15 → 2025-11-17 (+2d) |
| PG-12118 | 2nd Fix - Wiring works | 2025-12-17 → 2025-12-18 (+1d) | 2026-01-02 → 2026-01-03 (+1d) |
| PG-12119 | Final Fix - Electrical Fixtures | 2026-01-20 → 2026-01-21 (+1d) | 2026-01-27 → 2026-01-28 (+1d) |
| 1.3.1.3.3.26 | **Floor 23** | 2025-11-19 → 2025-11-20 (+1d) | 2026-02-09 → 2026-02-10 (+1d) |
| 1.3.1.3.3.26.1 | **PHE Works** | 2025-11-19 → 2025-11-20 (+1d) | 2026-02-09 → 2026-02-10 (+1d) |
| PG-12120 | 1st Fix - Piping works | 2025-11-19 → 2025-11-20 (+1d) | 2025-12-01 → 2025-12-02 (+1d) |
| PG-12121 | 2nd Fix - diverter fixing & Pressure testing | 2025-11-27 → 2025-11-28 (+1d) | 2025-12-08 → 2025-12-09 (+1d) |
| PG-12122 | Final Fix - CP & Sanitary fixtures | 2026-01-28 → 2026-01-29 (+1d) | 2026-02-09 → 2026-02-10 (+1d) |
| 1.3.1.3.3.26.2 | **Fire Fighting Works** | 2025-11-27 → 2025-11-28 (+1d) | 2026-02-09 → 2026-02-10 (+1d) |
| PG-12123 | 1st Fix - Piping and Shaft hydrant works | 2025-11-27 → 2025-11-28 (+1d) | 2025-12-11 → 2025-12-12 (+1d) |
| PG-12124 | 2nd Fix - Sprinkler fixing & Pressure testing | 2026-01-02 → 2026-01-03 (+1d) | 2026-01-14 → 2026-01-15 (+1d) |
| PG-12125 | Final Fix - Smoke & heat detectors, FHC , FAS Etc. | 2026-01-28 → 2026-01-29 (+1d) | 2026-02-09 → 2026-02-10 (+1d) |
| 1.3.1.3.3.26.3 | **Electrical Works** | 2025-11-19 → 2025-11-20 (+1d) | 2026-02-09 → 2026-02-10 (+1d) |
| PG-12126 | 1st Fix - GI wire pulling | 2025-11-19 → 2025-11-20 (+1d) | 2025-11-27 → 2025-11-28 (+1d) |
| PG-12127 | 2nd Fix - Wiring works | 2025-12-27 → 2025-12-29 (+2d) | 2026-01-13 → 2026-01-14 (+1d) |

| ID | Task | Start | Finish |
| --- | --- | --- | --- |
| PG-12128 | Final Fix - Electrical Fixtures | 2026-02-02 → 2026-02-03 (+1d) | 2026-02-09 → 2026-02-10 (+1d) |
| 1.3.1.3.3.27 | **Floor 24** | 2025-12-02 → 2025-12-03 (+1d) | 2026-02-21 → 2026-02-23 (+2d) |
| 1.3.1.3.3.27.1 | **PHE Works** | 2025-12-02 → 2025-12-03 (+1d) | 2026-02-21 → 2026-02-23 (+2d) |
| PG-12129 | 1st Fix - Piping works | 2025-12-02 → 2025-12-03 (+1d) | 2025-12-15 → 2025-12-16 (+1d) |
| PG-12130 | 2nd Fix - diverter fixing & Pressure testing | 2025-12-11 → 2025-12-12 (+1d) | 2025-12-22 → 2025-12-23 (+1d) |
| PG-12131 | Final Fix - CP & Sanitary fixtures | 2026-02-10 → 2026-02-11 (+1d) | 2026-02-21 → 2026-02-23 (+2d) |
| 1.3.1.3.3.27.2 | **Fire Fighting Works** | 2025-12-11 → 2025-12-12 (+1d) | 2026-02-21 → 2026-02-23 (+2d) |
| PG-12132 | 1st Fix - Piping and Shaft hydrant works | 2025-12-11 → 2025-12-12 (+1d) | 2025-12-25 → 2025-12-26 (+1d) |
| PG-12133 | 2nd Fix - Sprinkler fixing & Pressure testing | 2026-01-16 → 2026-01-17 (+1d) | 2026-01-29 → 2026-01-30 (+1d) |
| PG-12134 | Final Fix - Smoke & heat detectors, FHC , FAS Etc. | 2026-02-10 → 2026-02-11 (+1d) | 2026-02-21 → 2026-02-23 (+2d) |
| 1.3.1.3.3.27.3 | **Electrical Works** | 2025-12-02 → 2025-12-03 (+1d) | 2026-02-21 → 2026-02-23 (+2d) |
| PG-12135 | 1st Fix - GI wire pulling | 2025-12-02 → 2025-12-03 (+1d) | 2025-12-11 → 2025-12-12 (+1d) |
| PG-12136 | 2nd Fix - Wiring works | 2026-01-10 → 2026-01-12 (+2d) | 2026-01-28 → 2026-01-29 (+1d) |
| PG-12137 | Final Fix - Electrical Fixtures | 2026-02-14 → 2026-02-16 (+2d) | 2026-02-21 → 2026-02-23 (+2d) |
| 1.3.1.3.3.28 | **Floor 25** | 2025-12-23 → 2025-12-24 (+1d) | 2026-03-14 → 2026-03-16 (+2d) |
| 1.3.1.3.3.28.1 | **PHE Works** | 2025-12-23 → 2025-12-24 (+1d) | 2026-03-14 → 2026-03-16 (+2d) |
| PG-12138 | 1st Fix - Piping works | 2025-12-23 → 2025-12-24 (+1d) | 2026-01-05 → 2026-01-06 (+1d) |
| PG-12139 | 2nd Fix - diverter fixing & Pressure testing | 2026-01-02 → 2026-01-03 (+1d) | 2026-01-12 → 2026-01-13 (+1d) |
| PG-12140 | Final Fix - CP & Sanitary fixtures | 2026-03-04 → 2026-03-05 (+1d) | 2026-03-14 → 2026-03-16 (+2d) |
| 1.3.1.3.3.28.2 | **Fire Fighting Works** | 2026-01-02 → 2026-01-03 (+1d) | 2026-03-14 → 2026-03-16 (+2d) |
| PG-12141 | 1st Fix - Piping and Shaft hydrant works | 2026-01-02 → 2026-01-03 (+1d) | 2026-01-15 → 2026-01-16 (+1d) |
| PG-12142 | 2nd Fix - Sprinkler fixing & Pressure testing | 2026-02-09 → 2026-02-10 (+1d) | 2026-02-19 → 2026-02-20 (+1d) |
| PG-12143 | Final Fix - Smoke & heat detectors, FHC , FAS Etc. | 2026-03-04 → 2026-03-05 (+1d) | 2026-03-14 → 2026-03-16 (+2d) |
| 1.3.1.3.3.28.3 | **Electrical Works** | 2025-12-23 → 2025-12-24 (+1d) | 2026-03-14 → 2026-03-16 (+2d) |
| PG-12144 | 1st Fix - GI wire pulling | 2025-12-23 → 2025-12-24 (+1d) | 2026-01-01 → 2026-01-02 (+1d) |
| PG-12145 | 2nd Fix - Wiring works | 2026-01-31 → 2026-02-02 (+2d) | 2026-02-18 → 2026-02-19 (+1d) |
| PG-12146 | Final Fix - Electrical Fixtures | 2026-03-09 → 2026-03-10 (+1d) | 2026-03-14 → 2026-03-16 (+2d) |
| 1.3.1.3.3.29 | **Floor 26** | 2026-01-13 → 2026-01-14 (+1d) | 2026-04-04 → 2026-04-06 (+2d) |
| 1.3.1.3.3.29.1 | **PHE Works** | 2026-01-13 → 2026-01-14 (+1d) | 2026-04-04 → 2026-04-06 (+2d) |
| PG-12147 | 1st Fix - Piping works | 2026-01-13 → 2026-01-14 (+1d) | 2026-01-28 → 2026-01-29 (+1d) |
| PG-12148 | 2nd Fix - diverter fixing & Pressure testing | 2026-01-21 → 2026-01-22 (+1d) | 2026-02-04 → 2026-02-05 (+1d) |
| PG-12149 | Final Fix - CP & Sanitary fixtures | 2026-03-26 → 2026-03-27 (+1d) | 2026-04-04 → 2026-04-06 (+2d) |
| 1.3.1.3.3.29.2 | **Fire Fighting Works** | 2026-01-22 → 2026-01-23 (+1d) | 2026-04-04 → 2026-04-06 (+2d) |
| PG-12150 | 1st Fix - Piping and Shaft hydrant works | 2026-01-22 → 2026-01-23 (+1d) | 2026-02-06 → 2026-02-07 (+1d) |
| PG-12151 | 2nd Fix - Sprinkler fixing & Pressure testing | 2026-03-02 → 2026-03-03 (+1d) | 2026-03-13 → 2026-03-14 (+1d) |
| PG-12152 | Final Fix - Smoke & heat detectors, FHC , FAS Etc. | 2026-03-26 → 2026-03-27 (+1d) | 2026-04-04 → 2026-04-06 (+2d) |
| 1.3.1.3.3.29.3 | **Electrical Works** | 2026-01-13 → 2026-01-14 (+1d) | 2026-04-04 → 2026-04-06 (+2d) |
| PG-12153 | 1st Fix - GI wire pulling | 2026-01-13 → 2026-01-14 (+1d) | 2026-01-22 → 2026-01-23 (+1d) |
| PG-12154 | 2nd Fix - Wiring works | 2026-02-23 → 2026-02-24 (+1d) | 2026-03-12 → 2026-03-13 (+1d) |
| PG-12155 | Final Fix - Electrical Fixtures | 2026-03-30 → 2026-03-31 (+1d) | 2026-04-04 → 2026-04-06 (+2d) |
| 1.3.1.3.3.30 | **Floor 27** | 2026-02-05 → 2026-02-06 (+1d) | 2026-04-27 → 2026-04-28 (+1d) |
| 1.3.1.3.3.30.1 | **PHE Works** | 2026-02-05 → 2026-02-06 (+1d) | 2026-04-27 → 2026-04-28 (+1d) |
| PG-12156 | 1st Fix - Piping works | 2026-02-05 → 2026-02-06 (+1d) | 2026-02-19 → 2026-02-20 (+1d) |
| PG-12157 | 2nd Fix - diverter fixing & Pressure testing | 2026-02-14 → 2026-02-16 (+2d) | 2026-02-26 → 2026-02-27 (+1d) |
| PG-12158 | Final Fix - CP & Sanitary fixtures | 2026-04-15 → 2026-04-16 (+1d) | 2026-04-27 → 2026-04-28 (+1d) |
| 1.3.1.3.3.30.2 | **Fire Fighting Works** | 2026-02-14 → 2026-02-16 (+2d) | 2026-04-27 → 2026-04-28 (+1d) |
| PG-12159 | 1st Fix - Piping and Shaft hydrant works | 2026-02-14 → 2026-02-16 (+2d) | 2026-02-28 → 2026-03-02 (+2d) |
| PG-12160 | 2nd Fix - Sprinkler fixing & Pressure testing | 2026-03-25 → 2026-03-26 (+1d) | 2026-04-04 → 2026-04-06 (+2d) |
| PG-12161 | Final Fix - Smoke & heat detectors, FHC , FAS Etc. | 2026-04-15 → 2026-04-16 (+1d) | 2026-04-27 → 2026-04-28 (+1d) |
| 1.3.1.3.3.30.3 | **Electrical Works** | 2026-02-05 → 2026-02-06 (+1d) | 2026-04-27 → 2026-04-28 (+1d) |
| PG-12162 | 1st Fix - GI wire pulling | 2026-02-05 → 2026-02-06 (+1d) | 2026-02-14 → 2026-02-16 (+2d) |
| PG-12163 | 2nd Fix - Wiring works | 2026-03-18 → 2026-03-19 (+1d) | 2026-04-03 → 2026-04-04 (+1d) |
| PG-12164 | Final Fix - Electrical Fixtures | 2026-04-21 → 2026-04-22 (+1d) | 2026-04-27 → 2026-04-28 (+1d) |
| 1.3.1.3.3.31 | **Floor 28** | 2026-02-27 → 2026-02-28 (+1d) | 2026-05-19 → 2026-05-20 (+1d) |
| 1.3.1.3.3.31.1 | **PHE Works** | 2026-02-27 → 2026-02-28 (+1d) | 2026-05-19 → 2026-05-20 (+1d) |
| PG-12165 | 1st Fix - Piping works | 2026-02-27 → 2026-02-28 (+1d) | 2026-03-12 → 2026-03-13 (+1d) |
| PG-12166 | 2nd Fix - diverter fixing & Pressure testing | 2026-03-09 → 2026-03-10 (+1d) | 2026-03-19 → 2026-03-20 (+1d) |
| PG-12167 | Final Fix - CP & Sanitary fixtures | 2026-05-08 → 2026-05-09 (+1d) | 2026-05-19 → 2026-05-20 (+1d) |
| 1.3.1.3.3.31.2 | **Fire Fighting Works** | 2026-03-09 → 2026-03-10 (+1d) | 2026-05-19 → 2026-05-20 (+1d) |
| PG-12168 | 1st Fix - Piping and Shaft hydrant works | 2026-03-09 → 2026-03-10 (+1d) | 2026-03-21 → 2026-03-23 (+2d) |
| PG-12169 | 2nd Fix - Sprinkler fixing & Pressure testing | 2026-04-15 → 2026-04-16 (+1d) | 2026-04-25 → 2026-04-27 (+2d) |
| PG-12170 | Final Fix - Smoke & heat detectors, FHC , FAS Etc. | 2026-05-08 → 2026-05-09 (+1d) | 2026-05-19 → 2026-05-20 (+1d) |
| 1.3.1.3.3.31.3 | **Electrical Works** | 2026-02-27 → 2026-02-28 (+1d) | 2026-05-19 → 2026-05-20 (+1d) |
| PG-12171 | 1st Fix - GI wire pulling | 2026-02-27 → 2026-02-28 (+1d) | 2026-03-07 → 2026-03-09 (+2d) |
| PG-12172 | 2nd Fix - Wiring works | 2026-04-08 → 2026-04-09 (+1d) | 2026-04-24 → 2026-04-25 (+1d) |
| PG-12173 | Final Fix - Electrical Fixtures | 2026-05-13 → 2026-05-14 (+1d) | 2026-05-19 → 2026-05-20 (+1d) |
| 1.3.1.3.3.32 | **Floor 29** | 2026-03-20 → 2026-03-21 (+1d) | 2026-06-10 → 2026-06-11 (+1d) |
| 1.3.1.3.3.32.1 | **PHE Works** | 2026-03-20 → 2026-03-21 (+1d) | 2026-06-10 → 2026-06-11 (+1d) |
| PG-12174 | 1st Fix - Piping works | 2026-03-20 → 2026-03-21 (+1d) | 2026-04-03 → 2026-04-04 (+1d) |
| PG-12175 | 2nd Fix - diverter fixing & Pressure testing | 2026-03-30 → 2026-03-31 (+1d) | 2026-04-10 → 2026-04-11 (+1d) |

| ID | Task | Start | Finish | Complete | Total float |
| --- | --- | --- | --- | --- | --- |
| PG-12176 | Final Fix - CP & Sanitary fixtures | 2026-05-29 → 2026-05-30 (+1d) | 2026-06-10 → 2026-06-11 (+1d) |  |  |
| 1.3.1.3.3.32.2 | **Fire Fighting Works** | 2026-03-30 → 2026-03-31 (+1d) | 2026-06-10 → 2026-06-11 (+1d) |  |  |
| PG-12177 | 1st Fix - Piping and Shaft hydrant works | 2026-03-30 → 2026-03-31 (+1d) | 2026-04-13 → 2026-04-14 (+1d) |  |  |
| PG-12178 | 2nd Fix - Sprinkler fixing & Pressure testing | 2026-05-07 → 2026-05-08 (+1d) | 2026-05-18 → 2026-05-19 (+1d) |  |  |
| PG-12179 | Final Fix - Smoke & heat detectors, FHC , FAS Etc. | 2026-05-29 → 2026-05-30 (+1d) | 2026-06-10 → 2026-06-11 (+1d) |  |  |
| 1.3.1.3.3.32.3 | **Electrical Works** | 2026-03-20 → 2026-03-21 (+1d) | 2026-06-10 → 2026-06-11 (+1d) |  |  |
| PG-12180 | 1st Fix - GI wire pulling | 2026-03-20 → 2026-03-21 (+1d) | 2026-03-30 → 2026-03-31 (+1d) |  |  |
| PG-12181 | 2nd Fix - Wiring works | 2026-04-28 → 2026-04-29 (+1d) | 2026-05-16 → 2026-05-18 (+2d) |  |  |
| PG-12182 | Final Fix - Electrical Fixtures | 2026-06-03 → 2026-06-04 (+1d) | 2026-06-10 → 2026-06-11 (+1d) |  |  |
| 1.3.1.3.4 | **Civil Finishes - Units** |  | 2026-06-03 → 2026-06-04 (+1d) |  |  |
| PG-12254 | Final Coat Painting |  |  | 50% → 83% | 425.94d → 426.92d |
| PG-12259 | Final Coat Painting |  |  | 49% → 82% | 389.05d → 390.04d |
| 1.3.1.3.4.9 | **Floor 6** |  | 2025-06-12 → 2025-06-13 (+1d) |  |  |
| 1.3.1.3.4.9.1 | **Ceiling Finishing works - Civil** |  | 2025-06-12 → 2025-06-13 (+1d) |  |  |
| PG-12281 | Toilet False ceiling |  | 2025-05-07 A | 7% → 100% | 392.51d → none |
| PG-12280 | Painting Works - Putty, Primer and 1st | 2025-05-13 → 2025-05-14 (+1d) |  |  | 400.18d → 400.58d |
| PG-12282 | Final Coat Painting | 2025-05-20 → 2025-05-21 (+1d) | 2025-06-12 → 2025-06-13 (+1d) |  | 400.18d → 400.58d |
| 1.3.1.3.4.9.2 | **Wall Finishing works - Civil** |  | 2025-06-11 → 2025-06-12 (+1d) |  |  |
| PG-12284 | UPVC Windows & Sliding doors | 2025-05-07 A |  | 0% → 33% | 365.51d → 365.92d |
| PG-12286 | Painting Works - Putty, Primer and 1st | 2025-05-13 → 2025-05-14 (+1d) |  |  | 365.51d → 365.92d |
| PG-12287 | Final Coat Painting | 2025-05-20 → 2025-05-21 (+1d) | 2025-06-11 → 2025-06-12 (+1d) |  | 365.51d → 365.92d |
| PG-12290 | Floor Tiling - Dry area |  | 2025-05-07 A | 20% → 100% | 365.51d → none |
| PG-12291 | Wooden doors | 2025-05-14 → 2025-05-15 (+1d) |  |  | 365.51d → 365.92d |
| PG-12293 | Cornice fixing | 2025-05-10 → 2025-05-12 (+2d) |  |  | 399.24d → 399.58d |
| PG-12299 | Dadoing - Wet area | 2025-05-07 → 2025-05-08 A (+1d) |  | 0% → 37% | 352.79d → 353.75d |
| 1.3.1.3.4.11 | **Floor 8** | 2025-05-02 → 2025-05-03 (+1d) | 2025-07-16 → 2025-07-17 (+1d) |  |  |
| 1.3.1.3.4.11.1 | **Ceiling Finishing works - Civil** | 2025-05-12 → 2025-05-10 (-2d) | 2025-07-16 → 2025-07-17 (+1d) |  |  |
| PG-12306 | Gypsum Plastering | 2025-05-12 → 2025-05-10 (-2d) | 2025-05-19 → 2025-05-17 (-2d) |  | 382.5d → 383.61d |
| PG-12307 | Cornice fixing | 2025-05-28 → 2025-05-27 (-1d) | 2025-06-02 → 2025-05-31 (-2d) |  | 382.5d → 383.61d |
| PG-12310 | Final Coat Painting |  | 2025-07-16 → 2025-07-17 (+1d) |  | 370.17d → 370.83d |
| 1.3.1.3.4.11.2 | **Wall Finishing works - Civil** | 2025-05-02 → 2025-05-03 (+1d) | 2025-07-15 → 2025-07-16 (+1d) |  |  |
| PG-12311 | Balcony Railing Fixing works | 2025-05-02 → 2025-05-03 A (+1d) | 2025-05-07 → 2025-05-08 A (+1d) | 0% → 100% | 365.5d → none |
| PG-12315 | Final Coat Painting |  | 2025-07-15 → 2025-07-16 (+1d) |  | 336.5d → 337.17d |
| 1.3.1.3.4.11.3 | **Floor Finishing Works - Civil** | 2025-05-02 → 2025-05-03 (+1d) |  |  |  |
| PG-12316 | Waterproofing for sunken areas | 2025-05-02 → 2025-05-03 A (+1d) | 2025-05-06 → 2025-05-07 A (+1d) | 0% → 100% | 356.5d → none |
| 1.3.1.3.4.12 | **Floor 9** | 2025-05-17 → 2025-05-19 (+2d) | 2025-07-30 → 2025-07-31 (+1d) |  |  |
| 1.3.1.3.4.12.1 | **Ceiling Finishing works - Civil** | 2025-05-27 → 2025-05-28 (+1d) | 2025-07-30 → 2025-07-31 (+1d) |  |  |
| PG-12320 | Gypsum Plastering | 2025-05-27 → 2025-05-28 (+1d) | 2025-06-03 → 2025-06-04 (+1d) |  |  |
| PG-12321 | Cornice fixing | 2025-06-12 → 2025-06-13 (+1d) | 2025-06-17 → 2025-06-18 (+1d) |  |  |
| PG-12323 | Toilet False ceiling | 2025-06-20 → 2025-06-21 (+1d) | 2025-06-25 → 2025-06-26 (+1d) |  |  |
| PG-12322 | Painting Works - Putty, Primer and 1st | 2025-07-01 → 2025-07-02 (+1d) | 2025-07-08 → 2025-07-09 (+1d) |  |  |
| PG-12324 | Final Coat Painting | 2025-07-08 → 2025-07-09 (+1d) | 2025-07-30 → 2025-07-31 (+1d) |  |  |
| 1.3.1.3.4.12.2 | **Wall Finishing works - Civil** | 2025-05-17 → 2025-05-19 (+2d) | 2025-07-28 → 2025-07-29 (+1d) |  |  |
| PG-12325 | Balcony Railing Fixing works | 2025-05-17 → 2025-05-19 (+2d) | 2025-05-22 → 2025-05-23 (+1d) |  |  |
| PG-12327 | Dadoing - Wet area | 2025-06-07 → 2025-06-09 (+2d) | 2025-06-13 → 2025-06-14 (+1d) |  |  |
| PG-12326 | UPVC Windows & Sliding doors | 2025-06-25 → 2025-06-26 (+1d) | 2025-07-01 → 2025-07-02 (+1d) |  |  |
| PG-12328 | Painting Works - Putty, Primer and 1st | 2025-07-01 → 2025-07-02 (+1d) | 2025-07-08 → 2025-07-09 (+1d) |  |  |
| PG-12329 | Final Coat Painting | 2025-07-08 → 2025-07-09 (+1d) | 2025-07-28 → 2025-07-29 (+1d) |  |  |
| 1.3.1.3.4.12.3 | **Floor Finishing Works - Civil** | 2025-05-17 → 2025-05-19 (+2d) | 2025-07-08 → 2025-07-09 (+1d) |  |  |
| PG-12330 | Waterproofing for sunken areas | 2025-05-17 → 2025-05-19 (+2d) | 2025-05-21 → 2025-05-22 (+1d) |  |  |
| PG-12331 | Floor Tiling - Wet area | 2025-06-13 → 2025-06-14 (+1d) | 2025-06-19 → 2025-06-20 (+1d) |  |  |
| PG-12332 | Floor Tiling - Dry area | 2025-06-19 → 2025-06-20 (+1d) | 2025-06-25 → 2025-06-26 (+1d) |  |  |
| PG-12333 | Wooden doors | 2025-07-02 → 2025-07-03 (+1d) | 2025-07-08 → 2025-07-09 (+1d) |  |  |
| 1.3.1.3.4.13 | **Floor 10** | 2025-06-02 → 2025-06-03 (+1d) | 2025-08-14 → 2025-08-16 (+2d) |  |  |
| 1.3.1.3.4.13.1 | **Ceiling Finishing works - Civil** | 2025-06-11 → 2025-06-12 (+1d) | 2025-08-14 → 2025-08-16 (+2d) |  |  |
| PG-12334 | Gypsum Plastering | 2025-06-11 → 2025-06-12 (+1d) | 2025-06-18 → 2025-06-19 (+1d) |  |  |
| PG-12335 | Cornice fixing | 2025-06-27 → 2025-06-28 (+1d) | 2025-07-02 → 2025-07-03 (+1d) |  |  |
| PG-12337 | Toilet False ceiling | 2025-07-05 → 2025-07-07 (+2d) | 2025-07-10 → 2025-07-11 (+1d) |  |  |
| PG-12336 | Painting Works - Putty, Primer and 1st | 2025-07-16 → 2025-07-17 (+1d) | 2025-07-23 → 2025-07-24 (+1d) |  |  |
| PG-12338 | Final Coat Painting | 2025-07-23 → 2025-07-24 (+1d) | 2025-08-14 → 2025-08-16 (+2d) |  |  |
| 1.3.1.3.4.13.2 | **Wall Finishing works - Civil** | 2025-06-02 → 2025-06-03 (+1d) | 2025-08-13 → 2025-08-14 (+1d) |  |  |
| PG-12339 | Balcony Railing Fixing works | 2025-06-02 → 2025-06-03 (+1d) | 2025-06-06 → 2025-06-07 (+1d) |  |  |
| PG-12341 | Dadoing - Wet area | 2025-06-23 → 2025-06-24 (+1d) | 2025-06-28 → 2025-06-30 (+2d) |  |  |
| PG-12340 | UPVC Windows & Sliding doors | 2025-07-10 → 2025-07-11 (+1d) | 2025-07-16 → 2025-07-17 (+1d) |  |  |
| PG-12342 | Painting Works - Putty, Primer and 1st | 2025-07-16 → 2025-07-17 (+1d) | 2025-07-23 → 2025-07-24 (+1d) |  |  |
| PG-12343 | Final Coat Painting | 2025-07-23 → 2025-07-24 (+1d) | 2025-08-13 → 2025-08-14 (+1d) |  |  |
| 1.3.1.3.4.13.3 | **Floor Finishing Works - Civil** | 2025-06-02 → 2025-06-03 (+1d) | 2025-07-23 → 2025-07-24 (+1d) |  |  |
| PG-12344 | Waterproofing for sunken areas | 2025-06-02 → 2025-06-03 (+1d) | 2025-06-05 → 2025-06-06 (+1d) |  |  |
| PG-12345 | Floor Tiling - Wet area | 2025-06-28 → 2025-06-30 (+2d) | 2025-07-04 → 2025-07-05 (+1d) |  |  |
| PG-12346 | Floor Tiling - Dry area | 2025-07-04 → 2025-07-05 (+1d) | 2025-07-10 → 2025-07-11 (+1d) |  |  |

| ID | Task | Start | Finish |
| --- | --- | --- | --- |
| PG-12347 | Wooden doors | 2025-07-17 → 2025-07-18 (+1d) | 2025-07-23 → 2025-07-24 (+1d) |
| 1.3.1.3.4.14 | **Floor 11** | 2025-06-14 → 2025-06-16 (+2d) | 2025-08-29 → 2025-08-30 (+1d) |
| 1.3.1.3.4.14.1 | **Ceiling Finishing works - Civil** | 2025-06-24 → 2025-06-25 (+1d) | 2025-08-29 → 2025-08-30 (+1d) |
| PG-12348 | Gypsum Plastering | 2025-06-24 → 2025-06-25 (+1d) | 2025-07-01 → 2025-07-02 (+1d) |
| PG-12349 | Cornice fixing | 2025-07-10 → 2025-07-11 (+1d) | 2025-07-15 → 2025-07-16 (+1d) |
| PG-12351 | Toilet False ceiling | 2025-07-18 → 2025-07-19 (+1d) | 2025-07-23 → 2025-07-24 (+1d) |
| PG-12350 | Painting Works - Putty, Primer and 1st | 2025-07-29 → 2025-07-30 (+1d) | 2025-08-05 → 2025-08-06 (+1d) |
| PG-12352 | Final Coat Painting | 2025-08-05 → 2025-08-06 (+1d) | 2025-08-29 → 2025-08-30 (+1d) |
| 1.3.1.3.4.14.2 | **Wall Finishing works - Civil** | 2025-06-14 → 2025-06-16 (+2d) | 2025-08-27 → 2025-08-28 (+1d) |
| PG-12353 | Balcony Railing Fixing works | 2025-06-14 → 2025-06-16 (+2d) | 2025-06-19 → 2025-06-20 (+1d) |
| PG-12355 | Dadoing - Wet area | 2025-07-05 → 2025-07-07 (+2d) | 2025-07-11 → 2025-07-12 (+1d) |
| PG-12354 | UPVC Windows & Sliding doors | 2025-07-23 → 2025-07-24 (+1d) | 2025-07-29 → 2025-07-30 (+1d) |
| PG-12356 | Painting Works - Putty, Primer and 1st | 2025-07-29 → 2025-07-30 (+1d) | 2025-08-05 → 2025-08-06 (+1d) |
| PG-12357 | Final Coat Painting | 2025-08-05 → 2025-08-06 (+1d) | 2025-08-27 → 2025-08-28 (+1d) |
| 1.3.1.3.4.14.3 | **Floor Finishing Works - Civil** | 2025-06-14 → 2025-06-16 (+2d) | 2025-08-05 → 2025-08-06 (+1d) |
| PG-12358 | Waterproofing for sunken areas | 2025-06-14 → 2025-06-16 (+2d) | 2025-06-18 → 2025-06-19 (+1d) |
| PG-12359 | Floor Tiling - Wet area | 2025-07-11 → 2025-07-12 (+1d) | 2025-07-17 → 2025-07-18 (+1d) |
| PG-12360 | Floor Tiling - Dry area | 2025-07-17 → 2025-07-18 (+1d) | 2025-07-23 → 2025-07-24 (+1d) |
| PG-12361 | Wooden doors | 2025-07-30 → 2025-07-31 (+1d) | 2025-08-05 → 2025-08-06 (+1d) |
| 1.3.1.3.4.15 | **Floor 12** | 2025-06-27 → 2025-06-28 (+1d) | 2025-09-12 → 2025-09-13 (+1d) |
| 1.3.1.3.4.15.1 | **Ceiling Finishing works - Civil** | 2025-07-07 → 2025-07-08 (+1d) | 2025-09-12 → 2025-09-13 (+1d) |
| PG-12362 | Gypsum Plastering | 2025-07-07 → 2025-07-08 (+1d) | 2025-07-14 → 2025-07-15 (+1d) |
| PG-12363 | Cornice fixing | 2025-07-23 → 2025-07-24 (+1d) | 2025-07-28 → 2025-07-29 (+1d) |
| PG-12365 | Toilet False ceiling | 2025-07-31 → 2025-08-01 (+1d) | 2025-08-05 → 2025-08-06 (+1d) |
| PG-12364 | Painting Works - Putty, Primer and 1st | 2025-08-11 → 2025-08-12 (+1d) | 2025-08-19 → 2025-08-20 (+1d) |
| PG-12366 | Final Coat Painting | 2025-08-19 → 2025-08-20 (+1d) | 2025-09-12 → 2025-09-13 (+1d) |
| 1.3.1.3.4.15.2 | **Wall Finishing works - Civil** | 2025-06-27 → 2025-06-28 (+1d) | 2025-09-12 → 2025-09-13 (+1d) |
| PG-12367 | Balcony Railing Fixing works | 2025-06-27 → 2025-06-28 (+1d) | 2025-07-02 → 2025-07-03 (+1d) |
| PG-12369 | Dadoing - Wet area | 2025-07-18 → 2025-07-19 (+1d) | 2025-07-24 → 2025-07-25 (+1d) |
| PG-12368 | UPVC Windows & Sliding doors | 2025-08-05 → 2025-08-06 (+1d) | 2025-08-11 → 2025-08-12 (+1d) |
| PG-12370 | Painting Works - Putty, Primer and 1st | 2025-08-11 → 2025-08-12 (+1d) | 2025-08-19 → 2025-08-20 (+1d) |
| PG-12371 | Final Coat Painting | 2025-08-19 → 2025-08-20 (+1d) | 2025-09-12 → 2025-09-13 (+1d) |
| 1.3.1.3.4.15.3 | **Floor Finishing Works - Civil** | 2025-06-27 → 2025-06-28 (+1d) | 2025-08-19 → 2025-08-20 (+1d) |
| PG-12372 | Waterproofing for sunken areas | 2025-06-27 → 2025-06-28 (+1d) | 2025-07-01 → 2025-07-02 (+1d) |
| PG-12373 | Floor Tiling - Wet area | 2025-07-24 → 2025-07-25 (+1d) | 2025-07-30 → 2025-07-31 (+1d) |
| PG-12374 | Floor Tiling - Dry area | 2025-07-30 → 2025-07-31 (+1d) | 2025-08-05 → 2025-08-06 (+1d) |
| PG-12375 | Wooden doors | 2025-08-12 → 2025-08-13 (+1d) | 2025-08-19 → 2025-08-20 (+1d) |
| 1.3.1.3.4.16 | **Floor 13** | 2025-07-10 → 2025-07-11 (+1d) | 2025-09-25 → 2025-09-26 (+1d) |
| 1.3.1.3.4.16.1 | **Ceiling Finishing works - Civil** | 2025-07-19 → 2025-07-21 (+2d) | 2025-09-25 → 2025-09-26 (+1d) |
| PG-12376 | Gypsum Plastering | 2025-07-19 → 2025-07-21 (+2d) | 2025-07-26 → 2025-07-28 (+2d) |
| PG-12377 | Cornice fixing | 2025-08-05 → 2025-08-06 (+1d) | 2025-08-09 → 2025-08-11 (+2d) |
| PG-12379 | Toilet False ceiling | 2025-08-13 → 2025-08-14 (+1d) | 2025-08-19 → 2025-08-20 (+1d) |
| PG-12378 | Painting Works - Putty, Primer and 1st | 2025-08-25 → 2025-08-26 (+1d) | 2025-09-01 → 2025-09-02 (+1d) |
| PG-12380 | Final Coat Painting | 2025-09-01 → 2025-09-02 (+1d) | 2025-09-25 → 2025-09-26 (+1d) |
| 1.3.1.3.4.16.2 | **Wall Finishing works - Civil** | 2025-07-10 → 2025-07-11 (+1d) | 2025-09-25 → 2025-09-26 (+1d) |
| PG-12381 | Balcony Railing Fixing works | 2025-07-10 → 2025-07-11 (+1d) | 2025-07-15 → 2025-07-16 (+1d) |
| PG-12383 | Dadoing - Wet area | 2025-07-31 → 2025-08-01 (+1d) | 2025-08-06 → 2025-08-07 (+1d) |
| PG-12382 | UPVC Windows & Sliding doors | 2025-08-19 → 2025-08-20 (+1d) | 2025-08-25 → 2025-08-26 (+1d) |
| PG-12384 | Painting Works - Putty, Primer and 1st | 2025-08-25 → 2025-08-26 (+1d) | 2025-09-01 → 2025-09-02 (+1d) |
| PG-12385 | Final Coat Painting | 2025-09-01 → 2025-09-02 (+1d) | 2025-09-25 → 2025-09-26 (+1d) |
| 1.3.1.3.4.16.3 | **Floor Finishing Works - Civil** | 2025-07-10 → 2025-07-11 (+1d) | 2025-09-01 → 2025-09-02 (+1d) |
| PG-12386 | Waterproofing for sunken areas | 2025-07-10 → 2025-07-11 (+1d) | 2025-07-14 → 2025-07-15 (+1d) |
| PG-12387 | Floor Tiling - Wet area | 2025-08-06 → 2025-08-07 (+1d) | 2025-08-12 → 2025-08-13 (+1d) |
| PG-12388 | Floor Tiling - Dry area | 2025-08-12 → 2025-08-13 (+1d) | 2025-08-19 → 2025-08-20 (+1d) |
| PG-12389 | Wooden doors | 2025-08-26 → 2025-08-27 (+1d) | 2025-09-01 → 2025-09-02 (+1d) |
| 1.3.1.3.4.17 | **Floor 14** | 2025-07-23 → 2025-07-24 (+1d) | 2025-10-07 → 2025-10-08 (+1d) |
| 1.3.1.3.4.17.1 | **Ceiling Finishing works - Civil** | 2025-08-01 → 2025-08-02 (+1d) | 2025-10-07 → 2025-10-08 (+1d) |
| PG-12390 | Gypsum Plastering | 2025-08-01 → 2025-08-02 (+1d) | 2025-08-08 → 2025-08-09 (+1d) |
| PG-12391 | Cornice fixing | 2025-08-19 → 2025-08-20 (+1d) | 2025-08-23 → 2025-08-25 (+2d) |
| PG-12393 | Toilet False ceiling | 2025-08-27 → 2025-08-28 (+1d) | 2025-09-01 → 2025-09-02 (+1d) |
| PG-12392 | Painting Works - Putty, Primer and 1st | 2025-09-06 → 2025-09-08 (+2d) | 2025-09-13 → 2025-09-15 (+2d) |
| PG-12394 | Final Coat Painting | 2025-09-13 → 2025-09-15 (+2d) | 2025-10-07 → 2025-10-08 (+1d) |
| 1.3.1.3.4.17.2 | **Wall Finishing works - Civil** | 2025-07-23 → 2025-07-24 (+1d) | 2025-10-07 → 2025-10-08 (+1d) |
| PG-12395 | Balcony Railing Fixing works | 2025-07-23 → 2025-07-24 (+1d) | 2025-07-28 → 2025-07-29 (+1d) |
| PG-12397 | Dadoing - Wet area | 2025-08-13 → 2025-08-14 (+1d) | 2025-08-20 → 2025-08-21 (+1d) |
| PG-12396 | UPVC Windows & Sliding doors | 2025-09-01 → 2025-09-02 (+1d) | 2025-09-06 → 2025-09-08 (+2d) |
| PG-12398 | Painting Works - Putty, Primer and 1st | 2025-09-06 → 2025-09-08 (+2d) | 2025-09-13 → 2025-09-15 (+2d) |
| PG-12399 | Final Coat Painting | 2025-09-13 → 2025-09-15 (+2d) | 2025-10-07 → 2025-10-08 (+1d) |
| 1.3.1.3.4.17.3 | **Floor Finishing Works - Civil** | 2025-07-23 → 2025-07-24 (+1d) | 2025-09-13 → 2025-09-15 (+2d) |
| PG-12400 | Waterproofing for sunken areas | 2025-07-23 → 2025-07-24 (+1d) | 2025-07-26 → 2025-07-28 (+2d) |

| ID | Task | Start | Finish |
| --- | --- | --- | --- |
| PG-12401 | Floor Tiling - Wet area | 2025-08-20 → 2025-08-21 (+1d) | 2025-08-26 → 2025-08-27 (+1d) |
| PG-12402 | Floor Tiling - Dry area | 2025-08-26 → 2025-08-27 (+1d) | 2025-09-01 → 2025-09-02 (+1d) |
| PG-12403 | Wooden doors | 2025-09-08 → 2025-09-09 (+1d) | 2025-09-13 → 2025-09-15 (+2d) |
| 1.3.1.3.4.18 | **Floor 15** | 2025-08-05 → 2025-08-06 (+1d) |  |
| 1.3.1.3.4.18.1 | **Ceiling Finishing works - Civil** | 2025-08-14 → 2025-08-16 (+2d) |  |
| PG-12404 | Gypsum Plastering | 2025-08-14 → 2025-08-16 (+2d) | 2025-08-22 → 2025-08-23 (+1d) |
| PG-12405 | Cornice fixing | 2025-09-01 → 2025-09-02 (+1d) | 2025-09-05 → 2025-09-06 (+1d) |
| 1.3.1.3.4.18.2 | **Wall Finishing works - Civil** | 2025-08-05 → 2025-08-06 (+1d) |  |
| PG-12409 | Balcony Railing Fixing works | 2025-08-05 → 2025-08-06 (+1d) | 2025-08-09 → 2025-08-11 (+2d) |
| 1.3.1.3.4.18.3 | **Floor Finishing Works - Civil** | 2025-08-05 → 2025-08-06 (+1d) |  |
| PG-12414 | Waterproofing for sunken areas | 2025-08-05 → 2025-08-06 (+1d) | 2025-08-08 → 2025-08-09 (+1d) |
| 1.3.1.3.4.19 | **Floor 16** | 2025-08-19 → 2025-08-20 (+1d) | 2025-11-04 → 2025-11-05 (+1d) |
| 1.3.1.3.4.19.1 | **Ceiling Finishing works - Civil** | 2025-08-28 → 2025-08-29 (+1d) | 2025-11-03 → 2025-11-04 (+1d) |
| PG-12418 | Gypsum Plastering | 2025-08-28 → 2025-08-29 (+1d) | 2025-09-04 → 2025-09-05 (+1d) |
| PG-12419 | Cornice fixing | 2025-09-13 → 2025-09-15 (+2d) | 2025-09-18 → 2025-09-19 (+1d) |
| PG-12421 | Toilet False ceiling | 2025-09-22 → 2025-09-23 (+1d) | 2025-09-26 → 2025-09-27 (+1d) |
| PG-12420 | Painting Works - Putty, Primer and 1st | 2025-10-03 → 2025-10-04 (+1d) | 2025-10-10 → 2025-10-11 (+1d) |
| PG-12422 | Final Coat Painting | 2025-10-10 → 2025-10-11 (+1d) | 2025-11-03 → 2025-11-04 (+1d) |
| 1.3.1.3.4.19.2 | **Wall Finishing works - Civil** | 2025-08-19 → 2025-08-20 (+1d) | 2025-11-04 → 2025-11-05 (+1d) |
| PG-12423 | Balcony Railing Fixing works | 2025-08-19 → 2025-08-20 (+1d) | 2025-08-23 → 2025-08-25 (+2d) |
| PG-12425 | Dadoing - Wet area | 2025-09-09 → 2025-09-10 (+1d) | 2025-09-15 → 2025-09-16 (+1d) |
| PG-12424 | UPVC Windows & Sliding doors | 2025-09-26 → 2025-09-27 (+1d) | 2025-10-03 → 2025-10-04 (+1d) |
| PG-12426 | Painting Works - Putty, Primer and 1st | 2025-10-03 → 2025-10-04 (+1d) | 2025-10-10 → 2025-10-11 (+1d) |
| PG-12427 | Final Coat Painting | 2025-10-10 → 2025-10-11 (+1d) | 2025-11-04 → 2025-11-05 (+1d) |
| 1.3.1.3.4.19.3 | **Floor Finishing Works - Civil** | 2025-08-19 → 2025-08-20 (+1d) | 2025-10-10 → 2025-10-11 (+1d) |
| PG-12428 | Waterproofing for sunken areas | 2025-08-19 → 2025-08-20 (+1d) | 2025-08-22 → 2025-08-23 (+1d) |
| PG-12429 | Floor Tiling - Wet area | 2025-09-15 → 2025-09-16 (+1d) | 2025-09-20 → 2025-09-22 (+2d) |
| PG-12430 | Floor Tiling - Dry area | 2025-09-20 → 2025-09-22 (+2d) | 2025-09-26 → 2025-09-27 (+1d) |
| PG-12431 | Wooden doors | 2025-10-04 → 2025-10-06 (+2d) | 2025-10-10 → 2025-10-11 (+1d) |
| 1.3.1.3.4.20 | **Floor 17** | 2025-09-01 → 2025-09-02 (+1d) | 2025-11-15 → 2025-11-17 (+2d) |
| 1.3.1.3.4.20.1 | **Ceiling Finishing works - Civil** | 2025-09-10 → 2025-09-11 (+1d) | 2025-11-15 → 2025-11-17 (+2d) |
| PG-12432 | Gypsum Plastering | 2025-09-10 → 2025-09-11 (+1d) | 2025-09-17 → 2025-09-18 (+1d) |
| PG-12433 | Cornice fixing | 2025-09-26 → 2025-09-27 (+1d) | 2025-10-01 → 2025-10-03 (+2d) |
| PG-12435 | Toilet False ceiling | 2025-10-06 → 2025-10-07 (+1d) | 2025-10-10 → 2025-10-11 (+1d) |
| PG-12434 | Painting Works - Putty, Primer and 1st | 2025-10-16 → 2025-10-17 (+1d) | 2025-10-23 → 2025-10-24 (+1d) |
| PG-12436 | Final Coat Painting | 2025-10-23 → 2025-10-24 (+1d) | 2025-11-15 → 2025-11-17 (+2d) |
| 1.3.1.3.4.20.2 | **Wall Finishing works - Civil** | 2025-09-01 → 2025-09-02 (+1d) | 2025-11-15 → 2025-11-17 (+2d) |
| PG-12437 | Balcony Railing Fixing works | 2025-09-01 → 2025-09-02 (+1d) | 2025-09-05 → 2025-09-06 (+1d) |
| PG-12439 | Dadoing - Wet area | 2025-09-22 → 2025-09-23 (+1d) | 2025-09-27 → 2025-09-29 (+2d) |
| PG-12438 | UPVC Windows & Sliding doors | 2025-10-10 → 2025-10-11 (+1d) | 2025-10-16 → 2025-10-17 (+1d) |
| PG-12440 | Painting Works - Putty, Primer and 1st | 2025-10-16 → 2025-10-17 (+1d) | 2025-10-23 → 2025-10-24 (+1d) |
| PG-12441 | Final Coat Painting | 2025-10-23 → 2025-10-24 (+1d) | 2025-11-15 → 2025-11-17 (+2d) |
| 1.3.1.3.4.20.3 | **Floor Finishing Works - Civil** | 2025-09-01 → 2025-09-02 (+1d) | 2025-10-23 → 2025-10-24 (+1d) |
| PG-12442 | Waterproofing for sunken areas | 2025-09-01 → 2025-09-02 (+1d) | 2025-09-04 → 2025-09-05 (+1d) |
| PG-12443 | Floor Tiling - Wet area | 2025-09-27 → 2025-09-29 (+2d) | 2025-10-04 → 2025-10-06 (+2d) |
| PG-12444 | Floor Tiling - Dry area | 2025-10-04 → 2025-10-06 (+2d) | 2025-10-10 → 2025-10-11 (+1d) |
| PG-12445 | Wooden doors | 2025-10-17 → 2025-10-18 (+1d) | 2025-10-23 → 2025-10-24 (+1d) |
| 1.3.1.3.4.21 | **Floor 18** | 2025-09-13 → 2025-09-15 (+2d) | 2025-11-28 → 2025-11-29 (+1d) |
| 1.3.1.3.4.21.1 | **Ceiling Finishing works - Civil** | 2025-09-23 → 2025-09-24 (+1d) | 2025-11-28 → 2025-11-29 (+1d) |
| PG-12446 | Gypsum Plastering | 2025-09-23 → 2025-09-24 (+1d) | 2025-09-30 → 2025-10-01 (+1d) |
| PG-12447 | Cornice fixing | 2025-10-10 → 2025-10-11 (+1d) | 2025-10-15 → 2025-10-16 (+1d) |
| PG-12449 | Toilet False ceiling | 2025-10-18 → 2025-10-20 (+2d) | 2025-10-23 → 2025-10-24 (+1d) |
| PG-12448 | Painting Works - Putty, Primer and 1st | 2025-10-29 → 2025-10-30 (+1d) | 2025-11-06 → 2025-11-07 (+1d) |
| PG-12450 | Final Coat Painting | 2025-11-06 → 2025-11-07 (+1d) | 2025-11-28 → 2025-11-29 (+1d) |
| 1.3.1.3.4.21.2 | **Wall Finishing works - Civil** | 2025-09-13 → 2025-09-15 (+2d) | 2025-11-28 → 2025-11-29 (+1d) |
| PG-12451 | Balcony Railing Fixing works | 2025-09-13 → 2025-09-15 (+2d) | 2025-09-18 → 2025-09-19 (+1d) |
| PG-12453 | Dadoing - Wet area | 2025-10-06 → 2025-10-07 (+1d) | 2025-10-11 → 2025-10-13 (+2d) |
| PG-12452 | UPVC Windows & Sliding doors | 2025-10-23 → 2025-10-24 (+1d) | 2025-10-29 → 2025-10-30 (+1d) |
| PG-12454 | Painting Works - Putty, Primer and 1st | 2025-10-29 → 2025-10-30 (+1d) | 2025-11-06 → 2025-11-07 (+1d) |
| PG-12455 | Final Coat Painting | 2025-11-06 → 2025-11-07 (+1d) | 2025-11-28 → 2025-11-29 (+1d) |
| 1.3.1.3.4.21.3 | **Floor Finishing Works - Civil** | 2025-09-13 → 2025-09-15 (+2d) | 2025-11-06 → 2025-11-07 (+1d) |
| PG-12456 | Waterproofing for sunken areas | 2025-09-13 → 2025-09-15 (+2d) | 2025-09-17 → 2025-09-18 (+1d) |
| PG-12457 | Floor Tiling - Wet area | 2025-10-11 → 2025-10-13 (+2d) | 2025-10-17 → 2025-10-18 (+1d) |
| PG-12458 | Floor Tiling - Dry area | 2025-10-17 → 2025-10-18 (+1d) | 2025-10-23 → 2025-10-24 (+1d) |
| PG-12459 | Wooden doors | 2025-10-30 → 2025-10-31 (+1d) | 2025-11-06 → 2025-11-07 (+1d) |
| 1.3.1.3.4.22 | **Floor 19** | 2025-09-26 → 2025-09-27 (+1d) | 2025-12-11 → 2025-12-12 (+1d) |
| 1.3.1.3.4.22.1 | **Ceiling Finishing works - Civil** | 2025-10-07 → 2025-10-08 (+1d) | 2025-12-11 → 2025-12-12 (+1d) |
| PG-12460 | Gypsum Plastering | 2025-10-07 → 2025-10-08 (+1d) | 2025-10-14 → 2025-10-15 (+1d) |
| PG-12461 | Cornice fixing | 2025-10-23 → 2025-10-24 (+1d) | 2025-10-28 → 2025-10-29 (+1d) |
| PG-12463 | Toilet False ceiling | 2025-10-31 → 2025-11-03 (+3d) | 2025-11-06 → 2025-11-07 (+1d) |

| ID | Task | Start | Finish |
| --- | --- | --- | --- |
| PG-12462 | Painting Works - Putty, Primer and 1st | 2025-11-12 → 2025-11-13 (+1d) | 2025-11-19 → 2025-11-20 (+1d) |
| PG-12464 | Final Coat Painting | 2025-11-19 → 2025-11-20 (+1d) | 2025-12-11 → 2025-12-12 (+1d) |
| 1.3.1.3.4.22.2 | **Wall Finishing works - Civil** | 2025-09-26 → 2025-09-27 (+1d) | 2025-12-11 → 2025-12-12 (+1d) |
| PG-12465 | Balcony Railing Fixing works | 2025-09-26 → 2025-09-27 (+1d) | 2025-10-01 → 2025-10-03 (+2d) |
| PG-12467 | Dadoing - Wet area | 2025-10-18 → 2025-10-20 (+2d) | 2025-10-24 → 2025-10-25 (+1d) |
| PG-12466 | UPVC Windows & Sliding doors | 2025-11-06 → 2025-11-07 (+1d) | 2025-11-12 → 2025-11-13 (+1d) |
| PG-12468 | Painting Works - Putty, Primer and 1st | 2025-11-12 → 2025-11-13 (+1d) | 2025-11-19 → 2025-11-20 (+1d) |
| PG-12469 | Final Coat Painting | 2025-11-19 → 2025-11-20 (+1d) | 2025-12-11 → 2025-12-12 (+1d) |
| 1.3.1.3.4.22.3 | **Floor Finishing Works - Civil** | 2025-09-26 → 2025-09-27 (+1d) | 2025-11-19 → 2025-11-20 (+1d) |
| PG-12470 | Waterproofing for sunken areas | 2025-09-26 → 2025-09-27 (+1d) | 2025-09-30 → 2025-10-01 (+1d) |
| PG-12471 | Floor Tiling - Wet area | 2025-10-24 → 2025-10-25 (+1d) | 2025-10-30 → 2025-10-31 (+1d) |
| PG-12472 | Floor Tiling - Dry area | 2025-10-30 → 2025-10-31 (+1d) | 2025-11-06 → 2025-11-07 (+1d) |
| PG-12473 | Wooden doors | 2025-11-13 → 2025-11-14 (+1d) | 2025-11-19 → 2025-11-20 (+1d) |
| 1.3.1.3.4.23 | **Floor 20** | 2025-10-10 → 2025-10-11 (+1d) | 2025-12-24 → 2025-12-25 (+1d) |
| 1.3.1.3.4.23.1 | **Ceiling Finishing works - Civil** | 2025-10-20 → 2025-10-21 (+1d) | 2025-12-24 → 2025-12-25 (+1d) |
| PG-12474 | Gypsum Plastering | 2025-10-20 → 2025-10-21 (+1d) | 2025-10-27 → 2025-10-28 (+1d) |
| PG-12475 | Cornice fixing | 2025-11-06 → 2025-11-07 (+1d) | 2025-11-11 → 2025-11-12 (+1d) |
| PG-12477 | Toilet False ceiling | 2025-11-14 → 2025-11-15 (+1d) | 2025-11-19 → 2025-11-20 (+1d) |
| PG-12476 | Painting Works - Putty, Primer and 1st | 2025-11-25 → 2025-11-26 (+1d) | 2025-12-02 → 2025-12-03 (+1d) |
| PG-12478 | Final Coat Painting | 2025-12-02 → 2025-12-03 (+1d) | 2025-12-24 → 2025-12-25 (+1d) |
| 1.3.1.3.4.23.2 | **Wall Finishing works - Civil** | 2025-10-10 → 2025-10-11 (+1d) | 2025-12-24 → 2025-12-25 (+1d) |
| PG-12479 | Balcony Railing Fixing works | 2025-10-10 → 2025-10-11 (+1d) | 2025-10-15 → 2025-10-16 (+1d) |
| PG-12481 | Dadoing - Wet area | 2025-10-31 → 2025-11-03 (+3d) | 2025-11-07 → 2025-11-08 (+1d) |
| PG-12480 | UPVC Windows & Sliding doors | 2025-11-19 → 2025-11-20 (+1d) | 2025-11-25 → 2025-11-26 (+1d) |
| PG-12482 | Painting Works - Putty, Primer and 1st | 2025-11-25 → 2025-11-26 (+1d) | 2025-12-02 → 2025-12-03 (+1d) |
| PG-12483 | Final Coat Painting | 2025-12-02 → 2025-12-03 (+1d) | 2025-12-24 → 2025-12-25 (+1d) |
| 1.3.1.3.4.23.3 | **Floor Finishing Works - Civil** | 2025-10-10 → 2025-10-11 (+1d) | 2025-12-02 → 2025-12-03 (+1d) |
| PG-12484 | Waterproofing for sunken areas | 2025-10-10 → 2025-10-11 (+1d) | 2025-10-14 → 2025-10-15 (+1d) |
| PG-12485 | Floor Tiling - Wet area | 2025-11-07 → 2025-11-08 (+1d) | 2025-11-13 → 2025-11-14 (+1d) |
| PG-12486 | Floor Tiling - Dry area | 2025-11-13 → 2025-11-14 (+1d) | 2025-11-19 → 2025-11-20 (+1d) |
| PG-12487 | Wooden doors | 2025-11-26 → 2025-11-27 (+1d) | 2025-12-02 → 2025-12-03 (+1d) |
| 1.3.1.3.4.24 | **Floor 21** | 2025-10-23 → 2025-10-24 (+1d) | 2026-01-06 → 2026-01-07 (+1d) |
| 1.3.1.3.4.24.1 | **Ceiling Finishing works - Civil** | 2025-11-03 → 2025-11-04 (+1d) | 2026-01-06 → 2026-01-07 (+1d) |
| PG-12488 | Gypsum Plastering | 2025-11-03 → 2025-11-04 (+1d) | 2025-11-10 → 2025-11-11 (+1d) |
| PG-12489 | Cornice fixing | 2025-11-19 → 2025-11-20 (+1d) | 2025-11-24 → 2025-11-25 (+1d) |
| PG-12491 | Toilet False ceiling | 2025-11-27 → 2025-11-28 (+1d) | 2025-12-02 → 2025-12-03 (+1d) |
| PG-12490 | Painting Works - Putty, Primer and 1st | 2025-12-08 → 2025-12-09 (+1d) | 2025-12-15 → 2025-12-16 (+1d) |
| PG-12492 | Final Coat Painting | 2025-12-15 → 2025-12-16 (+1d) | 2026-01-06 → 2026-01-07 (+1d) |
| 1.3.1.3.4.24.2 | **Wall Finishing works - Civil** | 2025-10-23 → 2025-10-24 (+1d) | 2026-01-06 → 2026-01-07 (+1d) |
| PG-12493 | Balcony Railing Fixing works | 2025-10-23 → 2025-10-24 (+1d) | 2025-10-28 → 2025-10-29 (+1d) |
| PG-12495 | Dadoing - Wet area | 2025-11-14 → 2025-11-15 (+1d) | 2025-11-20 → 2025-11-21 (+1d) |
| PG-12494 | UPVC Windows & Sliding doors | 2025-12-02 → 2025-12-03 (+1d) | 2025-12-08 → 2025-12-09 (+1d) |
| PG-12496 | Painting Works - Putty, Primer and 1st | 2025-12-08 → 2025-12-09 (+1d) | 2025-12-15 → 2025-12-16 (+1d) |
| PG-12497 | Final Coat Painting | 2025-12-15 → 2025-12-16 (+1d) | 2026-01-06 → 2026-01-07 (+1d) |
| 1.3.1.3.4.24.3 | **Floor Finishing Works - Civil** | 2025-10-23 → 2025-10-24 (+1d) | 2025-12-15 → 2025-12-16 (+1d) |
| PG-12498 | Waterproofing for sunken areas | 2025-10-23 → 2025-10-24 (+1d) | 2025-10-27 → 2025-10-28 (+1d) |
| PG-12499 | Floor Tiling - Wet area | 2025-11-20 → 2025-11-21 (+1d) | 2025-11-26 → 2025-11-27 (+1d) |
| PG-12500 | Floor Tiling - Dry area | 2025-11-26 → 2025-11-27 (+1d) | 2025-12-02 → 2025-12-03 (+1d) |
| PG-12501 | Wooden doors | 2025-12-09 → 2025-12-10 (+1d) | 2025-12-15 → 2025-12-16 (+1d) |
| 1.3.1.3.4.25 | **Floor 22** | 2025-11-06 → 2025-11-07 (+1d) | 2026-01-19 → 2026-01-20 (+1d) |
| 1.3.1.3.4.25.1 | **Ceiling Finishing works - Civil** | 2025-11-15 → 2025-11-17 (+2d) | 2026-01-19 → 2026-01-20 (+1d) |
| PG-12502 | Gypsum Plastering | 2025-11-15 → 2025-11-17 (+2d) | 2025-11-22 → 2025-11-24 (+2d) |
| PG-12503 | Cornice fixing | 2025-12-02 → 2025-12-03 (+1d) | 2025-12-06 → 2025-12-08 (+2d) |
| PG-12505 | Toilet False ceiling | 2025-12-10 → 2025-12-11 (+1d) | 2025-12-15 → 2025-12-16 (+1d) |
| PG-12504 | Painting Works - Putty, Primer and 1st | 2025-12-20 → 2025-12-22 (+2d) | 2025-12-27 → 2025-12-29 (+2d) |
| PG-12506 | Final Coat Painting | 2025-12-27 → 2025-12-29 (+2d) | 2026-01-19 → 2026-01-20 (+1d) |
| 1.3.1.3.4.25.2 | **Wall Finishing works - Civil** | 2025-11-06 → 2025-11-07 (+1d) | 2026-01-19 → 2026-01-20 (+1d) |
| PG-12507 | Balcony Railing Fixing works | 2025-11-06 → 2025-11-07 (+1d) | 2025-11-11 → 2025-11-12 (+1d) |
| PG-12509 | Dadoing - Wet area | 2025-11-27 → 2025-11-28 (+1d) | 2025-12-03 → 2025-12-04 (+1d) |
| PG-12508 | UPVC Windows & Sliding doors | 2025-12-15 → 2025-12-16 (+1d) | 2025-12-20 → 2025-12-22 (+2d) |
| PG-12510 | Painting Works - Putty, Primer and 1st | 2025-12-20 → 2025-12-22 (+2d) | 2025-12-27 → 2025-12-29 (+2d) |
| PG-12511 | Final Coat Painting | 2025-12-27 → 2025-12-29 (+2d) | 2026-01-19 → 2026-01-20 (+1d) |
| 1.3.1.3.4.25.3 | **Floor Finishing Works - Civil** | 2025-11-06 → 2025-11-07 (+1d) | 2025-12-27 → 2025-12-29 (+2d) |
| PG-12512 | Waterproofing for sunken areas | 2025-11-06 → 2025-11-07 (+1d) | 2025-11-10 → 2025-11-11 (+1d) |
| PG-12513 | Floor Tiling - Wet area | 2025-12-03 → 2025-12-04 (+1d) | 2025-12-09 → 2025-12-10 (+1d) |
| PG-12514 | Floor Tiling - Dry area | 2025-12-09 → 2025-12-10 (+1d) | 2025-12-15 → 2025-12-16 (+1d) |
| PG-12515 | Wooden doors | 2025-12-22 → 2025-12-23 (+1d) | 2025-12-27 → 2025-12-29 (+2d) |
| 1.3.1.3.4.26 | **Floor 23** | 2025-11-19 → 2025-11-20 (+1d) | 2026-02-02 → 2026-02-03 (+1d) |
| 1.3.1.3.4.26.1 | **Ceiling Finishing works - Civil** | 2025-11-27 → 2025-11-28 (+1d) | 2026-02-02 → 2026-02-03 (+1d) |
| PG-12516 | Gypsum Plastering | 2025-11-27 → 2025-11-28 (+1d) | 2025-12-04 → 2025-12-05 (+1d) |

| ID | Task | Start | Finish |
| --- | --- | --- | --- |
| PG-12517 | Cornice fixing | 2025-12-13 → 2025-12-15 (+2d) | 2025-12-18 → 2025-12-19 (+1d) |
| PG-12519 | Toilet False ceiling | 2025-12-20 → 2025-12-22 (+2d) | 2025-12-25 → 2025-12-26 (+1d) |
| PG-12518 | Painting Works - Putty, Primer and 1st | 2025-12-31 → 2026-01-01 (+1d) | 2026-01-07 → 2026-01-08 (+1d) |
| PG-12520 | Final Coat Painting | 2026-01-07 → 2026-01-08 (+1d) | 2026-02-02 → 2026-02-03 (+1d) |
| 1.3.1.3.4.26.2 | **Wall Finishing works - Civil** | 2025-11-19 → 2025-11-20 (+1d) | 2026-02-02 → 2026-02-03 (+1d) |
| PG-12521 | Balcony Railing Fixing works | 2025-11-19 → 2025-11-20 (+1d) | 2025-11-24 → 2025-11-25 (+1d) |
| PG-12523 | Dadoing - Wet area | 2025-12-08 → 2025-12-09 (+1d) | 2025-12-13 → 2025-12-15 (+2d) |
| PG-12522 | UPVC Windows & Sliding doors | 2025-12-25 → 2025-12-26 (+1d) | 2025-12-31 → 2026-01-01 (+1d) |
| PG-12524 | Painting Works - Putty, Primer and 1st | 2025-12-31 → 2026-01-01 (+1d) | 2026-01-07 → 2026-01-08 (+1d) |
| PG-12525 | Final Coat Painting | 2026-01-07 → 2026-01-08 (+1d) | 2026-02-02 → 2026-02-03 (+1d) |
| 1.3.1.3.4.26.3 | **Floor Finishing Works - Civil** | 2025-11-19 → 2025-11-20 (+1d) | 2026-01-07 → 2026-01-08 (+1d) |
| PG-12526 | Waterproofing for sunken areas | 2025-11-19 → 2025-11-20 (+1d) | 2025-11-22 → 2025-11-24 (+2d) |
| PG-12527 | Floor Tiling - Wet area | 2025-12-13 → 2025-12-15 (+2d) | 2025-12-19 → 2025-12-20 (+1d) |
| PG-12528 | Floor Tiling - Dry area | 2025-12-19 → 2025-12-20 (+1d) | 2025-12-25 → 2025-12-26 (+1d) |
| PG-12529 | Wooden doors | 2026-01-01 → 2026-01-02 (+1d) | 2026-01-07 → 2026-01-08 (+1d) |
| 1.3.1.3.4.27 | **Floor 24** | 2025-12-02 → 2025-12-03 (+1d) | 2026-02-14 → 2026-02-16 (+2d) |
| 1.3.1.3.4.27.1 | **Ceiling Finishing works - Civil** | 2025-12-11 → 2025-12-12 (+1d) | 2026-02-14 → 2026-02-16 (+2d) |
| PG-12530 | Gypsum Plastering | 2025-12-11 → 2025-12-12 (+1d) | 2025-12-18 → 2025-12-19 (+1d) |
| PG-12531 | Cornice fixing | 2025-12-27 → 2025-12-29 (+2d) | 2026-01-01 → 2026-01-02 (+1d) |
| PG-12533 | Toilet False ceiling | 2026-01-03 → 2026-01-05 (+2d) | 2026-01-08 → 2026-01-09 (+1d) |
| PG-12532 | Painting Works - Putty, Primer and 1st | 2026-01-14 → 2026-01-15 (+1d) | 2026-01-21 → 2026-01-22 (+1d) |
| PG-12534 | Final Coat Painting | 2026-01-21 → 2026-01-22 (+1d) | 2026-02-14 → 2026-02-16 (+2d) |
| 1.3.1.3.4.27.2 | **Wall Finishing works - Civil** | 2025-12-02 → 2025-12-03 (+1d) | 2026-02-14 → 2026-02-16 (+2d) |
| PG-12535 | Balcony Railing Fixing works | 2025-12-02 → 2025-12-03 (+1d) | 2025-12-06 → 2025-12-08 (+2d) |
| PG-12537 | Dadoing - Wet area | 2025-12-22 → 2025-12-23 (+1d) | 2025-12-27 → 2025-12-29 (+2d) |
| PG-12536 | UPVC Windows & Sliding doors | 2026-01-08 → 2026-01-09 (+1d) | 2026-01-14 → 2026-01-15 (+1d) |
| PG-12538 | Painting Works - Putty, Primer and 1st | 2026-01-14 → 2026-01-15 (+1d) | 2026-01-21 → 2026-01-22 (+1d) |
| PG-12539 | Final Coat Painting | 2026-01-21 → 2026-01-22 (+1d) | 2026-02-14 → 2026-02-16 (+2d) |
| 1.3.1.3.4.27.3 | **Floor Finishing Works - Civil** | 2025-12-02 → 2025-12-03 (+1d) | 2026-01-21 → 2026-01-22 (+1d) |
| PG-12540 | Waterproofing for sunken areas | 2025-12-02 → 2025-12-03 (+1d) | 2025-12-05 → 2025-12-06 (+1d) |
| PG-12541 | Floor Tiling - Wet area | 2025-12-27 → 2025-12-29 (+2d) | 2026-01-02 → 2026-01-03 (+1d) |
| PG-12542 | Floor Tiling - Dry area | 2026-01-02 → 2026-01-03 (+1d) | 2026-01-08 → 2026-01-09 (+1d) |
| PG-12543 | Wooden doors | 2026-01-15 → 2026-01-16 (+1d) | 2026-01-21 → 2026-01-22 (+1d) |
| 1.3.1.3.4.28 | **Floor 25** | 2025-12-23 → 2025-12-24 (+1d) | 2026-03-07 → 2026-03-09 (+2d) |
| 1.3.1.3.4.28.1 | **Ceiling Finishing works - Civil** | 2026-01-01 → 2026-01-02 (+1d) | 2026-03-07 → 2026-03-09 (+2d) |
| PG-12544 | Gypsum Plastering | 2026-01-01 → 2026-01-02 (+1d) | 2026-01-08 → 2026-01-09 (+1d) |
| PG-12545 | Cornice fixing | 2026-01-17 → 2026-01-19 (+2d) | 2026-01-22 → 2026-01-23 (+1d) |
| PG-12547 | Toilet False ceiling | 2026-01-24 → 2026-01-27 (+3d) | 2026-01-30 → 2026-01-31 (+1d) |
| PG-12546 | Painting Works - Putty, Primer and 1st | 2026-02-05 → 2026-02-06 (+1d) | 2026-02-12 → 2026-02-13 (+1d) |
| PG-12548 | Final Coat Painting | 2026-02-12 → 2026-02-13 (+1d) | 2026-03-07 → 2026-03-09 (+2d) |
| 1.3.1.3.4.28.2 | **Wall Finishing works - Civil** | 2025-12-23 → 2025-12-24 (+1d) | 2026-03-07 → 2026-03-09 (+2d) |
| PG-12549 | Balcony Railing Fixing works | 2025-12-23 → 2025-12-24 (+1d) | 2025-12-27 → 2025-12-29 (+2d) |
| PG-12551 | Dadoing - Wet area | 2026-01-12 → 2026-01-13 (+1d) | 2026-01-17 → 2026-01-19 (+2d) |
| PG-12550 | UPVC Windows & Sliding doors | 2026-01-30 → 2026-01-31 (+1d) | 2026-02-05 → 2026-02-06 (+1d) |
| PG-12552 | Painting Works - Putty, Primer and 1st | 2026-02-05 → 2026-02-06 (+1d) | 2026-02-12 → 2026-02-13 (+1d) |
| PG-12553 | Final Coat Painting | 2026-02-12 → 2026-02-13 (+1d) | 2026-03-07 → 2026-03-09 (+2d) |
| 1.3.1.3.4.28.3 | **Floor Finishing Works - Civil** | 2025-12-23 → 2025-12-24 (+1d) | 2026-02-12 → 2026-02-13 (+1d) |
| PG-12554 | Waterproofing for sunken areas | 2025-12-23 → 2025-12-24 (+1d) | 2025-12-26 → 2025-12-27 (+1d) |
| PG-12555 | Floor Tiling - Wet area | 2026-01-17 → 2026-01-19 (+2d) | 2026-01-23 → 2026-01-24 (+1d) |
| PG-12556 | Floor Tiling - Dry area | 2026-01-23 → 2026-01-24 (+1d) | 2026-01-30 → 2026-01-31 (+1d) |
| PG-12557 | Wooden doors | 2026-02-06 → 2026-02-07 (+1d) | 2026-02-12 → 2026-02-13 (+1d) |
| 1.3.1.3.4.29 | **Floor 26** | 2026-01-13 → 2026-01-14 (+1d) | 2026-03-30 → 2026-03-31 (+1d) |
| 1.3.1.3.4.29.1 | **Ceiling Finishing works - Civil** | 2026-01-22 → 2026-01-23 (+1d) | 2026-03-30 → 2026-03-31 (+1d) |
| PG-12558 | Gypsum Plastering | 2026-01-22 → 2026-01-23 (+1d) | 2026-01-30 → 2026-01-31 (+1d) |
| PG-12559 | Cornice fixing | 2026-02-09 → 2026-02-10 (+1d) | 2026-02-13 → 2026-02-14 (+1d) |
| PG-12561 | Toilet False ceiling | 2026-02-17 → 2026-02-18 (+1d) | 2026-02-21 → 2026-02-23 (+2d) |
| PG-12560 | Painting Works - Putty, Primer and 1st | 2026-02-27 → 2026-02-28 (+1d) | 2026-03-06 → 2026-03-07 (+1d) |
| PG-12562 | Final Coat Painting | 2026-03-06 → 2026-03-07 (+1d) | 2026-03-30 → 2026-03-31 (+1d) |
| 1.3.1.3.4.29.2 | **Wall Finishing works - Civil** | 2026-01-13 → 2026-01-14 (+1d) | 2026-03-28 → 2026-03-30 (+2d) |
| PG-12563 | Balcony Railing Fixing works | 2026-01-13 → 2026-01-14 (+1d) | 2026-01-17 → 2026-01-19 (+2d) |
| PG-12565 | Dadoing - Wet area | 2026-02-04 → 2026-02-05 (+1d) | 2026-02-10 → 2026-02-11 (+1d) |
| PG-12564 | UPVC Windows & Sliding doors | 2026-02-21 → 2026-02-23 (+2d) | 2026-02-27 → 2026-02-28 (+1d) |
| PG-12566 | Painting Works - Putty, Primer and 1st | 2026-02-27 → 2026-02-28 (+1d) | 2026-03-06 → 2026-03-07 (+1d) |
| PG-12567 | Final Coat Painting | 2026-03-06 → 2026-03-07 (+1d) | 2026-03-28 → 2026-03-30 (+2d) |
| 1.3.1.3.4.29.3 | **Floor Finishing Works - Civil** | 2026-01-13 → 2026-01-14 (+1d) | 2026-03-06 → 2026-03-07 (+1d) |
| PG-12568 | Waterproofing for sunken areas | 2026-01-13 → 2026-01-14 (+1d) | 2026-01-16 → 2026-01-17 (+1d) |
| PG-12569 | Floor Tiling - Wet area | 2026-02-10 → 2026-02-11 (+1d) | 2026-02-16 → 2026-02-17 (+1d) |
| PG-12570 | Floor Tiling - Dry area | 2026-02-16 → 2026-02-17 (+1d) | 2026-02-21 → 2026-02-23 (+2d) |
| PG-12571 | Wooden doors | 2026-02-28 → 2026-03-02 (+2d) | 2026-03-06 → 2026-03-07 (+1d) |
| 1.3.1.3.4.30 | **Floor 27** | 2026-02-05 → 2026-02-06 (+1d) | 2026-04-20 → 2026-04-21 (+1d) |

| ID | Task | Start | Finish |
| --- | --- | --- | --- |
| 1.3.1.3.4.30.1 | **Ceiling Finishing works - Civil** | 2026-02-14 → 2026-02-16 (+2d) | 2026-04-20 → 2026-04-21 (+1d) |
| PG-12572 | Gypsum Plastering | 2026-02-14 → 2026-02-16 (+2d) | 2026-02-21 → 2026-02-23 (+2d) |
| PG-12573 | Cornice fixing | 2026-03-03 → 2026-03-04 (+1d) | 2026-03-07 → 2026-03-09 (+2d) |
| PG-12575 | Toilet False ceiling | 2026-03-11 → 2026-03-12 (+1d) | 2026-03-16 → 2026-03-17 (+1d) |
| PG-12574 | Painting Works - Putty, Primer and 1st | 2026-03-21 → 2026-03-23 (+2d) | 2026-03-28 → 2026-03-30 (+2d) |
| PG-12576 | Final Coat Painting | 2026-03-28 → 2026-03-30 (+2d) | 2026-04-20 → 2026-04-21 (+1d) |
| 1.3.1.3.4.30.2 | **Wall Finishing works - Civil** | 2026-02-05 → 2026-02-06 (+1d) | 2026-04-20 → 2026-04-21 (+1d) |
| PG-12577 | Balcony Railing Fixing works | 2026-02-05 → 2026-02-06 (+1d) | 2026-02-10 → 2026-02-11 (+1d) |
| PG-12579 | Dadoing - Wet area | 2026-02-26 → 2026-02-27 (+1d) | 2026-03-04 → 2026-03-05 (+1d) |
| PG-12578 | UPVC Windows & Sliding doors | 2026-03-16 → 2026-03-17 (+1d) | 2026-03-21 → 2026-03-23 (+2d) |
| PG-12580 | Painting Works - Putty, Primer and 1st | 2026-03-21 → 2026-03-23 (+2d) | 2026-03-28 → 2026-03-30 (+2d) |
| PG-12581 | Final Coat Painting | 2026-03-28 → 2026-03-30 (+2d) | 2026-04-20 → 2026-04-21 (+1d) |
| 1.3.1.3.4.30.3 | **Floor Finishing Works - Civil** | 2026-02-05 → 2026-02-06 (+1d) | 2026-03-28 → 2026-03-30 (+2d) |
| PG-12582 | Waterproofing for sunken areas | 2026-02-05 → 2026-02-06 (+1d) | 2026-02-09 → 2026-02-10 (+1d) |
| PG-12583 | Floor Tiling - Wet area | 2026-03-04 → 2026-03-05 (+1d) | 2026-03-10 → 2026-03-11 (+1d) |
| PG-12584 | Floor Tiling - Dry area | 2026-03-10 → 2026-03-11 (+1d) | 2026-03-16 → 2026-03-17 (+1d) |
| PG-12585 | Wooden doors | 2026-03-23 → 2026-03-24 (+1d) | 2026-03-28 → 2026-03-30 (+2d) |
| 1.3.1.3.4.31 | **Floor 28** | 2026-02-27 → 2026-02-28 (+1d) | 2026-05-12 → 2026-05-13 (+1d) |
| 1.3.1.3.4.31.1 | **Ceiling Finishing works - Civil** | 2026-03-07 → 2026-03-09 (+2d) | 2026-05-12 → 2026-05-13 (+1d) |
| PG-12586 | Gypsum Plastering | 2026-03-07 → 2026-03-09 (+2d) | 2026-03-14 → 2026-03-16 (+2d) |
| PG-12587 | Cornice fixing | 2026-03-25 → 2026-03-26 (+1d) | 2026-03-28 → 2026-03-30 (+2d) |
| PG-12589 | Toilet False ceiling | 2026-04-01 → 2026-04-02 (+1d) | 2026-04-06 → 2026-04-07 (+1d) |
| PG-12588 | Painting Works - Putty, Primer and 1st | 2026-04-11 → 2026-04-13 (+2d) | 2026-04-18 → 2026-04-20 (+2d) |
| PG-12590 | Final Coat Painting | 2026-04-18 → 2026-04-20 (+2d) | 2026-05-12 → 2026-05-13 (+1d) |
| 1.3.1.3.4.31.2 | **Wall Finishing works - Civil** | 2026-02-27 → 2026-02-28 (+1d) | 2026-05-12 → 2026-05-13 (+1d) |
| PG-12591 | Balcony Railing Fixing works | 2026-02-27 → 2026-02-28 (+1d) | 2026-03-04 → 2026-03-05 (+1d) |
| PG-12593 | Dadoing - Wet area | 2026-03-19 → 2026-03-20 (+1d) | 2026-03-25 → 2026-03-26 (+1d) |
| PG-12592 | UPVC Windows & Sliding doors | 2026-04-06 → 2026-04-07 (+1d) | 2026-04-11 → 2026-04-13 (+2d) |
| PG-12594 | Painting Works - Putty, Primer and 1st | 2026-04-11 → 2026-04-13 (+2d) | 2026-04-18 → 2026-04-20 (+2d) |
| PG-12595 | Final Coat Painting | 2026-04-18 → 2026-04-20 (+2d) | 2026-05-12 → 2026-05-13 (+1d) |
| 1.3.1.3.4.31.3 | **Floor Finishing Works - Civil** | 2026-02-27 → 2026-02-28 (+1d) | 2026-04-18 → 2026-04-20 (+2d) |
| PG-12596 | Waterproofing for sunken areas | 2026-02-27 → 2026-02-28 (+1d) | 2026-03-03 → 2026-03-04 (+1d) |
| PG-12597 | Floor Tiling - Wet area | 2026-03-25 → 2026-03-26 (+1d) | 2026-03-31 → 2026-04-01 (+1d) |
| PG-12598 | Floor Tiling - Dry area | 2026-03-31 → 2026-04-01 (+1d) | 2026-04-06 → 2026-04-07 (+1d) |
| PG-12599 | Wooden doors | 2026-04-13 → 2026-04-14 (+1d) | 2026-04-18 → 2026-04-20 (+2d) |
| 1.3.1.3.4.32 | **Floor 29** | 2026-03-20 → 2026-03-21 (+1d) | 2026-06-03 → 2026-06-04 (+1d) |
| 1.3.1.3.4.32.1 | **Ceiling Finishing works - Civil** | 2026-03-30 → 2026-03-31 (+1d) | 2026-06-03 → 2026-06-04 (+1d) |
| PG-12600 | Gypsum Plastering | 2026-03-30 → 2026-03-31 (+1d) | 2026-04-06 → 2026-04-07 (+1d) |
| PG-12601 | Cornice fixing | 2026-04-22 → 2026-04-23 (+1d) | 2026-04-27 → 2026-04-28 (+1d) |
| PG-12603 | Toilet False ceiling | 2026-04-23 → 2026-04-24 (+1d) | 2026-04-28 → 2026-04-29 (+1d) |
| PG-12602 | Painting Works - Putty, Primer and 1st | 2026-05-04 → 2026-05-05 (+1d) | 2026-05-11 → 2026-05-12 (+1d) |
| PG-12604 | Final Coat Painting | 2026-05-11 → 2026-05-12 (+1d) | 2026-06-03 → 2026-06-04 (+1d) |
| 1.3.1.3.4.32.2 | **Wall Finishing works - Civil** | 2026-03-20 → 2026-03-21 (+1d) | 2026-06-03 → 2026-06-04 (+1d) |
| PG-12605 | Balcony Railing Fixing works | 2026-03-20 → 2026-03-21 (+1d) | 2026-03-25 → 2026-03-26 (+1d) |
| PG-12607 | Dadoing - Wet area | 2026-04-10 → 2026-04-11 (+1d) | 2026-04-16 → 2026-04-17 (+1d) |
| PG-12606 | UPVC Windows & Sliding doors | 2026-04-28 → 2026-04-29 (+1d) | 2026-05-04 → 2026-05-05 (+1d) |
| PG-12608 | Painting Works - Putty, Primer and 1st | 2026-05-04 → 2026-05-05 (+1d) | 2026-05-11 → 2026-05-12 (+1d) |
| PG-12609 | Final Coat Painting | 2026-05-11 → 2026-05-12 (+1d) | 2026-06-03 → 2026-06-04 (+1d) |
| 1.3.1.3.4.32.3 | **Floor Finishing Works - Civil** | 2026-03-20 → 2026-03-21 (+1d) | 2026-05-11 → 2026-05-12 (+1d) |
| PG-12610 | Waterproofing for sunken areas | 2026-03-20 → 2026-03-21 (+1d) | 2026-03-24 → 2026-03-25 (+1d) |
| PG-12611 | Floor Tiling - Wet area | 2026-04-16 → 2026-04-17 (+1d) | 2026-04-22 → 2026-04-23 (+1d) |
| PG-12612 | Floor Tiling - Dry area | 2026-04-22 → 2026-04-23 (+1d) | 2026-04-28 → 2026-04-29 (+1d) |
| PG-12613 | Wooden doors | 2026-05-05 → 2026-05-06 (+1d) | 2026-05-11 → 2026-05-12 (+1d) |
| 1.3.1.3.4.33 | **External Finishing works** | 2025-12-29 → 2025-12-30 (+1d) | 2026-04-25 → 2026-04-27 (+2d) |
| PG-12614 | External walls tie rod hole plugging with GP2 | 2025-12-29 → 2025-12-30 (+1d) | 2026-02-03 → 2026-02-04 (+1d) |
| PG-12615 | External walls grinding works | 2026-01-21 → 2026-01-22 (+1d) | 2026-03-10 → 2026-03-11 (+1d) |
| PG-12616 | Texture and painting works | 2026-03-04 → 2026-03-05 (+1d) | 2026-04-25 → 2026-04-27 (+2d) |
| 1.3.1.3.5 | **Corridor & Fire Staircase Finishing works** | 2026-03-06 → 2026-03-07 (+1d) | 2026-07-02 → 2026-07-03 (+1d) |
| 1.3.1.3.5.1 | **Ceiling Finishing works - Civil** | 2026-03-06 → 2026-03-07 (+1d) | 2026-05-28 → 2026-05-29 (+1d) |
| PG-12617 | Gypsum Plastering | 2026-03-06 → 2026-03-07 (+1d) | 2026-03-13 → 2026-03-14 (+1d) |
| PG-12618 | Cornice fixing | 2026-03-12 → 2026-03-13 (+1d) | 2026-03-17 → 2026-03-18 (+1d) |
| PG-12619 | Painting Works - Putty, Primer and 1st | 2026-03-30 → 2026-03-31 (+1d) | 2026-04-06 → 2026-04-07 (+1d) |
| PG-12620 | False ceiling | 2026-04-06 → 2026-04-07 (+1d) | 2026-05-11 → 2026-05-12 (+1d) |
| PG-12621 | Final Coat Painting | 2026-04-23 → 2026-04-24 (+1d) | 2026-05-28 → 2026-05-29 (+1d) |
| 1.3.1.3.5.2 | **Wall Finishing works - Civil** | 2026-04-10 → 2026-04-11 (+1d) | 2026-07-02 → 2026-07-03 (+1d) |
| PG-12622 | UPVC Windows & Sliding doors | 2026-04-10 → 2026-04-11 (+1d) | 2026-04-16 → 2026-04-17 (+1d) |
| PG-12623 | Wall Cladding Upto 1.2 Mts | 2026-04-28 → 2026-04-29 (+1d) | 2026-05-21 → 2026-05-22 (+1d) |
| PG-12624 | Painting Works - Texture & one coat Painting works | 2026-05-28 → 2026-05-29 (+1d) | 2026-06-15 → 2026-06-16 (+1d) |
| PG-12625 | Final Coat Painting | 2026-06-10 → 2026-06-11 (+1d) | 2026-07-02 → 2026-07-03 (+1d) |
| 1.3.1.3.5.3 | **Floor Finishing Works - Civil** | 2026-03-13 → 2026-03-14 (+1d) | 2026-04-11 → 2026-04-13 (+2d) |

| ID | Task | Start | Finish |
| --- | --- | --- | --- |
| PG-12626 | Fire Doors installation | 2026-03-13 → 2026-03-14 (+1d) | 2026-03-25 → 2026-03-26 (+1d) |
| PG-12627 | Vitrified tile flooring works | 2026-03-25 → 2026-03-26 (+1d) | 2026-04-11 → 2026-04-13 (+2d) |
| 1.3.1.3.5.4 | **Fire Staircase Finishing Works - Civil** | 2026-03-13 → 2026-03-14 (+1d) | 2026-07-02 → 2026-07-03 (+1d) |
| PG-12628 | Staircase Railing Fixing works | 2026-03-13 → 2026-03-14 (+1d) | 2026-04-06 → 2026-04-07 (+1d) |
| PG-12629 | Wall and ceiling Gypsum plastering | 2026-03-24 → 2026-03-25 (+1d) | 2026-04-29 → 2026-04-30 (+1d) |
| PG-12630 | Staircase Flooring and Skirting Works | 2026-04-13 → 2026-04-14 (+1d) | 2026-05-28 → 2026-05-29 (+1d) |
| PG-12631 | UPVC Window fixing works | 2026-05-28 → 2026-05-29 (+1d) | 2026-06-15 → 2026-06-16 (+1d) |
| PG-12632 | Staircase Painting works | 2026-06-09 → 2026-06-10 (+1d) | 2026-07-02 → 2026-07-03 (+1d) |
| 1.3.1.3.6 | **MEP Civil Works (Shaft, Lift Shaft & OHT )** | 2025-12-15 → 2025-12-16 (+1d) | 2026-05-15 → 2026-05-16 (+1d) |
| 1.3.1.3.6.1 | **Lift Shaft Works** | 2025-12-15 → 2025-12-16 (+1d) | 2026-05-15 → 2026-05-16 (+1d) |
| PG-12633 | Tie rod hole packing | 2025-12-15 → 2025-12-16 (+1d) | 2025-12-24 → 2025-12-25 (+1d) |
| PG-12634 | Grinding works | 2025-12-24 → 2025-12-25 (+1d) | 2025-12-30 → 2025-12-31 (+1d) |
| PG-12635 | Lift pit water proofing works | 2025-12-30 → 2025-12-31 (+1d) | 2026-01-23 → 2026-01-24 (+1d) |
| PG-12636 | Shaft door opening finishing | 2026-01-23 → 2026-01-24 (+1d) | 2026-02-02 → 2026-02-03 (+1d) |
| PG-12637 | Painting works | 2026-02-02 → 2026-02-03 (+1d) | 2026-02-11 → 2026-02-12 (+1d) |
| PG-12638 | Lift Wall Cladding Works | 2026-04-27 → 2026-04-28 (+1d) | 2026-05-15 → 2026-05-16 (+1d) |
| 1.3.1.3.6.2 | **Electrical Shaft works** | 2025-12-15 → 2025-12-16 (+1d) | 2026-01-16 → 2026-01-17 (+1d) |
| PG-12639 | Tie rod hole packing | 2025-12-15 → 2025-12-16 (+1d) | 2025-12-24 → 2025-12-25 (+1d) |
| PG-12640 | Grinding works | 2025-12-24 → 2025-12-25 (+1d) | 2025-12-30 → 2025-12-31 (+1d) |
| PG-12641 | Shaft door opening finishing | 2025-12-30 → 2025-12-31 (+1d) | 2026-01-07 → 2026-01-08 (+1d) |
| PG-12642 | Painting works | 2026-01-07 → 2026-01-08 (+1d) | 2026-01-16 → 2026-01-17 (+1d) |
| 1.3.1.3.6.3 | **FPS Shaft works** | 2025-12-15 → 2025-12-16 (+1d) | 2026-01-16 → 2026-01-17 (+1d) |
| PG-12643 | Tie rod hole packing | 2025-12-15 → 2025-12-16 (+1d) | 2025-12-24 → 2025-12-25 (+1d) |
| PG-12644 | Grinding works | 2025-12-24 → 2025-12-25 (+1d) | 2025-12-30 → 2025-12-31 (+1d) |
| PG-12645 | Shaft door opening finishing | 2025-12-30 → 2025-12-31 (+1d) | 2026-01-07 → 2026-01-08 (+1d) |
| PG-12646 | Painting works | 2026-01-07 → 2026-01-08 (+1d) | 2026-01-16 → 2026-01-17 (+1d) |
| 1.3.1.3.6.4 | **PHE Shaft works** | 2025-12-15 → 2025-12-16 (+1d) | 2026-01-16 → 2026-01-17 (+1d) |
| PG-12647 | Tie rod hole packing | 2025-12-15 → 2025-12-16 (+1d) | 2025-12-24 → 2025-12-25 (+1d) |
| PG-12648 | Grinding works | 2025-12-24 → 2025-12-25 (+1d) | 2025-12-30 → 2025-12-31 (+1d) |
| PG-12649 | Shaft door opening finishing | 2025-12-30 → 2025-12-31 (+1d) | 2026-01-07 → 2026-01-08 (+1d) |
| PG-12650 | Painting works | 2026-01-07 → 2026-01-08 (+1d) | 2026-01-16 → 2026-01-17 (+1d) |
| 1.3.1.3.6.5 | **Data & Communication Shaft** | 2025-12-15 → 2025-12-16 (+1d) | 2026-01-14 → 2026-01-15 (+1d) |
| PG-12651 | Tie rod hole packing | 2025-12-15 → 2025-12-16 (+1d) | 2025-12-24 → 2025-12-25 (+1d) |
| PG-12652 | Grinding works | 2025-12-24 → 2025-12-25 (+1d) | 2025-12-30 → 2025-12-31 (+1d) |
| PG-12653 | Shaft door opening finishing | 2025-12-30 → 2025-12-31 (+1d) | 2026-01-05 → 2026-01-06 (+1d) |
| PG-12654 | Painting works | 2026-01-05 → 2026-01-06 (+1d) | 2026-01-14 → 2026-01-15 (+1d) |
| 1.3.1.3.6.6 | **OHT Works** | 2025-12-15 → 2025-12-16 (+1d) | 2026-02-03 → 2026-02-04 (+1d) |
| PG-12655 | Tank materials Supply & Shifting | 2025-12-15 → 2025-12-16 (+1d) | 2025-12-26 → 2025-12-27 (+1d) |
| PG-12656 | Assembling OHT FRP Tank | 2025-12-26 → 2025-12-27 (+1d) | 2026-01-07 → 2026-01-08 (+1d) |
| PG-12657 | Installation of OHT Tank | 2026-01-07 → 2026-01-08 (+1d) | 2026-01-24 → 2026-01-27 (+3d) |
| PG-12658 | Water tightness works and checking | 2026-01-24 → 2026-01-27 (+3d) | 2026-02-03 → 2026-02-04 (+1d) |
| 1.3.1.3.7 | **MEP Shaft works** | 2026-01-14 → 2026-01-15 (+1d) | 2026-04-07 → 2026-04-08 (+1d) |
| 1.3.1.3.7.1 | **Electrical** | 2026-01-16 → 2026-01-17 (+1d) | 2026-02-26 → 2026-02-27 (+1d) |
| PG-12659 | Tray Works | 2026-01-16 → 2026-01-17 (+1d) | 2026-01-29 → 2026-01-30 (+1d) |
| PG-12660 | Cable & Conducting works | 2026-01-29 → 2026-01-30 (+1d) | 2026-02-10 → 2026-02-11 (+1d) |
| PG-12661 | Wiring/DB/connector box installation and termination works | 2026-02-10 → 2026-02-11 (+1d) | 2026-02-26 → 2026-02-27 (+1d) |
| 1.3.1.3.7.2 | **FPS** | 2026-01-16 → 2026-01-17 (+1d) | 2026-02-26 → 2026-02-27 (+1d) |
| PG-12662 | Shaft MS Piping & fixtures installation | 2026-01-16 → 2026-01-17 (+1d) | 2026-02-10 → 2026-02-11 (+1d) |
| PG-12663 | Tray / cabling / conducting & wiring works | 2026-02-10 → 2026-02-11 (+1d) | 2026-02-26 → 2026-02-27 (+1d) |
| 1.3.1.3.7.3 | **Data & Communication** | 2026-01-14 → 2026-01-15 (+1d) | 2026-03-04 → 2026-03-05 (+1d) |
| PG-12664 | Tray Works | 2026-01-14 → 2026-01-15 (+1d) | 2026-01-29 → 2026-01-30 (+1d) |
| PG-12665 | Tray / cabling / conducting & wiring works | 2026-01-29 → 2026-01-30 (+1d) | 2026-02-16 → 2026-02-17 (+1d) |
| PG-12666 | Wiring/DB/connector box installation and termination works | 2026-02-16 → 2026-02-17 (+1d) | 2026-03-04 → 2026-03-05 (+1d) |
| 1.3.1.3.7.4 | **PHE** | 2026-01-16 → 2026-01-17 (+1d) | 2026-04-07 → 2026-04-08 (+1d) |
| PG-12667 | Bracket fixing works | 2026-01-16 → 2026-01-17 (+1d) | 2026-01-24 → 2026-01-27 (+3d) |
| PG-12668 | Piping Works | 2026-01-24 → 2026-01-27 (+3d) | 2026-02-11 → 2026-02-12 (+1d) |
| PG-12669 | Terrace Ring main & OHT Connection works | 2026-02-11 → 2026-02-12 (+1d) | 2026-03-30 → 2026-03-31 (+1d) |
| PG-12670 | Commissioning | 2026-03-30 → 2026-03-31 (+1d) | 2026-04-07 → 2026-04-08 (+1d) |
| 1.3.1.3.8 | **Lift Installation and Testing works** | 2025-12-30 → 2025-12-31 (+1d) | 2026-07-29 → 2026-07-30 (+1d) |
| PG-12671 | Lift Shaft Survey works | 2025-12-30 → 2025-12-31 (+1d) | 2026-01-10 → 2026-01-12 (+2d) |
| PG-12672 | Guide Rails fixing works | 2026-02-11 → 2026-02-12 (+1d) | 2026-03-31 → 2026-04-01 (+1d) |
| PG-12673 | Lift Frame fixing works | 2026-03-31 → 2026-04-01 (+1d) | 2026-04-27 → 2026-04-28 (+1d) |
| PG-12674 | CAR Assembly works | 2026-04-27 → 2026-04-28 (+1d) | 2026-05-21 → 2026-05-22 (+1d) |
| PG-12675 | Lift Machine Room Works | 2026-05-21 → 2026-05-22 (+1d) | 2026-06-24 → 2026-06-25 (+1d) |
| PG-12676 | Slow Speed & High Speed Testing works | 2026-06-24 → 2026-06-25 (+1d) | 2026-07-29 → 2026-07-30 (+1d) |
| 1.3.1.3.10 | **Entrance Lobby works** | 2026-07-02 → 2026-07-03 (+1d) | 2026-10-16 → 2026-10-17 (+1d) |
| PG-12684 | Flooring Works | 2026-07-02 → 2026-07-03 (+1d) | 2026-07-20 → 2026-07-21 (+1d) |
| PG-12685 | Glass Door and installation Works | 2026-07-20 → 2026-07-21 (+1d) | 2026-08-11 → 2026-08-12 (+1d) |
| PG-12687 | Canopy Works | 2026-07-20 → 2026-07-21 (+1d) | 2026-08-18 → 2026-08-19 (+1d) |
| PG-12686 | Painting Works | 2026-08-11 → 2026-08-12 (+1d) | 2026-08-24 → 2026-08-25 (+1d) |

| ID | Task | Start | Finish | Complete | Total float |
| --- | --- | --- | --- | --- | --- |
| PG-12688 | Interior Works | 2026-08-24 → 2026-08-25 (+1d) | 2026-10-16 → 2026-10-17 (+1d) |  |  |
| 1.3.1.3.11 | **Lightening Arrester works** | 2026-04-25 → 2026-04-27 (+2d) | 2026-05-07 → 2026-05-08 (+1d) |  |  |
| PG-12689 | Conductor will be lifted with RCC Works, But Terrace works will be done once Parapet Painting done | 2026-04-25 → 2026-04-27 (+2d) | 2026-05-07 → 2026-05-08 (+1d) |  |  |
| 1.3.1.5 | **Landscape and Hardscape works** | 2026-04-25 → 2026-04-27 (+2d) | 2026-08-08 → 2026-08-10 (+2d) |  |  |
| PG-12715 | Hardscape ( Granite, Planter, Walkways Etc..) | 2026-04-25 → 2026-04-27 (+2d) | 2026-06-17 → 2026-06-18 (+1d) |  |  |
| PG-12716 | Filter media and soil filling works | 2026-06-12 → 2026-06-13 (+1d) | 2026-07-04 → 2026-07-06 (+2d) |  |  |
| PG-12717 | Irrigation piping works | 2026-06-24 → 2026-06-25 (+1d) | 2026-07-16 → 2026-07-17 (+1d) |  |  |
| PG-12718 | Planting works | 2026-07-16 → 2026-07-17 (+1d) | 2026-08-08 → 2026-08-10 (+2d) |  |  |
| 1.3.9 | **Project Infrastructure Works ( Services/MEP )** |  | 2026-09-25 → 2026-09-26 (+1d) |  |  |
| 1.3.9.1 | **Civil & Services Works ( Transformer, DG,STP )** |  | 2026-09-25 → 2026-09-26 (+1d) |  |  |
| 1.3.9.1.1 | **Transformer Yard Civil Works** | 2026-03-21 → 2026-03-23 (+2d) | 2026-05-30 → 2026-06-01 (+2d) |  |  |
| 1.3.9.1.1.1 | **Transformer 01** | 2026-03-21 → 2026-03-23 (+2d) | 2026-05-30 → 2026-06-01 (+2d) |  |  |
| PG-30428 | Footing and Pedestal Excavation Works | 2026-03-21 → 2026-03-23 (+2d) | 2026-04-02 → 2026-04-03 (+1d) |  |  |
| PG-30429 | Footing and Pedestal Reinforcement works | 2026-04-04 → 2026-04-06 (+2d) | 2026-04-08 → 2026-04-09 (+1d) |  |  |
| PG-30430 | Footing and Pedestal Concrete works | 2026-04-08 → 2026-04-09 (+1d) | 2026-04-20 → 2026-04-21 (+1d) |  |  |
| PG-30431 | Fencing Retaining wall footing reinforcement works | 2026-04-20 → 2026-04-21 (+1d) | 2026-04-27 → 2026-04-28 (+1d) |  |  |
| PG-30432 | Fencing Retaining wall footing formwork and concrete works | 2026-04-27 → 2026-04-28 (+1d) | 2026-05-04 → 2026-05-05 (+1d) |  |  |
| PG-30434 | Fencing works MS/GRC | 2026-05-01 → 2026-05-02 (+1d) | 2026-05-26 → 2026-05-27 (+1d) |  |  |
| PG-30433 | Retaining wall upto low level concrete works | 2026-05-04 → 2026-05-05 (+1d) | 2026-05-08 → 2026-05-09 (+1d) |  |  |
| PG-30435 | Floor Aggregates spreading works | 2026-05-26 → 2026-05-27 (+1d) | 2026-05-30 → 2026-06-01 (+2d) |  |  |
| 1.3.9.1.2 | **Transformer Yard Electrical works** | 2026-08-08 → 2026-08-10 (+2d) | 2026-09-25 → 2026-09-26 (+1d) |  |  |
| 1.3.9.1.2.1 | **Transformer 01** | 2026-08-08 → 2026-08-10 (+2d) | 2026-09-25 → 2026-09-26 (+1d) |  |  |
| PG-30460 | Cable Trench works | 2026-08-08 → 2026-08-10 (+2d) | 2026-08-20 → 2026-08-21 (+1d) |  |  |
| PG-30461 | LTQS Installation Works | 2026-08-20 → 2026-08-21 (+1d) | 2026-08-29 → 2026-08-31 (+2d) |  |  |
| PG-30462 | Cable laying works | 2026-08-29 → 2026-08-31 (+2d) | 2026-09-15 → 2026-09-16 (+1d) |  |  |
| PG-30463 | Cable Termination works | 2026-09-15 → 2026-09-16 (+1d) | 2026-09-18 → 2026-09-19 (+1d) |  |  |
| PG-30464 | Testing and commissioning works | 2026-09-18 → 2026-09-19 (+1d) | 2026-09-25 → 2026-09-26 (+1d) |  |  |
| PG-30542 | piping for Excess Treated water discharge |  | 2025-12-08 → 2025-12-06 (-2d) |  | 216.35d → 217.62d |
| PG-30543 | Equipment installation and Pump Fixing Works | 2025-12-08 → 2025-12-06 (-2d) |  |  | 216.35d → 217.62d |
| PG-30544 | Electrical Cabling works for Pumps |  | 2026-01-06 → 2026-01-05 (-1d) |  | 216.35d → 217.62d |
| PG-30545 | Electrical Conducting/Wiring and fixture installation | 2026-01-06 → 2026-01-05 (-1d) |  |  | 216.35d → 217.62d |
| PG-30709 | Painting Works |  |  | 48% → 68% | 304.99d → 305.98d |
| 1.6 | **Testing And Commissioning Works** |  | 2026-10-30 → 2026-10-31 (+1d) |  |  |
| 1.6.1.1.1 | **Units** |  | 2026-02-21 → 2026-02-20 (-1d) |  |  |
| PG-30736 | T&C - Floor 5 |  | 2025-05-08 → 2025-05-09 A (+1d) | 82% → 100% | 430.58d → none |
| PG-30737 | T&C - Floor 6 |  |  | 44% → 64% | 419.23d → 420.22d |
| PG-30738 | T&C - Floor 7 | 2025-05-02 → 2025-05-03 A (+1d) | 2025-06-05 → 2025-06-06 (+1d) | 0% → 15% | 406.68d → 406.74d |
| PG-30740 | T&C - Floor 9 | 2025-05-29 → 2025-05-31 (+2d) | 2025-07-02 → 2025-07-04 (+2d) |  | 382.65d → 382.03d |
| PG-30741 | T&C - Floor 10 | 2025-06-13 → 2025-06-14 (+1d) |  |  | 368.68d → 369.25d |
| PG-30744 | T&C - Floor 13 | 2025-07-25 → 2025-07-23 (-2d) | 2025-08-28 → 2025-08-27 (-1d) |  | 335.18d → 337.48d |
| PG-30745 | T&C - Floor 14 | 2025-08-07 → 2025-08-06 (-1d) |  |  | 324.18d → 325.79d |
| PG-30746 | T&C - Floor 15 | 2025-08-20 → 2025-08-19 (-1d) |  |  | 314.18d → 315.79d |
| PG-30747 | T&C - Floor 16 | 2025-09-02 → 2025-09-01 (-1d) |  |  | 303.18d → 304.79d |
| PG-30748 | T&C - Floor 17 | 2025-09-15 → 2025-09-13 (-2d) |  |  | 292.18d → 293.79d |
| PG-30749 | T&C - Floor 18 | 2025-09-27 → 2025-09-26 (-1d) |  |  | 281.18d → 282.79d |
| PG-30750 | T&C - Floor 19 | 2025-10-23 → 2025-10-22 (-1d) |  |  | 260.18d → 261.79d |
| PG-30751 | T&C - Floor 20 | 2025-11-14 → 2025-11-13 (-1d) | 2025-12-18 → 2025-12-17 (-1d) |  | 241.01d → 242.62d |
| PG-30752 | T&C - Floor 21 | 2025-12-06 → 2025-12-05 (-1d) | 2026-01-09 → 2026-01-08 (-1d) |  | 222.01d → 223.62d |
| PG-30753 | T&C - Floor 22 | 2025-12-29 → 2025-12-27 (-2d) |  |  | 202.01d → 203.62d |
| PG-30754 | T&C - Floor 23 | 2026-01-17 → 2026-01-16 (-1d) | 2026-02-21 → 2026-02-20 (-1d) |  | 186.01d → 187.62d |
| PG-30755 | T&C - Internal Electrical Works |  | 2025-10-21 → 2025-10-20 (-1d) |  | 261.68d → 263.29d |
| PG-30756 | T&C - Internal FPS Works |  | 2025-10-21 → 2025-10-20 (-1d) |  | 261.35d → 262.95d |
| PG-30757 | T&C - Data & Communication Works |  | 2025-10-27 → 2025-10-25 (-2d) |  | 256.35d → 257.95d |
| PG-30758 | T&C - Internal PHE Works including OHT |  | 2025-12-09 → 2025-12-08 (-1d) |  | 218.35d → 219.62d |
| PG-30761 | T&C - Lightining Arrestor works | 2025-12-16 → 2025-12-15 (-1d) |  |  | 250.18d → 251.79d |
| PG-30760 | T&C - Electrical Panel Works |  | 2026-03-23 → 2026-03-21 (-2d) |  | 131.68d → 133.29d |
| PG-30767 | T&C - Floor 5 |  | 2025-05-06 → 2025-05-07 A (+1d) | 89% → 100% | 431.69d → none |
| PG-30768 | T&C - Floor 6 |  |  | 36% → 56% | 416.83d → 417.82d |
| PG-30769 | T&C - Floor 7 |  |  | 4% → 25% | 407.59d → 408.58d |
| PG-30771 | T&C - Floor 9 | 2025-05-29 → 2025-05-30 (+1d) |  |  | 382.31d → 383.21d |
| PG-30772 | T&C - Floor 10 | 2025-06-14 → 2025-06-16 (+2d) | 2025-07-19 → 2025-07-21 (+2d) |  | 368.35d → 368.75d |
| PG-30774 | T&C - Floor 12 |  | 2025-08-14 → 2025-08-16 (+2d) |  | 346.28d → 346.67d |
| PG-30775 | T&C - Floor 13 |  | 2025-08-29 → 2025-08-28 (-1d) |  | 334.93d → 336.42d |
| PG-30795 | T&C - Lightining Arrestor works | 2026-01-23 → 2026-01-22 (-1d) |  |  | 220.26d → 221.4d |
| PG-30793 | T&C - Lift Works | 2026-04-17 → 2026-04-16 (-1d) |  |  | 120.76d → 121.9d |
| 1.6.1.3.1 | **Units** |  | 2026-07-14 → 2026-07-15 (+1d) |  |  |
| PG-30797 | T&C - Floor 1 |  | 2025-05-07 → 2025-05-08 A (+1d) | 85% → 100% | 430.66d → none |
| PG-30798 | T&C - Floor 2 |  |  | 45% → 66% | 418.38d → 419.36d |
| PG-30799 | T&C - Floor 3 | 2025-05-08 → 2025-05-09 A (+1d) |  | 0% → 3% | 400.34d → 401.3d |
| PG-30802 | T&C - Floor 6 | 2025-06-18 → 2025-06-19 (+1d) | 2025-07-23 → 2025-07-24 (+1d) |  | 365.51d → 365.92d |

| ID | Task | Start | Finish | Complete | Total float |
| --- | --- | --- | --- | --- | --- |
| PG-30804 | T&C - Floor 8 | 2025-07-22 → 2025-07-23 (+1d) |  |  | 336.5d → 337.17d |
| PG-30805 | T&C - Floor 9 | 2025-08-04 → 2025-08-05 (+1d) | 2025-09-08 → 2025-09-09 (+1d) |  |  |
| PG-30806 | T&C - Floor 10 | 2025-08-21 → 2025-08-22 (+1d) | 2025-09-25 → 2025-09-26 (+1d) |  |  |
| PG-30807 | T&C - Floor 11 | 2025-09-03 → 2025-09-04 (+1d) | 2025-10-09 → 2025-10-10 (+1d) |  |  |
| PG-30808 | T&C - Floor 12 | 2025-09-19 → 2025-09-20 (+1d) | 2025-10-24 → 2025-10-25 (+1d) |  |  |
| PG-30809 | T&C - Floor 13 | 2025-10-03 → 2025-10-04 (+1d) | 2025-11-07 → 2025-11-08 (+1d) |  |  |
| PG-30810 | T&C - Floor 14 | 2025-10-14 → 2025-10-15 (+1d) | 2025-11-18 → 2025-11-19 (+1d) |  |  |
| PG-30812 | T&C - Floor 16 | 2025-11-11 → 2025-11-12 (+1d) | 2025-12-13 → 2025-12-15 (+2d) |  |  |
| PG-30813 | T&C - Floor 17 | 2025-11-22 → 2025-11-24 (+2d) | 2025-12-26 → 2025-12-27 (+1d) |  |  |
| PG-30814 | T&C - Floor 18 | 2025-12-05 → 2025-12-06 (+1d) | 2026-01-08 → 2026-01-09 (+1d) |  |  |
| PG-30815 | T&C - Floor 19 | 2025-12-18 → 2025-12-19 (+1d) | 2026-01-21 → 2026-01-22 (+1d) |  |  |
| PG-30816 | T&C - Floor 20 | 2025-12-31 → 2026-01-01 (+1d) | 2026-02-05 → 2026-02-06 (+1d) |  |  |
| PG-30817 | T&C - Floor 21 | 2026-01-13 → 2026-01-14 (+1d) | 2026-02-18 → 2026-02-19 (+1d) |  |  |
| PG-30818 | T&C - Floor 22 | 2026-01-27 → 2026-01-28 (+1d) | 2026-03-03 → 2026-03-04 (+1d) |  |  |
| PG-30819 | T&C - Floor 23 | 2026-02-09 → 2026-02-10 (+1d) | 2026-03-14 → 2026-03-16 (+2d) |  |  |
| PG-30820 | T&C - Floor 24 | 2026-02-21 → 2026-02-23 (+2d) | 2026-03-28 → 2026-03-30 (+2d) |  |  |
| PG-30821 | T&C - Floor 25 | 2026-03-14 → 2026-03-16 (+2d) | 2026-04-18 → 2026-04-20 (+2d) |  |  |
| PG-30822 | T&C - Floor 26 | 2026-04-04 → 2026-04-06 (+2d) | 2026-05-12 → 2026-05-13 (+1d) |  |  |
| PG-30823 | T&C - Floor 27 | 2026-04-27 → 2026-04-28 (+1d) | 2026-06-02 → 2026-06-03 (+1d) |  |  |
| PG-30824 | T&C - Floor 28 | 2026-05-19 → 2026-05-20 (+1d) | 2026-06-23 → 2026-06-24 (+1d) |  |  |
| PG-30825 | T&C - Floor 29 | 2026-06-10 → 2026-06-11 (+1d) | 2026-07-14 → 2026-07-15 (+1d) |  |  |
| 1.6.1.3.2 | **Common Areas** | 2026-02-26 → 2026-02-27 (+1d) |  |  |  |
| PG-30826 | T&C - Internal Electrical Works | 2026-02-26 → 2026-02-27 (+1d) | 2026-03-16 → 2026-03-17 (+1d) |  |  |
| PG-30827 | T&C - Internal FPS Works | 2026-02-26 → 2026-02-27 (+1d) | 2026-03-16 → 2026-03-17 (+1d) |  |  |
| PG-30828 | T&C - Data & Communication Works | 2026-03-04 → 2026-03-05 (+1d) | 2026-03-21 → 2026-03-23 (+2d) |  |  |
| PG-30829 | T&C - Internal PHE Works including OHT | 2026-04-07 → 2026-04-08 (+1d) | 2026-04-30 → 2026-05-01 (+1d) |  |  |
| PG-30832 | T&C - Lightining Arrestor works | 2026-05-07 → 2026-05-08 (+1d) | 2026-05-14 → 2026-05-15 (+1d) |  |  |
| PG-30830 | T&C - Lift Works | 2026-07-29 → 2026-07-30 (+1d) | 2026-08-08 → 2026-08-10 (+2d) |  |  |
| 1.6.9 | **Project InfraStructure Works ( Services & MEP )** |  | 2026-10-30 → 2026-10-31 (+1d) |  |  |
| 1.6.9.1 | **Transformer Works** | 2026-09-25 → 2026-09-26 (+1d) | 2026-10-30 → 2026-10-31 (+1d) |  |  |
| PG-31514 | T&C - Transformer 01 ( Building 01 & 02 ) | 2026-09-25 → 2026-09-26 (+1d) | 2026-10-30 → 2026-10-31 (+1d) |  |  |
| 1.7 | **Snagging De Snagging** |  | 2026-12-04 → 2026-12-05 (+1d) |  |  |
| 1.7.1 | **Building 1** |  | 2026-11-03 → 2026-11-04 (+1d) |  |  |
| PG-31537 | Floor 3 |  | 2025-05-08 → 2025-05-09 A (+1d) | 82% → 100% | 460.31d → none |
| PG-31538 | Floor 4 |  |  | 39% → 59% | 447.18d → 448.17d |
| PG-31539 | Floor 5 | 2025-05-08 → 2025-05-09 A (+1d) | 2025-06-12 → 2025-06-11 (-1d) | 0% → 3% | 430.58d → 431.81d |
| PG-31541 | Floor 7 | 2025-06-05 → 2025-06-06 (+1d) | 2025-07-10 → 2025-07-11 (+1d) |  | 406.68d → 406.74d |
| PG-31542 | Floor 8 |  | 2025-07-25 → 2025-07-26 (+1d) |  | 393.07d → 393.67d |
| PG-31543 | Floor 9 | 2025-07-02 → 2025-07-04 (+2d) | 2025-08-07 → 2025-08-08 (+1d) |  | 382.65d → 382.03d |
| PG-31547 | Floor 13 | 2025-08-28 → 2025-08-27 (-1d) | 2025-10-03 → 2025-10-01 (-2d) |  | 335.18d → 337.48d |
| PG-31548 | Floor 14 |  | 2025-10-16 → 2025-10-15 (-1d) |  | 324.18d → 325.79d |
| PG-31549 | Floor 15 |  | 2025-10-28 → 2025-10-27 (-1d) |  | 314.18d → 315.79d |
| PG-31550 | Floor 16 |  | 2025-11-11 → 2025-11-10 (-1d) |  | 303.18d → 304.79d |
| PG-31551 | Floor 17 |  | 2025-11-24 → 2025-11-22 (-2d) |  | 292.18d → 293.79d |
| PG-31552 | Floor 18 |  | 2025-12-06 → 2025-12-05 (-1d) |  | 281.18d → 282.79d |
| PG-31553 | Floor 19 |  | 2025-12-31 → 2025-12-30 (-1d) |  | 260.18d → 261.79d |
| PG-31554 | Floor 20 | 2025-12-18 → 2025-12-17 (-1d) |  |  | 241.01d → 242.62d |
| PG-31555 | Floor 21 | 2026-01-09 → 2026-01-08 (-1d) |  |  | 222.01d → 223.62d |
| PG-31557 | Floor 23 | 2026-02-21 → 2026-02-20 (-1d) |  |  | 186.01d → 187.62d |
| 1.7.1.1.2 | **Common Areas** | 2025-10-21 → 2025-10-20 (-1d) |  |  |  |
| PG-31559 | Internal Electrical Works | 2025-10-21 → 2025-10-20 (-1d) | 2025-12-30 → 2025-12-29 (-1d) |  | 261.68d → 263.29d |
| PG-31560 | Internal FPS Works | 2025-10-21 → 2025-10-20 (-1d) | 2025-12-30 → 2025-12-29 (-1d) |  | 261.35d → 262.95d |
| PG-31561 | Data & Communication Works | 2025-10-27 → 2025-10-25 (-2d) | 2026-01-05 → 2026-01-03 (-2d) |  | 256.35d → 257.95d |
| PG-31562 | Internal PHE Works including OHT | 2025-12-09 → 2025-12-08 (-1d) |  |  | 218.35d → 219.62d |
| PG-31565 | Lightining Arrestor works |  | 2026-01-12 → 2026-01-10 (-2d) |  | 250.18d → 251.79d |
| PG-31564 | Electrical Panel Works | 2026-03-23 → 2026-03-21 (-2d) | 2026-06-01 → 2026-05-30 (-2d) |  | 131.68d → 133.29d |
| PG-31569 | Floor 3 |  |  | 77% → 97% | 458.76d → 459.75d |
| PG-31570 | Floor 4 |  |  | 18% → 38% | 440.76d → 441.75d |
| PG-31571 | Floor 5 | 2025-05-06 → 2025-05-07 A (+1d) |  | 0% → 7% | 431.69d → 432.34d |
| PG-31576 | Floor 10 | 2025-07-19 → 2025-07-21 (+2d) |  |  | 368.35d → 368.75d |
| PG-31577 | Floor 11 |  | 2025-09-05 → 2025-09-06 (+1d) |  | 357.91d → 358.72d |
| PG-31578 | Floor 12 | 2025-08-14 → 2025-08-16 (+2d) | 2025-09-19 → 2025-09-20 (+1d) |  | 346.28d → 346.67d |
| PG-31579 | Floor 13 | 2025-08-29 → 2025-08-28 (-1d) |  |  | 334.93d → 336.42d |
| PG-31587 | Floor 21 | 2025-12-12 → 2025-12-11 (-1d) |  |  | 248.1d → 249.23d |
| PG-31590 | Floor 24 | 2026-02-16 → 2026-02-14 (-2d) |  |  | 191.1d → 192.23d |
| 1.7.1.3 | **Tower 3** |  | 2026-11-03 → 2026-11-04 (+1d) |  |  |
| 1.7.1.3.1 | **Units** |  | 2026-08-19 → 2026-08-20 (+1d) |  |  |
| PG-31601 | Ground Floor |  |  | 19% → 39% | 441.74d → 442.73d |
| PG-31602 | Floor 1 | 2025-05-07 → 2025-05-08 A (+1d) |  | 0% → 3% | 430.66d → 431d |
| PG-31607 | Floor 6 | 2025-07-23 → 2025-07-24 (+1d) |  |  | 365.51d → 365.92d |

| ID | Task | Start | Finish | Total float |
| --- | --- | --- | --- | --- |
| PG-31608 | Floor 7 |  | 2025-09-11 → 2025-09-12 (+1d) | 352.79d → 353.75d |
| PG-31610 | Floor 9 | 2025-09-08 → 2025-09-09 (+1d) | 2025-10-15 → 2025-10-16 (+1d) |  |
| PG-31611 | Floor 10 | 2025-09-25 → 2025-09-26 (+1d) | 2025-10-31 → 2025-11-03 (+3d) |  |
| PG-31612 | Floor 11 | 2025-10-09 → 2025-10-10 (+1d) | 2025-11-14 → 2025-11-15 (+1d) |  |
| PG-31613 | Floor 12 | 2025-10-24 → 2025-10-25 (+1d) | 2025-11-29 → 2025-12-01 (+2d) |  |
| PG-31614 | Floor 13 | 2025-11-07 → 2025-11-08 (+1d) | 2025-12-12 → 2025-12-13 (+1d) |  |
| PG-31615 | Floor 14 | 2025-11-18 → 2025-11-19 (+1d) | 2025-12-23 → 2025-12-24 (+1d) |  |
| PG-31617 | Floor 16 | 2025-12-13 → 2025-12-15 (+2d) | 2026-01-17 → 2026-01-19 (+2d) |  |
| PG-31618 | Floor 17 | 2025-12-26 → 2025-12-27 (+1d) | 2026-01-31 → 2026-02-02 (+2d) |  |
| PG-31619 | Floor 18 | 2026-01-08 → 2026-01-09 (+1d) | 2026-02-13 → 2026-02-14 (+1d) |  |
| PG-31620 | Floor 19 | 2026-01-21 → 2026-01-22 (+1d) | 2026-02-26 → 2026-02-27 (+1d) |  |
| PG-31621 | Floor 20 | 2026-02-05 → 2026-02-06 (+1d) | 2026-03-12 → 2026-03-13 (+1d) |  |
| PG-31622 | Floor 21 | 2026-02-18 → 2026-02-19 (+1d) | 2026-03-24 → 2026-03-25 (+1d) |  |
| PG-31623 | Floor 22 | 2026-03-03 → 2026-03-04 (+1d) | 2026-04-06 → 2026-04-07 (+1d) |  |
| PG-31624 | Floor 23 | 2026-03-14 → 2026-03-16 (+2d) | 2026-04-18 → 2026-04-20 (+2d) |  |
| PG-31625 | Floor 24 | 2026-03-28 → 2026-03-30 (+2d) | 2026-05-01 → 2026-05-02 (+1d) |  |
| PG-31626 | Floor 25 | 2026-04-18 → 2026-04-20 (+2d) | 2026-05-25 → 2026-05-26 (+1d) |  |
| PG-31627 | Floor 26 | 2026-05-12 → 2026-05-13 (+1d) | 2026-06-16 → 2026-06-17 (+1d) |  |
| PG-31628 | Floor 27 | 2026-06-02 → 2026-06-03 (+1d) | 2026-07-07 → 2026-07-08 (+1d) |  |
| PG-31629 | Floor 28 | 2026-06-23 → 2026-06-24 (+1d) | 2026-07-28 → 2026-07-29 (+1d) |  |
| PG-31630 | Floor 29 | 2026-07-14 → 2026-07-15 (+1d) | 2026-08-19 → 2026-08-20 (+1d) |  |
| 1.7.1.3.2 | **Common Areas** | 2026-03-16 → 2026-03-17 (+1d) | 2026-11-03 → 2026-11-04 (+1d) |  |
| PG-31632 | Internal Electrical Works | 2026-03-16 → 2026-03-17 (+1d) | 2026-04-02 → 2026-04-03 (+1d) |  |
| PG-31633 | Internal FPS Works | 2026-03-16 → 2026-03-17 (+1d) | 2026-04-03 → 2026-04-04 (+1d) |  |
| PG-31634 | Data & Communication Works | 2026-03-21 → 2026-03-23 (+2d) | 2026-04-08 → 2026-04-09 (+1d) |  |
| PG-31635 | Internal PHE Works including OHT | 2026-04-30 → 2026-05-01 (+1d) | 2026-05-23 → 2026-05-25 (+2d) |  |
| PG-31638 | Lightining Arrestor works | 2026-05-14 → 2026-05-15 (+1d) | 2026-05-22 → 2026-05-23 (+1d) |  |
| PG-31636 | Lift Works | 2026-08-08 → 2026-08-10 (+2d) | 2026-09-03 → 2026-09-04 (+1d) |  |
| PG-31631 | Common Area Civil Works | 2026-10-16 → 2026-10-17 (+1d) | 2026-11-03 → 2026-11-04 (+1d) |  |
| 1.7.9 | **Project InfraStructure Works ( Services & MEP )** |  | 2026-12-04 → 2026-12-05 (+1d) |  |
| 1.7.9.1 | **Transformer Works** | 2026-10-30 → 2026-10-31 (+1d) | 2026-12-04 → 2026-12-05 (+1d) |  |
| PG-32336 | Transformer 01 ( Building 01 & 02 ) | 2026-10-30 → 2026-10-31 (+1d) | 2026-12-04 → 2026-12-05 (+1d) |  |
| 1.8 | **Handing Over** |  | 2027-02-11 → 2027-02-12 (+1d) |  |
| PG-32378 | Building 1 | 2026-11-03 → 2026-11-04 (+1d) | 2026-11-14 → 2026-11-16 (+2d) |  |
| PG-32386 | Project InfraStructure Works ( Services & MEP ) | 2027-01-23 → 2027-01-25 (+2d) | 2027-02-11 → 2027-02-12 (+1d) |  |
| 1.10 | **Post Construction Statutory Approvals** |  | 2027-03-01 → 2027-03-02 (+1d) |  |
| PG-32394 | CEIG Approval - Lift | 2026-11-14 → 2026-11-16 (+2d) | 2026-12-18 → 2026-12-19 (+1d) |  |
| PG-32395 | Pollution Control board CFO | 2026-12-18 → 2026-12-19 (+1d) | 2027-01-23 → 2027-01-25 (+2d) |  |
| PG-32397 | Occupation Certificate | 2026-12-18 → 2026-12-19 (+1d) | 2027-03-01 → 2027-03-02 (+1d) |  |
| 2 | **Milestone** |  | 2027-03-01 → 2027-03-02 (+1d) |  |
| MS-0105 | Electrical Panels Delivered | 2025-08-25 → 2025-08-23 (-2d) | 2025-08-25 → 2025-08-23 (-2d) | 473.18d → 474.79d |
| MS-3001 | Tower 3 - Structure Complete | 2026-01-09 → 2026-01-10 (+1d) | 2026-01-09 → 2026-01-10 (+1d) |  |
| MS-1005 | Tower 1 - MEP Final Fix Complete | 2026-01-17 → 2026-01-16 (-1d) | 2026-01-17 → 2026-01-16 (-1d) | 350.35d → 351.95d |
| MS-3002 | Tower 3 - MEP 1st Fix Complete | 2026-04-13 → 2026-04-14 (+1d) | 2026-04-13 → 2026-04-14 (+1d) |  |
| MS-3003 | Tower 3 - MEP 2nd Fix Complete | 2026-05-18 → 2026-05-19 (+1d) | 2026-05-18 → 2026-05-19 (+1d) |  |
| MS-3005 | Tower 3 - MEP Final Fix Complete | 2026-06-10 → 2026-06-11 (+1d) | 2026-06-10 → 2026-06-11 (+1d) |  |
| MS-3004 | Tower 3 - Internal Finishes Complete | 2026-07-02 → 2026-07-03 (+1d) | 2026-07-02 → 2026-07-03 (+1d) |  |
| MS-0103 | Transformer Delivered to Site | 2026-07-28 → 2026-07-29 (+1d) | 2026-07-28 → 2026-07-29 (+1d) |  |
| MS-3006 | Tower 3 - Lifts Commissioned | 2026-07-29 → 2026-07-30 (+1d) | 2026-07-29 → 2026-07-30 (+1d) |  |
| MS-9007 | Landscape Complete | 2026-08-08 → 2026-08-10 (+2d) | 2026-08-08 → 2026-08-10 (+2d) |  |
| MS-9002 | Transformer Charged | 2026-10-30 → 2026-10-31 (+1d) | 2026-10-30 → 2026-10-31 (+1d) |  |
| MS-9990 | Snagging Complete | 2026-12-04 → 2026-12-05 (+1d) | 2026-12-04 → 2026-12-05 (+1d) |  |
| MS-9999 | Project Finish / Handover | 2027-02-11 → 2027-02-12 (+1d) | 2027-02-11 → 2027-02-12 (+1d) |  |
| MS-9991 | Statutory Approvals Obtained | 2027-03-01 → 2027-03-02 (+1d) | 2027-03-01 → 2027-03-02 (+1d) |  |
