# Apex-shrine

How a schedule from Primavera P6 changed from version to version. A marks actual dates.

## Version 9 (data date 2025-05-09, saved 2026-09-20, file APX_2025-05-09.xer)

| ID | WBS | Task | Duration | Start | Finish | Predecessors | Complete | Total float |
| --- | --- | --- | --- | --- | --- | --- | --- | --- |
|  | 1 | **Project Genisis** |  | 2023-10-04 | 2027-03-08 |  |  |  |
| PG-32433 |  | Project Close Out | 4.67d | 2027-03-02 | 2027-03-08 | PG-32397, PG-31533, PG-32387, PG-32386, PG-32378, PG-32373, PG-32376, PG-32375, PG-32374, PG-32377, PG-31528 |  | 0d |
|  | 1.1 | **Contractor Appointment and Site team mobilisation** |  | 2023-10-04 | 2023-11-09 |  |  |  |
| PG-0998 |  | General Contractor appointment | 0.67d | 2023-10-04 A | 2023-10-04 A |  | 100% |  |
| PG-0999 |  | GC Team Mobilisation | 29.67d | 2023-10-05 A | 2023-11-09 A | PG-0998 | 100% |  |
|  | 1.2 | **Procurement and Materials requirement to Site** |  | 2023-10-04 | 2026-07-29 |  |  |  |
|  | 1.2.1 | **Modular Aluminium Shuttering** |  | 2023-10-23 | 2024-08-09 |  |  |  |
| PG-10000 |  | Shell Drawings Approval & Signoff | 44.67d | 2023-10-23 A | 2023-12-15 A | PG-0998 FF+60d | 100% |  |
| PG-10001 |  | Purchase Order works ( By Contractor to F/W Vendor ) | 1.67d | 2023-12-15 A | 2023-12-18 A | PG-10000 | 100% |  |
| PG-10002 |  | Materials to reach at site for marking | 59.67d | 2024-05-07 A | 2024-07-16 A | PG-10001 FS+120d | 100% |  |
| PG-10003 |  | Marking and setting up of materials area wise | 59.67d | 2024-05-30 A | 2024-08-09 A | PG-10002 FF+20d | 100% |  |
|  | 1.2.2 | **Tiles & Marble Supply** |  | 2024-11-08 | 2026-07-03 |  |  |  |
|  | 1.2.2.1 | **Toilet dado and Floor tiles** |  | 2024-11-08 | 2026-04-17 |  |  |  |
| PG-10004 |  | Purchase Order works | 2d | 2024-11-08 A | 2024-11-11 A | PG-11750 FF+60d | 100% |  |
| PG-10005 |  | First Consignment Supply to site ( GF to 4th Floor ) | 10d | 2025-02-24 A | 2025-03-06 A | PG-10004 FS+90d | 100% |  |
| PG-10006 |  | Second Consignment Supply to site ( 5th to 14th Floor ) | 10d | 2025-06-02 | 2025-06-13 | PG-10005 FS+75d |  | 47.58d |
| PG-10007 |  | Third Consignment Supply to site ( 15th to 29th Floor ) | 9.67d | 2025-11-04 | 2025-11-15 | PG-10006 FS+120d |  | 47.58d |
| PG-10008 |  | Fourth Consignment Supply to site ( Balance Floor wise - 30th to 41st Floor ) | 10.67d | 2026-04-06 | 2026-04-17 | PG-10007 FS+120d |  | 274.58d |
|  | 1.2.2.2 | **Vitrified Floor Tiles including corridor Flooring & Cladding** |  | 2024-11-08 | 2026-07-03 |  |  |  |
| PG-10009 |  | Purchase Order works | 2d | 2024-11-08 A | 2024-11-11 A | PG-11750 FF+60d | 100% |  |
| PG-10010 |  | First Consignment Supply to site ( GF to 4th Floor ) | 10d | 2025-02-24 A | 2025-03-06 A | PG-10009 FS+90d | 100% |  |
| PG-10011 |  | Second Consignment Supply to site ( 5th to 14th Floor ) | 10d | 2025-05-27 | 2025-06-07 | PG-10010 FS+70d |  | 23.42d |
| PG-10012 |  | Third Consignment Supply to site ( 15th to 29th Floor ) | 10d | 2025-11-10 | 2025-11-21 | PG-10011 FS+130d |  | 23.42d |
| PG-10013 |  | Fourth Consignment Supply to site ( Balance Floor wise - 30th to 41st Floor ) | 10.67d | 2026-06-20 | 2026-07-03 | PG-10012 FS+180d |  | 23.42d |
|  | 1.2.3 | **CP & Sanitary Supply** |  | 2023-10-04 | 2025-03-10 |  |  |  |
| PG-10019 |  | Purchase Order works | 2d | 2023-10-04 A | 2023-10-06 A |  | 100% |  |
| PG-10020 |  | First Consignment Supply to site ( GF to 4th Floor ) | 9.67d | 2023-12-05 A | 2023-12-16 A | PG-10019 FF+60d | 100% |  |
| PG-10021 |  | Second Consignment Supply to site ( 5th to 14th Floor ) | 10.67d | 2024-02-13 A | 2024-02-26 A | PG-10020 FF+60d | 100% |  |
| PG-10022 |  | Third Consignment Supply to site ( 15th to 29th Floor ) | 9.67d | 2024-07-26 A | 2024-08-07 A | PG-10021 FF+140d | 100% |  |
| PG-10023 |  | Fourth Consignment Supply to site ( Balance Floor wise ) | 9.67d | 2025-02-25 A | 2025-03-10 A | PG-10022 FF+180d | 100% |  |
|  | 1.2.4 | **FRP Tanks Supply** |  | 2025-05-05 | 2025-12-01 |  |  |  |
| PG-10024 |  | Purchase Order works | 6.67d | 2025-05-05 A | 2025-05-13 | PG-10165 | 53% | 217.62d |
| PG-10025 |  | Materials Supply to site ( Tower - 1, 2, 3, 9, 14, 18 & 19 ) | 28.67d | 2025-06-30 | 2025-08-02 | PG-10024 FF+70d |  | 217.62d |
| PG-10026 |  | Materials Supply to site ( Tower - 4, 8, 10 & 13 ) | 30.67d | 2025-08-01 | 2025-09-08 | PG-10025 FF+30d |  | 217.62d |
| PG-10027 |  | Materials Supply to site ( Tower - 5, 6, 7, 11, 12, 15, 16 & 17 ) | 28.67d | 2025-10-27 | 2025-12-01 | PG-10026 FF+70d |  | 217.62d |
|  | 1.2.5 | **Lift Supply** |  | 2025-04-22 | 2025-11-25 |  |  |  |
| PG-10028 |  | Purchase Order works | 7d | 2025-04-22 A | 2025-05-01 A | PG-10160 | 100% |  |
| PG-10029 |  | Materials Supply to site ( First Lot - T1, T2. T3,T4, T8, T9, T13, T14, T18 & T19 ) | 20d | 2025-08-14 | 2025-09-08 | PG-10028 FF+110d |  | 108.42d |
| PG-10030 |  | Materials Supply to site ( First Lot - T5, T6. T7,T11, T12, T15, T16 & T17 ) | 30d | 2025-10-20 | 2025-11-25 | PG-10029 FF+65d |  | 108.42d |
|  | 1.2.6 | **Electrical Panel Supply** |  | 2025-04-12 | 2025-08-23 |  |  |  |
| PG-10031 |  | Purchase Order works | 9.67d | 2025-04-12 A | 2025-04-23 A | PG-10572 | 100% |  |
| PG-10032 |  | Materials Supply to site | 28.67d | 2025-07-21 | 2025-08-23 | PG-10031, PG-10655 |  | 141.95d |
|  | 1.2.7 | **DG Supply** |  | 2023-10-04 | 2024-04-06 |  |  |  |
| PG-10033 |  | Purchase Order works | 8.67d | 2023-10-04 A | 2023-10-13 A |  | 100% |  |
| PG-10034 |  | Materials Supply to site | 28.67d | 2024-03-04 A | 2024-04-06 A | PG-10033 FS+120d | 100% |  |
|  | 1.2.8 | **Transformer Supply** |  | 2026-02-27 | 2026-07-29 |  |  |  |
| PG-10035 |  | Purchase Order works | 9.67d | 2026-02-27 | 2026-03-11 | PG-12661 |  | 103.33d |
| PG-10036 |  | Materials Supply to site | 29.67d | 2026-06-24 | 2026-07-29 | PG-10035 FF+120d |  | 103.33d |
|  | 1.2.9 | **STP Equipment Supply** |  | 2024-01-30 | 2024-05-08 |  |  |  |
| PG-10037 |  | Purchase Order works | 10d | 2024-01-30 A | 2024-02-10 A | PG-30510 FF+60d | 100% |  |
| PG-10038 |  | Materials Supply to site | 30d | 2024-04-03 A | 2024-05-08 A | PG-10037 FF+75d | 100% |  |
|  | 1.3 | **Construction** |  | 2023-10-04 | 2026-10-17 |  |  |  |
|  | 1.3.1 | **Building 1** |  | 2023-10-04 | 2026-10-17 |  |  |  |
|  | 1.3.1.1 | **Tower 1 ( 2B+G+23 ) TYP 4 Units - 94 Units** |  | 2023-10-27 | 2026-07-27 |  |  |  |
|  | 1.3.1.1.1 | **Foundation works** |  | 2023-10-27 | 2024-04-16 |  |  |  |
| PG-10047 |  | Setting out - Marking | 3d | 2023-10-27 A | 2023-10-31 A | PG-10844 FS+7d | 100% |  |
| PG-10048 |  | Excavation Works | 45d | 2023-10-31 A | 2023-12-23 A | PG-10047 | 100% |  |
| PG-10049 |  | Piling Works - 148 Nos | 38d | 2023-12-20 A | 2024-02-02 A | PG-10048 FF+35d | 100% |  |
| PG-10050 |  | Backfilling and Consolidation | 19.67d | 2024-01-24 A | 2024-02-17 A | PG-10049 FF+12d | 100% |  |
| PG-10051 |  | Waterproofing & PCC works | 15d | 2024-02-14 A | 2024-03-02 A | PG-10050 FF+12d | 100% |  |
| PG-10052 |  | Raft Reinforcement | 15d | 2024-03-02 A | 2024-03-20 A | PG-10051 FF+15d | 100% |  |
| PG-10053 |  | Raft Formwork | 8d | 2024-03-28 A | 2024-04-06 A | PG-10052 FF+15d | 100% |  |
| PG-10054 |  | Raft Concreting | 3d | 2024-04-12 A | 2024-04-16 A | PG-10053 FF+8d | 100% |  |
|  | 1.3.1.1.2 | **Structure works** |  | 2024-04-16 | 2025-08-18 |  |  |  |
|  | 1.3.1.1.2.1 | **LBF** |  | 2024-04-16 | 2024-05-14 |  |  |  |
|  | 1.3.1.1.2.1.1 | **Columns / shear walls** |  | 2024-04-16 | 2024-05-02 |  |  |  |
| PG-10055 |  | Reinforcement | 4d | 2024-04-16 A | 2024-04-20 A | PG-10054 | 100% |  |
| PG-10057 |  | Concrete | 9.5d | 2024-04-20 A | 2024-05-02 A | PG-10056 FF+5d | 100% |  |
| PG-10056 |  | Formwork | 4d | 2024-04-22 A | 2024-04-26 A | PG-10055 FF+5d | 100% |  |
|  | 1.3.1.1.2.1.2 | **Slab, Beams & Staircase** |  | 2024-05-02 | 2024-05-14 |  |  |  |

| ID | WBS | Task | Duration | Start | Finish | Predecessors | Complete |
| --- | --- | --- | --- | --- | --- | --- | --- |
| PG-10058 |  | Formwork | 3d | 2024-05-02 A | 2024-05-06 A | PG-10057 | 100% |
| PG-10059 |  | Reinforcement | 3d | 2024-05-08 A | 2024-05-11 A | PG-10058 FF+5d | 100% |
| PG-10060 |  | Concrete | 1d | 2024-05-13 A | 2024-05-14 A | PG-10059 FS+1d | 100% |
|  | 1.3.1.1.2.2 | **UBF** |  | 2024-05-14 | 2024-06-11 |  |  |
|  | 1.3.1.1.2.2.1 | **Columns / shear walls** |  | 2024-05-14 | 2024-05-30 |  |  |
| PG-10061 |  | Reinforcement | 4d | 2024-05-14 A | 2024-05-18 A | PG-10060 | 100% |
| PG-10063 |  | Concrete | 9.5d | 2024-05-18 A | 2024-05-30 A | PG-10062 FF+5d | 100% |
| PG-10062 |  | Formwork | 4d | 2024-05-20 A | 2024-05-24 A | PG-10061 FF+5d | 100% |
|  | 1.3.1.1.2.2.2 | **Slab, Beams & Staircase** |  | 2024-05-30 | 2024-06-11 |  |  |
| PG-10064 |  | Formwork | 3d | 2024-05-30 A | 2024-06-01 A | PG-10063 | 100% |
| PG-10065 |  | Reinforcement | 3d | 2024-06-05 A | 2024-06-07 A | PG-10064 FF+5d | 100% |
| PG-10066 |  | Concrete | 1d | 2024-06-10 A | 2024-06-11 A | PG-10065 FS+1d | 100% |
|  | 1.3.1.1.2.3 | **Ground Floor** |  | 2024-06-11 | 2024-07-04 |  |  |
|  | 1.3.1.1.2.3.1 | **Columns / shear walls** |  | 2024-06-11 | 2024-06-22 |  |  |
| PG-10067 |  | Reinforcement | 4d | 2024-06-11 A | 2024-06-15 A | PG-10066 | 100% |
| PG-10069 |  | Concrete | 7.5d | 2024-06-14 A | 2024-06-22 A | PG-10068 FF+3d | 100% |
| PG-10068 |  | Formwork | 4d | 2024-06-15 A | 2024-06-20 A | PG-10067 FF+4d | 100% |
|  | 1.3.1.1.2.3.2 | **Slab, Beams & Staircase** |  | 2024-06-24 | 2024-07-04 |  |  |
| PG-10070 |  | Formwork | 3d | 2024-06-24 A | 2024-06-26 A | PG-10069 | 100% |
| PG-10071 |  | Reinforcement | 3d | 2024-06-28 A | 2024-07-01 A | PG-10070 FF+4d | 100% |
| PG-10072 |  | Concrete | 1d | 2024-07-03 A | 2024-07-04 A | PG-10071 FS+1d | 100% |
|  | 1.3.1.1.2.4 | **Floor 01** |  | 2024-07-04 | 2024-07-27 |  |  |
|  | 1.3.1.1.2.4.1 | **Columns / shear walls** |  | 2024-07-04 | 2024-07-16 |  |  |
| PG-10073 |  | Reinforcement | 4d | 2024-07-04 A | 2024-07-09 A | PG-10072 | 100% |
| PG-10075 |  | Concrete | 7.5d | 2024-07-08 A | 2024-07-16 A | PG-10074 FF+3d | 100% |
| PG-10074 |  | Formwork | 4d | 2024-07-09 A | 2024-07-13 A | PG-10073 FF+4d | 100% |
|  | 1.3.1.1.2.4.2 | **Slab, Beams & Staircase** |  | 2024-07-17 | 2024-07-27 |  |  |
| PG-10076 |  | Formwork | 3d | 2024-07-17 A | 2024-07-20 A | PG-10075 | 100% |
| PG-10077 |  | Reinforcement | 3d | 2024-07-22 A | 2024-07-25 A | PG-10076 FF+4d | 100% |
| PG-10078 |  | Concrete | 1d | 2024-07-26 A | 2024-07-27 A | PG-10077 FS+1d | 100% |
|  | 1.3.1.1.2.5 | **Floor 02** |  | 2024-07-27 | 2024-08-21 |  |  |
|  | 1.3.1.1.2.5.1 | **Columns / shear walls** |  | 2024-07-27 | 2024-08-09 |  |  |
| PG-10079 |  | Reinforcement | 4d | 2024-07-27 A | 2024-08-01 A | PG-10078 | 100% |
| PG-10080 |  | Formwork | 4d | 2024-08-01 A | 2024-08-06 A | PG-10079 FF+4d | 100% |
| PG-10081 |  | Concrete | 3.67d | 2024-08-05 A | 2024-08-09 A | PG-10080 FF+3d | 100% |
|  | 1.3.1.1.2.5.2 | **Slab, Beams & Staircase** |  | 2024-08-09 | 2024-08-21 |  |  |
| PG-10082 |  | Formwork | 3d | 2024-08-09 A | 2024-08-12 A | PG-10081 | 100% |
| PG-10083 |  | Reinforcement | 3d | 2024-08-14 A | 2024-08-17 A | PG-10082 FF+4d | 100% |
| PG-10084 |  | Concrete | 1d | 2024-08-20 A | 2024-08-21 A | PG-10083 FS+1d | 100% |
|  | 1.3.1.1.2.6 | **Floor 03** |  | 2024-08-21 | 2024-09-13 |  |  |
|  | 1.3.1.1.2.6.1 | **Columns / shear walls** |  | 2024-08-21 | 2024-09-03 |  |  |
| PG-10085 |  | Reinforcement | 4d | 2024-08-21 A | 2024-08-24 A | PG-10084 | 100% |
| PG-10086 |  | Formwork | 4d | 2024-08-26 A | 2024-08-30 A | PG-10085 FF+4d | 100% |
| PG-10087 |  | Concrete | 3.67d | 2024-08-29 A | 2024-09-03 A | PG-10086 FF+3d | 100% |
|  | 1.3.1.1.2.6.2 | **Slab, Beams & Staircase** |  | 2024-09-03 | 2024-09-13 |  |  |
| PG-10088 |  | Formwork | 3d | 2024-09-03 A | 2024-09-06 A | PG-10087 | 100% |
| PG-10089 |  | Reinforcement | 3d | 2024-09-07 A | 2024-09-11 A | PG-10088 FF+4d | 100% |
| PG-10090 |  | Concrete | 1d | 2024-09-12 A | 2024-09-13 A | PG-10089 FS+1d | 100% |
|  | 1.3.1.1.2.7 | **Floor 04** |  | 2024-09-13 | 2024-10-04 |  |  |
|  | 1.3.1.1.2.7.1 | **Columns / shear walls** |  | 2024-09-13 | 2024-09-23 |  |  |
| PG-10091 |  | Reinforcement | 4d | 2024-09-13 A | 2024-09-18 A | PG-10090 | 100% |
| PG-10092 |  | Formwork | 4d | 2024-09-18 A | 2024-09-23 A | PG-10091 FF+4d | 100% |
|  | 1.3.1.1.2.7.2 | **Slab, Beams & Staircase** |  | 2024-09-24 | 2024-10-04 |  |  |
| PG-10093 |  | Formwork | 3d | 2024-09-24 A | 2024-09-26 A | PG-10092 FF+4d | 100% |
| PG-10094 |  | Reinforcement | 3d | 2024-09-28 A | 2024-10-03 A | PG-10093 FF+4d | 100% |
| PG-10095 |  | Concrete | 1d | 2024-10-03 A | 2024-10-04 A | PG-10094 | 100% |
|  | 1.3.1.1.2.8 | **Floor 05** |  | 2024-10-04 | 2024-10-24 |  |  |
|  | 1.3.1.1.2.8.1 | **Columns / shear walls** |  | 2024-10-04 | 2024-10-14 |  |  |
| PG-10096 |  | Reinforcement | 4d | 2024-10-04 A | 2024-10-08 A | PG-10095 | 100% |
| PG-10097 |  | Formwork | 4d | 2024-10-09 A | 2024-10-14 A | PG-10096 FF+4d | 100% |
|  | 1.3.1.1.2.8.2 | **Slab, Beams & Staircase** |  | 2024-10-15 | 2024-10-24 |  |  |
| PG-10098 |  | Formwork | 3d | 2024-10-15 A | 2024-10-18 A | PG-10097 FF+4d | 100% |
| PG-10099 |  | Reinforcement | 3d | 2024-10-19 A | 2024-10-23 A | PG-10098 FF+4d | 100% |
| PG-10100 |  | Concrete | 1d | 2024-10-23 A | 2024-10-24 A | PG-10099 | 100% |
|  | 1.3.1.1.2.9 | **Floor 06** |  | 2024-10-24 | 2024-11-09 |  |  |
|  | 1.3.1.1.2.9.1 | **Columns / shear walls** |  | 2024-10-24 | 2024-11-04 |  |  |
| PG-10101 |  | Reinforcement | 4d | 2024-10-24 A | 2024-10-29 A | PG-10100 | 100% |
| PG-10102 |  | Formwork | 4d | 2024-10-29 A | 2024-11-04 A | PG-10101 FF+4d | 100% |
|  | 1.3.1.1.2.9.2 | **Slab, Beams & Staircase** |  | 2024-11-02 | 2024-11-09 |  |  |
| PG-10103 |  | Formwork | 3d | 2024-11-02 A | 2024-11-06 A | PG-10102 FF+2d | 100% |

| ID | WBS | Task | Duration | Start | Finish | Predecessors | Complete |
| --- | --- | --- | --- | --- | --- | --- | --- |
| PG-10104 |  | Reinforcement | 3d | 2024-11-05 A | 2024-11-08 A | PG-10103 FF+2d | 100% |
| PG-10105 |  | Concrete | 1d | 2024-11-08 A | 2024-11-09 A | PG-10104 | 100% |
|  | 1.3.1.1.2.10 | **Floor 07** |  | 2024-11-09 | 2024-11-25 |  |  |
|  | 1.3.1.1.2.10.1 | **Columns / shear walls** |  | 2024-11-09 | 2024-11-19 |  |  |
| PG-10106 |  | Reinforcement | 4d | 2024-11-09 A | 2024-11-14 A | PG-10105 | 100% |
| PG-10107 |  | Formwork | 4d | 2024-11-14 A | 2024-11-19 A | PG-10106 FF+4d | 100% |
|  | 1.3.1.1.2.10.2 | **Slab, Beams & Staircase** |  | 2024-11-18 | 2024-11-25 |  |  |
| PG-10108 |  | Formwork | 3d | 2024-11-18 A | 2024-11-21 A | PG-10107 FF+2d | 100% |
| PG-10109 |  | Reinforcement | 3d | 2024-11-20 A | 2024-11-23 A | PG-10108 FF+2d | 100% |
| PG-10110 |  | Concrete | 1d | 2024-11-23 A | 2024-11-25 A | PG-10109 | 100% |
|  | 1.3.1.1.2.11 | **Floor 08** |  | 2024-11-25 | 2024-12-10 |  |  |
|  | 1.3.1.1.2.11.1 | **Columns / shear walls** |  | 2024-11-25 | 2024-12-04 |  |  |
| PG-10111 |  | Reinforcement | 4d | 2024-11-25 A | 2024-11-29 A | PG-10110 | 100% |
| PG-10112 |  | Formwork | 4d | 2024-11-29 A | 2024-12-04 A | PG-10111 FF+4d | 100% |
|  | 1.3.1.1.2.11.2 | **Slab, Beams & Staircase** |  | 2024-12-03 | 2024-12-10 |  |  |
| PG-10113 |  | Formwork | 3d | 2024-12-03 A | 2024-12-06 A | PG-10112 FF+2d | 100% |
| PG-10114 |  | Reinforcement | 3d | 2024-12-05 A | 2024-12-09 A | PG-10113 FF+2d | 100% |
| PG-10115 |  | Concrete | 1d | 2024-12-09 A | 2024-12-10 A | PG-10114 | 100% |
|  | 1.3.1.1.2.12 | **Floor 09** |  | 2024-12-10 | 2024-12-25 |  |  |
|  | 1.3.1.1.2.12.1 | **Columns / shear walls** |  | 2024-12-10 | 2024-12-19 |  |  |
| PG-10116 |  | Reinforcement | 4d | 2024-12-10 A | 2024-12-14 A | PG-10115 | 100% |
| PG-10117 |  | Formwork | 4d | 2024-12-14 A | 2024-12-19 A | PG-10116 FF+4d | 100% |
|  | 1.3.1.1.2.12.2 | **Slab, Beams & Staircase** |  | 2024-12-18 | 2024-12-25 |  |  |
| PG-10118 |  | Formwork | 3d | 2024-12-18 A | 2024-12-21 A | PG-10117 FF+2d | 100% |
| PG-10119 |  | Reinforcement | 3d | 2024-12-20 A | 2024-12-24 A | PG-10118 FF+2d | 100% |
| PG-10120 |  | Concrete | 1d | 2024-12-24 A | 2024-12-25 A | PG-10119 | 100% |
|  | 1.3.1.1.2.13 | **Floor 10** |  | 2024-12-25 | 2025-01-09 |  |  |
|  | 1.3.1.1.2.13.1 | **Columns / shear walls** |  | 2024-12-25 | 2025-01-03 |  |  |
| PG-10121 |  | Reinforcement | 4d | 2024-12-25 A | 2024-12-30 A | PG-10120 | 100% |
| PG-10122 |  | Formwork | 4d | 2024-12-30 A | 2025-01-03 A | PG-10121 FF+4d | 100% |
|  | 1.3.1.1.2.13.2 | **Slab, Beams & Staircase** |  | 2025-01-02 | 2025-01-09 |  |  |
| PG-10123 |  | Formwork | 3d | 2025-01-02 A | 2025-01-06 A | PG-10122 FF+2d | 100% |
| PG-10124 |  | Reinforcement | 3d | 2025-01-04 A | 2025-01-08 A | PG-10123 FF+2d | 100% |
| PG-10125 |  | Concrete | 1d | 2025-01-08 A | 2025-01-09 A | PG-10124 | 100% |
|  | 1.3.1.1.2.14 | **Floor 11** |  | 2025-01-09 | 2025-01-24 |  |  |
|  | 1.3.1.1.2.14.1 | **Columns / shear walls** |  | 2025-01-09 | 2025-01-18 |  |  |
| PG-10126 |  | Reinforcement | 4d | 2025-01-09 A | 2025-01-14 A | PG-10125 | 100% |
| PG-10127 |  | Formwork | 4d | 2025-01-14 A | 2025-01-18 A | PG-10126 FF+4d | 100% |
|  | 1.3.1.1.2.14.2 | **Slab, Beams & Staircase** |  | 2025-01-17 | 2025-01-24 |  |  |
| PG-10128 |  | Formwork | 3d | 2025-01-17 A | 2025-01-21 A | PG-10127 FF+2d | 100% |
| PG-10129 |  | Reinforcement | 3d | 2025-01-20 A | 2025-01-23 A | PG-10128 FF+2d | 100% |
| PG-10130 |  | Concrete | 1d | 2025-01-23 A | 2025-01-24 A | PG-10129 | 100% |
|  | 1.3.1.1.2.15 | **Floor 12** |  | 2025-01-24 | 2025-02-08 |  |  |
|  | 1.3.1.1.2.15.1 | **Columns / shear walls** |  | 2025-01-24 | 2025-02-03 |  |  |
| PG-10131 |  | Reinforcement | 4d | 2025-01-24 A | 2025-01-29 A | PG-10130 | 100% |
| PG-10132 |  | Formwork | 4d | 2025-01-29 A | 2025-02-03 A | PG-10131 FF+4d | 100% |
|  | 1.3.1.1.2.15.2 | **Slab, Beams & Staircase** |  | 2025-02-01 | 2025-02-08 |  |  |
| PG-10133 |  | Formwork | 3d | 2025-02-01 A | 2025-02-05 A | PG-10132 FF+2d | 100% |
| PG-10134 |  | Reinforcement | 3d | 2025-02-04 A | 2025-02-07 A | PG-10133 FF+2d | 100% |
| PG-10135 |  | Concrete | 1d | 2025-02-07 A | 2025-02-08 A | PG-10134 | 100% |
|  | 1.3.1.1.2.16 | **Floor 13** |  | 2025-02-08 | 2025-02-25 |  |  |
|  | 1.3.1.1.2.16.1 | **Columns / shear walls** |  | 2025-02-08 | 2025-02-19 |  |  |
| PG-10136 |  | Reinforcement | 4d | 2025-02-08 A | 2025-02-14 A | PG-10135 | 100% |
| PG-10137 |  | Formwork | 4d | 2025-02-14 A | 2025-02-19 A | PG-10136 FF+4d | 100% |
|  | 1.3.1.1.2.16.2 | **Slab, Beams & Staircase** |  | 2025-02-18 | 2025-02-25 |  |  |
| PG-10138 |  | Formwork | 3d | 2025-02-18 A | 2025-02-20 A | PG-10137 FF+2d | 100% |
| PG-10139 |  | Reinforcement | 3d | 2025-02-19 A | 2025-02-22 A | PG-10138 FF+2d | 100% |
| PG-10140 |  | Concrete | 1d | 2025-02-22 A | 2025-02-25 A | PG-10139 | 100% |
|  | 1.3.1.1.2.17 | **Floor 14** |  | 2025-02-25 | 2025-03-12 |  |  |
|  | 1.3.1.1.2.17.1 | **Columns / shear walls** |  | 2025-02-25 | 2025-03-06 |  |  |
| PG-10141 |  | Reinforcement | 4d | 2025-02-25 A | 2025-03-01 A | PG-10140 | 100% |
| PG-10142 |  | Formwork | 4d | 2025-03-01 A | 2025-03-06 A | PG-10141 FF+4d | 100% |
|  | 1.3.1.1.2.17.2 | **Slab, Beams & Staircase** |  | 2025-03-05 | 2025-03-12 |  |  |
| PG-10143 |  | Formwork | 3d | 2025-03-05 A | 2025-03-08 A | PG-10142 FF+2d | 100% |
| PG-10144 |  | Reinforcement | 3d | 2025-03-07 A | 2025-03-11 A | PG-10143 FF+2d | 100% |
| PG-10145 |  | Concrete | 1d | 2025-03-11 A | 2025-03-12 A | PG-10144 | 100% |
|  | 1.3.1.1.2.18 | **Floor 15** |  | 2025-03-12 | 2025-03-27 |  |  |
|  | 1.3.1.1.2.18.1 | **Columns / shear walls** |  | 2025-03-12 | 2025-03-21 |  |  |
| PG-10146 |  | Reinforcement | 4d | 2025-03-12 A | 2025-03-17 A | PG-10145 | 100% |
| PG-10147 |  | Formwork | 4d | 2025-03-17 A | 2025-03-21 A | PG-10146 FF+4d | 100% |

| ID | WBS | Task | Duration | Start | Finish | Predecessors | Complete | Total float |
| --- | --- | --- | --- | --- | --- | --- | --- | --- |
|  | 1.3.1.1.2.18.2 | **Slab, Beams & Staircase** |  | 2025-03-20 | 2025-03-27 |  |  |  |
| PG-10148 |  | Formwork | 3d | 2025-03-20 A | 2025-03-24 A | PG-10147 FF+2d | 100% |  |
| PG-10149 |  | Reinforcement | 3d | 2025-03-22 A | 2025-03-26 A | PG-10148 FF+2d | 100% |  |
| PG-10150 |  | Concrete | 1d | 2025-03-26 A | 2025-03-27 A | PG-10149 | 100% |  |
|  | 1.3.1.1.2.19 | **Floor 16** |  | 2025-03-27 | 2025-04-09 |  |  |  |
|  | 1.3.1.1.2.19.1 | **Columns / shear walls** |  | 2025-03-27 | 2025-04-03 |  |  |  |
| PG-10151 |  | Reinforcement | 4d | 2025-03-27 A | 2025-04-01 A | PG-10150 | 100% |  |
| PG-10152 |  | Formwork | 4d | 2025-03-29 A | 2025-04-03 A | PG-10151 FF+2d | 100% |  |
|  | 1.3.1.1.2.19.2 | **Slab, Beams & Staircase** |  | 2025-04-02 | 2025-04-09 |  |  |  |
| PG-10153 |  | Formwork | 3d | 2025-04-02 A | 2025-04-05 A | PG-10152 FF+2d | 100% |  |
| PG-10154 |  | Reinforcement | 3d | 2025-04-04 A | 2025-04-08 A | PG-10153 FF+2d | 100% |  |
| PG-10155 |  | Concrete | 1d | 2025-04-08 A | 2025-04-09 A | PG-10154 | 100% |  |
|  | 1.3.1.1.2.20 | **Floor 17** |  | 2025-04-09 | 2025-04-22 |  |  |  |
|  | 1.3.1.1.2.20.1 | **Columns / shear walls** |  | 2025-04-09 | 2025-04-16 |  |  |  |
| PG-10156 |  | Reinforcement | 4d | 2025-04-09 A | 2025-04-15 A | PG-10155 | 100% |  |
| PG-10157 |  | Formwork | 4d | 2025-04-12 A | 2025-04-16 A | PG-10156 FF+2d | 100% |  |
|  | 1.3.1.1.2.20.2 | **Slab, Beams & Staircase** |  | 2025-04-15 | 2025-04-22 |  |  |  |
| PG-10158 |  | Formwork | 3d | 2025-04-15 A | 2025-04-19 A | PG-10157 FF+2d | 100% |  |
| PG-10159 |  | Reinforcement | 3d | 2025-04-18 A | 2025-04-21 A | PG-10158 FF+2d | 100% |  |
| PG-10160 |  | Concrete | 1d | 2025-04-21 A | 2025-04-22 A | PG-10159 | 100% |  |
|  | 1.3.1.1.2.21 | **Floor 18** |  | 2025-04-22 | 2025-05-05 |  |  |  |
|  | 1.3.1.1.2.21.1 | **Columns / shear walls** |  | 2025-04-22 | 2025-04-29 |  |  |  |
| PG-10161 |  | Reinforcement | 4d | 2025-04-22 A | 2025-04-26 A | PG-10160 | 100% |  |
| PG-10162 |  | Formwork | 4d | 2025-04-24 A | 2025-04-29 A | PG-10161 FF+2d | 100% |  |
|  | 1.3.1.1.2.21.2 | **Slab, Beams & Staircase** |  | 2025-04-28 | 2025-05-05 |  |  |  |
| PG-10163 |  | Formwork | 3d | 2025-04-28 A | 2025-05-01 A | PG-10162 FF+2d | 100% |  |
| PG-10164 |  | Reinforcement | 3d | 2025-04-30 A | 2025-05-03 A | PG-10163 FF+2d | 100% |  |
| PG-10165 |  | Concrete | 1d | 2025-05-03 A | 2025-05-05 A | PG-10164 | 100% |  |
|  | 1.3.1.1.2.22 | **Floor 19** |  | 2025-05-05 | 2025-05-17 |  |  |  |
|  | 1.3.1.1.2.22.1 | **Columns / shear walls** |  | 2025-05-05 | 2025-05-12 |  |  |  |
| PG-10166 |  | Reinforcement | 4d | 2025-05-05 A | 2025-05-09 | PG-10165 | 97% | 46.95d |
| PG-10167 |  | Formwork | 4d | 2025-05-08 A | 2025-05-12 | PG-10166 FF+2d | 50% | 46.95d |
|  | 1.3.1.1.2.22.2 | **Slab, Beams & Staircase** |  | 2025-05-10 | 2025-05-17 |  |  |  |
| PG-10168 |  | Formwork | 3d | 2025-05-10 | 2025-05-14 | PG-10167 FF+2d |  | 46.95d |
| PG-10169 |  | Reinforcement | 3d | 2025-05-13 | 2025-05-16 | PG-10168 FF+2d |  | 46.95d |
| PG-10170 |  | Concrete | 1d | 2025-05-16 | 2025-05-17 | PG-10169 |  | 46.95d |
|  | 1.3.1.1.2.23 | **Floor 20** |  | 2025-05-17 | 2025-05-30 |  |  |  |
|  | 1.3.1.1.2.23.1 | **Columns / shear walls** |  | 2025-05-17 | 2025-05-24 |  |  |  |
| PG-10171 |  | Reinforcement | 4d | 2025-05-17 | 2025-05-22 | PG-10170 |  | 46.95d |
| PG-10172 |  | Formwork | 4d | 2025-05-20 | 2025-05-24 | PG-10171 FF+2d |  | 46.95d |
|  | 1.3.1.1.2.23.2 | **Slab, Beams & Staircase** |  | 2025-05-23 | 2025-05-30 |  |  |  |
| PG-10173 |  | Formwork | 3d | 2025-05-23 | 2025-05-27 | PG-10172 FF+2d |  | 46.95d |
| PG-10174 |  | Reinforcement | 3d | 2025-05-26 | 2025-05-29 | PG-10173 FF+2d |  | 46.95d |
| PG-10175 |  | Concrete | 1d | 2025-05-29 | 2025-05-30 | PG-10174 |  | 46.95d |
|  | 1.3.1.1.2.24 | **Floor 21** |  | 2025-05-30 | 2025-06-12 |  |  |  |
|  | 1.3.1.1.2.24.1 | **Columns / shear walls** |  | 2025-05-30 | 2025-06-06 |  |  |  |
| PG-10176 |  | Reinforcement | 4d | 2025-05-30 | 2025-06-04 | PG-10175 |  | 46.95d |
| PG-10177 |  | Formwork | 4d | 2025-06-02 | 2025-06-06 | PG-10176 FF+2d |  | 46.95d |
|  | 1.3.1.1.2.24.2 | **Slab, Beams & Staircase** |  | 2025-06-05 | 2025-06-12 |  |  |  |
| PG-10178 |  | Formwork | 3d | 2025-06-05 | 2025-06-09 | PG-10177 FF+2d |  | 46.95d |
| PG-10179 |  | Reinforcement | 3d | 2025-06-07 | 2025-06-11 | PG-10178 FF+2d |  | 46.95d |
| PG-10180 |  | Concrete | 1d | 2025-06-11 | 2025-06-12 | PG-10179 |  | 46.95d |
|  | 1.3.1.1.2.25 | **Floor 22** |  | 2025-06-12 | 2025-06-25 |  |  |  |
|  | 1.3.1.1.2.25.1 | **Columns / shear walls** |  | 2025-06-12 | 2025-06-19 |  |  |  |
| PG-10181 |  | Reinforcement | 4d | 2025-06-12 | 2025-06-17 | PG-10180 |  | 46.95d |
| PG-10182 |  | Formwork | 4d | 2025-06-14 | 2025-06-19 | PG-10181 FF+2d |  | 46.95d |
|  | 1.3.1.1.2.25.2 | **Slab, Beams & Staircase** |  | 2025-06-18 | 2025-06-25 |  |  |  |
| PG-10183 |  | Formwork | 3d | 2025-06-18 | 2025-06-21 | PG-10182 FF+2d |  | 46.95d |
| PG-10184 |  | Reinforcement | 3d | 2025-06-20 | 2025-06-24 | PG-10183 FF+2d |  | 46.95d |
| PG-10185 |  | Concrete | 1d | 2025-06-24 | 2025-06-25 | PG-10184 |  | 46.95d |
|  | 1.3.1.1.2.26 | **Floor 23** |  | 2025-06-25 | 2025-07-08 |  |  |  |
|  | 1.3.1.1.2.26.1 | **Columns / shear walls** |  | 2025-06-25 | 2025-07-02 |  |  |  |
| PG-10186 |  | Reinforcement | 4d | 2025-06-25 | 2025-06-30 | PG-10185 |  | 46.95d |
| PG-10187 |  | Formwork | 4d | 2025-06-27 | 2025-07-02 | PG-10186 FF+2d |  | 46.95d |
|  | 1.3.1.1.2.26.2 | **Slab, Beams & Staircase** |  | 2025-07-01 | 2025-07-08 |  |  |  |
| PG-10188 |  | Formwork | 3d | 2025-07-01 | 2025-07-04 | PG-10187 FF+2d |  | 46.95d |
| PG-10189 |  | Reinforcement | 3d | 2025-07-03 | 2025-07-07 | PG-10188 FF+2d |  | 46.95d |
| PG-10190 |  | Concrete | 1d | 2025-07-07 | 2025-07-08 | PG-10189 |  | 46.95d |
|  | 1.3.1.1.2.27 | **Above Terrace Floor** |  | 2025-07-08 | 2025-08-18 |  |  |  |
|  | 1.3.1.1.2.27.1 | **Columns / shear walls/Parapet Walls** |  | 2025-07-08 | 2025-07-22 |  |  |  |

| ID | WBS | Task | Duration | Start | Finish | Predecessors | Complete | Total float |
| --- | --- | --- | --- | --- | --- | --- | --- | --- |
| PG-10191 |  | Reinforcement | 4d | 2025-07-08 | 2025-07-12 | PG-10190 |  | 124.45d |
| PG-10192 |  | Formwork | 5d | 2025-07-10 | 2025-07-16 | PG-10191 FF+3d |  | 124.45d |
| PG-10193 |  | Concrete | 5d | 2025-07-16 | 2025-07-22 | PG-10192 |  | 124.45d |
|  | 1.3.1.1.2.27.2 | **Slab, Beams & Staircase Head rooms, Lift headroom** |  | 2025-07-12 | 2025-08-18 |  |  |  |
| PG-10197 |  | Terrace Waterproofing and Protective finishing. | 30d | 2025-07-12 | 2025-08-18 | PG-10196 FF+10d |  | 249.62d |
| PG-10194 |  | Formwork | 5d | 2025-07-22 | 2025-07-28 | PG-10193 |  | 249.62d |
| PG-10195 |  | Reinforcement | 5d | 2025-07-28 | 2025-08-02 | PG-10194 FF+5d |  | 249.62d |
| PG-10196 |  | Concrete | 2d | 2025-08-02 | 2025-08-05 | PG-10195 |  | 249.62d |
|  | 1.3.1.1.3 | **MEP Internal works** |  | 2024-10-24 | 2026-01-16 |  |  |  |
|  | 1.3.1.1.3.1 | **LBF** |  | 2024-10-24 | 2025-01-07 |  |  |  |
| PG-10198 |  | Surface Drainage System (Chambers and Pipeline for Sump) | 15d | 2024-10-24 A | 2024-11-12 A | PG-10100 | 100% |  |
| PG-10199 |  | Pump fixing for collection sump | 2d | 2024-12-05 A | 2024-12-07 A | PG-10422 | 100% |  |
| PG-10200 |  | FPS Piping and Sprinkler Fixing works | 9.67d | 2024-12-23 A | 2025-01-03 A | PG-10199, PG-10425 FF+5d | 100% |  |
| PG-10201 |  | Electrical Conducting and Light Fixing works | 9.67d | 2024-12-25 A | 2025-01-07 A | PG-10425 FF+7d | 100% |  |
|  | 1.3.1.1.3.2 | **UBF** |  | 2024-12-17 | 2025-01-24 |  |  |  |
| PG-10202 |  | Piping for Rainwater and Soil lines in Ceiling | 20d | 2024-12-17 A | 2025-01-09 A | PG-10425 FF+10d | 100% |  |
| PG-10203 |  | FPS Piping and Sprinkler Fixing works | 9.67d | 2025-01-01 A | 2025-01-13 A | PG-12710 FF+5d, PG-10200 FF+5d | 100% |  |
| PG-10204 |  | Electrical Conducting and Light Fixing works | 9.67d | 2025-01-13 A | 2025-01-24 A | PG-10203, PG-12711 FF+5d, PG-10201 FF+5d | 100% |  |
|  | 1.3.1.1.3.3 | **Ground Floor** |  | 2024-10-24 | 2025-01-15 |  |  |  |
|  | 1.3.1.1.3.3.1 | **PHE Works** |  | 2024-10-24 | 2025-01-14 |  |  |  |
| PG-10205 |  | 1st Fix - Piping works | 12d | 2024-10-24 A | 2024-11-08 A | PG-10100 | 100% |  |
| PG-10206 |  | 2nd Fix - diverter fixing & Pressure testing | 10d | 2024-11-04 A | 2024-11-15 A | PG-10205 FF+6d | 100% |  |
| PG-10207 |  | Final Fix - CP & Sanitary fixtures | 10.5d | 2025-01-02 A | 2025-01-14 A | PG-10435, PG-10441 FF+6d | 100% |  |
|  | 1.3.1.1.3.3.2 | **Fire Fighting Works** |  | 2024-11-04 | 2025-01-15 |  |  |  |
| PG-10208 |  | 1st Fix - Piping and Shaft hydrant works | 11.67d | 2024-11-04 A | 2024-11-18 A | PG-10432 FF+6d | 100% |  |
| PG-10209 |  | 2nd Fix - Sprinkler fixing & Pressure testing | 9.67d | 2024-12-11 A | 2024-12-23 A | PG-10440 FF+6d | 100% |  |
| PG-10210 |  | Final Fix - Smoke & heat detectors, FHC , FAS Etc. | 9.67d | 2025-01-02 A | 2025-01-15 A | PG-10209, PG-10441 FF+6d | 100% |  |
|  | 1.3.1.1.3.3.3 | **Electrical Works** |  | 2024-10-24 | 2025-01-15 |  |  |  |
| PG-10211 |  | 1st Fix - GI wire pulling | 8d | 2024-10-24 A | 2024-11-04 A | PG-10100 | 100% |  |
| PG-10212 |  | 2nd Fix - Wiring works | 14.67d | 2024-12-04 A | 2024-12-23 A | PG-10440 FF+5d | 100% |  |
| PG-10213 |  | Final Fix - Electrical Fixtures | 5.67d | 2025-01-08 A | 2025-01-15 A | PG-10212, PG-10441 FF+6d | 100% |  |
|  | 1.3.1.1.3.4 | **Floor 1** |  | 2024-11-09 | 2025-02-01 |  |  |  |
|  | 1.3.1.1.3.4.1 | **PHE Works** |  | 2024-11-09 | 2025-02-01 |  |  |  |
| PG-10214 |  | 1st Fix - Piping works | 12d | 2024-11-09 A | 2024-11-23 A | PG-10105 | 100% |  |
| PG-10215 |  | 2nd Fix - diverter fixing & Pressure testing | 10d | 2024-11-19 A | 2024-11-30 A | PG-10214 FF+6d | 100% |  |
| PG-10216 |  | Final Fix - CP & Sanitary fixtures | 9.67d | 2025-01-20 A | 2025-02-01 A | PG-10449, PG-10455 FF+6d | 100% |  |
|  | 1.3.1.1.3.4.2 | **Fire Fighting Works** |  | 2024-11-19 | 2025-01-31 |  |  |  |
| PG-10217 |  | 1st Fix - Piping and Shaft hydrant works | 11.67d | 2024-11-19 A | 2024-12-03 A | PG-10446 FF+6d | 100% |  |
| PG-10218 |  | 2nd Fix - Sprinkler fixing & Pressure testing | 9.67d | 2024-12-27 A | 2025-01-08 A | PG-10454 FF+6d | 100% |  |
| PG-10219 |  | Final Fix - Smoke & heat detectors, FHC , FAS Etc. | 9.67d | 2025-01-20 A | 2025-01-31 A | PG-10218, PG-10455 FF+6d | 100% |  |
|  | 1.3.1.1.3.4.3 | **Electrical Works** |  | 2024-11-09 | 2025-01-31 |  |  |  |
| PG-10220 |  | 1st Fix - GI wire pulling | 8d | 2024-11-09 A | 2024-11-19 A | PG-10105 | 100% |  |
| PG-10221 |  | 2nd Fix - Wiring works | 14.67d | 2024-12-20 A | 2025-01-06 A | PG-10454 FF+5d | 100% |  |
| PG-10222 |  | Final Fix - Electrical Fixtures | 5.67d | 2025-01-24 A | 2025-01-31 A | PG-10221, PG-10455 FF+6d | 100% |  |
|  | 1.3.1.1.3.5 | **Floor 2** |  | 2024-11-25 | 2025-02-14 |  |  |  |
|  | 1.3.1.1.3.5.1 | **PHE Works** |  | 2024-11-25 | 2025-02-14 |  |  |  |
| PG-10223 |  | 1st Fix - Piping works | 12d | 2024-11-25 A | 2024-12-09 A | PG-10110 | 100% |  |
| PG-10224 |  | 2nd Fix - diverter fixing & Pressure testing | 10d | 2024-12-04 A | 2024-12-16 A | PG-10223 FF+6d | 100% |  |
| PG-10225 |  | Final Fix - CP & Sanitary fixtures | 9.67d | 2025-02-03 A | 2025-02-14 A | PG-10463, PG-10469 FF+6d | 100% |  |
|  | 1.3.1.1.3.5.2 | **Fire Fighting Works** |  | 2024-12-04 | 2025-02-14 |  |  |  |
| PG-10226 |  | 1st Fix - Piping and Shaft hydrant works | 11.67d | 2024-12-04 A | 2024-12-19 A | PG-10460 FF+6d | 100% |  |
| PG-10227 |  | 2nd Fix - Sprinkler fixing & Pressure testing | 9.67d | 2025-01-10 A | 2025-01-22 A | PG-10468 FF+6d | 100% |  |
| PG-10228 |  | Final Fix - Smoke & heat detectors, FHC , FAS Etc. | 9.67d | 2025-02-03 A | 2025-02-14 A | PG-10227, PG-10469 FF+6d | 100% |  |
|  | 1.3.1.1.3.5.3 | **Electrical Works** |  | 2024-11-25 | 2025-02-14 |  |  |  |
| PG-10229 |  | 1st Fix - GI wire pulling | 8d | 2024-11-25 A | 2024-12-04 A | PG-10110 | 100% |  |
| PG-10230 |  | 2nd Fix - Wiring works | 14.67d | 2025-01-03 A | 2025-01-20 A | PG-10468 FF+5d | 100% |  |
| PG-10231 |  | Final Fix - Electrical Fixtures | 5.83d | 2025-02-07 A | 2025-02-14 A | PG-10230, PG-10469 FF+6d | 100% |  |
|  | 1.3.1.1.3.6 | **Floor 3** |  | 2024-12-10 | 2025-03-04 |  |  |  |
|  | 1.3.1.1.3.6.1 | **PHE Works** |  | 2024-12-10 | 2025-03-04 |  |  |  |
| PG-10232 |  | 1st Fix - Piping works | 12d | 2024-12-10 A | 2024-12-24 A | PG-10115 | 100% |  |
| PG-10233 |  | 2nd Fix - diverter fixing & Pressure testing | 10d | 2024-12-19 A | 2025-01-01 A | PG-10232 FF+6d | 100% |  |
| PG-10234 |  | Final Fix - CP & Sanitary fixtures | 9.67d | 2025-02-20 A | 2025-03-04 A | PG-10477, PG-10483 FF+6d | 100% |  |
|  | 1.3.1.1.3.6.2 | **Fire Fighting Works** |  | 2024-12-19 | 2025-03-04 |  |  |  |
| PG-10235 |  | 1st Fix - Piping and Shaft hydrant works | 11.67d | 2024-12-19 A | 2025-01-02 A | PG-10474 FF+6d | 100% |  |
| PG-10236 |  | 2nd Fix - Sprinkler fixing & Pressure testing | 9.67d | 2025-01-27 A | 2025-02-06 A | PG-10482 FF+6d | 100% |  |
| PG-10237 |  | Final Fix - Smoke & heat detectors, FHC , FAS Etc. | 9.67d | 2025-02-20 A | 2025-03-04 A | PG-10236, PG-10483 FF+6d | 100% |  |
|  | 1.3.1.1.3.6.3 | **Electrical Works** |  | 2024-12-10 | 2025-03-04 |  |  |  |
| PG-10238 |  | 1st Fix - GI wire pulling | 8d | 2024-12-10 A | 2024-12-19 A | PG-10115 | 100% |  |
| PG-10239 |  | 2nd Fix - Wiring works | 14.67d | 2025-01-20 A | 2025-02-05 A | PG-10482 FF+5d | 100% |  |
| PG-10240 |  | Final Fix - Electrical Fixtures | 5.67d | 2025-02-25 A | 2025-03-04 A | PG-10239, PG-10483 FF+6d | 100% |  |

| ID | WBS | Task | Duration | Start | Finish | Predecessors | Complete | Total float |
| --- | --- | --- | --- | --- | --- | --- | --- | --- |
|  | 1.3.1.1.3.7 | **Floor 4** |  | 2024-12-25 | 2025-03-17 |  |  |  |
|  | 1.3.1.1.3.7.1 | **PHE Works** |  | 2024-12-25 | 2025-03-17 |  |  |  |
| PG-10241 |  | 1st Fix - Piping works | 12d | 2024-12-25 A | 2025-01-09 A | PG-10120 | 100% |  |
| PG-10242 |  | 2nd Fix - diverter fixing & Pressure testing | 10d | 2025-01-04 A | 2025-01-15 A | PG-10241 FF+6d | 100% |  |
| PG-10243 |  | Final Fix - CP & Sanitary fixtures | 9.67d | 2025-03-05 A | 2025-03-17 A | PG-10491, PG-10497 FF+6d | 100% |  |
|  | 1.3.1.1.3.7.2 | **Fire Fighting Works** |  | 2025-01-04 | 2025-03-17 |  |  |  |
| PG-10244 |  | 1st Fix - Piping and Shaft hydrant works | 11.67d | 2025-01-04 A | 2025-01-17 A | PG-10488 FF+6d | 100% |  |
| PG-10245 |  | 2nd Fix - Sprinkler fixing & Pressure testing | 9.67d | 2025-02-10 A | 2025-02-21 A | PG-10496 FF+6d | 100% |  |
| PG-10246 |  | Final Fix - Smoke & heat detectors, FHC , FAS Etc. | 9.67d | 2025-03-05 A | 2025-03-17 A | PG-10245, PG-10497 FF+6d | 100% |  |
|  | 1.3.1.1.3.7.3 | **Electrical Works** |  | 2024-12-25 | 2025-03-17 |  |  |  |
| PG-10247 |  | 1st Fix - GI wire pulling | 8d | 2024-12-25 A | 2025-01-03 A | PG-10120 | 100% |  |
| PG-10248 |  | 2nd Fix - Wiring works | 14.67d | 2025-02-03 A | 2025-02-19 A | PG-10496 FF+5d | 100% |  |
| PG-10249 |  | Final Fix - Electrical Fixtures | 5.67d | 2025-03-11 A | 2025-03-17 A | PG-10248, PG-10497 FF+6d | 100% |  |
|  | 1.3.1.1.3.8 | **Floor 5** |  | 2025-01-09 | 2025-04-02 |  |  |  |
|  | 1.3.1.1.3.8.1 | **PHE Works** |  | 2025-01-09 | 2025-04-01 |  |  |  |
| PG-10250 |  | 1st Fix - Piping works | 12d | 2025-01-09 A | 2025-01-22 A | PG-10125 | 100% |  |
| PG-10251 |  | 2nd Fix - diverter fixing & Pressure testing | 10d | 2025-01-18 A | 2025-01-30 A | PG-10250 FF+6d | 100% |  |
| PG-10252 |  | Final Fix - CP & Sanitary fixtures | 9.67d | 2025-03-20 A | 2025-04-01 A | PG-10505, PG-10511 FF+6d | 100% |  |
|  | 1.3.1.1.3.8.2 | **Fire Fighting Works** |  | 2025-01-18 | 2025-04-02 |  |  |  |
| PG-10253 |  | 1st Fix - Piping and Shaft hydrant works | 11.67d | 2025-01-18 A | 2025-02-01 A | PG-10502 FF+6d | 100% |  |
| PG-10254 |  | 2nd Fix - Sprinkler fixing & Pressure testing | 9.67d | 2025-02-26 A | 2025-03-08 A | PG-10510 FF+6d | 100% |  |
| PG-10255 |  | Final Fix - Smoke & heat detectors, FHC , FAS Etc. | 9.67d | 2025-03-20 A | 2025-04-02 A | PG-10254, PG-10511 FF+6d | 100% |  |
|  | 1.3.1.1.3.8.3 | **Electrical Works** |  | 2025-01-09 | 2025-04-02 |  |  |  |
| PG-10256 |  | 1st Fix - GI wire pulling | 8d | 2025-01-09 A | 2025-01-18 A | PG-10125 | 100% |  |
| PG-10257 |  | 2nd Fix - Wiring works | 14.67d | 2025-02-19 A | 2025-03-10 A | PG-10510 FF+5d | 100% |  |
| PG-10258 |  | Final Fix - Electrical Fixtures | 5.83d | 2025-03-25 A | 2025-04-02 A | PG-10257, PG-10511 FF+6d | 100% |  |
|  | 1.3.1.1.3.9 | **Floor 6** |  | 2025-01-24 | 2025-04-17 |  |  |  |
|  | 1.3.1.1.3.9.1 | **PHE Works** |  | 2025-01-24 | 2025-04-17 |  |  |  |
| PG-10259 |  | 1st Fix - Piping works | 12d | 2025-01-24 A | 2025-02-08 A | PG-10130 | 100% |  |
| PG-10260 |  | 2nd Fix - diverter fixing & Pressure testing | 10d | 2025-02-04 A | 2025-02-15 A | PG-10259 FF+6d | 100% |  |
| PG-10261 |  | Final Fix - CP & Sanitary fixtures | 9.67d | 2025-04-05 A | 2025-04-17 A | PG-10519, PG-10525 FF+6d | 100% |  |
|  | 1.3.1.1.3.9.2 | **Fire Fighting Works** |  | 2025-02-03 | 2025-04-17 |  |  |  |
| PG-10262 |  | 1st Fix - Piping and Shaft hydrant works | 11.67d | 2025-02-03 A | 2025-02-17 A | PG-10516 FF+6d | 100% |  |
| PG-10263 |  | 2nd Fix - Sprinkler fixing & Pressure testing | 9.67d | 2025-03-12 A | 2025-03-24 A | PG-10524 FF+6d | 100% |  |
| PG-10264 |  | Final Fix - Smoke & heat detectors, FHC , FAS Etc. | 9.67d | 2025-04-05 A | 2025-04-17 A | PG-10263, PG-10525 FF+6d | 100% |  |
|  | 1.3.1.1.3.9.3 | **Electrical Works** |  | 2025-01-24 | 2025-04-17 |  |  |  |
| PG-10265 |  | 1st Fix - GI wire pulling | 8d | 2025-01-24 A | 2025-02-03 A | PG-10130 | 100% |  |
| PG-10266 |  | 2nd Fix - Wiring works | 14.67d | 2025-03-05 A | 2025-03-22 A | PG-10524 FF+5d | 100% |  |
| PG-10267 |  | Final Fix - Electrical Fixtures | 5.67d | 2025-04-10 A | 2025-04-17 A | PG-10266, PG-10525 FF+6d | 100% |  |
|  | 1.3.1.1.3.10 | **Floor 7** |  | 2025-02-08 | 2025-05-03 |  |  |  |
|  | 1.3.1.1.3.10.1 | **PHE Works** |  | 2025-02-08 | 2025-05-03 |  |  |  |
| PG-10268 |  | 1st Fix - Piping works | 12d | 2025-02-08 A | 2025-02-24 A | PG-10135 | 100% |  |
| PG-10269 |  | 2nd Fix - diverter fixing & Pressure testing | 10d | 2025-02-19 A | 2025-03-04 A | PG-10268 FF+6d | 100% |  |
| PG-10270 |  | Final Fix - CP & Sanitary fixtures | 9.83d | 2025-04-21 A | 2025-05-03 A | PG-10533, PG-10539 FF+6d | 100% |  |
|  | 1.3.1.1.3.10.2 | **Fire Fighting Works** |  | 2025-02-18 | 2025-05-02 |  |  |  |
| PG-10271 |  | 1st Fix - Piping and Shaft hydrant works | 11.67d | 2025-02-18 A | 2025-03-05 A | PG-10530 FF+6d | 100% |  |
| PG-10272 |  | 2nd Fix - Sprinkler fixing & Pressure testing | 9.67d | 2025-03-29 A | 2025-04-11 A | PG-10538 FF+6d | 100% |  |
| PG-10273 |  | Final Fix - Smoke & heat detectors, FHC , FAS Etc. | 9.67d | 2025-04-21 A | 2025-05-02 A | PG-10272, PG-10539 FF+6d | 100% |  |
|  | 1.3.1.1.3.10.3 | **Electrical Works** |  | 2025-02-08 | 2025-05-03 |  |  |  |
| PG-10274 |  | 1st Fix - GI wire pulling | 8d | 2025-02-08 A | 2025-02-19 A | PG-10135 | 100% |  |
| PG-10275 |  | 2nd Fix - Wiring works | 14.67d | 2025-03-22 A | 2025-04-09 A | PG-10538 FF+5d | 100% |  |
| PG-10276 |  | Final Fix - Electrical Fixtures | 5.67d | 2025-04-26 A | 2025-05-03 A | PG-10275, PG-10539 FF+6d | 100% |  |
|  | 1.3.1.1.3.11 | **Floor 8** |  | 2025-02-25 | 2025-05-16 |  |  |  |
|  | 1.3.1.1.3.11.1 | **PHE Works** |  | 2025-02-25 | 2025-05-16 |  |  |  |
| PG-10277 |  | 1st Fix - Piping works | 12d | 2025-02-25 A | 2025-03-10 A | PG-10140 | 100% |  |
| PG-10278 |  | 2nd Fix - diverter fixing & Pressure testing | 10d | 2025-03-05 A | 2025-03-17 A | PG-10277 FF+6d | 100% |  |
| PG-10279 |  | Final Fix - CP & Sanitary fixtures | 9.83d | 2025-05-06 A | 2025-05-16 | PG-10547, PG-10553 FF+6d | 35% | 394d |
|  | 1.3.1.1.3.11.2 | **Fire Fighting Works** |  | 2025-03-06 | 2025-05-16 |  |  |  |
| PG-10280 |  | 1st Fix - Piping and Shaft hydrant works | 11.67d | 2025-03-06 A | 2025-03-21 A | PG-10544 FF+6d | 100% |  |
| PG-10281 |  | 2nd Fix - Sprinkler fixing & Pressure testing | 9.67d | 2025-04-12 A | 2025-04-24 A | PG-10552 FF+6d | 100% |  |
| PG-10282 |  | Final Fix - Smoke & heat detectors, FHC , FAS Etc. | 9.83d | 2025-05-06 A | 2025-05-16 | PG-10281, PG-10553 FF+6d | 31% | 393.67d |
|  | 1.3.1.1.3.11.3 | **Electrical Works** |  | 2025-02-25 | 2025-05-16 |  |  |  |
| PG-10283 |  | 1st Fix - GI wire pulling | 8d | 2025-02-25 A | 2025-03-06 A | PG-10140 | 100% |  |
| PG-10284 |  | 2nd Fix - Wiring works | 14.67d | 2025-04-05 A | 2025-04-22 A | PG-10552 FF+5d | 100% |  |
| PG-10285 |  | Final Fix - Electrical Fixtures | 5.67d | 2025-05-09 | 2025-05-16 | PG-10284, PG-10553 FF+6d |  | 394.06d |
|  | 1.3.1.1.3.12 | **Floor 9** |  | 2025-03-12 | 2025-05-31 |  |  |  |
|  | 1.3.1.1.3.12.1 | **PHE Works** |  | 2025-03-12 | 2025-05-31 |  |  |  |
| PG-10286 |  | 1st Fix - Piping works | 12d | 2025-03-12 A | 2025-03-25 A | PG-10145 | 100% |  |
| PG-10287 |  | 2nd Fix - diverter fixing & Pressure testing | 10d | 2025-03-20 A | 2025-04-02 A | PG-10286 FF+6d | 100% |  |
| PG-10288 |  | Final Fix - CP & Sanitary fixtures | 9.83d | 2025-05-20 | 2025-05-31 | PG-10561, PG-10567 FF+6d |  | 382.03d |

| ID | WBS | Task | Duration | Start | Finish | Predecessors | Complete | Total float |
| --- | --- | --- | --- | --- | --- | --- | --- | --- |
|  | 1.3.1.1.3.12.2 | **Fire Fighting Works** |  | 2025-03-21 | 2025-05-31 |  |  |  |
| PG-10289 |  | 1st Fix - Piping and Shaft hydrant works | 11.67d | 2025-03-21 A | 2025-04-04 A | PG-10558 FF+6d | 100% |  |
| PG-10290 |  | 2nd Fix - Sprinkler fixing & Pressure testing | 9.67d | 2025-04-28 A | 2025-05-09 A | PG-10566 FF+6d | 100% |  |
| PG-10291 |  | Final Fix - Smoke & heat detectors, FHC , FAS Etc. | 9.83d | 2025-05-20 | 2025-05-31 | PG-10290, PG-10567 FF+6d |  | 382.03d |
|  | 1.3.1.1.3.12.3 | **Electrical Works** |  | 2025-03-12 | 2025-05-31 |  |  |  |
| PG-10292 |  | 1st Fix - GI wire pulling | 8d | 2025-03-12 A | 2025-03-20 A | PG-10145 | 100% |  |
| PG-10293 |  | 2nd Fix - Wiring works | 14.83d | 2025-04-21 A | 2025-05-07 A | PG-10566 FF+5d | 100% |  |
| PG-10294 |  | Final Fix - Electrical Fixtures | 6d | 2025-05-24 | 2025-05-31 | PG-10293, PG-10567 FF+6d |  | 382.03d |
|  | 1.3.1.1.3.13 | **Floor 10** |  | 2025-03-27 | 2025-06-14 |  |  |  |
|  | 1.3.1.1.3.13.1 | **PHE Works** |  | 2025-03-27 | 2025-06-14 |  |  |  |
| PG-10295 |  | 1st Fix - Piping works | 12d | 2025-03-27 A | 2025-04-10 A | PG-10150 | 100% |  |
| PG-10296 |  | 2nd Fix - diverter fixing & Pressure testing | 10d | 2025-04-05 A | 2025-04-17 A | PG-10295 FF+6d | 100% |  |
| PG-10297 |  | Final Fix - CP & Sanitary fixtures | 10d | 2025-06-03 | 2025-06-14 | PG-10575, PG-10581 FF+6d |  | 369.25d |
|  | 1.3.1.1.3.13.2 | **Fire Fighting Works** |  | 2025-04-05 | 2025-06-14 |  |  |  |
| PG-10298 |  | 1st Fix - Piping and Shaft hydrant works | 11.67d | 2025-04-05 A | 2025-04-19 A | PG-10572 FF+6d | 100% |  |
| PG-10299 |  | 2nd Fix - Sprinkler fixing & Pressure testing | 9.83d | 2025-05-13 | 2025-05-24 | PG-10580 FF+6d |  | 377.08d |
| PG-10300 |  | Final Fix - Smoke & heat detectors, FHC , FAS Etc. | 10d | 2025-06-03 | 2025-06-14 | PG-10299, PG-10581 FF+6d |  | 369.25d |
|  | 1.3.1.1.3.13.3 | **Electrical Works** |  | 2025-03-27 | 2025-06-14 |  |  |  |
| PG-10301 |  | 1st Fix - GI wire pulling | 8d | 2025-03-27 A | 2025-04-04 A | PG-10150 | 100% |  |
| PG-10302 |  | 2nd Fix - Wiring works | 14.83d | 2025-05-07 A | 2025-05-23 | PG-10580 FF+5d | 13% | 381.81d |
| PG-10303 |  | Final Fix - Electrical Fixtures | 6d | 2025-06-07 | 2025-06-14 | PG-10302, PG-10581 FF+6d |  | 369.25d |
|  | 1.3.1.1.3.14 | **Floor 11** |  | 2025-04-09 | 2025-06-27 |  |  |  |
|  | 1.3.1.1.3.14.1 | **PHE Works** |  | 2025-04-09 | 2025-06-27 |  |  |  |
| PG-10304 |  | 1st Fix - Piping works | 12d | 2025-04-09 A | 2025-04-24 A | PG-10155 | 100% |  |
| PG-10305 |  | 2nd Fix - diverter fixing & Pressure testing | 10d | 2025-04-19 A | 2025-05-02 A | PG-10304 FF+6d | 100% |  |
| PG-10306 |  | Final Fix - CP & Sanitary fixtures | 10d | 2025-06-17 | 2025-06-27 | PG-10589, PG-10595 FF+6d |  | 357.65d |
|  | 1.3.1.1.3.14.2 | **Fire Fighting Works** |  | 2025-04-18 | 2025-06-27 |  |  |  |
| PG-10307 |  | 1st Fix - Piping and Shaft hydrant works | 11.67d | 2025-04-18 A | 2025-05-02 A | PG-10586 FF+6d | 100% |  |
| PG-10308 |  | 2nd Fix - Sprinkler fixing & Pressure testing | 10d | 2025-05-27 | 2025-06-07 | PG-10594 FF+6d |  | 365.65d |
| PG-10309 |  | Final Fix - Smoke & heat detectors, FHC , FAS Etc. | 10d | 2025-06-17 | 2025-06-27 | PG-10308, PG-10595 FF+6d |  | 357.65d |
|  | 1.3.1.1.3.14.3 | **Electrical Works** |  | 2025-04-09 | 2025-06-27 |  |  |  |
| PG-10310 |  | 1st Fix - GI wire pulling | 8d | 2025-04-09 A | 2025-04-18 A | PG-10155 | 100% |  |
| PG-10311 |  | 2nd Fix - Wiring works | 15d | 2025-05-20 | 2025-06-06 | PG-10594 FF+5d |  | 370.48d |
| PG-10312 |  | Final Fix - Electrical Fixtures | 6d | 2025-06-21 | 2025-06-27 | PG-10311, PG-10595 FF+6d |  | 357.65d |
|  | 1.3.1.1.3.15 | **Floor 12** |  | 2025-04-22 | 2025-07-10 |  |  |  |
|  | 1.3.1.1.3.15.1 | **PHE Works** |  | 2025-04-22 | 2025-07-10 |  |  |  |
| PG-10313 |  | 1st Fix - Piping works | 12d | 2025-04-22 A | 2025-05-06 A | PG-10160 | 100% |  |
| PG-10314 |  | 2nd Fix - diverter fixing & Pressure testing | 10d | 2025-05-01 A | 2025-05-13 | PG-10313 FF+6d | 61% | 348.49d |
| PG-10315 |  | Final Fix - CP & Sanitary fixtures | 10d | 2025-06-28 | 2025-07-10 | PG-10603, PG-10609 FF+6d |  | 348.49d |
|  | 1.3.1.1.3.15.2 | **Fire Fighting Works** |  | 2025-05-01 | 2025-07-10 |  |  |  |
| PG-10316 |  | 1st Fix - Piping and Shaft hydrant works | 11.83d | 2025-05-01 A | 2025-05-15 | PG-10600 FF+6d | 60% | 396.08d |
| PG-10317 |  | 2nd Fix - Sprinkler fixing & Pressure testing | 10d | 2025-06-07 | 2025-06-19 | PG-10608 FF+6d |  | 356.15d |
| PG-10318 |  | Final Fix - Smoke & heat detectors, FHC , FAS Etc. | 10d | 2025-06-28 | 2025-07-10 | PG-10317, PG-10609 FF+6d |  | 348.49d |
|  | 1.3.1.1.3.15.3 | **Electrical Works** |  | 2025-04-22 | 2025-07-10 |  |  |  |
| PG-10319 |  | 1st Fix - GI wire pulling | 8d | 2025-04-22 A | 2025-05-01 A | PG-10160 | 100% |  |
| PG-10320 |  | 2nd Fix - Wiring works | 15d | 2025-05-31 | 2025-06-18 | PG-10608 FF+5d |  | 361.15d |
| PG-10321 |  | Final Fix - Electrical Fixtures | 6d | 2025-07-03 | 2025-07-10 | PG-10320, PG-10609 FF+6d |  | 348.49d |
|  | 1.3.1.1.3.16 | **Floor 13** |  | 2025-05-05 | 2025-07-23 |  |  |  |
|  | 1.3.1.1.3.16.1 | **PHE Works** |  | 2025-05-05 | 2025-07-23 |  |  |  |
| PG-10322 |  | 1st Fix - Piping works | 12d | 2025-05-05 A | 2025-05-17 | PG-10165 | 38% | 337.48d |
| PG-10323 |  | 2nd Fix - diverter fixing & Pressure testing | 10d | 2025-05-13 | 2025-05-24 | PG-10322 FF+6d |  | 337.48d |
| PG-10324 |  | Final Fix - CP & Sanitary fixtures | 10d | 2025-07-11 | 2025-07-23 | PG-10617, PG-10623 FF+6d |  | 337.48d |
|  | 1.3.1.1.3.16.2 | **Fire Fighting Works** |  | 2025-05-13 | 2025-07-23 |  |  |  |
| PG-10325 |  | 1st Fix - Piping and Shaft hydrant works | 11.83d | 2025-05-13 | 2025-05-27 | PG-10614 FF+6d |  | 381.65d |
| PG-10326 |  | 2nd Fix - Sprinkler fixing & Pressure testing | 10d | 2025-06-19 | 2025-07-01 | PG-10622 FF+6d |  | 347.48d |
| PG-10327 |  | Final Fix - Smoke & heat detectors, FHC , FAS Etc. | 10d | 2025-07-12 | 2025-07-23 | PG-10326, PG-10623 FF+6d |  | 337.48d |
|  | 1.3.1.1.3.16.3 | **Electrical Works** |  | 2025-05-05 | 2025-07-23 |  |  |  |
| PG-10328 |  | 1st Fix - GI wire pulling | 8d | 2025-05-05 A | 2025-05-13 | PG-10165 | 51% | 381.65d |
| PG-10329 |  | 2nd Fix - Wiring works | 15d | 2025-06-12 | 2025-06-30 | PG-10622 FF+5d |  | 352.48d |
| PG-10330 |  | Final Fix - Electrical Fixtures | 6d | 2025-07-17 | 2025-07-23 | PG-10329, PG-10623 FF+6d |  | 337.48d |
|  | 1.3.1.1.3.17 | **Floor 14** |  | 2025-05-17 | 2025-08-06 |  |  |  |
|  | 1.3.1.1.3.17.1 | **PHE Works** |  | 2025-05-17 | 2025-08-06 |  |  |  |
| PG-10331 |  | 1st Fix - Piping works | 12d | 2025-05-17 | 2025-05-31 | PG-10170 |  | 325.79d |
| PG-10332 |  | 2nd Fix - diverter fixing & Pressure testing | 10d | 2025-05-27 | 2025-06-07 | PG-10331 FF+6d |  | 325.79d |
| PG-10333 |  | Final Fix - CP & Sanitary fixtures | 10d | 2025-07-26 | 2025-08-06 | PG-10631, PG-10637 FF+6d |  | 325.79d |
|  | 1.3.1.1.3.17.2 | **Fire Fighting Works** |  | 2025-05-27 | 2025-08-06 |  |  |  |
| PG-10334 |  | 1st Fix - Piping and Shaft hydrant works | 12d | 2025-05-27 | 2025-06-10 | PG-10628 FF+6d |  | 372.45d |
| PG-10335 |  | 2nd Fix - Sprinkler fixing & Pressure testing | 10d | 2025-07-03 | 2025-07-15 | PG-10636 FF+6d |  | 335.79d |
| PG-10336 |  | Final Fix - Smoke & heat detectors, FHC , FAS Etc. | 10d | 2025-07-26 | 2025-08-06 | PG-10335, PG-10637 FF+6d |  | 325.79d |
|  | 1.3.1.1.3.17.3 | **Electrical Works** |  | 2025-05-17 | 2025-08-06 |  |  |  |

| ID | WBS | Task | Duration | Start | Finish | Predecessors | Total float |
| --- | --- | --- | --- | --- | --- | --- | --- |
| PG-10337 |  | 1st Fix - GI wire pulling | 8d | 2025-05-17 | 2025-05-27 | PG-10170 | 372.45d |
| PG-10338 |  | 2nd Fix - Wiring works | 15d | 2025-06-26 | 2025-07-14 | PG-10636 FF+5d | 340.79d |
| PG-10339 |  | Final Fix - Electrical Fixtures | 6d | 2025-07-31 | 2025-08-06 | PG-10338, PG-10637 FF+6d | 325.79d |
|  | 1.3.1.1.3.18 | **Floor 15** |  | 2025-05-30 | 2025-08-19 |  |  |
|  | 1.3.1.1.3.18.1 | **PHE Works** |  | 2025-05-30 | 2025-08-19 |  |  |
| PG-10340 |  | 1st Fix - Piping works | 12d | 2025-05-30 | 2025-06-13 | PG-10175 | 133.29d |
| PG-10341 |  | 2nd Fix - diverter fixing & Pressure testing | 10d | 2025-06-09 | 2025-06-20 | PG-10340 FF+6d | 133.29d |
| PG-10342 |  | Final Fix - CP & Sanitary fixtures | 10d | 2025-08-07 | 2025-08-19 | PG-10645, PG-10651 FF+6d | 315.79d |
|  | 1.3.1.1.3.18.2 | **Fire Fighting Works** |  | 2025-06-09 | 2025-08-19 |  |  |
| PG-10343 |  | 1st Fix - Piping and Shaft hydrant works | 12d | 2025-06-09 | 2025-06-23 | PG-10642 FF+6d | 362.45d |
| PG-10344 |  | 2nd Fix - Sprinkler fixing & Pressure testing | 10d | 2025-07-16 | 2025-07-28 | PG-10650 FF+6d | 324.79d |
| PG-10345 |  | Final Fix - Smoke & heat detectors, FHC , FAS Etc. | 10d | 2025-08-07 | 2025-08-19 | PG-10344, PG-10651 FF+6d | 315.79d |
|  | 1.3.1.1.3.18.3 | **Electrical Works** |  | 2025-05-30 | 2025-08-19 |  |  |
| PG-10346 |  | 1st Fix - GI wire pulling | 8d | 2025-05-30 | 2025-06-09 | PG-10175 | 362.45d |
| PG-10347 |  | 2nd Fix - Wiring works | 15d | 2025-07-09 | 2025-07-26 | PG-10650 FF+5d | 329.79d |
| PG-10348 |  | Final Fix - Electrical Fixtures | 6d | 2025-08-12 | 2025-08-19 | PG-10347, PG-10651 FF+6d | 315.79d |
|  | 1.3.1.1.3.19 | **Floor 16** |  | 2025-06-12 | 2025-09-01 |  |  |
|  | 1.3.1.1.3.19.1 | **PHE Works** |  | 2025-06-12 | 2025-09-01 |  |  |
| PG-10349 |  | 1st Fix - Piping works | 12d | 2025-06-12 | 2025-06-26 | PG-10180 | 304.79d |
| PG-10350 |  | 2nd Fix - diverter fixing & Pressure testing | 10d | 2025-06-21 | 2025-07-03 | PG-10349 FF+6d | 304.79d |
| PG-10351 |  | Final Fix - CP & Sanitary fixtures | 10d | 2025-08-21 | 2025-09-01 | PG-10659, PG-10665 FF+6d | 304.79d |
|  | 1.3.1.1.3.19.2 | **Fire Fighting Works** |  | 2025-06-21 | 2025-09-01 |  |  |
| PG-10352 |  | 1st Fix - Piping and Shaft hydrant works | 12d | 2025-06-21 | 2025-07-05 | PG-10656 FF+6d | 351.45d |
| PG-10353 |  | 2nd Fix - Sprinkler fixing & Pressure testing | 10d | 2025-07-29 | 2025-08-09 | PG-10664 FF+6d | 313.79d |
| PG-10354 |  | Final Fix - Smoke & heat detectors, FHC , FAS Etc. | 10d | 2025-08-21 | 2025-09-01 | PG-10353, PG-10665 FF+6d | 304.79d |
|  | 1.3.1.1.3.19.3 | **Electrical Works** |  | 2025-06-12 | 2025-09-01 |  |  |
| PG-10355 |  | 1st Fix - GI wire pulling | 8d | 2025-06-12 | 2025-06-21 | PG-10180 | 351.45d |
| PG-10356 |  | 2nd Fix - Wiring works | 15d | 2025-07-22 | 2025-08-08 | PG-10664 FF+5d | 318.79d |
| PG-10357 |  | Final Fix - Electrical Fixtures | 6d | 2025-08-26 | 2025-09-01 | PG-10356, PG-10665 FF+6d | 304.79d |
|  | 1.3.1.1.3.20 | **Floor 17** |  | 2025-06-25 | 2025-09-13 |  |  |
|  | 1.3.1.1.3.20.1 | **PHE Works** |  | 2025-06-25 | 2025-09-13 |  |  |
| PG-10358 |  | 1st Fix - Piping works | 12d | 2025-06-25 | 2025-07-09 | PG-10185 | 293.79d |
| PG-10359 |  | 2nd Fix - diverter fixing & Pressure testing | 10d | 2025-07-04 | 2025-07-16 | PG-10358 FF+6d | 293.79d |
| PG-10360 |  | Final Fix - CP & Sanitary fixtures | 10d | 2025-09-03 | 2025-09-13 | PG-10673, PG-10679 FF+6d | 293.79d |
|  | 1.3.1.1.3.20.2 | **Fire Fighting Works** |  | 2025-07-04 | 2025-09-13 |  |  |
| PG-10361 |  | 1st Fix - Piping and Shaft hydrant works | 12d | 2025-07-04 | 2025-07-18 | PG-10670 FF+6d | 340.45d |
| PG-10362 |  | 2nd Fix - Sprinkler fixing & Pressure testing | 10d | 2025-08-11 | 2025-08-23 | PG-10678 FF+6d | 302.79d |
| PG-10363 |  | Final Fix - Smoke & heat detectors, FHC , FAS Etc. | 10d | 2025-09-03 | 2025-09-13 | PG-10362, PG-10679 FF+6d | 293.79d |
|  | 1.3.1.1.3.20.3 | **Electrical Works** |  | 2025-06-25 | 2025-09-13 |  |  |
| PG-10364 |  | 1st Fix - GI wire pulling | 8d | 2025-06-25 | 2025-07-04 | PG-10185 | 340.45d |
| PG-10365 |  | 2nd Fix - Wiring works | 15d | 2025-08-04 | 2025-08-22 | PG-10678 FF+5d | 307.79d |
| PG-10366 |  | Final Fix - Electrical Fixtures | 6d | 2025-09-08 | 2025-09-13 | PG-10365, PG-10679 FF+6d | 293.79d |
|  | 1.3.1.1.3.21 | **Floor 18** |  | 2025-07-08 | 2025-09-26 |  |  |
|  | 1.3.1.1.3.21.1 | **PHE Works** |  | 2025-07-08 | 2025-09-26 |  |  |
| PG-10367 |  | 1st Fix - Piping works | 12d | 2025-07-08 | 2025-07-22 | PG-10190 | 46.95d |
| PG-10368 |  | 2nd Fix - diverter fixing & Pressure testing | 10d | 2025-07-17 | 2025-07-29 | PG-10367 FF+6d | 282.79d |
| PG-10369 |  | Final Fix - CP & Sanitary fixtures | 10d | 2025-09-16 | 2025-09-26 | PG-10687, PG-10693 FF+6d | 282.79d |
|  | 1.3.1.1.3.21.2 | **Fire Fighting Works** |  | 2025-07-17 | 2025-09-26 |  |  |
| PG-10370 |  | 1st Fix - Piping and Shaft hydrant works | 12d | 2025-07-17 | 2025-07-31 | PG-10684 FF+6d | 329.45d |
| PG-10371 |  | 2nd Fix - Sprinkler fixing & Pressure testing | 10d | 2025-08-25 | 2025-09-05 | PG-10692 FF+6d | 291.79d |
| PG-10372 |  | Final Fix - Smoke & heat detectors, FHC , FAS Etc. | 10d | 2025-09-16 | 2025-09-26 | PG-10371, PG-10693 FF+6d | 282.79d |
|  | 1.3.1.1.3.21.3 | **Electrical Works** |  | 2025-07-08 | 2025-09-26 |  |  |
| PG-10373 |  | 1st Fix - GI wire pulling | 8d | 2025-07-08 | 2025-07-17 | PG-10190 | 329.45d |
| PG-10374 |  | 2nd Fix - Wiring works | 15d | 2025-08-18 | 2025-09-04 | PG-10692 FF+5d | 296.79d |
| PG-10375 |  | Final Fix - Electrical Fixtures | 6d | 2025-09-20 | 2025-09-26 | PG-10374, PG-10693 FF+6d | 282.79d |
|  | 1.3.1.1.3.22 | **Floor 19** |  | 2025-07-30 | 2025-10-22 |  |  |
|  | 1.3.1.1.3.22.1 | **PHE Works** |  | 2025-07-30 | 2025-10-22 |  |  |
| PG-10376 |  | 1st Fix - Piping works | 12d | 2025-07-30 | 2025-08-13 | PG-10367 FS+7d | 165.95d |
| PG-10377 |  | 2nd Fix - diverter fixing & Pressure testing | 10d | 2025-08-08 | 2025-08-21 | PG-10376 FF+6d | 165.95d |
| PG-10378 |  | Final Fix - CP & Sanitary fixtures | 9.67d | 2025-10-11 | 2025-10-22 | PG-10701, PG-10707 FF+6d | 261.79d |
|  | 1.3.1.1.3.22.2 | **Fire Fighting Works** |  | 2025-08-08 | 2025-10-22 |  |  |
| PG-10379 |  | 1st Fix - Piping and Shaft hydrant works | 12d | 2025-08-08 | 2025-08-23 | PG-10698 FF+6d | 177.95d |
| PG-10380 |  | 2nd Fix - Sprinkler fixing & Pressure testing | 9.67d | 2025-09-16 | 2025-09-27 | PG-10706 FF+6d | 272.79d |
| PG-10381 |  | Final Fix - Smoke & heat detectors, FHC , FAS Etc. | 9.67d | 2025-10-11 | 2025-10-22 | PG-10380, PG-10707 FF+6d | 261.79d |
|  | 1.3.1.1.3.22.3 | **Electrical Works** |  | 2025-07-30 | 2025-10-22 |  |  |
| PG-10382 |  | 1st Fix - GI wire pulling | 8d | 2025-07-30 | 2025-08-08 | PG-10367 FS+7d | 46.95d |
| PG-10383 |  | 2nd Fix - Wiring works | 14.67d | 2025-09-09 | 2025-09-26 | PG-10706 FF+5d | 277.79d |
| PG-10384 |  | Final Fix - Electrical Fixtures | 5.67d | 2025-10-16 | 2025-10-22 | PG-10383, PG-10707 FF+6d | 261.79d |
|  | 1.3.1.1.3.23 | **Floor 20** |  | 2025-08-22 | 2025-11-13 |  |  |
|  | 1.3.1.1.3.23.1 | **PHE Works** |  | 2025-08-22 | 2025-11-13 |  |  |

| ID | WBS | Task | Duration | Start | Finish | Predecessors | Complete | Total float |
| --- | --- | --- | --- | --- | --- | --- | --- | --- |
| PG-10385 |  | 1st Fix - Piping works | 12d | 2025-08-22 | 2025-09-05 | PG-10376 FS+7d |  | 187.62d |
| PG-10386 |  | 2nd Fix - diverter fixing & Pressure testing | 10d | 2025-09-01 | 2025-09-12 | PG-10385 FF+6d |  | 242.62d |
| PG-10387 |  | Final Fix - CP & Sanitary fixtures | 9.67d | 2025-10-31 | 2025-11-13 | PG-10715, PG-10721 FF+6d |  | 242.62d |
|  | 1.3.1.1.3.23.2 | **Fire Fighting Works** |  | 2025-09-01 | 2025-11-13 |  |  |  |
| PG-10388 |  | 1st Fix - Piping and Shaft hydrant works | 12d | 2025-09-01 | 2025-09-15 | PG-10712 FF+6d |  | 289.29d |
| PG-10389 |  | 2nd Fix - Sprinkler fixing & Pressure testing | 9.67d | 2025-10-09 | 2025-10-21 | PG-10720 FF+6d |  | 252.29d |
| PG-10390 |  | Final Fix - Smoke & heat detectors, FHC , FAS Etc. | 9.67d | 2025-10-31 | 2025-11-13 | PG-10389, PG-10721 FF+6d |  | 242.62d |
|  | 1.3.1.1.3.23.3 | **Electrical Works** |  | 2025-08-22 | 2025-11-13 |  |  |  |
| PG-10391 |  | 1st Fix - GI wire pulling | 8d | 2025-08-22 | 2025-09-01 | PG-10376 FS+7d |  | 289.29d |
| PG-10392 |  | 2nd Fix - Wiring works | 14.67d | 2025-10-01 | 2025-10-20 | PG-10720 FF+5d |  | 257.62d |
| PG-10393 |  | Final Fix - Electrical Fixtures | 5.67d | 2025-11-07 | 2025-11-13 | PG-10392, PG-10721 FF+6d |  | 242.62d |
|  | 1.3.1.1.3.24 | **Floor 21** |  | 2025-09-13 | 2025-12-05 |  |  |  |
|  | 1.3.1.1.3.24.1 | **PHE Works** |  | 2025-09-13 | 2025-12-05 |  |  |  |
| PG-10394 |  | 1st Fix - Piping works | 12d | 2025-09-13 | 2025-09-27 | PG-10385 FS+7d |  | 187.62d |
| PG-10395 |  | 2nd Fix - diverter fixing & Pressure testing | 10d | 2025-09-23 | 2025-10-06 | PG-10394 FF+6d |  | 223.62d |
| PG-10396 |  | Final Fix - CP & Sanitary fixtures | 9.83d | 2025-11-25 | 2025-12-05 | PG-10729, PG-10735 FF+6d |  | 223.62d |
|  | 1.3.1.1.3.24.2 | **Fire Fighting Works** |  | 2025-09-23 | 2025-12-05 |  |  |  |
| PG-10397 |  | 1st Fix - Piping and Shaft hydrant works | 12d | 2025-09-23 | 2025-10-08 | PG-10726 FF+6d |  | 270.29d |
| PG-10398 |  | 2nd Fix - Sprinkler fixing & Pressure testing | 9.67d | 2025-10-31 | 2025-11-13 | PG-10734 FF+6d |  | 233.62d |
| PG-10399 |  | Final Fix - Smoke & heat detectors, FHC , FAS Etc. | 9.83d | 2025-11-25 | 2025-12-05 | PG-10398, PG-10735 FF+6d |  | 223.62d |
|  | 1.3.1.1.3.24.3 | **Electrical Works** |  | 2025-09-13 | 2025-12-05 |  |  |  |
| PG-10400 |  | 1st Fix - GI wire pulling | 8d | 2025-09-13 | 2025-09-23 | PG-10385 FS+7d |  | 270.29d |
| PG-10401 |  | 2nd Fix - Wiring works | 14.83d | 2025-10-24 | 2025-11-12 | PG-10734 FF+5d |  | 238.62d |
| PG-10402 |  | Final Fix - Electrical Fixtures | 5.83d | 2025-11-29 | 2025-12-05 | PG-10401, PG-10735 FF+6d |  | 223.62d |
|  | 1.3.1.1.3.25 | **Floor 22** |  | 2025-10-07 | 2025-12-27 |  |  |  |
|  | 1.3.1.1.3.25.1 | **PHE Works** |  | 2025-10-07 | 2025-12-27 |  |  |  |
| PG-10403 |  | 1st Fix - Piping works | 12d | 2025-10-07 | 2025-10-21 | PG-10394 FS+7d |  | 187.62d |
| PG-10404 |  | 2nd Fix - diverter fixing & Pressure testing | 10d | 2025-10-16 | 2025-10-28 | PG-10403 FF+6d |  | 203.62d |
| PG-10405 |  | Final Fix - CP & Sanitary fixtures | 9.67d | 2025-12-17 | 2025-12-27 | PG-10743, PG-10749 FF+6d |  | 203.62d |
|  | 1.3.1.1.3.25.2 | **Fire Fighting Works** |  | 2025-10-16 | 2025-12-27 |  |  |  |
| PG-10406 |  | 1st Fix - Piping and Shaft hydrant works | 12d | 2025-10-16 | 2025-10-30 | PG-10740 FF+6d |  | 251.29d |
| PG-10407 |  | 2nd Fix - Sprinkler fixing & Pressure testing | 9.67d | 2025-11-24 | 2025-12-05 | PG-10748 FF+6d |  | 213.62d |
| PG-10408 |  | Final Fix - Smoke & heat detectors, FHC , FAS Etc. | 9.67d | 2025-12-17 | 2025-12-27 | PG-10407, PG-10749 FF+6d |  | 203.62d |
|  | 1.3.1.1.3.25.3 | **Electrical Works** |  | 2025-10-07 | 2025-12-27 |  |  |  |
| PG-10409 |  | 1st Fix - GI wire pulling | 8d | 2025-10-07 | 2025-10-16 | PG-10394 FS+7d |  | 251.29d |
| PG-10410 |  | 2nd Fix - Wiring works | 14.67d | 2025-11-17 | 2025-12-04 | PG-10748 FF+5d |  | 218.62d |
| PG-10411 |  | Final Fix - Electrical Fixtures | 5.67d | 2025-12-22 | 2025-12-27 | PG-10410, PG-10749 FF+6d |  | 203.62d |
|  | 1.3.1.1.3.26 | **Floor 23** |  | 2025-10-29 | 2026-01-16 |  |  |  |
|  | 1.3.1.1.3.26.1 | **PHE Works** |  | 2025-10-29 | 2026-01-16 |  |  |  |
| PG-10412 |  | 1st Fix - Piping works | 12d | 2025-10-29 | 2025-11-13 | PG-10403 FS+7d |  | 187.62d |
| PG-10413 |  | 2nd Fix - diverter fixing & Pressure testing | 10d | 2025-11-08 | 2025-11-20 | PG-10412 FF+6d |  | 187.62d |
| PG-10414 |  | Final Fix - CP & Sanitary fixtures | 10d | 2026-01-05 | 2026-01-16 | PG-10757, PG-10763 FF+6d |  | 187.62d |
|  | 1.3.1.1.3.26.2 | **Fire Fighting Works** |  | 2025-11-08 | 2026-01-16 |  |  |  |
| PG-10415 |  | 1st Fix - Piping and Shaft hydrant works | 12d | 2025-11-08 | 2025-11-22 | PG-10754 FF+6d |  | 232.45d |
| PG-10416 |  | 2nd Fix - Sprinkler fixing & Pressure testing | 10d | 2025-12-16 | 2025-12-27 | PG-10762 FF+6d |  | 195.12d |
| PG-10417 |  | Final Fix - Smoke & heat detectors, FHC , FAS Etc. | 10d | 2026-01-05 | 2026-01-16 | PG-10416, PG-10763 FF+6d, PG-10023 |  | 187.62d |
|  | 1.3.1.1.3.26.3 | **Electrical Works** |  | 2025-10-29 | 2026-01-16 |  |  |  |
| PG-10418 |  | 1st Fix - GI wire pulling | 8d | 2025-10-29 | 2025-11-08 | PG-10403 FS+7d |  | 232.45d |
| PG-10419 |  | 2nd Fix - Wiring works | 15d | 2025-12-09 | 2025-12-26 | PG-10762 FF+5d |  | 200.12d |
| PG-10420 |  | Final Fix - Electrical Fixtures | 6d | 2026-01-09 | 2026-01-16 | PG-10419, PG-10763 FF+6d |  | 187.62d |
|  | 1.3.1.1.4 | **Civil Finishes - Units** |  | 2024-10-24 | 2026-01-12 |  |  |  |
|  | 1.3.1.1.4.1 | **LBF** |  | 2024-10-24 | 2025-01-24 |  |  |  |
| PG-10421 |  | Back Filling above Raft | 30d | 2024-10-24 A | 2024-11-28 A | PG-10100 | 100% |  |
| PG-10422 |  | Car wash water collection sump with cap | 15d | 2024-11-18 A | 2024-12-05 A | PG-12708 FF+5d, PG-10421 FF+5d, PG-10198 FF+5d | 100% |  |
| PG-10423 |  | Surface Drain to slope | 10d | 2024-11-29 A | 2024-12-11 A | PG-10422 FF+5d | 100% |  |
| PG-10424 |  | Grade Slab | 10d | 2024-12-05 A | 2024-12-17 A | PG-10423 FF+5d | 100% |  |
| PG-10425 |  | First Coat Painting works | 14.67d | 2024-12-11 A | 2024-12-28 A | PG-10424 FF+10d | 100% |  |
| PG-10426 |  | Final coat painting | 10.5d | 2025-01-07 A | 2025-01-18 A | PG-10201 | 100% |  |
| PG-10427 |  | Car park marking and column corner beading fixing | 8.67d | 2025-01-14 A | 2025-01-24 A | PG-10426 FF+5d | 100% |  |
|  | 1.3.1.1.4.2 | **UBF** |  | 2024-12-11 | 2025-02-18 |  |  |  |
| PG-10428 |  | Surface Drain with Grade Slab to slope | 15d | 2024-12-11 A | 2024-12-28 A | PG-10421 FS+10d | 100% |  |
| PG-10429 |  | First Coat Paint works | 11.67d | 2025-01-09 A | 2025-01-24 A | PG-10428, PG-10202 | 100% |  |
| PG-10430 |  | Final Coat Paint Works | 9.67d | 2025-01-24 A | 2025-02-05 A | PG-10429, PG-10204 FF+5d | 100% |  |
| PG-10431 |  | Car park marking and column corner beading fixing | 10.67d | 2025-02-05 A | 2025-02-18 A | PG-10430 | 100% |  |
|  | 1.3.1.1.4.3 | **Ground Floor** |  | 2024-10-24 | 2025-01-07 |  |  |  |
|  | 1.3.1.1.4.3.1 | **Ceiling Finishing works - Civil** |  | 2024-11-04 | 2025-01-07 |  |  |  |
| PG-10432 |  | Gypsum Plastering | 6d | 2024-11-04 A | 2024-11-11 A | PG-10211 | 100% |  |
| PG-10433 |  | Cornice fixing | 4d | 2024-11-20 A | 2024-11-25 A | PG-10208 FF+6d | 100% |  |
| PG-10435 |  | Toilet False ceiling | 4d | 2024-11-28 A | 2024-12-03 A | PG-10443 FF+5d | 100% |  |
| PG-10434 |  | Painting Works - Putty, Primer and 1st | 6d | 2024-12-09 A | 2024-12-16 A | PG-10433, PG-10438 | 100% |  |

| ID | WBS | Task | Duration | Start | Finish | Predecessors | Complete |
| --- | --- | --- | --- | --- | --- | --- | --- |
| PG-10436 |  | Final Coat Painting | 18.5d | 2024-12-16 A | 2025-01-07 A | PG-10434, PG-10445 | 100% |
|  | 1.3.1.1.4.3.2 | **Wall Finishing works - Civil** |  | 2024-10-24 | 2025-01-07 |  |  |
| PG-10437 |  | Balcony Railing Fixing works | 4d | 2024-10-24 A | 2024-10-29 A | PG-10100 | 100% |
| PG-10439 |  | Dadoing - Wet area | 5d | 2024-11-15 A | 2024-11-21 A | PG-10206 | 100% |
| PG-10438 |  | UPVC Windows & Sliding doors | 5d | 2024-12-03 A | 2024-12-09 A | PG-10437, PG-10444 FF+5d | 100% |
| PG-10440 |  | Painting Works - Putty, Primer and 1st | 6d | 2024-12-09 A | 2024-12-16 A | PG-10438 | 100% |
| PG-10441 |  | Final Coat Painting | 18.5d | 2024-12-16 A | 2025-01-07 A | PG-10445 | 100% |
|  | 1.3.1.1.4.3.3 | **Floor Finishing Works - Civil** |  | 2024-10-24 | 2024-12-16 |  |  |
| PG-10442 |  | Waterproofing for sunken areas | 3d | 2024-10-24 A | 2024-10-28 A | PG-10100 | 100% |
| PG-10443 |  | Floor Tiling - Wet area | 5d | 2024-11-21 A | 2024-11-27 A | PG-10442, PG-10439 | 100% |
| PG-10444 |  | Floor Tiling - Dry area | 5d | 2024-11-27 A | 2024-12-03 A | PG-10443 FF+5d | 100% |
| PG-10445 |  | Wooden doors | 5d | 2024-12-10 A | 2024-12-16 A | PG-10440 FF | 100% |
|  | 1.3.1.1.4.4 | **Floor 1** |  | 2024-11-09 | 2025-01-24 |  |  |
|  | 1.3.1.1.4.4.1 | **Ceiling Finishing works - Civil** |  | 2024-11-19 | 2025-01-23 |  |  |
| PG-10446 |  | Gypsum Plastering | 6d | 2024-11-19 A | 2024-11-26 A | PG-10220 | 100% |
| PG-10447 |  | Cornice fixing | 4d | 2024-12-05 A | 2024-12-10 A | PG-10217 FF+6d | 100% |
| PG-10449 |  | Toilet False ceiling | 4d | 2024-12-14 A | 2024-12-19 A | PG-10457 FF+5d | 100% |
| PG-10448 |  | Painting Works - Putty, Primer and 1st | 6d | 2024-12-25 A | 2025-01-01 A | PG-10447, PG-10452 | 100% |
| PG-10450 |  | Final Coat Painting | 18.5d | 2025-01-01 A | 2025-01-23 A | PG-10448, PG-10459 | 100% |
|  | 1.3.1.1.4.4.2 | **Wall Finishing works - Civil** |  | 2024-11-09 | 2025-01-24 |  |  |
| PG-10451 |  | Balcony Railing Fixing works | 4d | 2024-11-09 A | 2024-11-14 A | PG-10105 | 100% |
| PG-10453 |  | Dadoing - Wet area | 5d | 2024-11-30 A | 2024-12-07 A | PG-10215 | 100% |
| PG-10452 |  | UPVC Windows & Sliding doors | 5d | 2024-12-19 A | 2024-12-25 A | PG-10451, PG-10458 FF+5d | 100% |
| PG-10454 |  | Painting Works - Putty, Primer and 1st | 6d | 2024-12-25 A | 2025-01-01 A | PG-10452 | 100% |
| PG-10455 |  | Final Coat Painting | 18.5d | 2025-01-01 A | 2025-01-24 A | PG-10459 | 100% |
|  | 1.3.1.1.4.4.3 | **Floor Finishing Works - Civil** |  | 2024-11-09 | 2025-01-01 |  |  |
| PG-10456 |  | Waterproofing for sunken areas | 3d | 2024-11-09 A | 2024-11-13 A | PG-10105 | 100% |
| PG-10457 |  | Floor Tiling - Wet area | 5d | 2024-12-07 A | 2024-12-13 A | PG-10456, PG-10453 | 100% |
| PG-10458 |  | Floor Tiling - Dry area | 5d | 2024-12-13 A | 2024-12-19 A | PG-10457 FF+5d | 100% |
| PG-10459 |  | Wooden doors | 5d | 2024-12-26 A | 2025-01-01 A | PG-10454 FF | 100% |
|  | 1.3.1.1.4.5 | **Floor 2** |  | 2024-11-25 | 2025-02-07 |  |  |
|  | 1.3.1.1.4.5.1 | **Ceiling Finishing works - Civil** |  | 2024-12-04 | 2025-02-05 |  |  |
| PG-10460 |  | Gypsum Plastering | 6d | 2024-12-04 A | 2024-12-11 A | PG-10229 | 100% |
| PG-10461 |  | Cornice fixing | 4d | 2024-12-21 A | 2024-12-26 A | PG-10226 FF+6d | 100% |
| PG-10463 |  | Toilet False ceiling | 4d | 2024-12-28 A | 2025-01-02 A | PG-10471 FF+5d | 100% |
| PG-10462 |  | Painting Works - Putty, Primer and 1st | 6d | 2025-01-08 A | 2025-01-15 A | PG-10461, PG-10466 | 100% |
| PG-10464 |  | Final Coat Painting | 18.5d | 2025-01-15 A | 2025-02-05 A | PG-10462, PG-10473 | 100% |
|  | 1.3.1.1.4.5.2 | **Wall Finishing works - Civil** |  | 2024-11-25 | 2025-02-07 |  |  |
| PG-10465 |  | Balcony Railing Fixing works | 4d | 2024-11-25 A | 2024-11-29 A | PG-10110 | 100% |
| PG-10467 |  | Dadoing - Wet area | 5d | 2024-12-16 A | 2024-12-21 A | PG-10224 | 100% |
| PG-10466 |  | UPVC Windows & Sliding doors | 5d | 2025-01-02 A | 2025-01-08 A | PG-10465, PG-10472 FF+5d | 100% |
| PG-10468 |  | Painting Works - Putty, Primer and 1st | 6d | 2025-01-08 A | 2025-01-15 A | PG-10466 | 100% |
| PG-10469 |  | Final Coat Painting | 18.5d | 2025-01-15 A | 2025-02-07 A | PG-10473 | 100% |
|  | 1.3.1.1.4.5.3 | **Floor Finishing Works - Civil** |  | 2024-11-25 | 2025-01-15 |  |  |
| PG-10470 |  | Waterproofing for sunken areas | 3d | 2024-11-25 A | 2024-11-28 A | PG-10110 | 100% |
| PG-10471 |  | Floor Tiling - Wet area | 5d | 2024-12-21 A | 2024-12-27 A | PG-10470, PG-10467 | 100% |
| PG-10472 |  | Floor Tiling - Dry area | 5d | 2024-12-27 A | 2025-01-02 A | PG-10471 FF+5d | 100% |
| PG-10473 |  | Wooden doors | 5d | 2025-01-09 A | 2025-01-15 A | PG-10468 FF | 100% |
|  | 1.3.1.1.4.6 | **Floor 3** |  | 2024-12-10 | 2025-02-25 |  |  |
|  | 1.3.1.1.4.6.1 | **Ceiling Finishing works - Civil** |  | 2024-12-19 | 2025-02-24 |  |  |
| PG-10474 |  | Gypsum Plastering | 6d | 2024-12-19 A | 2024-12-26 A | PG-10238 | 100% |
| PG-10475 |  | Cornice fixing | 4d | 2025-01-04 A | 2025-01-09 A | PG-10235 FF+6d | 100% |
| PG-10477 |  | Toilet False ceiling | 4d | 2025-01-14 A | 2025-01-18 A | PG-10485 FF+5d | 100% |
| PG-10476 |  | Painting Works - Putty, Primer and 1st | 6d | 2025-01-24 A | 2025-01-30 A | PG-10475, PG-10480 | 100% |
| PG-10478 |  | Final Coat Painting | 19.5d | 2025-01-31 A | 2025-02-24 A | PG-10476, PG-10487 | 100% |
|  | 1.3.1.1.4.6.2 | **Wall Finishing works - Civil** |  | 2024-12-10 | 2025-02-25 |  |  |
| PG-10479 |  | Balcony Railing Fixing works | 4d | 2024-12-10 A | 2024-12-14 A | PG-10115 | 100% |
| PG-10481 |  | Dadoing - Wet area | 5d | 2025-01-01 A | 2025-01-07 A | PG-10233 | 100% |
| PG-10480 |  | UPVC Windows & Sliding doors | 5d | 2025-01-18 A | 2025-01-24 A | PG-10479, PG-10486 FF+5d | 100% |
| PG-10482 |  | Painting Works - Putty, Primer and 1st | 6d | 2025-01-24 A | 2025-01-31 A | PG-10480 | 100% |
| PG-10483 |  | Final Coat Painting | 19.5d | 2025-01-31 A | 2025-02-25 A | PG-10487 | 100% |
|  | 1.3.1.1.4.6.3 | **Floor Finishing Works - Civil** |  | 2024-12-10 | 2025-01-31 |  |  |
| PG-10484 |  | Waterproofing for sunken areas | 3d | 2024-12-10 A | 2024-12-13 A | PG-10115 | 100% |
| PG-10485 |  | Floor Tiling - Wet area | 5d | 2025-01-07 A | 2025-01-13 A | PG-10481 | 100% |
| PG-10486 |  | Floor Tiling - Dry area | 5d | 2025-01-13 A | 2025-01-18 A | PG-10485 FF+5d | 100% |
| PG-10487 |  | Wooden doors | 5d | 2025-01-25 A | 2025-01-31 A | PG-10484, PG-10482 FF | 100% |
|  | 1.3.1.1.4.7 | **Floor 4** |  | 2024-12-25 | 2025-03-10 |  |  |
|  | 1.3.1.1.4.7.1 | **Ceiling Finishing works - Civil** |  | 2025-01-03 | 2025-03-10 |  |  |
| PG-10488 |  | Gypsum Plastering | 6d | 2025-01-03 A | 2025-01-11 A | PG-10247 | 100% |
| PG-10489 |  | Cornice fixing | 4d | 2025-01-20 A | 2025-01-24 A | PG-10244 FF+6d | 100% |

| ID | WBS | Task | Duration | Start | Finish | Predecessors | Complete |
| --- | --- | --- | --- | --- | --- | --- | --- |
| PG-10491 |  | Toilet False ceiling | 4d | 2025-01-29 A | 2025-02-03 A | PG-10499 FF+5d | 100% |
| PG-10490 |  | Painting Works - Putty, Primer and 1st | 6d | 2025-02-07 A | 2025-02-15 A | PG-10489, PG-10494 | 100% |
| PG-10492 |  | Final Coat Painting | 18.5d | 2025-02-15 A | 2025-03-10 A | PG-10490, PG-10501 | 100% |
|  | 1.3.1.1.4.7.2 | **Wall Finishing works - Civil** |  | 2024-12-25 | 2025-03-10 |  |  |
| PG-10493 |  | Balcony Railing Fixing works | 4d | 2024-12-25 A | 2024-12-30 A | PG-10120 | 100% |
| PG-10495 |  | Dadoing - Wet area | 5d | 2025-01-15 A | 2025-01-22 A | PG-10242 | 100% |
| PG-10494 |  | UPVC Windows & Sliding doors | 5d | 2025-02-03 A | 2025-02-07 A | PG-10493, PG-10500 FF+5d | 100% |
| PG-10496 |  | Painting Works - Putty, Primer and 1st | 6d | 2025-02-07 A | 2025-02-14 A | PG-10494 | 100% |
| PG-10497 |  | Final Coat Painting | 18.5d | 2025-02-14 A | 2025-03-10 A | PG-10501 | 100% |
|  | 1.3.1.1.4.7.3 | **Floor Finishing Works - Civil** |  | 2024-12-25 | 2025-02-14 |  |  |
| PG-10498 |  | Waterproofing for sunken areas | 3d | 2024-12-25 A | 2024-12-28 A | PG-10120 | 100% |
| PG-10499 |  | Floor Tiling - Wet area | 5d | 2025-01-22 A | 2025-01-28 A | PG-10498, PG-10495 | 100% |
| PG-10500 |  | Floor Tiling - Dry area | 5d | 2025-01-28 A | 2025-02-03 A | PG-10499 FF+5d | 100% |
| PG-10501 |  | Wooden doors | 5d | 2025-02-08 A | 2025-02-14 A | PG-10496 FF | 100% |
|  | 1.3.1.1.4.8 | **Floor 5** |  | 2025-01-09 | 2025-03-26 |  |  |
|  | 1.3.1.1.4.8.1 | **Ceiling Finishing works - Civil** |  | 2025-01-18 | 2025-03-26 |  |  |
| PG-10502 |  | Gypsum Plastering | 6d | 2025-01-18 A | 2025-01-25 A | PG-10256 | 100% |
| PG-10503 |  | Cornice fixing | 4d | 2025-02-04 A | 2025-02-08 A | PG-10253 FF+6d | 100% |
| PG-10505 |  | Toilet False ceiling | 4d | 2025-02-12 A | 2025-02-17 A | PG-10513 FF+5d | 100% |
| PG-10504 |  | Painting Works - Putty, Primer and 1st | 6d | 2025-02-22 A | 2025-03-01 A | PG-10503, PG-10508 | 100% |
| PG-10506 |  | Final Coat Painting | 18.67d | 2025-03-03 A | 2025-03-26 A | PG-10504, PG-10515 | 100% |
|  | 1.3.1.1.4.8.2 | **Wall Finishing works - Civil** |  | 2025-01-09 | 2025-03-25 |  |  |
| PG-10507 |  | Balcony Railing Fixing works | 4d | 2025-01-09 A | 2025-01-14 A | PG-10125 | 100% |
| PG-10509 |  | Dadoing - Wet area | 5d | 2025-01-30 A | 2025-02-05 A | PG-10251 | 100% |
| PG-10508 |  | UPVC Windows & Sliding doors | 5d | 2025-02-17 A | 2025-02-22 A | PG-10507, PG-10514 FF+5d | 100% |
| PG-10510 |  | Painting Works - Putty, Primer and 1st | 6d | 2025-02-22 A | 2025-03-03 A | PG-10508 | 100% |
| PG-10511 |  | Final Coat Painting | 18.67d | 2025-03-03 A | 2025-03-25 A | PG-10515 | 100% |
|  | 1.3.1.1.4.8.3 | **Floor Finishing Works - Civil** |  | 2025-01-09 | 2025-03-03 |  |  |
| PG-10512 |  | Waterproofing for sunken areas | 3d | 2025-01-09 A | 2025-01-13 A | PG-10125 | 100% |
| PG-10513 |  | Floor Tiling - Wet area | 5d | 2025-02-05 A | 2025-02-11 A | PG-10512, PG-10509 | 100% |
| PG-10514 |  | Floor Tiling - Dry area | 5d | 2025-02-11 A | 2025-02-17 A | PG-10513 FF+5d | 100% |
| PG-10515 |  | Wooden doors | 5d | 2025-02-25 A | 2025-03-03 A | PG-10510 FF | 100% |
|  | 1.3.1.1.4.9 | **Floor 6** |  | 2025-01-24 | 2025-04-10 |  |  |
|  | 1.3.1.1.4.9.1 | **Ceiling Finishing works - Civil** |  | 2025-02-03 | 2025-04-09 |  |  |
| PG-10516 |  | Gypsum Plastering | 6d | 2025-02-03 A | 2025-02-10 A | PG-10265 | 100% |
| PG-10517 |  | Cornice fixing | 4d | 2025-02-19 A | 2025-02-24 A | PG-10262 FF+6d | 100% |
| PG-10519 |  | Toilet False ceiling | 4d | 2025-02-28 A | 2025-03-05 A | PG-10527 FF+5d | 100% |
| PG-10518 |  | Painting Works - Putty, Primer and 1st | 6d | 2025-03-10 A | 2025-03-18 A | PG-10517, PG-10522 | 100% |
| PG-10520 |  | Final Coat Painting | 18.67d | 2025-03-18 A | 2025-04-09 A | PG-10518, PG-10529 | 100% |
|  | 1.3.1.1.4.9.2 | **Wall Finishing works - Civil** |  | 2025-01-24 | 2025-04-10 |  |  |
| PG-10521 |  | Balcony Railing Fixing works | 4d | 2025-01-24 A | 2025-01-29 A | PG-10130 | 100% |
| PG-10523 |  | Dadoing - Wet area | 5d | 2025-02-15 A | 2025-02-21 A | PG-10260 | 100% |
| PG-10522 |  | UPVC Windows & Sliding doors | 5d | 2025-03-04 A | 2025-03-10 A | PG-10521, PG-10528 FF+5d | 100% |
| PG-10524 |  | Painting Works - Putty, Primer and 1st | 6d | 2025-03-10 A | 2025-03-17 A | PG-10522 | 100% |
| PG-10525 |  | Final Coat Painting | 18.67d | 2025-03-17 A | 2025-04-10 A | PG-10529 | 100% |
|  | 1.3.1.1.4.9.3 | **Floor Finishing Works - Civil** |  | 2025-01-24 | 2025-03-17 |  |  |
| PG-10526 |  | Waterproofing for sunken areas | 3d | 2025-01-24 A | 2025-01-28 A | PG-10130 | 100% |
| PG-10527 |  | Floor Tiling - Wet area | 5d | 2025-02-21 A | 2025-02-27 A | PG-10526, PG-10523 | 100% |
| PG-10528 |  | Floor Tiling - Dry area | 5d | 2025-02-27 A | 2025-03-04 A | PG-10527 FF+5d | 100% |
| PG-10529 |  | Wooden doors | 5d | 2025-03-11 A | 2025-03-17 A | PG-10524 FF | 100% |
|  | 1.3.1.1.4.10 | **Floor 7** |  | 2025-02-08 | 2025-04-25 |  |  |
|  | 1.3.1.1.4.10.1 | **Ceiling Finishing works - Civil** |  | 2025-02-19 | 2025-04-25 |  |  |
| PG-10530 |  | Gypsum Plastering | 6d | 2025-02-19 A | 2025-02-25 A | PG-10274 | 100% |
| PG-10531 |  | Cornice fixing | 4d | 2025-03-07 A | 2025-03-12 A | PG-10271 FF+6d | 100% |
| PG-10533 |  | Toilet False ceiling | 4d | 2025-03-17 A | 2025-03-21 A | PG-10541 FF+5d | 100% |
| PG-10532 |  | Painting Works - Putty, Primer and 1st | 6d | 2025-03-27 A | 2025-04-03 A | PG-10531, PG-10536 | 100% |
| PG-10534 |  | Final Coat Painting | 19.5d | 2025-04-03 A | 2025-04-25 A | PG-10532, PG-10543 | 100% |
|  | 1.3.1.1.4.10.2 | **Wall Finishing works - Civil** |  | 2025-02-08 | 2025-04-25 |  |  |
| PG-10535 |  | Balcony Railing Fixing works | 4d | 2025-02-08 A | 2025-02-13 A | PG-10135 | 100% |
| PG-10537 |  | Dadoing - Wet area | 5d | 2025-03-04 A | 2025-03-10 A | PG-10269 | 100% |
| PG-10536 |  | UPVC Windows & Sliding doors | 5d | 2025-03-21 A | 2025-03-27 A | PG-10535, PG-10542 FF+5d | 100% |
| PG-10538 |  | Painting Works - Putty, Primer and 1st | 6d | 2025-03-27 A | 2025-04-03 A | PG-10536 | 100% |
| PG-10539 |  | Final Coat Painting | 19.5d | 2025-04-03 A | 2025-04-25 A | PG-10543 | 100% |
|  | 1.3.1.1.4.10.3 | **Floor Finishing Works - Civil** |  | 2025-02-08 | 2025-04-03 |  |  |
| PG-10540 |  | Waterproofing for sunken areas | 3d | 2025-02-08 A | 2025-02-12 A | PG-10135 | 100% |
| PG-10541 |  | Floor Tiling - Wet area | 5d | 2025-03-10 A | 2025-03-15 A | PG-10537 | 100% |
| PG-10542 |  | Floor Tiling - Dry area | 5d | 2025-03-15 A | 2025-03-21 A | PG-10541 FF+5d | 100% |
| PG-10543 |  | Wooden doors | 5d | 2025-03-28 A | 2025-04-03 A | PG-10540, PG-10538 FF | 100% |
|  | 1.3.1.1.4.11 | **Floor 8** |  | 2025-02-25 | 2025-05-09 |  |  |
|  | 1.3.1.1.4.11.1 | **Ceiling Finishing works - Civil** |  | 2025-03-06 | 2025-05-09 |  |  |

| ID | WBS | Task | Duration | Start | Finish | Predecessors | Complete | Total float |
| --- | --- | --- | --- | --- | --- | --- | --- | --- |
| PG-10544 |  | Gypsum Plastering | 6d | 2025-03-06 A | 2025-03-13 A | PG-10283 | 100% |  |
| PG-10545 |  | Cornice fixing | 4d | 2025-03-24 A | 2025-03-28 A | PG-10280 FF+6d | 100% |  |
| PG-10547 |  | Toilet False ceiling | 4d | 2025-03-31 A | 2025-04-04 A | PG-10555 FF+5d | 100% |  |
| PG-10546 |  | Painting Works - Putty, Primer and 1st | 6d | 2025-04-10 A | 2025-04-16 A | PG-10545, PG-10550 | 100% |  |
| PG-10548 |  | Final Coat Painting | 18.5d | 2025-04-17 A | 2025-05-09 A | PG-10546, PG-10557 | 100% |  |
|  | 1.3.1.1.4.11.2 | **Wall Finishing works - Civil** |  | 2025-02-25 | 2025-05-09 |  |  |  |
| PG-10549 |  | Balcony Railing Fixing works | 4d | 2025-02-25 A | 2025-03-01 A | PG-10140 | 100% |  |
| PG-10551 |  | Dadoing - Wet area | 5d | 2025-03-17 A | 2025-03-22 A | PG-10278 | 100% |  |
| PG-10550 |  | UPVC Windows & Sliding doors | 5d | 2025-04-04 A | 2025-04-10 A | PG-10549, PG-10556 FF+5d | 100% |  |
| PG-10552 |  | Painting Works - Putty, Primer and 1st | 6d | 2025-04-10 A | 2025-04-17 A | PG-10550 | 100% |  |
| PG-10553 |  | Final Coat Painting | 18.5d | 2025-04-17 A | 2025-05-09 | PG-10557 | 98% | 394.06d |
|  | 1.3.1.1.4.11.3 | **Floor Finishing Works - Civil** |  | 2025-02-25 | 2025-04-17 |  |  |  |
| PG-10554 |  | Waterproofing for sunken areas | 3d | 2025-02-25 A | 2025-02-27 A | PG-10140 | 100% |  |
| PG-10555 |  | Floor Tiling - Wet area | 5d | 2025-03-22 A | 2025-03-29 A | PG-10554, PG-10551 | 100% |  |
| PG-10556 |  | Floor Tiling - Dry area | 5d | 2025-03-29 A | 2025-04-04 A | PG-10555 FF+5d | 100% |  |
| PG-10557 |  | Wooden doors | 5d | 2025-04-11 A | 2025-04-17 A | PG-10552 FF | 100% |  |
|  | 1.3.1.1.4.12 | **Floor 9** |  | 2025-03-12 | 2025-05-24 |  |  |  |
|  | 1.3.1.1.4.12.1 | **Ceiling Finishing works - Civil** |  | 2025-03-20 | 2025-05-23 |  |  |  |
| PG-10558 |  | Gypsum Plastering | 6d | 2025-03-20 A | 2025-03-28 A | PG-10292 | 100% |  |
| PG-10559 |  | Cornice fixing | 4d | 2025-04-07 A | 2025-04-12 A | PG-10289 FF+6d | 100% |  |
| PG-10561 |  | Toilet False ceiling | 4d | 2025-04-15 A | 2025-04-19 A | PG-10569 FF+5d | 100% |  |
| PG-10560 |  | Painting Works - Putty, Primer and 1st | 6d | 2025-04-25 A | 2025-05-01 A | PG-10559, PG-10564 | 100% |  |
| PG-10562 |  | Final Coat Painting | 18.33d | 2025-05-02 A | 2025-05-23 | PG-10560, PG-10571 | 32% | 417.56d |
|  | 1.3.1.1.4.12.2 | **Wall Finishing works - Civil** |  | 2025-03-12 | 2025-05-24 |  |  |  |
| PG-10563 |  | Balcony Railing Fixing works | 4d | 2025-03-12 A | 2025-03-17 A | PG-10145 | 100% |  |
| PG-10565 |  | Dadoing - Wet area | 5d | 2025-04-02 A | 2025-04-08 A | PG-10287 | 100% |  |
| PG-10564 |  | UPVC Windows & Sliding doors | 5d | 2025-04-19 A | 2025-04-25 A | PG-10563, PG-10570 FF+5d | 100% |  |
| PG-10566 |  | Painting Works - Putty, Primer and 1st | 6d | 2025-04-25 A | 2025-05-02 A | PG-10564 | 100% |  |
| PG-10567 |  | Final Coat Painting | 18.33d | 2025-05-02 A | 2025-05-24 | PG-10571 | 27% | 382.03d |
|  | 1.3.1.1.4.12.3 | **Floor Finishing Works - Civil** |  | 2025-03-12 | 2025-05-02 |  |  |  |
| PG-10568 |  | Waterproofing for sunken areas | 3d | 2025-03-12 A | 2025-03-15 A | PG-10145 | 100% |  |
| PG-10569 |  | Floor Tiling - Wet area | 5d | 2025-04-08 A | 2025-04-14 A | PG-10568, PG-10565 | 100% |  |
| PG-10570 |  | Floor Tiling - Dry area | 5d | 2025-04-14 A | 2025-04-19 A | PG-10569 FF+5d | 100% |  |
| PG-10571 |  | Wooden doors | 5d | 2025-04-26 A | 2025-05-02 A | PG-10566 FF | 100% |  |
|  | 1.3.1.1.4.13 | **Floor 10** |  | 2025-03-27 | 2025-06-07 |  |  |  |
|  | 1.3.1.1.4.13.1 | **Ceiling Finishing works - Civil** |  | 2025-04-04 | 2025-06-07 |  |  |  |
| PG-10572 |  | Gypsum Plastering | 6d | 2025-04-04 A | 2025-04-12 A | PG-10301 | 100% |  |
| PG-10573 |  | Cornice fixing | 4d | 2025-04-22 A | 2025-04-26 A | PG-10298 FF+6d | 100% |  |
| PG-10575 |  | Toilet False ceiling | 4d | 2025-04-30 A | 2025-05-05 A | PG-10583 FF+5d | 100% |  |
| PG-10574 |  | Painting Works - Putty, Primer and 1st | 6d | 2025-05-10 | 2025-05-17 | PG-10573, PG-10578 |  | 405.92d |
| PG-10576 |  | Final Coat Painting | 17.33d | 2025-05-17 | 2025-06-07 | PG-10574, PG-10585 |  | 405.92d |
|  | 1.3.1.1.4.13.2 | **Wall Finishing works - Civil** |  | 2025-03-27 | 2025-06-07 |  |  |  |
| PG-10577 |  | Balcony Railing Fixing works | 4d | 2025-03-27 A | 2025-04-01 A | PG-10150 | 100% |  |
| PG-10579 |  | Dadoing - Wet area | 5d | 2025-04-17 A | 2025-04-23 A | PG-10296 | 100% |  |
| PG-10578 |  | UPVC Windows & Sliding doors | 5d | 2025-05-05 A | 2025-05-10 | PG-10577, PG-10584 FF+5d | 78% | 369.25d |
| PG-10580 |  | Painting Works - Putty, Primer and 1st | 6d | 2025-05-10 | 2025-05-17 | PG-10578 |  | 369.25d |
| PG-10581 |  | Final Coat Painting | 17.33d | 2025-05-17 | 2025-06-07 | PG-10585 |  | 369.25d |
|  | 1.3.1.1.4.13.3 | **Floor Finishing Works - Civil** |  | 2025-03-27 | 2025-05-17 |  |  |  |
| PG-10582 |  | Waterproofing for sunken areas | 3d | 2025-03-27 A | 2025-03-31 A | PG-10150 | 100% |  |
| PG-10583 |  | Floor Tiling - Wet area | 5d | 2025-04-23 A | 2025-04-29 A | PG-10582, PG-10579 | 100% |  |
| PG-10584 |  | Floor Tiling - Dry area | 5d | 2025-04-29 A | 2025-05-05 A | PG-10583 FF+5d | 100% |  |
| PG-10585 |  | Wooden doors | 5d | 2025-05-12 | 2025-05-17 | PG-10580 FF |  | 369.25d |
|  | 1.3.1.1.4.14 | **Floor 11** |  | 2025-04-09 | 2025-06-20 |  |  |  |
|  | 1.3.1.1.4.14.1 | **Ceiling Finishing works - Civil** |  | 2025-04-18 | 2025-06-20 |  |  |  |
| PG-10586 |  | Gypsum Plastering | 6d | 2025-04-18 A | 2025-04-25 A | PG-10310 | 100% |  |
| PG-10587 |  | Cornice fixing | 4d | 2025-05-05 A | 2025-05-09 A | PG-10307 FF+6d | 100% |  |
| PG-10589 |  | Toilet False ceiling | 4d | 2025-05-14 | 2025-05-19 | PG-10597 FF+5d |  | 382.65d |
| PG-10588 |  | Painting Works - Putty, Primer and 1st | 6d | 2025-05-24 | 2025-05-31 | PG-10587, PG-10592 |  | 394.31d |
| PG-10590 |  | Final Coat Painting | 17.5d | 2025-05-31 | 2025-06-20 | PG-10588, PG-10599 |  | 394.31d |
|  | 1.3.1.1.4.14.2 | **Wall Finishing works - Civil** |  | 2025-04-09 | 2025-06-20 |  |  |  |
| PG-10591 |  | Balcony Railing Fixing works | 4d | 2025-04-09 A | 2025-04-15 A | PG-10155 | 100% |  |
| PG-10593 |  | Dadoing - Wet area | 5d | 2025-05-02 A | 2025-05-08 A | PG-10305 | 100% |  |
| PG-10592 |  | UPVC Windows & Sliding doors | 5d | 2025-05-19 | 2025-05-24 | PG-10591, PG-10598 FF+5d |  | 357.65d |
| PG-10594 |  | Painting Works - Putty, Primer and 1st | 6d | 2025-05-24 | 2025-05-31 | PG-10592 |  | 357.65d |
| PG-10595 |  | Final Coat Painting | 17.5d | 2025-05-31 | 2025-06-20 | PG-10599 |  | 357.65d |
|  | 1.3.1.1.4.14.3 | **Floor Finishing Works - Civil** |  | 2025-04-09 | 2025-05-31 |  |  |  |
| PG-10596 |  | Waterproofing for sunken areas | 3d | 2025-04-09 A | 2025-04-12 A | PG-10155 | 100% |  |
| PG-10597 |  | Floor Tiling - Wet area | 5d | 2025-05-08 A | 2025-05-13 | PG-10596, PG-10593 | 35% | 357.65d |
| PG-10598 |  | Floor Tiling - Dry area | 5d | 2025-05-13 | 2025-05-19 | PG-10597 FF+5d |  | 357.65d |
| PG-10599 |  | Wooden doors | 5d | 2025-05-26 | 2025-05-31 | PG-10594 FF |  | 357.65d |

| ID | WBS | Task | Duration | Start | Finish | Predecessors | Complete | Total float |
| --- | --- | --- | --- | --- | --- | --- | --- | --- |
|  | 1.3.1.1.4.15 | **Floor 12** |  | 2025-04-22 | 2025-07-03 |  |  |  |
|  | 1.3.1.1.4.15.1 | **Ceiling Finishing works - Civil** |  | 2025-05-01 | 2025-07-03 |  |  |  |
| PG-10600 |  | Gypsum Plastering | 6d | 2025-05-01 A | 2025-05-08 A | PG-10319 | 100% |  |
| PG-10601 |  | Cornice fixing | 4d | 2025-05-17 | 2025-05-22 | PG-10316 FF+6d |  | 396.08d |
| PG-10603 |  | Toilet False ceiling | 4d | 2025-05-26 | 2025-05-30 | PG-10611 FF+5d |  | 373.15d |
| PG-10602 |  | Painting Works - Putty, Primer and 1st | 6d | 2025-06-05 | 2025-06-12 | PG-10601, PG-10606 |  | 383.32d |
| PG-10604 |  | Final Coat Painting | 17.67d | 2025-06-12 | 2025-07-03 | PG-10602, PG-10613 |  | 383.32d |
|  | 1.3.1.1.4.15.2 | **Wall Finishing works - Civil** |  | 2025-04-22 | 2025-07-03 |  |  |  |
| PG-10605 |  | Balcony Railing Fixing works | 4d | 2025-04-22 A | 2025-04-26 A | PG-10160 | 100% |  |
| PG-10607 |  | Dadoing - Wet area | 5d | 2025-05-13 | 2025-05-19 | PG-10314 |  | 348.49d |
| PG-10606 |  | UPVC Windows & Sliding doors | 5d | 2025-05-30 | 2025-06-05 | PG-10605, PG-10612 FF+5d |  | 348.49d |
| PG-10608 |  | Painting Works - Putty, Primer and 1st | 6d | 2025-06-05 | 2025-06-12 | PG-10606 |  | 348.49d |
| PG-10609 |  | Final Coat Painting | 17.67d | 2025-06-12 | 2025-07-03 | PG-10613 |  | 348.49d |
|  | 1.3.1.1.4.15.3 | **Floor Finishing Works - Civil** |  | 2025-04-22 | 2025-06-12 |  |  |  |
| PG-10610 |  | Waterproofing for sunken areas | 3d | 2025-04-22 A | 2025-04-26 A | PG-10160 | 100% |  |
| PG-10611 |  | Floor Tiling - Wet area | 5d | 2025-05-19 | 2025-05-24 | PG-10610, PG-10607 |  | 348.49d |
| PG-10612 |  | Floor Tiling - Dry area | 5d | 2025-05-24 | 2025-05-30 | PG-10611 FF+5d |  | 348.49d |
| PG-10613 |  | Wooden doors | 5d | 2025-06-06 | 2025-06-12 | PG-10608 FF |  | 348.49d |
|  | 1.3.1.1.4.16 | **Floor 13** |  | 2025-05-05 | 2025-07-18 |  |  |  |
|  | 1.3.1.1.4.16.1 | **Ceiling Finishing works - Civil** |  | 2025-05-13 | 2025-07-18 |  |  |  |
| PG-10614 |  | Gypsum Plastering | 6d | 2025-05-13 | 2025-05-20 | PG-10328 |  | 381.65d |
| PG-10615 |  | Cornice fixing | 4d | 2025-05-29 | 2025-06-03 | PG-10325 FF+6d |  | 381.65d |
| PG-10617 |  | Toilet False ceiling | 4d | 2025-06-06 | 2025-06-11 | PG-10625 FF+5d |  | 363.98d |
| PG-10616 |  | Painting Works - Putty, Primer and 1st | 6d | 2025-06-17 | 2025-06-24 | PG-10615, PG-10620 |  | 370.14d |
| PG-10618 |  | Final Coat Painting | 21.5d | 2025-06-24 | 2025-07-18 | PG-10616, PG-10627 |  | 370.14d |
|  | 1.3.1.1.4.16.2 | **Wall Finishing works - Civil** |  | 2025-05-05 | 2025-07-16 |  |  |  |
| PG-10619 |  | Balcony Railing Fixing works | 4d | 2025-05-05 A | 2025-05-09 A | PG-10165 | 100% |  |
| PG-10621 |  | Dadoing - Wet area | 5d | 2025-05-24 | 2025-05-30 | PG-10323 |  | 337.48d |
| PG-10620 |  | UPVC Windows & Sliding doors | 5d | 2025-06-11 | 2025-06-17 | PG-10619, PG-10626 FF+5d |  | 337.48d |
| PG-10622 |  | Painting Works - Putty, Primer and 1st | 6d | 2025-06-17 | 2025-06-24 | PG-10620 |  | 337.48d |
| PG-10623 |  | Final Coat Painting | 19.5d | 2025-06-24 | 2025-07-16 | PG-10627 |  | 337.48d |
|  | 1.3.1.1.4.16.3 | **Floor Finishing Works - Civil** |  | 2025-05-05 | 2025-06-24 |  |  |  |
| PG-10624 |  | Waterproofing for sunken areas | 3d | 2025-05-05 A | 2025-05-08 A | PG-10165 | 100% |  |
| PG-10625 |  | Floor Tiling - Wet area | 5d | 2025-05-30 | 2025-06-05 | PG-10624, PG-10621 |  | 337.48d |
| PG-10626 |  | Floor Tiling - Dry area | 5d | 2025-06-05 | 2025-06-11 | PG-10625 FF+5d |  | 337.48d |
| PG-10627 |  | Wooden doors | 5d | 2025-06-18 | 2025-06-24 | PG-10622 FF |  | 337.48d |
|  | 1.3.1.1.4.17 | **Floor 14** |  | 2025-05-17 | 2025-07-30 |  |  |  |
|  | 1.3.1.1.4.17.1 | **Ceiling Finishing works - Civil** |  | 2025-05-27 | 2025-07-30 |  |  |  |
| PG-10628 |  | Gypsum Plastering | 6d | 2025-05-27 | 2025-06-03 | PG-10337 |  | 372.45d |
| PG-10629 |  | Cornice fixing | 4d | 2025-06-12 | 2025-06-17 | PG-10334 FF+6d |  | 372.45d |
| PG-10631 |  | Toilet False ceiling | 4d | 2025-06-20 | 2025-06-25 | PG-10639 FF+5d |  | 352.79d |
| PG-10630 |  | Painting Works - Putty, Primer and 1st | 6d | 2025-07-01 | 2025-07-08 | PG-10629, PG-10634 |  | 360.45d |
| PG-10632 |  | Final Coat Painting | 19.5d | 2025-07-08 | 2025-07-30 | PG-10630, PG-10641 |  | 360.45d |
|  | 1.3.1.1.4.17.2 | **Wall Finishing works - Civil** |  | 2025-05-17 | 2025-07-30 |  |  |  |
| PG-10633 |  | Balcony Railing Fixing works | 4d | 2025-05-17 | 2025-05-22 | PG-10170 |  | 354.79d |
| PG-10635 |  | Dadoing - Wet area | 5d | 2025-06-07 | 2025-06-13 | PG-10332 |  | 325.79d |
| PG-10634 |  | UPVC Windows & Sliding doors | 5d | 2025-06-25 | 2025-07-01 | PG-10633, PG-10640 FF+5d |  | 325.79d |
| PG-10636 |  | Painting Works - Putty, Primer and 1st | 6d | 2025-07-01 | 2025-07-08 | PG-10634 |  | 325.79d |
| PG-10637 |  | Final Coat Painting | 19.5d | 2025-07-08 | 2025-07-30 | PG-10641 |  | 325.79d |
|  | 1.3.1.1.4.17.3 | **Floor Finishing Works - Civil** |  | 2025-05-17 | 2025-07-08 |  |  |  |
| PG-10638 |  | Waterproofing for sunken areas | 3d | 2025-05-17 | 2025-05-21 | PG-10170 |  | 345.79d |
| PG-10639 |  | Floor Tiling - Wet area | 5d | 2025-06-13 | 2025-06-19 | PG-10638, PG-10635 |  | 325.79d |
| PG-10640 |  | Floor Tiling - Dry area | 5d | 2025-06-19 | 2025-06-25 | PG-10639 FF+5d |  | 325.79d |
| PG-10641 |  | Wooden doors | 5d | 2025-07-02 | 2025-07-08 | PG-10636 FF |  | 325.79d |
|  | 1.3.1.1.4.18 | **Floor 15** |  | 2025-05-30 | 2025-08-11 |  |  |  |
|  | 1.3.1.1.4.18.1 | **Ceiling Finishing works - Civil** |  | 2025-06-09 | 2025-08-11 |  |  |  |
| PG-10642 |  | Gypsum Plastering | 6d | 2025-06-09 | 2025-06-16 | PG-10346 |  | 362.45d |
| PG-10643 |  | Cornice fixing | 4d | 2025-06-25 | 2025-06-30 | PG-10343 FF+6d |  | 362.45d |
| PG-10645 |  | Toilet False ceiling | 4d | 2025-07-03 | 2025-07-08 | PG-10653 FF+5d |  | 341.79d |
| PG-10644 |  | Painting Works - Putty, Primer and 1st | 6d | 2025-07-14 | 2025-07-21 | PG-10643, PG-10648 |  | 350.45d |
| PG-10646 |  | Final Coat Painting | 18.5d | 2025-07-21 | 2025-08-11 | PG-10644, PG-10655 |  | 350.45d |
|  | 1.3.1.1.4.18.2 | **Wall Finishing works - Civil** |  | 2025-05-30 | 2025-08-11 |  |  |  |
| PG-10647 |  | Balcony Railing Fixing works | 4d | 2025-05-30 | 2025-06-04 | PG-10175 |  | 162.29d |
| PG-10649 |  | Dadoing - Wet area | 5d | 2025-06-20 | 2025-06-26 | PG-10341 |  | 133.29d |
| PG-10648 |  | UPVC Windows & Sliding doors | 5d | 2025-07-08 | 2025-07-14 | PG-10647, PG-10654 FF+5d |  | 133.29d |
| PG-10650 |  | Painting Works - Putty, Primer and 1st | 6d | 2025-07-14 | 2025-07-21 | PG-10648 |  | 133.29d |
| PG-10651 |  | Final Coat Painting | 18.5d | 2025-07-21 | 2025-08-11 | PG-10655 |  | 315.79d |
|  | 1.3.1.1.4.18.3 | **Floor Finishing Works - Civil** |  | 2025-05-30 | 2025-07-21 |  |  |  |
| PG-10652 |  | Waterproofing for sunken areas | 3d | 2025-05-30 | 2025-06-03 | PG-10175 |  | 153.29d |
| PG-10653 |  | Floor Tiling - Wet area | 5d | 2025-06-26 | 2025-07-02 | PG-10652, PG-10649 |  | 133.29d |

| ID | WBS | Task | Duration | Start | Finish | Predecessors | Total float |
| --- | --- | --- | --- | --- | --- | --- | --- |
| PG-10654 |  | Floor Tiling - Dry area | 5d | 2025-07-02 | 2025-07-08 | PG-10653 FF+5d | 133.29d |
| PG-10655 |  | Wooden doors | 5d | 2025-07-15 | 2025-07-21 | PG-10650 FF | 133.29d |
|  | 1.3.1.1.4.19 | **Floor 16** |  | 2025-06-12 | 2025-08-25 |  |  |
|  | 1.3.1.1.4.19.1 | **Ceiling Finishing works - Civil** |  | 2025-06-21 | 2025-08-25 |  |  |
| PG-10656 |  | Gypsum Plastering | 6d | 2025-06-21 | 2025-06-28 | PG-10355 | 351.45d |
| PG-10657 |  | Cornice fixing | 4d | 2025-07-08 | 2025-07-12 | PG-10352 FF+6d | 351.45d |
| PG-10659 |  | Toilet False ceiling | 4d | 2025-07-16 | 2025-07-21 | PG-10667 FF+5d | 330.79d |
| PG-10658 |  | Painting Works - Putty, Primer and 1st | 6d | 2025-07-26 | 2025-08-02 | PG-10657, PG-10662 | 339.45d |
| PG-10660 |  | Final Coat Painting | 18.5d | 2025-08-02 | 2025-08-25 | PG-10658, PG-10669 | 339.45d |
|  | 1.3.1.1.4.19.2 | **Wall Finishing works - Civil** |  | 2025-06-12 | 2025-08-25 |  |  |
| PG-10661 |  | Balcony Railing Fixing works | 4d | 2025-06-12 | 2025-06-17 | PG-10180 | 333.79d |
| PG-10663 |  | Dadoing - Wet area | 5d | 2025-07-03 | 2025-07-09 | PG-10350 | 304.79d |
| PG-10662 |  | UPVC Windows & Sliding doors | 5d | 2025-07-21 | 2025-07-26 | PG-10661, PG-10668 FF+5d | 304.79d |
| PG-10664 |  | Painting Works - Putty, Primer and 1st | 6d | 2025-07-26 | 2025-08-02 | PG-10662 | 304.79d |
| PG-10665 |  | Final Coat Painting | 18.5d | 2025-08-02 | 2025-08-25 | PG-10669 | 304.79d |
|  | 1.3.1.1.4.19.3 | **Floor Finishing Works - Civil** |  | 2025-06-12 | 2025-08-02 |  |  |
| PG-10666 |  | Waterproofing for sunken areas | 3d | 2025-06-12 | 2025-06-16 | PG-10180 | 324.79d |
| PG-10667 |  | Floor Tiling - Wet area | 5d | 2025-07-09 | 2025-07-15 | PG-10666, PG-10663 | 304.79d |
| PG-10668 |  | Floor Tiling - Dry area | 5d | 2025-07-15 | 2025-07-21 | PG-10667 FF+5d | 304.79d |
| PG-10669 |  | Wooden doors | 5d | 2025-07-28 | 2025-08-02 | PG-10664 FF | 304.79d |
|  | 1.3.1.1.4.20 | **Floor 17** |  | 2025-06-25 | 2025-09-06 |  |  |
|  | 1.3.1.1.4.20.1 | **Ceiling Finishing works - Civil** |  | 2025-07-04 | 2025-09-06 |  |  |
| PG-10670 |  | Gypsum Plastering | 6d | 2025-07-04 | 2025-07-11 | PG-10364 | 340.45d |
| PG-10671 |  | Cornice fixing | 4d | 2025-07-21 | 2025-07-25 | PG-10361 FF+6d | 340.45d |
| PG-10673 |  | Toilet False ceiling | 4d | 2025-07-29 | 2025-08-02 | PG-10681 FF+5d | 319.79d |
| PG-10672 |  | Painting Works - Putty, Primer and 1st | 6d | 2025-08-08 | 2025-08-16 | PG-10671, PG-10676 | 328.45d |
| PG-10674 |  | Final Coat Painting | 18.5d | 2025-08-16 | 2025-09-06 | PG-10672, PG-10683 | 328.45d |
|  | 1.3.1.1.4.20.2 | **Wall Finishing works - Civil** |  | 2025-06-25 | 2025-09-06 |  |  |
| PG-10675 |  | Balcony Railing Fixing works | 4d | 2025-06-25 | 2025-06-30 | PG-10185 | 322.79d |
| PG-10677 |  | Dadoing - Wet area | 5d | 2025-07-16 | 2025-07-22 | PG-10359 | 293.79d |
| PG-10676 |  | UPVC Windows & Sliding doors | 5d | 2025-08-02 | 2025-08-08 | PG-10675, PG-10682 FF+5d | 293.79d |
| PG-10678 |  | Painting Works - Putty, Primer and 1st | 6d | 2025-08-08 | 2025-08-16 | PG-10676 | 293.79d |
| PG-10679 |  | Final Coat Painting | 18.5d | 2025-08-16 | 2025-09-06 | PG-10683 | 293.79d |
|  | 1.3.1.1.4.20.3 | **Floor Finishing Works - Civil** |  | 2025-06-25 | 2025-08-16 |  |  |
| PG-10680 |  | Waterproofing for sunken areas | 3d | 2025-06-25 | 2025-06-28 | PG-10185 | 313.79d |
| PG-10681 |  | Floor Tiling - Wet area | 5d | 2025-07-22 | 2025-07-28 | PG-10680, PG-10677 | 293.79d |
| PG-10682 |  | Floor Tiling - Dry area | 5d | 2025-07-28 | 2025-08-02 | PG-10681 FF+5d | 293.79d |
| PG-10683 |  | Wooden doors | 5d | 2025-08-09 | 2025-08-16 | PG-10678 FF | 293.79d |
|  | 1.3.1.1.4.21 | **Floor 18** |  | 2025-07-08 | 2025-09-19 |  |  |
|  | 1.3.1.1.4.21.1 | **Ceiling Finishing works - Civil** |  | 2025-07-17 | 2025-09-19 |  |  |
| PG-10684 |  | Gypsum Plastering | 6d | 2025-07-17 | 2025-07-24 | PG-10373 | 329.45d |
| PG-10685 |  | Cornice fixing | 4d | 2025-08-02 | 2025-08-07 | PG-10370 FF+6d | 329.45d |
| PG-10687 |  | Toilet False ceiling | 4d | 2025-08-11 | 2025-08-16 | PG-10695 FF+5d | 308.79d |
| PG-10686 |  | Painting Works - Putty, Primer and 1st | 6d | 2025-08-22 | 2025-08-29 | PG-10685, PG-10690 | 317.45d |
| PG-10688 |  | Final Coat Painting | 18.5d | 2025-08-29 | 2025-09-19 | PG-10686, PG-10697 | 317.45d |
|  | 1.3.1.1.4.21.2 | **Wall Finishing works - Civil** |  | 2025-07-08 | 2025-09-19 |  |  |
| PG-10689 |  | Balcony Railing Fixing works | 4d | 2025-07-08 | 2025-07-12 | PG-10190 | 311.79d |
| PG-10691 |  | Dadoing - Wet area | 5d | 2025-07-29 | 2025-08-04 | PG-10368 | 282.79d |
| PG-10690 |  | UPVC Windows & Sliding doors | 5d | 2025-08-16 | 2025-08-22 | PG-10689, PG-10696 FF+5d | 282.79d |
| PG-10692 |  | Painting Works - Putty, Primer and 1st | 6d | 2025-08-22 | 2025-08-29 | PG-10690 | 282.79d |
| PG-10693 |  | Final Coat Painting | 18.5d | 2025-08-29 | 2025-09-19 | PG-10697 | 282.79d |
|  | 1.3.1.1.4.21.3 | **Floor Finishing Works - Civil** |  | 2025-07-08 | 2025-08-29 |  |  |
| PG-10694 |  | Waterproofing for sunken areas | 3d | 2025-07-08 | 2025-07-11 | PG-10190 | 302.79d |
| PG-10695 |  | Floor Tiling - Wet area | 5d | 2025-08-04 | 2025-08-09 | PG-10694, PG-10691 | 282.79d |
| PG-10696 |  | Floor Tiling - Dry area | 5d | 2025-08-09 | 2025-08-16 | PG-10695 FF+5d | 282.79d |
| PG-10697 |  | Wooden doors | 5d | 2025-08-23 | 2025-08-29 | PG-10692 FF | 282.79d |
|  | 1.3.1.1.4.22 | **Floor 19** |  | 2025-07-30 | 2025-10-15 |  |  |
|  | 1.3.1.1.4.22.1 | **Ceiling Finishing works - Civil** |  | 2025-08-08 | 2025-10-15 |  |  |
| PG-10698 |  | Gypsum Plastering | 6d | 2025-08-08 | 2025-08-16 | PG-10382 | 177.95d |
| PG-10699 |  | Cornice fixing | 4d | 2025-08-26 | 2025-08-30 | PG-10379 FF+6d | 177.95d |
| PG-10701 |  | Toilet False ceiling | 4d | 2025-09-03 | 2025-09-08 | PG-10709 FF+5d | 289.79d |
| PG-10700 |  | Painting Works - Putty, Primer and 1st | 6d | 2025-09-13 | 2025-09-20 | PG-10699, PG-10704 | 165.95d |
| PG-10702 |  | Final Coat Painting | 20.5d | 2025-09-20 | 2025-10-15 | PG-10700, PG-10711 | 296.45d |
|  | 1.3.1.1.4.22.2 | **Wall Finishing works - Civil** |  | 2025-07-30 | 2025-10-15 |  |  |
| PG-10703 |  | Balcony Railing Fixing works | 4d | 2025-07-30 | 2025-08-04 | PG-10367 FS+7d | 194.95d |
| PG-10705 |  | Dadoing - Wet area | 5d | 2025-08-21 | 2025-08-27 | PG-10377 | 165.95d |
| PG-10704 |  | UPVC Windows & Sliding doors | 5d | 2025-09-08 | 2025-09-13 | PG-10703, PG-10710 FF+5d | 165.95d |
| PG-10706 |  | Painting Works - Putty, Primer and 1st | 6d | 2025-09-13 | 2025-09-20 | PG-10704 | 261.79d |
| PG-10707 |  | Final Coat Painting | 20.5d | 2025-09-20 | 2025-10-15 | PG-10711 | 261.79d |
|  | 1.3.1.1.4.22.3 | **Floor Finishing Works - Civil** |  | 2025-07-30 | 2025-09-20 |  |  |

| ID | WBS | Task | Duration | Start | Finish | Predecessors | Total float |
| --- | --- | --- | --- | --- | --- | --- | --- |
| PG-10708 |  | Waterproofing for sunken areas | 3d | 2025-07-30 | 2025-08-02 | PG-10367 FS+7d | 185.95d |
| PG-10709 |  | Floor Tiling - Wet area | 5d | 2025-08-27 | 2025-09-02 | PG-10708, PG-10705 | 165.95d |
| PG-10710 |  | Floor Tiling - Dry area | 5d | 2025-09-02 | 2025-09-08 | PG-10709 FF+5d | 165.95d |
| PG-10711 |  | Wooden doors | 5d | 2025-09-15 | 2025-09-20 | PG-10706 FF | 261.79d |
|  | 1.3.1.1.4.23 | **Floor 20** |  | 2025-08-22 | 2025-11-06 |  |  |
|  | 1.3.1.1.4.23.1 | **Ceiling Finishing works - Civil** |  | 2025-09-01 | 2025-11-06 |  |  |
| PG-10712 |  | Gypsum Plastering | 6d | 2025-09-01 | 2025-09-08 | PG-10391 | 289.29d |
| PG-10713 |  | Cornice fixing | 4d | 2025-09-17 | 2025-09-22 | PG-10388 FF+6d | 289.29d |
| PG-10715 |  | Toilet False ceiling | 4d | 2025-09-25 | 2025-09-30 | PG-10723 FF+5d | 269.29d |
| PG-10714 |  | Painting Works - Putty, Primer and 1st | 6d | 2025-10-07 | 2025-10-14 | PG-10713, PG-10718 | 277.29d |
| PG-10716 |  | Final Coat Painting | 19.67d | 2025-10-14 | 2025-11-06 | PG-10714, PG-10725 | 277.29d |
|  | 1.3.1.1.4.23.2 | **Wall Finishing works - Civil** |  | 2025-08-22 | 2025-11-06 |  |  |
| PG-10717 |  | Balcony Railing Fixing works | 4d | 2025-08-22 | 2025-08-27 | PG-10376 FS+7d | 271.62d |
| PG-10719 |  | Dadoing - Wet area | 5d | 2025-09-12 | 2025-09-18 | PG-10386 | 242.62d |
| PG-10718 |  | UPVC Windows & Sliding doors | 5d | 2025-09-30 | 2025-10-07 | PG-10717, PG-10724 FF+5d | 242.62d |
| PG-10720 |  | Painting Works - Putty, Primer and 1st | 6d | 2025-10-07 | 2025-10-14 | PG-10718 | 242.62d |
| PG-10721 |  | Final Coat Painting | 19.67d | 2025-10-14 | 2025-11-06 | PG-10725 | 242.62d |
|  | 1.3.1.1.4.23.3 | **Floor Finishing Works - Civil** |  | 2025-08-22 | 2025-10-14 |  |  |
| PG-10722 |  | Waterproofing for sunken areas | 3d | 2025-08-22 | 2025-08-26 | PG-10376 FS+7d | 262.62d |
| PG-10723 |  | Floor Tiling - Wet area | 5d | 2025-09-18 | 2025-09-24 | PG-10722, PG-10719 | 242.62d |
| PG-10724 |  | Floor Tiling - Dry area | 5d | 2025-09-24 | 2025-09-30 | PG-10723 FF+5d | 242.62d |
| PG-10725 |  | Wooden doors | 5d | 2025-10-08 | 2025-10-14 | PG-10720 FF | 242.62d |
|  | 1.3.1.1.4.24 | **Floor 21** |  | 2025-09-13 | 2025-11-28 |  |  |
|  | 1.3.1.1.4.24.1 | **Ceiling Finishing works - Civil** |  | 2025-09-23 | 2025-11-28 |  |  |
| PG-10726 |  | Gypsum Plastering | 6d | 2025-09-23 | 2025-09-30 | PG-10400 | 270.29d |
| PG-10727 |  | Cornice fixing | 4d | 2025-10-10 | 2025-10-15 | PG-10397 FF+6d | 270.29d |
| PG-10729 |  | Toilet False ceiling | 4d | 2025-10-18 | 2025-10-23 | PG-10737 FF+5d | 250.62d |
| PG-10728 |  | Painting Works - Putty, Primer and 1st | 6d | 2025-10-29 | 2025-11-06 | PG-10727, PG-10732 | 258.29d |
| PG-10730 |  | Final Coat Painting | 19.67d | 2025-11-06 | 2025-11-28 | PG-10728, PG-10739 | 258.29d |
|  | 1.3.1.1.4.24.2 | **Wall Finishing works - Civil** |  | 2025-09-13 | 2025-11-28 |  |  |
| PG-10731 |  | Balcony Railing Fixing works | 4d | 2025-09-13 | 2025-09-18 | PG-10385 FS+7d | 252.62d |
| PG-10733 |  | Dadoing - Wet area | 5d | 2025-10-06 | 2025-10-11 | PG-10395 | 223.62d |
| PG-10732 |  | UPVC Windows & Sliding doors | 5d | 2025-10-23 | 2025-10-29 | PG-10731, PG-10738 FF+5d | 223.62d |
| PG-10734 |  | Painting Works - Putty, Primer and 1st | 6d | 2025-10-29 | 2025-11-06 | PG-10732 | 223.62d |
| PG-10735 |  | Final Coat Painting | 19.67d | 2025-11-06 | 2025-11-28 | PG-10739 | 223.62d |
|  | 1.3.1.1.4.24.3 | **Floor Finishing Works - Civil** |  | 2025-09-13 | 2025-11-06 |  |  |
| PG-10736 |  | Waterproofing for sunken areas | 3d | 2025-09-13 | 2025-09-17 | PG-10385 FS+7d | 243.62d |
| PG-10737 |  | Floor Tiling - Wet area | 5d | 2025-10-11 | 2025-10-17 | PG-10736, PG-10733 | 223.62d |
| PG-10738 |  | Floor Tiling - Dry area | 5d | 2025-10-17 | 2025-10-23 | PG-10737 FF+5d | 223.62d |
| PG-10739 |  | Wooden doors | 5d | 2025-10-30 | 2025-11-06 | PG-10734 FF | 223.62d |
|  | 1.3.1.1.4.25 | **Floor 22** |  | 2025-10-07 | 2025-12-20 |  |  |
|  | 1.3.1.1.4.25.1 | **Ceiling Finishing works - Civil** |  | 2025-10-16 | 2025-12-20 |  |  |
| PG-10740 |  | Gypsum Plastering | 6d | 2025-10-16 | 2025-10-23 | PG-10409 | 251.29d |
| PG-10741 |  | Cornice fixing | 4d | 2025-11-03 | 2025-11-07 | PG-10406 FF+6d | 251.29d |
| PG-10743 |  | Toilet False ceiling | 4d | 2025-11-11 | 2025-11-15 | PG-10751 FF+5d | 230.62d |
| PG-10742 |  | Painting Works - Putty, Primer and 1st | 6d | 2025-11-21 | 2025-11-28 | PG-10741, PG-10746 | 239.29d |
| PG-10744 |  | Final Coat Painting | 19.5d | 2025-11-28 | 2025-12-20 | PG-10742, PG-10753 | 239.29d |
|  | 1.3.1.1.4.25.2 | **Wall Finishing works - Civil** |  | 2025-10-07 | 2025-12-20 |  |  |
| PG-10745 |  | Balcony Railing Fixing works | 4d | 2025-10-07 | 2025-10-11 | PG-10394 FS+7d | 232.62d |
| PG-10747 |  | Dadoing - Wet area | 5d | 2025-10-28 | 2025-11-04 | PG-10404 | 203.62d |
| PG-10746 |  | UPVC Windows & Sliding doors | 5d | 2025-11-15 | 2025-11-21 | PG-10745, PG-10752 FF+5d | 203.62d |
| PG-10748 |  | Painting Works - Putty, Primer and 1st | 6d | 2025-11-21 | 2025-11-28 | PG-10746 | 203.62d |
| PG-10749 |  | Final Coat Painting | 19.5d | 2025-11-28 | 2025-12-20 | PG-10753 | 203.62d |
|  | 1.3.1.1.4.25.3 | **Floor Finishing Works - Civil** |  | 2025-10-07 | 2025-11-28 |  |  |
| PG-10750 |  | Waterproofing for sunken areas | 3d | 2025-10-07 | 2025-10-10 | PG-10394 FS+7d | 223.62d |
| PG-10751 |  | Floor Tiling - Wet area | 5d | 2025-11-04 | 2025-11-10 | PG-10750, PG-10747 | 203.62d |
| PG-10752 |  | Floor Tiling - Dry area | 5d | 2025-11-10 | 2025-11-15 | PG-10751 FF+5d | 203.62d |
| PG-10753 |  | Wooden doors | 5d | 2025-11-22 | 2025-11-28 | PG-10748 FF | 203.62d |
|  | 1.3.1.1.4.26 | **Floor 23** |  | 2025-10-29 | 2026-01-12 |  |  |
|  | 1.3.1.1.4.26.1 | **Ceiling Finishing works - Civil** |  | 2025-11-08 | 2026-01-12 |  |  |
| PG-10754 |  | Gypsum Plastering | 6d | 2025-11-08 | 2025-11-15 | PG-10418 | 232.45d |
| PG-10755 |  | Cornice fixing | 4d | 2025-11-25 | 2025-11-29 | PG-10415 FF+6d | 232.45d |
| PG-10757 |  | Toilet False ceiling | 4d | 2025-12-03 | 2025-12-08 | PG-10765 FF+5d | 212.12d |
| PG-10756 |  | Painting Works - Putty, Primer and 1st | 6d | 2025-12-13 | 2025-12-20 | PG-10755, PG-10760 | 220.45d |
| PG-10758 |  | Final Coat Painting | 19.5d | 2025-12-20 | 2026-01-12 | PG-10756, PG-10767 | 220.45d |
|  | 1.3.1.1.4.26.2 | **Wall Finishing works - Civil** |  | 2025-10-29 | 2026-01-09 |  |  |
| PG-10759 |  | Balcony Railing Fixing works | 4d | 2025-10-29 | 2025-11-04 | PG-10403 FS+7d | 216.62d |
| PG-10761 |  | Dadoing - Wet area | 5d | 2025-11-20 | 2025-11-26 | PG-10413 | 187.62d |
| PG-10760 |  | UPVC Windows & Sliding doors | 5d | 2025-12-08 | 2025-12-13 | PG-10759, PG-10766 FF+5d | 187.62d |
| PG-10762 |  | Painting Works - Putty, Primer and 1st | 6d | 2025-12-13 | 2025-12-20 | PG-10760 | 187.62d |

| ID | WBS | Task | Duration | Start | Finish | Predecessors | Total float |
| --- | --- | --- | --- | --- | --- | --- | --- |
| PG-10763 |  | Final Coat Painting | 17.5d | 2025-12-20 | 2026-01-09 | PG-10767 | 187.62d |
|  | 1.3.1.1.4.26.3 | **Floor Finishing Works - Civil** |  | 2025-10-29 | 2025-12-20 |  |  |
| PG-10764 |  | Waterproofing for sunken areas | 3d | 2025-10-29 | 2025-11-03 | PG-10403 FS+7d | 207.62d |
| PG-10765 |  | Floor Tiling - Wet area | 5d | 2025-11-26 | 2025-12-02 | PG-10764, PG-10761 | 187.62d |
| PG-10766 |  | Floor Tiling - Dry area | 5d | 2025-12-02 | 2025-12-08 | PG-10765 FF+5d | 187.62d |
| PG-10767 |  | Wooden doors | 5d | 2025-12-15 | 2025-12-20 | PG-10762 FF | 187.62d |
|  | 1.3.1.1.4.27 | **External Finishing works** |  | 2025-08-05 | 2025-12-03 |  |  |
| PG-10768 |  | External walls tie rod hole plugging with GP2 | 30d | 2025-08-05 | 2025-09-10 | PG-10196 | 251.79d |
| PG-10769 |  | External walls grinding works | 40d | 2025-08-29 | 2025-10-16 | PG-10768 FF+30d | 251.79d |
| PG-10770 |  | Texture and painting works | 45d | 2025-10-10 | 2025-12-03 | PG-10769 FF+40d | 251.79d |
|  | 1.3.1.1.5 | **Corridor & Fire Staircase Finishing works** |  | 2025-10-13 | 2026-07-27 |  |  |
|  | 1.3.1.1.5.1 | **Ceiling Finishing works - Civil** |  | 2025-10-13 | 2026-01-23 |  |  |
| PG-10771 |  | Gypsum Plastering | 6d | 2025-10-13 | 2025-10-20 | PG-10382 FF+60d | 46.95d |
| PG-10772 |  | Cornice fixing | 4d | 2025-10-18 | 2025-10-23 | PG-10699 FF+45d | 177.95d |
| PG-10773 |  | Painting Works - Putty, Primer and 1st | 6d | 2025-11-07 | 2025-11-14 | PG-10700 FF+45d, PG-10772 | 165.95d |
| PG-10774 |  | False ceiling | 30d | 2025-11-14 | 2025-12-19 | PG-10773 | 165.95d |
| PG-10775 |  | Final Coat Painting | 29.67d | 2025-12-19 | 2026-01-23 | PG-10774 | 180.95d |
|  | 1.3.1.1.5.2 | **Wall Finishing works - Civil** |  | 2025-11-19 | 2026-07-27 |  |  |
| PG-10776 |  | UPVC Windows & Sliding doors | 5d | 2025-11-19 | 2025-11-25 | PG-10704 FF+60d | 171.95d |
| PG-10777 |  | Wall Cladding Upto 1.2 Mts | 20d | 2025-12-06 | 2025-12-30 | PG-10776 FF+30d | 171.95d |
| PG-10778 |  | Painting Works - Texture & one coat Painting works | 15d | 2026-01-06 | 2026-01-23 | PG-10777, PG-10774 FF+30d | 165.95d |
| PG-10779 |  | Final Coat Painting | 20.33d | 2026-07-03 | 2026-07-27 | PG-10781, PG-10778 FF+15d, PG-10013 | 23.42d |
|  | 1.3.1.1.5.3 | **Floor Finishing Works - Civil** |  | 2025-10-20 | 2025-11-19 |  |  |
| PG-10780 |  | Fire Doors installation | 10d | 2025-10-20 | 2025-10-31 | PG-10771 | 216.62d |
| PG-10781 |  | Verified tile flooring works | 15d | 2025-10-31 | 2025-11-19 | PG-10780 | 216.62d |
|  | 1.3.1.1.5.4 | **Fire Staircase Finishing Works - Civil** |  | 2025-10-20 | 2026-02-10 |  |  |
| PG-10782 |  | Staircase Railing Fixing works | 20d | 2025-10-20 | 2025-11-13 | PG-10771 | 46.95d |
| PG-10783 |  | Wall and ceiling Gypsum plastering | 30d | 2025-10-31 | 2025-12-06 | PG-10782 FF+20d | 46.95d |
| PG-10784 |  | Staircase Flooring and Skirting Works | 40d | 2025-11-19 | 2026-01-05 | PG-10783 FF+25d | 46.95d |
| PG-10785 |  | UPVC Window fixing works | 15d | 2026-01-05 | 2026-01-22 | PG-10784 FF+15d | 46.95d |
| PG-10786 |  | Staircase Painting works | 20d | 2026-01-16 | 2026-02-10 | PG-10785 FF+15d | 46.95d |
|  | 1.3.1.1.6 | **MEP Civil Works (Shaft, Lift Shaft & OHT )** |  | 2025-07-22 | 2026-01-10 |  |  |
|  | 1.3.1.1.6.1 | **Lift Shaft Works** |  | 2025-07-22 | 2026-01-10 |  |  |
| PG-10787 |  | Tie rod hole packing | 8d | 2025-07-22 | 2025-07-31 | PG-10193 | 124.45d |
| PG-10788 |  | Grinding works | 5d | 2025-07-31 | 2025-08-06 | PG-10787 | 124.45d |
| PG-10789 |  | Lift pit waterproofing works | 21d | 2025-08-06 | 2025-09-01 | PG-10788 | 124.45d |
| PG-10790 |  | Shaft door opening finishing | 7d | 2025-09-01 | 2025-09-09 | PG-10789 | 124.45d |
| PG-10791 |  | Painting works | 8d | 2025-09-09 | 2025-09-18 | PG-10790 | 124.45d |
| PG-10792 |  | Lift Wall Cladding Works | 15.33d | 2025-12-24 | 2026-01-10 | PG-10827 | 143.42d |
|  | 1.3.1.1.6.2 | **Electrical Shaft works** |  | 2025-07-22 | 2025-08-25 |  |  |
| PG-10793 |  | Tie rod hole packing | 8d | 2025-07-22 | 2025-07-31 | PG-10193 | 263.29d |
| PG-10794 |  | Grinding works | 5d | 2025-07-31 | 2025-08-06 | PG-10793 | 263.29d |
| PG-10795 |  | Shaft door opening finishing | 7d | 2025-08-06 | 2025-08-14 | PG-10794 | 263.29d |
| PG-10796 |  | Painting works | 8d | 2025-08-14 | 2025-08-25 | PG-10795 | 263.29d |
|  | 1.3.1.1.6.3 | **FPS Shaft works** |  | 2025-07-22 | 2025-08-25 |  |  |
| PG-10797 |  | Tie rod hole packing | 8d | 2025-07-22 | 2025-07-31 | PG-10193 | 262.95d |
| PG-10798 |  | Grinding works | 5d | 2025-07-31 | 2025-08-06 | PG-10797 | 262.95d |
| PG-10799 |  | Shaft door opening finishing | 7d | 2025-08-06 | 2025-08-14 | PG-10798 | 262.95d |
| PG-10800 |  | Painting works | 8d | 2025-08-14 | 2025-08-25 | PG-10799 | 262.95d |
|  | 1.3.1.1.6.4 | **PHE Shaft works** |  | 2025-07-22 | 2025-08-25 |  |  |
| PG-10801 |  | Tie rod hole packing | 8d | 2025-07-22 | 2025-07-31 | PG-10193 | 221.62d |
| PG-10802 |  | Grinding works | 5d | 2025-07-31 | 2025-08-06 | PG-10801 | 221.62d |
| PG-10803 |  | Shaft door opening finishing | 7d | 2025-08-06 | 2025-08-14 | PG-10802 | 221.62d |
| PG-10804 |  | Painting works | 8d | 2025-08-14 | 2025-08-25 | PG-10803 | 221.62d |
|  | 1.3.1.1.6.5 | **Data & Communication Shaft** |  | 2025-07-22 | 2025-08-22 |  |  |
| PG-10805 |  | Tie rod hole packing | 8d | 2025-07-22 | 2025-07-31 | PG-10193 | 257.95d |
| PG-10806 |  | Grinding works | 5d | 2025-07-31 | 2025-08-06 | PG-10805 | 257.95d |
| PG-10807 |  | Shaft door opening finishing | 5d | 2025-08-06 | 2025-08-12 | PG-10806 | 257.95d |
| PG-10808 |  | Painting works | 8d | 2025-08-12 | 2025-08-22 | PG-10807 | 257.95d |
|  | 1.3.1.1.6.6 | **OHT Works** |  | 2025-08-02 | 2025-09-22 |  |  |
| PG-10809 |  | Tank materials Supply & Shifting | 10d | 2025-08-02 | 2025-08-14 | PG-10025, PG-10193 | 219.62d |
| PG-10810 |  | Assembling OHT FRP Tank | 10d | 2025-08-14 | 2025-08-27 | PG-10809 | 219.62d |
| PG-10811 |  | Installation of OHT Tank | 15d | 2025-08-27 | 2025-09-13 | PG-10810 | 219.62d |
| PG-10812 |  | Water tightness works and checking | 7d | 2025-09-13 | 2025-09-22 | PG-10811 | 219.62d |
|  | 1.3.1.1.7 | **MEP Shaft works** |  | 2025-08-22 | 2025-11-15 |  |  |
|  | 1.3.1.1.7.1 | **Electrical** |  | 2025-08-25 | 2025-10-06 |  |  |
| PG-10813 |  | Tray Works | 10d | 2025-08-25 | 2025-09-05 | PG-10796 | 263.29d |
| PG-10814 |  | Cable & Conducting works | 10d | 2025-09-05 | 2025-09-17 | PG-10813 | 263.29d |
| PG-10815 |  | Wiring/DB/connector box installation and termination works | 15d | 2025-09-17 | 2025-10-06 | PG-10814 | 263.29d |
|  | 1.3.1.1.7.2 | **FPS** |  | 2025-08-25 | 2025-10-06 |  |  |

| ID | WBS | Task | Duration | Start | Finish | Predecessors | Complete | Total float |
| --- | --- | --- | --- | --- | --- | --- | --- | --- |
| PG-10816 |  | Shaft MS Piping & fixtures installation | 20d | 2025-08-25 | 2025-09-17 | PG-10800 |  | 262.95d |
| PG-10817 |  | Tray / cabling / conducting & wiring works | 15d | 2025-09-17 | 2025-10-06 | PG-10816 |  | 262.95d |
|  | 1.3.1.1.7.3 | **Data & Communication** |  | 2025-08-22 | 2025-10-11 |  |  |  |
| PG-10818 |  | Tray Works | 12d | 2025-08-22 | 2025-09-05 | PG-10808 |  | 257.95d |
| PG-10819 |  | Tray / cabling / conducting & wiring works | 15d | 2025-09-05 | 2025-09-23 | PG-10818 |  | 257.95d |
| PG-10820 |  | Wiring/DB/connector box installation and termination works | 15d | 2025-09-23 | 2025-10-11 | PG-10819 |  | 257.95d |
|  | 1.3.1.1.7.4 | **PHE** |  | 2025-08-25 | 2025-11-15 |  |  |  |
| PG-10821 |  | Bracket fixing works | 7d | 2025-08-25 | 2025-09-02 | PG-10804 |  | 221.62d |
| PG-10822 |  | Piping Works | 15d | 2025-09-02 | 2025-09-19 | PG-10821 |  | 221.62d |
| PG-10823 |  | Terrace Ring main & OHT Connection works | 40d | 2025-09-22 | 2025-11-08 | PG-10197, PG-10822, PG-10812 |  | 219.62d |
| PG-10824 |  | Commissioning | 5.67d | 2025-11-08 | 2025-11-15 | PG-10823 |  | 219.62d |
|  | 1.3.1.1.8 | **Lift Installation and Testing works** |  | 2025-08-06 | 2026-03-28 |  |  |  |
| PG-10825 |  | Lift Shaft Survey works | 10d | 2025-08-06 | 2025-08-18 | PG-10788 |  | 150.95d |
| PG-10826 |  | Guide Rails fixing works | 40d | 2025-09-18 | 2025-11-06 | PG-10029, PG-10825, PG-10791 |  | 124.45d |
| PG-10827 |  | Lift Frame fixing works | 24.67d | 2025-11-25 | 2025-12-24 | PG-10826, PG-10030 |  | 108.42d |
| PG-10828 |  | CAR Assembly works | 20d | 2025-12-24 | 2026-01-16 | PG-10827 |  | 108.42d |
| PG-10829 |  | Lift Machine Room Works | 30d | 2026-01-16 | 2026-02-21 | PG-10828 |  | 108.42d |
| PG-10830 |  | Slow Speed & High Speed Testing works | 30d | 2026-02-21 | 2026-03-28 | PG-10792, PG-10829 |  | 108.42d |
|  | 1.3.1.1.9 | **Electrical Panel Works** |  | 2025-07-21 | 2026-02-26 |  |  |  |
|  | 1.3.1.1.9.1 | **Civil Finishing Works** |  | 2025-07-21 | 2025-09-03 |  |  |  |
| PG-10831 |  | Wall Tie rod hole packing & Grinding works. | 15d | 2025-07-21 | 2025-08-07 | PG-10655 |  | 133.29d |
| PG-10832 |  | Window, Louver and Door fixing works | 7d | 2025-08-07 | 2025-08-14 | PG-10831 |  | 133.29d |
| PG-10833 |  | Pedestal works | 10d | 2025-08-14 | 2025-08-27 | PG-10832 |  | 133.29d |
| PG-10834 |  | Painting works | 6d | 2025-08-27 | 2025-09-03 | PG-10833 |  | 133.29d |
|  | 1.3.1.1.9.2 | **Electrical Panel works** |  | 2025-09-03 | 2026-02-26 |  |  |  |
| PG-10835 |  | Electrical Panel assembly works | 58.5d | 2025-09-03 | 2025-11-12 | PG-10032, PG-10834 |  | 133.29d |
| PG-10836 |  | Electrical Panel installation and cable termination. | 59.67d | 2025-11-12 | 2026-01-21 | PG-10835 |  | 133.29d |
| PG-10837 |  | Electrical Panel Testing and commissioning works | 29.5d | 2026-01-21 | 2026-02-26 | PG-10836 |  | 133.29d |
|  | 1.3.1.1.10 | **Entrance Lobby works** |  | 2026-02-10 | 2026-06-30 |  |  |  |
| PG-10838 |  | Flooring Works | 30.67d | 2026-02-10 | 2026-03-17 | PG-10786 |  | 46.95d |
| PG-10839 |  | Glass Door and False ceiling Works | 29.83d | 2026-03-17 | 2026-04-21 | PG-10838 |  | 46.95d |
| PG-10841 |  | Canopy Works | 25.67d | 2026-03-17 | 2026-04-16 | PG-10838 |  | 65.79d |
| PG-10840 |  | Painting Works | 14.67d | 2026-04-21 | 2026-05-08 | PG-10839 |  | 46.95d |
| PG-10842 |  | Interior Works | 44.83d | 2026-05-08 | 2026-06-30 | PG-10841, PG-10840 |  | 46.95d |
|  | 1.3.1.1.11 | **Lightening Arrester works** |  | 2025-12-03 | 2025-12-15 |  |  |  |
| PG-10843 |  | Conductor will be lifted with RCC Works, But Terrace works will be done once Parapet Painting done | 10.5d | 2025-12-03 | 2025-12-15 | PG-10770 |  | 251.79d |
|  | 1.3.1.2 | **Tower 2 ( 2B+G+26 ) TYP 4 Units - 106 Units** |  | 2023-10-16 | 2026-08-05 |  |  |  |
|  | 1.3.1.2.1 | **Foundation works** |  | 2023-10-16 | 2024-04-11 |  |  |  |
| PG-10844 |  | Setting out - Marking | 3d | 2023-10-16 A | 2023-10-19 A | PG-11725 FS+7d | 100% |  |
| PG-10845 |  | Excavation Works | 45d | 2023-10-19 A | 2023-12-12 A | PG-10844 | 100% |  |
| PG-10846 |  | Piling Works - 177 Nos | 45d | 2023-12-06 A | 2024-01-30 A | PG-10845 FF+40d | 100% |  |
| PG-10847 |  | Backfilling and Consolidation | 19.67d | 2024-01-19 A | 2024-02-13 A | PG-10846 FF+12d | 100% |  |
| PG-10848 |  | Waterproofing & PCC works | 15d | 2024-02-09 A | 2024-02-27 A | PG-10847 FF+12d | 100% |  |
| PG-10849 |  | Raft Reinforcement | 15d | 2024-02-27 A | 2024-03-15 A | PG-10848 FF+15d | 100% |  |
| PG-10850 |  | Raft Formwork | 8d | 2024-03-23 A | 2024-04-02 A | PG-10849 FF+15d | 100% |  |
| PG-10851 |  | Raft Concreting | 3d | 2024-04-08 A | 2024-04-11 A | PG-10850 FF+8d | 100% |  |
|  | 1.3.1.2.2 | **Structure works** |  | 2024-04-11 | 2025-09-25 |  |  |  |
|  | 1.3.1.2.2.1 | **LBF** |  | 2024-04-11 | 2024-05-09 |  |  |  |
|  | 1.3.1.2.2.1.1 | **Columns / shear walls** |  | 2024-04-11 | 2024-04-27 |  |  |  |
| PG-10852 |  | Reinforcement | 4d | 2024-04-11 A | 2024-04-16 A | PG-10851 | 100% |  |
| PG-10854 |  | Concrete | 9.5d | 2024-04-16 A | 2024-04-27 A | PG-10853 FF+5d | 100% |  |
| PG-10853 |  | Formwork | 4d | 2024-04-17 A | 2024-04-22 A | PG-10852 FF+5d | 100% |  |
|  | 1.3.1.2.2.1.2 | **Slab, Beams & Staircase** |  | 2024-04-27 | 2024-05-09 |  |  |  |
| PG-10855 |  | Formwork | 3d | 2024-04-27 A | 2024-05-01 A | PG-10854 | 100% |  |
| PG-10856 |  | Reinforcement | 3d | 2024-05-03 A | 2024-05-07 A | PG-10855 FF+5d | 100% |  |
| PG-10857 |  | Concrete | 1d | 2024-05-08 A | 2024-05-09 A | PG-10856 FS+1d | 100% |  |
|  | 1.3.1.2.2.2 | **UBF** |  | 2024-05-09 | 2024-06-06 |  |  |  |
|  | 1.3.1.2.2.2.1 | **Columns / shear walls** |  | 2024-05-09 | 2024-05-25 |  |  |  |
| PG-10858 |  | Reinforcement | 4d | 2024-05-09 A | 2024-05-14 A | PG-10857 | 100% |  |
| PG-10860 |  | Concrete | 9.5d | 2024-05-14 A | 2024-05-25 A | PG-10859 FF+5d | 100% |  |
| PG-10859 |  | Formwork | 4d | 2024-05-15 A | 2024-05-20 A | PG-10858 FF+5d | 100% |  |
|  | 1.3.1.2.2.2.2 | **Slab, Beams & Staircase** |  | 2024-05-25 | 2024-06-06 |  |  |  |
| PG-10861 |  | Formwork | 3d | 2024-05-25 A | 2024-05-29 A | PG-10860 | 100% |  |
| PG-10862 |  | Reinforcement | 3d | 2024-05-31 A | 2024-06-04 A | PG-10861 FF+5d | 100% |  |
| PG-10863 |  | Concrete | 1d | 2024-06-05 A | 2024-06-06 A | PG-10862 FS+1d | 100% |  |
|  | 1.3.1.2.2.3 | **Ground Floor** |  | 2024-06-06 | 2024-06-29 |  |  |  |
|  | 1.3.1.2.2.3.1 | **Columns / shear walls** |  | 2024-06-06 | 2024-06-19 |  |  |  |
| PG-10864 |  | Reinforcement | 4d | 2024-06-06 A | 2024-06-11 A | PG-10863 | 100% |  |
| PG-10866 |  | Concrete | 7.5d | 2024-06-10 A | 2024-06-19 A | PG-10865 FF+3d | 100% |  |
| PG-10865 |  | Formwork | 4d | 2024-06-11 A | 2024-06-15 A | PG-10864 FF+4d | 100% |  |

| ID | WBS | Task | Duration | Start | Finish | Predecessors | Complete |
| --- | --- | --- | --- | --- | --- | --- | --- |
|  | 1.3.1.2.2.3.2 | **Slab, Beams & Staircase** |  | 2024-06-19 | 2024-06-29 |  |  |
| PG-10867 |  | Formwork | 3d | 2024-06-19 A | 2024-06-22 A | PG-10866 | 100% |
| PG-10868 |  | Reinforcement | 3d | 2024-06-24 A | 2024-06-27 A | PG-10867 FF+4d | 100% |
| PG-10869 |  | Concrete | 1d | 2024-06-28 A | 2024-06-29 A | PG-10868 FS+1d | 100% |
|  | 1.3.1.2.2.4 | **Floor 01** |  | 2024-06-29 | 2024-07-23 |  |  |
|  | 1.3.1.2.2.4.1 | **Columns / shear walls** |  | 2024-06-29 | 2024-07-12 |  |  |
| PG-10870 |  | Reinforcement | 4d | 2024-06-29 A | 2024-07-04 A | PG-10869 | 100% |
| PG-10872 |  | Concrete | 7.5d | 2024-07-03 A | 2024-07-12 A | PG-10871 FF+3d | 100% |
| PG-10871 |  | Formwork | 4d | 2024-07-04 A | 2024-07-09 A | PG-10870 FF+4d | 100% |
|  | 1.3.1.2.2.4.2 | **Slab, Beams & Staircase** |  | 2024-07-12 | 2024-07-23 |  |  |
| PG-10873 |  | Formwork | 3d | 2024-07-12 A | 2024-07-16 A | PG-10872 | 100% |
| PG-10874 |  | Reinforcement | 3d | 2024-07-17 A | 2024-07-20 A | PG-10873 FF+4d | 100% |
| PG-10875 |  | Concrete | 1d | 2024-07-22 A | 2024-07-23 A | PG-10874 FS+1d | 100% |
|  | 1.3.1.2.2.5 | **Floor 02** |  | 2024-07-23 | 2024-08-17 |  |  |
|  | 1.3.1.2.2.5.1 | **Columns / shear walls** |  | 2024-07-23 | 2024-08-05 |  |  |
| PG-10876 |  | Reinforcement | 4d | 2024-07-23 A | 2024-07-27 A | PG-10875 | 100% |
| PG-10877 |  | Formwork | 4d | 2024-07-27 A | 2024-08-01 A | PG-10876 FF+4d | 100% |
| PG-10878 |  | Concrete | 3.67d | 2024-07-31 A | 2024-08-05 A | PG-10877 FF+3d | 100% |
|  | 1.3.1.2.2.5.2 | **Slab, Beams & Staircase** |  | 2024-08-05 | 2024-08-17 |  |  |
| PG-10879 |  | Formwork | 3d | 2024-08-05 A | 2024-08-08 A | PG-10878 | 100% |
| PG-10880 |  | Reinforcement | 3d | 2024-08-09 A | 2024-08-14 A | PG-10879 FF+4d | 100% |
| PG-10881 |  | Concrete | 1d | 2024-08-16 A | 2024-08-17 A | PG-10880 FS+1d | 100% |
|  | 1.3.1.2.2.6 | **Floor 03** |  | 2024-08-17 | 2024-09-10 |  |  |
|  | 1.3.1.2.2.6.1 | **Columns / shear walls** |  | 2024-08-17 | 2024-08-30 |  |  |
| PG-10882 |  | Reinforcement | 4d | 2024-08-17 A | 2024-08-22 A | PG-10881 | 100% |
| PG-10883 |  | Formwork | 4d | 2024-08-22 A | 2024-08-27 A | PG-10882 FF+4d | 100% |
| PG-10884 |  | Concrete | 3.67d | 2024-08-26 A | 2024-08-30 A | PG-10883 FF+3d | 100% |
|  | 1.3.1.2.2.6.2 | **Slab, Beams & Staircase** |  | 2024-08-30 | 2024-09-10 |  |  |
| PG-10885 |  | Formwork | 3d | 2024-08-30 A | 2024-09-03 A | PG-10884 | 100% |
| PG-10886 |  | Reinforcement | 3d | 2024-09-04 A | 2024-09-07 A | PG-10885 FF+4d | 100% |
| PG-10887 |  | Concrete | 1d | 2024-09-09 A | 2024-09-10 A | PG-10886 FS+1d | 100% |
|  | 1.3.1.2.2.7 | **Floor 04** |  | 2024-09-10 | 2024-09-30 |  |  |
|  | 1.3.1.2.2.7.1 | **Columns / shear walls** |  | 2024-09-10 | 2024-09-19 |  |  |
| PG-10888 |  | Reinforcement | 4d | 2024-09-10 A | 2024-09-14 A | PG-10887 | 100% |
| PG-10889 |  | Formwork | 4d | 2024-09-14 A | 2024-09-19 A | PG-10888 FF+4d | 100% |
|  | 1.3.1.2.2.7.2 | **Slab, Beams & Staircase** |  | 2024-09-20 | 2024-09-30 |  |  |
| PG-10890 |  | Formwork | 3d | 2024-09-20 A | 2024-09-24 A | PG-10889 FF+4d | 100% |
| PG-10891 |  | Reinforcement | 3d | 2024-09-25 A | 2024-09-28 A | PG-10890 FF+4d | 100% |
| PG-10892 |  | Concrete | 1d | 2024-09-28 A | 2024-09-30 A | PG-10891 | 100% |
|  | 1.3.1.2.2.8 | **Floor 05** |  | 2024-09-30 | 2024-10-21 |  |  |
|  | 1.3.1.2.2.8.1 | **Columns / shear walls** |  | 2024-09-30 | 2024-10-10 |  |  |
| PG-10893 |  | Reinforcement | 4d | 2024-09-30 A | 2024-10-05 A | PG-10892 | 100% |
| PG-10894 |  | Formwork | 4d | 2024-10-05 A | 2024-10-10 A | PG-10893 FF+4d | 100% |
|  | 1.3.1.2.2.8.2 | **Slab, Beams & Staircase** |  | 2024-10-11 | 2024-10-21 |  |  |
| PG-10895 |  | Formwork | 3d | 2024-10-11 A | 2024-10-15 A | PG-10894 FF+4d | 100% |
| PG-10896 |  | Reinforcement | 3d | 2024-10-16 A | 2024-10-19 A | PG-10895 FF+4d | 100% |
| PG-10897 |  | Concrete | 1d | 2024-10-19 A | 2024-10-21 A | PG-10896 | 100% |
|  | 1.3.1.2.2.9 | **Floor 06** |  | 2024-10-21 | 2024-11-06 |  |  |
|  | 1.3.1.2.2.9.1 | **Columns / shear walls** |  | 2024-10-21 | 2024-10-30 |  |  |
| PG-10898 |  | Reinforcement | 4d | 2024-10-21 A | 2024-10-25 A | PG-10897 | 100% |
| PG-10899 |  | Formwork | 4d | 2024-10-25 A | 2024-10-30 A | PG-10898 FF+4d | 100% |
|  | 1.3.1.2.2.9.2 | **Slab, Beams & Staircase** |  | 2024-10-29 | 2024-11-06 |  |  |
| PG-10900 |  | Formwork | 3d | 2024-10-29 A | 2024-11-02 A | PG-10899 FF+2d | 100% |
| PG-10901 |  | Reinforcement | 3d | 2024-10-31 A | 2024-11-05 A | PG-10900 FF+2d | 100% |
| PG-10902 |  | Concrete | 1d | 2024-11-05 A | 2024-11-06 A | PG-10901 | 100% |
|  | 1.3.1.2.2.10 | **Floor 07** |  | 2024-11-06 | 2024-11-22 |  |  |
|  | 1.3.1.2.2.10.1 | **Columns / shear walls** |  | 2024-11-06 | 2024-11-16 |  |  |
| PG-10903 |  | Reinforcement | 4d | 2024-11-06 A | 2024-11-11 A | PG-10902 | 100% |
| PG-10904 |  | Formwork | 4d | 2024-11-11 A | 2024-11-16 A | PG-10903 FF+4d | 100% |
|  | 1.3.1.2.2.10.2 | **Slab, Beams & Staircase** |  | 2024-11-15 | 2024-11-22 |  |  |
| PG-10905 |  | Formwork | 3d | 2024-11-15 A | 2024-11-19 A | PG-10904 FF+2d | 100% |
| PG-10906 |  | Reinforcement | 3d | 2024-11-18 A | 2024-11-21 A | PG-10905 FF+2d | 100% |
| PG-10907 |  | Concrete | 1d | 2024-11-21 A | 2024-11-22 A | PG-10906 | 100% |
|  | 1.3.1.2.2.11 | **Floor 08** |  | 2024-11-22 | 2024-12-07 |  |  |
|  | 1.3.1.2.2.11.1 | **Columns / shear walls** |  | 2024-11-22 | 2024-12-02 |  |  |
| PG-10908 |  | Reinforcement | 4d | 2024-11-22 A | 2024-11-27 A | PG-10907 | 100% |
| PG-10909 |  | Formwork | 4d | 2024-11-27 A | 2024-12-02 A | PG-10908 FF+4d | 100% |
|  | 1.3.1.2.2.11.2 | **Slab, Beams & Staircase** |  | 2024-11-30 | 2024-12-07 |  |  |
| PG-10910 |  | Formwork | 3d | 2024-11-30 A | 2024-12-04 A | PG-10909 FF+2d | 100% |
| PG-10911 |  | Reinforcement | 3d | 2024-12-03 A | 2024-12-06 A | PG-10910 FF+2d | 100% |

| ID | WBS | Task | Duration | Start | Finish | Predecessors | Complete |
| --- | --- | --- | --- | --- | --- | --- | --- |
| PG-10912 |  | Concrete | 1d | 2024-12-06 A | 2024-12-07 A | PG-10911 | 100% |
|  | 1.3.1.2.2.12 | **Floor 09** |  | 2024-12-07 | 2024-12-23 |  |  |
|  | 1.3.1.2.2.12.1 | **Columns / shear walls** |  | 2024-12-07 | 2024-12-17 |  |  |
| PG-10913 |  | Reinforcement | 4d | 2024-12-07 A | 2024-12-12 A | PG-10912 | 100% |
| PG-10914 |  | Formwork | 4d | 2024-12-12 A | 2024-12-17 A | PG-10913 FF+4d | 100% |
|  | 1.3.1.2.2.12.2 | **Slab, Beams & Staircase** |  | 2024-12-16 | 2024-12-23 |  |  |
| PG-10915 |  | Formwork | 3d | 2024-12-16 A | 2024-12-19 A | PG-10914 FF+2d | 100% |
| PG-10916 |  | Reinforcement | 3d | 2024-12-18 A | 2024-12-21 A | PG-10915 FF+2d | 100% |
| PG-10917 |  | Concrete | 1d | 2024-12-21 A | 2024-12-23 A | PG-10916 | 100% |
|  | 1.3.1.2.2.13 | **Floor 10** |  | 2024-12-23 | 2025-01-07 |  |  |
|  | 1.3.1.2.2.13.1 | **Columns / shear walls** |  | 2024-12-23 | 2025-01-01 |  |  |
| PG-10918 |  | Reinforcement | 4d | 2024-12-23 A | 2024-12-27 A | PG-10917 | 100% |
| PG-10919 |  | Formwork | 4d | 2024-12-27 A | 2025-01-01 A | PG-10918 FF+4d | 100% |
|  | 1.3.1.2.2.13.2 | **Slab, Beams & Staircase** |  | 2024-12-31 | 2025-01-07 |  |  |
| PG-10920 |  | Formwork | 3d | 2024-12-31 A | 2025-01-03 A | PG-10919 FF+2d | 100% |
| PG-10921 |  | Reinforcement | 3d | 2025-01-02 A | 2025-01-06 A | PG-10920 FF+2d | 100% |
| PG-10922 |  | Concrete | 1d | 2025-01-06 A | 2025-01-07 A | PG-10921 | 100% |
|  | 1.3.1.2.2.14 | **Floor 11** |  | 2025-01-07 | 2025-01-23 |  |  |
|  | 1.3.1.2.2.14.1 | **Columns / shear walls** |  | 2025-01-07 | 2025-01-17 |  |  |
| PG-10923 |  | Reinforcement | 4d | 2025-01-07 A | 2025-01-11 A | PG-10922 | 100% |
| PG-10924 |  | Formwork | 4d | 2025-01-11 A | 2025-01-17 A | PG-10923 FF+4d | 100% |
|  | 1.3.1.2.2.14.2 | **Slab, Beams & Staircase** |  | 2025-01-16 | 2025-01-23 |  |  |
| PG-10925 |  | Formwork | 3d | 2025-01-16 A | 2025-01-20 A | PG-10924 FF+2d | 100% |
| PG-10926 |  | Reinforcement | 3d | 2025-01-18 A | 2025-01-22 A | PG-10925 FF+2d | 100% |
| PG-10927 |  | Concrete | 1d | 2025-01-22 A | 2025-01-23 A | PG-10926 | 100% |
|  | 1.3.1.2.2.15 | **Floor 12** |  | 2025-01-23 | 2025-02-07 |  |  |
|  | 1.3.1.2.2.15.1 | **Columns / shear walls** |  | 2025-01-23 | 2025-02-01 |  |  |
| PG-10928 |  | Reinforcement | 4d | 2025-01-23 A | 2025-01-28 A | PG-10927 | 100% |
| PG-10929 |  | Formwork | 4d | 2025-01-28 A | 2025-02-01 A | PG-10928 FF+4d | 100% |
|  | 1.3.1.2.2.15.2 | **Slab, Beams & Staircase** |  | 2025-01-31 | 2025-02-07 |  |  |
| PG-10930 |  | Formwork | 3d | 2025-01-31 A | 2025-02-04 A | PG-10929 FF+2d | 100% |
| PG-10931 |  | Reinforcement | 3d | 2025-02-03 A | 2025-02-06 A | PG-10930 FF+2d | 100% |
| PG-10932 |  | Concrete | 1d | 2025-02-06 A | 2025-02-07 A | PG-10931 | 100% |
|  | 1.3.1.2.2.16 | **Floor 13** |  | 2025-02-07 | 2025-02-22 |  |  |
|  | 1.3.1.2.2.16.1 | **Columns / shear walls** |  | 2025-02-07 | 2025-02-17 |  |  |
| PG-10933 |  | Reinforcement | 4d | 2025-02-07 A | 2025-02-12 A | PG-10932 | 100% |
| PG-10934 |  | Formwork | 4d | 2025-02-12 A | 2025-02-17 A | PG-10933 FF+4d | 100% |
|  | 1.3.1.2.2.16.2 | **Slab, Beams & Staircase** |  | 2025-02-15 | 2025-02-22 |  |  |
| PG-10935 |  | Formwork | 3d | 2025-02-15 A | 2025-02-19 A | PG-10934 FF+2d | 100% |
| PG-10936 |  | Reinforcement | 3d | 2025-02-18 A | 2025-02-21 A | PG-10935 FF+2d | 100% |
| PG-10937 |  | Concrete | 1d | 2025-02-21 A | 2025-02-22 A | PG-10936 | 100% |
|  | 1.3.1.2.2.17 | **Floor 14** |  | 2025-02-22 | 2025-03-11 |  |  |
|  | 1.3.1.2.2.17.1 | **Columns / shear walls** |  | 2025-02-22 | 2025-03-05 |  |  |
| PG-10938 |  | Reinforcement | 4d | 2025-02-22 A | 2025-02-27 A | PG-10937 | 100% |
| PG-10939 |  | Formwork | 4d | 2025-02-27 A | 2025-03-05 A | PG-10938 FF+4d | 100% |
|  | 1.3.1.2.2.17.2 | **Slab, Beams & Staircase** |  | 2025-03-04 | 2025-03-11 |  |  |
| PG-10940 |  | Formwork | 3d | 2025-03-04 A | 2025-03-07 A | PG-10939 FF+2d | 100% |
| PG-10941 |  | Reinforcement | 3d | 2025-03-06 A | 2025-03-10 A | PG-10940 FF+2d | 100% |
| PG-10942 |  | Concrete | 1d | 2025-03-10 A | 2025-03-11 A | PG-10941 | 100% |
|  | 1.3.1.2.2.18 | **Floor 15** |  | 2025-03-11 | 2025-03-27 |  |  |
|  | 1.3.1.2.2.18.1 | **Columns / shear walls** |  | 2025-03-11 | 2025-03-20 |  |  |
| PG-10943 |  | Reinforcement | 4d | 2025-03-11 A | 2025-03-15 A | PG-10942 | 100% |
| PG-10944 |  | Formwork | 4d | 2025-03-15 A | 2025-03-20 A | PG-10943 FF+4d | 100% |
|  | 1.3.1.2.2.18.2 | **Slab, Beams & Staircase** |  | 2025-03-19 | 2025-03-27 |  |  |
| PG-10945 |  | Formwork | 3d | 2025-03-19 A | 2025-03-22 A | PG-10944 FF+2d | 100% |
| PG-10946 |  | Reinforcement | 3d | 2025-03-21 A | 2025-03-26 A | PG-10945 FF+2d | 100% |
| PG-10947 |  | Concrete | 1d | 2025-03-26 A | 2025-03-27 A | PG-10946 | 100% |
|  | 1.3.1.2.2.19 | **Floor 16** |  | 2025-03-27 | 2025-04-09 |  |  |
|  | 1.3.1.2.2.19.1 | **Columns / shear walls** |  | 2025-03-27 | 2025-04-03 |  |  |
| PG-10948 |  | Reinforcement | 4d | 2025-03-27 A | 2025-04-01 A | PG-10947 | 100% |
| PG-10949 |  | Formwork | 4d | 2025-03-29 A | 2025-04-03 A | PG-10948 FF+2d | 100% |
|  | 1.3.1.2.2.19.2 | **Slab, Beams & Staircase** |  | 2025-04-02 | 2025-04-09 |  |  |
| PG-10950 |  | Formwork | 3d | 2025-04-02 A | 2025-04-05 A | PG-10949 FF+2d | 100% |
| PG-10951 |  | Reinforcement | 3d | 2025-04-04 A | 2025-04-08 A | PG-10950 FF+2d | 100% |
| PG-10952 |  | Concrete | 1d | 2025-04-08 A | 2025-04-09 A | PG-10951 | 100% |
|  | 1.3.1.2.2.20 | **Floor 17** |  | 2025-04-09 | 2025-04-22 |  |  |
|  | 1.3.1.2.2.20.1 | **Columns / shear walls** |  | 2025-04-09 | 2025-04-16 |  |  |
| PG-10953 |  | Reinforcement | 4d | 2025-04-09 A | 2025-04-14 A | PG-10952 | 100% |
| PG-10954 |  | Formwork | 4d | 2025-04-11 A | 2025-04-16 A | PG-10953 FF+2d | 100% |
|  | 1.3.1.2.2.20.2 | **Slab, Beams & Staircase** |  | 2025-04-15 | 2025-04-22 |  |  |

| ID | WBS | Task | Duration | Start | Finish | Predecessors | Complete | Total float |
| --- | --- | --- | --- | --- | --- | --- | --- | --- |
| PG-10955 |  | Formwork | 3d | 2025-04-15 A | 2025-04-18 A | PG-10954 FF+2d | 100% |  |
| PG-10956 |  | Reinforcement | 3d | 2025-04-17 A | 2025-04-21 A | PG-10955 FF+2d | 100% |  |
| PG-10957 |  | Concrete | 1d | 2025-04-21 A | 2025-04-22 A | PG-10956 | 100% |  |
|  | 1.3.1.2.2.21 | **Floor 18** |  | 2025-04-22 | 2025-05-06 |  |  |  |
|  | 1.3.1.2.2.21.1 | **Columns / shear walls** |  | 2025-04-22 | 2025-04-29 |  |  |  |
| PG-10958 |  | Reinforcement | 4d | 2025-04-22 A | 2025-04-26 A | PG-10957 | 100% |  |
| PG-10959 |  | Formwork | 4d | 2025-04-24 A | 2025-04-29 A | PG-10958 FF+2d | 100% |  |
|  | 1.3.1.2.2.21.2 | **Slab, Beams & Staircase** |  | 2025-04-28 | 2025-05-06 |  |  |  |
| PG-10960 |  | Formwork | 3d | 2025-04-28 A | 2025-05-02 A | PG-10959 FF+2d | 100% |  |
| PG-10961 |  | Reinforcement | 3d | 2025-05-01 A | 2025-05-05 A | PG-10960 FF+2d | 100% |  |
| PG-10962 |  | Concrete | 1d | 2025-05-05 A | 2025-05-06 A | PG-10961 | 100% |  |
|  | 1.3.1.2.2.22 | **Floor 19** |  | 2025-05-06 | 2025-05-17 |  |  |  |
|  | 1.3.1.2.2.22.1 | **Columns / shear walls** |  | 2025-05-06 | 2025-05-12 |  |  |  |
| PG-10963 |  | Reinforcement | 4d | 2025-05-06 A | 2025-05-09 | PG-10962 | 81% | 16.49d |
| PG-10964 |  | Formwork | 4d | 2025-05-08 A | 2025-05-12 | PG-10963 FF+2d | 29% | 16.4d |
|  | 1.3.1.2.2.22.2 | **Slab, Beams & Staircase** |  | 2025-05-10 | 2025-05-17 |  |  |  |
| PG-10965 |  | Formwork | 3d | 2025-05-10 | 2025-05-14 | PG-10964 FF+2d |  | 16.4d |
| PG-10966 |  | Reinforcement | 3d | 2025-05-13 | 2025-05-16 | PG-10965 FF+2d |  | 16.4d |
| PG-10967 |  | Concrete | 1d | 2025-05-16 | 2025-05-17 | PG-10966 |  | 16.4d |
|  | 1.3.1.2.2.23 | **Floor 20** |  | 2025-05-17 | 2025-05-30 |  |  |  |
|  | 1.3.1.2.2.23.1 | **Columns / shear walls** |  | 2025-05-17 | 2025-05-24 |  |  |  |
| PG-10968 |  | Reinforcement | 4d | 2025-05-17 | 2025-05-22 | PG-10967 |  | 16.4d |
| PG-10969 |  | Formwork | 4d | 2025-05-20 | 2025-05-24 | PG-10968 FF+2d |  | 16.4d |
|  | 1.3.1.2.2.23.2 | **Slab, Beams & Staircase** |  | 2025-05-23 | 2025-05-30 |  |  |  |
| PG-10970 |  | Formwork | 3d | 2025-05-23 | 2025-05-27 | PG-10969 FF+2d |  | 16.4d |
| PG-10971 |  | Reinforcement | 3d | 2025-05-26 | 2025-05-29 | PG-10970 FF+2d |  | 16.4d |
| PG-10972 |  | Concrete | 1d | 2025-05-29 | 2025-05-30 | PG-10971 |  | 16.4d |
|  | 1.3.1.2.2.24 | **Floor 21** |  | 2025-05-30 | 2025-06-12 |  |  |  |
|  | 1.3.1.2.2.24.1 | **Columns / shear walls** |  | 2025-05-30 | 2025-06-06 |  |  |  |
| PG-10973 |  | Reinforcement | 4d | 2025-05-30 | 2025-06-04 | PG-10972 |  | 16.4d |
| PG-10974 |  | Formwork | 4d | 2025-06-02 | 2025-06-06 | PG-10973 FF+2d |  | 16.4d |
|  | 1.3.1.2.2.24.2 | **Slab, Beams & Staircase** |  | 2025-06-05 | 2025-06-12 |  |  |  |
| PG-10975 |  | Formwork | 3d | 2025-06-05 | 2025-06-09 | PG-10974 FF+2d |  | 16.4d |
| PG-10976 |  | Reinforcement | 3d | 2025-06-07 | 2025-06-11 | PG-10975 FF+2d |  | 16.4d |
| PG-10977 |  | Concrete | 1d | 2025-06-11 | 2025-06-12 | PG-10976 |  | 16.4d |
|  | 1.3.1.2.2.25 | **Floor 22** |  | 2025-06-12 | 2025-06-25 |  |  |  |
|  | 1.3.1.2.2.25.1 | **Columns / shear walls** |  | 2025-06-12 | 2025-06-19 |  |  |  |
| PG-10978 |  | Reinforcement | 4d | 2025-06-12 | 2025-06-17 | PG-10977 |  | 16.4d |
| PG-10979 |  | Formwork | 4d | 2025-06-14 | 2025-06-19 | PG-10978 FF+2d |  | 16.4d |
|  | 1.3.1.2.2.25.2 | **Slab, Beams & Staircase** |  | 2025-06-18 | 2025-06-25 |  |  |  |
| PG-10980 |  | Formwork | 3d | 2025-06-18 | 2025-06-21 | PG-10979 FF+2d |  | 16.4d |
| PG-10981 |  | Reinforcement | 3d | 2025-06-20 | 2025-06-24 | PG-10980 FF+2d |  | 16.4d |
| PG-10982 |  | Concrete | 1d | 2025-06-24 | 2025-06-25 | PG-10981 |  | 16.4d |
|  | 1.3.1.2.2.26 | **Floor 23** |  | 2025-06-25 | 2025-07-08 |  |  |  |
|  | 1.3.1.2.2.26.1 | **Columns / shear walls** |  | 2025-06-25 | 2025-07-02 |  |  |  |
| PG-10983 |  | Reinforcement | 4d | 2025-06-25 | 2025-06-30 | PG-10982 |  | 16.4d |
| PG-10984 |  | Formwork | 4d | 2025-06-27 | 2025-07-02 | PG-10983 FF+2d |  | 16.4d |
|  | 1.3.1.2.2.26.2 | **Slab, Beams & Staircase** |  | 2025-07-01 | 2025-07-08 |  |  |  |
| PG-10985 |  | Formwork | 3d | 2025-07-01 | 2025-07-04 | PG-10984 FF+2d |  | 16.4d |
| PG-10986 |  | Reinforcement | 3d | 2025-07-03 | 2025-07-07 | PG-10985 FF+2d |  | 16.4d |
| PG-10987 |  | Concrete | 1d | 2025-07-07 | 2025-07-08 | PG-10986 |  | 16.4d |
|  | 1.3.1.2.2.27 | **Floor 24** |  | 2025-07-08 | 2025-07-21 |  |  |  |
|  | 1.3.1.2.2.27.1 | **Columns / shear walls** |  | 2025-07-08 | 2025-07-15 |  |  |  |
| PG-10988 |  | Reinforcement | 4d | 2025-07-08 | 2025-07-12 | PG-10987 |  | 16.4d |
| PG-10989 |  | Formwork | 4d | 2025-07-10 | 2025-07-15 | PG-10988 FF+2d |  | 16.4d |
|  | 1.3.1.2.2.27.2 | **Slab, Beams & Staircase** |  | 2025-07-14 | 2025-07-21 |  |  |  |
| PG-10990 |  | Formwork | 3d | 2025-07-14 | 2025-07-17 | PG-10989 FF+2d |  | 16.4d |
| PG-10991 |  | Reinforcement | 3d | 2025-07-16 | 2025-07-19 | PG-10990 FF+2d |  | 16.4d |
| PG-10992 |  | Concrete | 1d | 2025-07-19 | 2025-07-21 | PG-10991 |  | 16.4d |
|  | 1.3.1.2.2.28 | **Floor 25** |  | 2025-07-21 | 2025-08-02 |  |  |  |
|  | 1.3.1.2.2.28.1 | **Columns / shear walls** |  | 2025-07-21 | 2025-07-28 |  |  |  |
| PG-10993 |  | Reinforcement | 4d | 2025-07-21 | 2025-07-25 | PG-10992 |  | 16.4d |
| PG-10994 |  | Formwork | 4d | 2025-07-23 | 2025-07-28 | PG-10993 FF+2d |  | 16.4d |
|  | 1.3.1.2.2.28.2 | **Slab, Beams & Staircase** |  | 2025-07-26 | 2025-08-02 |  |  |  |
| PG-10995 |  | Formwork | 3d | 2025-07-26 | 2025-07-30 | PG-10994 FF+2d |  | 16.4d |
| PG-10996 |  | Reinforcement | 3d | 2025-07-29 | 2025-08-01 | PG-10995 FF+2d |  | 16.4d |
| PG-10997 |  | Concrete | 1d | 2025-08-01 | 2025-08-02 | PG-10996 |  | 16.4d |
|  | 1.3.1.2.2.29 | **Floor 26** |  | 2025-08-02 | 2025-08-16 |  |  |  |
|  | 1.3.1.2.2.29.1 | **Columns / shear walls** |  | 2025-08-02 | 2025-08-09 |  |  |  |
| PG-10998 |  | Reinforcement | 4d | 2025-08-02 | 2025-08-07 | PG-10997 |  | 16.4d |

| ID | WBS | Task | Duration | Start | Finish | Predecessors | Complete | Total float |
| --- | --- | --- | --- | --- | --- | --- | --- | --- |
| PG-10999 |  | Formwork | 4d | 2025-08-05 | 2025-08-09 | PG-10998 FF+2d |  | 16.4d |
|  | 1.3.1.2.2.29.2 | **Slab, Beams & Staircase** |  | 2025-08-08 | 2025-08-16 |  |  |  |
| PG-11000 |  | Formwork | 3d | 2025-08-08 | 2025-08-12 | PG-10999 FF+2d |  | 16.4d |
| PG-11001 |  | Reinforcement | 3d | 2025-08-11 | 2025-08-14 | PG-11000 FF+2d |  | 16.4d |
| PG-11002 |  | Concrete | 1d | 2025-08-14 | 2025-08-16 | PG-11001 |  | 16.4d |
|  | 1.3.1.2.2.30 | **Above Terrace Floor** |  | 2025-08-16 | 2025-09-25 |  |  |  |
|  | 1.3.1.2.2.30.1 | **Columns / shear walls/Parapet Walls** |  | 2025-08-16 | 2025-08-30 |  |  |  |
| PG-11003 |  | Reinforcement | 4d | 2025-08-16 | 2025-08-21 | PG-11002, PG-10997, PG-10992, PG-10987 |  | 121.9d |
| PG-11004 |  | Formwork | 5d | 2025-08-19 | 2025-08-25 | PG-11003 FF+3d |  | 121.9d |
| PG-11005 |  | Concrete | 4.67d | 2025-08-25 | 2025-08-30 | PG-11004 |  | 121.9d |
|  | 1.3.1.2.2.30.2 | **Slab, Beams & Staircase Head rooms, Lift headroom** |  | 2025-08-22 | 2025-09-25 |  |  |  |
| PG-11009 |  | Terrace Waterproofing and Protective finishing. | 28.67d | 2025-08-22 | 2025-09-25 | PG-11008 FF+10d |  | 214.57d |
| PG-11006 |  | Formwork | 5d | 2025-08-30 | 2025-09-05 | PG-11005 |  | 214.57d |
| PG-11007 |  | Reinforcement | 5d | 2025-09-05 | 2025-09-11 | PG-11006 FF+5d |  | 214.57d |
| PG-11008 |  | Concrete | 2d | 2025-09-11 | 2025-09-13 | PG-11007 |  | 214.57d |
|  | 1.3.1.2.3 | **MEP Internal works** |  | 2024-10-21 | 2026-02-24 |  |  |  |
|  | 1.3.1.2.3.1 | **LBF** |  | 2024-10-21 | 2025-01-04 |  |  |  |
| PG-11010 |  | Surface Drainage System (Chambers and Pipeline for Sump) | 15d | 2024-10-21 A | 2024-11-08 A | PG-10897 | 100% |  |
| PG-11011 |  | Pump fixing for collection sump | 1.67d | 2024-12-03 A | 2024-12-04 A | PG-11261 | 100% |  |
| PG-11012 |  | FPS Piping and Sprinkler Fixing works | 9.67d | 2024-12-21 A | 2025-01-02 A | PG-11011, PG-11264 FF+5d | 100% |  |
| PG-11013 |  | Electrical Conducting and Light Fixing works | 9.5d | 2024-12-25 A | 2025-01-04 A | PG-11264 FF+7d | 100% |  |
|  | 1.3.1.2.3.2 | **UBF** |  | 2024-12-16 | 2025-01-11 |  |  |  |
| PG-11014 |  | Piping for Rainwater and Soil lines in Ceiling | 20d | 2024-12-16 A | 2025-01-08 A | PG-11264 FF+10d | 100% |  |
| PG-11015 |  | FPS Piping and Sprinkler Fixing works | 9.67d | 2024-12-27 A | 2025-01-08 A | PG-11012 FF+5d | 100% |  |
| PG-11016 |  | Electrical Conducting and Light Fixing works | 8.5d | 2025-01-01 A | 2025-01-11 A | PG-11013 FF+5d | 100% |  |
|  | 1.3.1.2.3.3 | **Ground Floor** |  | 2024-10-21 | 2025-01-11 |  |  |  |
|  | 1.3.1.2.3.3.1 | **PHE Works** |  | 2024-10-21 | 2025-01-11 |  |  |  |
| PG-11017 |  | 1st Fix - Piping works | 12d | 2024-10-21 A | 2024-11-05 A | PG-10897 | 100% |  |
| PG-11018 |  | 2nd Fix - diverter fixing & Pressure testing | 10d | 2024-10-30 A | 2024-11-12 A | PG-11017 FF+6d | 100% |  |
| PG-11019 |  | Final Fix - CP & Sanitary fixtures | 9.5d | 2025-01-01 A | 2025-01-11 A | PG-11274, PG-11280 FF+6d | 100% |  |
|  | 1.3.1.2.3.3.2 | **Fire Fighting Works** |  | 2024-10-30 | 2025-01-11 |  |  |  |
| PG-11020 |  | 1st Fix - Piping and Shaft hydrant works | 11.67d | 2024-10-30 A | 2024-11-14 A | PG-11271 FF+6d | 100% |  |
| PG-11021 |  | 2nd Fix - Sprinkler fixing & Pressure testing | 9.67d | 2024-12-09 A | 2024-12-20 A | PG-11279 FF+6d | 100% |  |
| PG-11022 |  | Final Fix - Smoke & heat detectors, FHC , FAS Etc. | 9.5d | 2025-01-01 A | 2025-01-11 A | PG-11021, PG-11280 FF+6d | 100% |  |
|  | 1.3.1.2.3.3.3 | **Electrical Works** |  | 2024-10-21 | 2025-01-11 |  |  |  |
| PG-11023 |  | 1st Fix - GI wire pulling | 8d | 2024-10-21 A | 2024-10-30 A | PG-10897 | 100% |  |
| PG-11024 |  | 2nd Fix - Wiring works | 14.67d | 2024-12-02 A | 2024-12-19 A | PG-11279 FF+5d | 100% |  |
| PG-11025 |  | Final Fix - Electrical Fixtures | 5.67d | 2025-01-04 A | 2025-01-11 A | PG-11024, PG-11280 FF+6d | 100% |  |
|  | 1.3.1.2.3.4 | **Floor 1** |  | 2024-11-06 | 2025-01-29 |  |  |  |
|  | 1.3.1.2.3.4.1 | **PHE Works** |  | 2024-11-06 | 2025-01-29 |  |  |  |
| PG-11026 |  | 1st Fix - Piping works | 12d | 2024-11-06 A | 2024-11-21 A | PG-10902 | 100% |  |
| PG-11027 |  | 2nd Fix - diverter fixing & Pressure testing | 10d | 2024-11-16 A | 2024-11-28 A | PG-11026 FF+6d | 100% |  |
| PG-11028 |  | Final Fix - CP & Sanitary fixtures | 10.5d | 2025-01-16 A | 2025-01-29 A | PG-11288, PG-11294 FF+6d | 100% |  |
|  | 1.3.1.2.3.4.2 | **Fire Fighting Works** |  | 2024-11-15 | 2025-01-29 |  |  |  |
| PG-11029 |  | 1st Fix - Piping and Shaft hydrant works | 11.67d | 2024-11-15 A | 2024-11-29 A | PG-11285 FF+6d | 100% |  |
| PG-11030 |  | 2nd Fix - Sprinkler fixing & Pressure testing | 9.67d | 2024-12-25 A | 2025-01-06 A | PG-11293 FF+6d | 100% |  |
| PG-11031 |  | Final Fix - Smoke & heat detectors, FHC , FAS Etc. | 10.5d | 2025-01-16 A | 2025-01-29 A | PG-11030, PG-11294 FF+6d | 100% |  |
|  | 1.3.1.2.3.4.3 | **Electrical Works** |  | 2024-11-06 | 2025-01-28 |  |  |  |
| PG-11032 |  | 1st Fix - GI wire pulling | 8d | 2024-11-06 A | 2024-11-15 A | PG-10902 | 100% |  |
| PG-11033 |  | 2nd Fix - Wiring works | 14.67d | 2024-12-18 A | 2025-01-04 A | PG-11293 FF+5d | 100% |  |
| PG-11034 |  | Final Fix - Electrical Fixtures | 5.5d | 2025-01-22 A | 2025-01-28 A | PG-11033, PG-11294 FF+6d | 100% |  |
|  | 1.3.1.2.3.5 | **Floor 2** |  | 2024-11-22 | 2025-02-12 |  |  |  |
|  | 1.3.1.2.3.5.1 | **PHE Works** |  | 2024-11-22 | 2025-02-11 |  |  |  |
| PG-11035 |  | 1st Fix - Piping works | 12d | 2024-11-22 A | 2024-12-06 A | PG-10907 | 100% |  |
| PG-11036 |  | 2nd Fix - diverter fixing & Pressure testing | 10d | 2024-12-02 A | 2024-12-13 A | PG-11035 FF+6d | 100% |  |
| PG-11037 |  | Final Fix - CP & Sanitary fixtures | 9.5d | 2025-01-31 A | 2025-02-11 A | PG-11302, PG-11308 FF+6d | 100% |  |
|  | 1.3.1.2.3.5.2 | **Fire Fighting Works** |  | 2024-12-02 | 2025-02-12 |  |  |  |
| PG-11038 |  | 1st Fix - Piping and Shaft hydrant works | 11.67d | 2024-12-02 A | 2024-12-16 A | PG-11299 FF+6d | 100% |  |
| PG-11039 |  | 2nd Fix - Sprinkler fixing & Pressure testing | 9.67d | 2025-01-09 A | 2025-01-20 A | PG-11307 FF+6d | 100% |  |
| PG-11040 |  | Final Fix - Smoke & heat detectors, FHC , FAS Etc. | 9.5d | 2025-01-31 A | 2025-02-12 A | PG-11039, PG-11308 FF+6d | 100% |  |
|  | 1.3.1.2.3.5.3 | **Electrical Works** |  | 2024-11-22 | 2025-02-12 |  |  |  |
| PG-11041 |  | 1st Fix - GI wire pulling | 8d | 2024-11-22 A | 2024-12-02 A | PG-10907 | 100% |  |
| PG-11042 |  | 2nd Fix - Wiring works | 14.67d | 2025-01-02 A | 2025-01-20 A | PG-11307 FF+5d | 100% |  |
| PG-11043 |  | Final Fix - Electrical Fixtures | 5.5d | 2025-02-05 A | 2025-02-12 A | PG-11042, PG-11308 FF+6d | 100% |  |
|  | 1.3.1.2.3.6 | **Floor 3** |  | 2024-12-07 | 2025-03-01 |  |  |  |
|  | 1.3.1.2.3.6.1 | **PHE Works** |  | 2024-12-07 | 2025-02-28 |  |  |  |
| PG-11044 |  | 1st Fix - Piping works | 12d | 2024-12-07 A | 2024-12-21 A | PG-10912 | 100% |  |
| PG-11045 |  | 2nd Fix - diverter fixing & Pressure testing | 10d | 2024-12-17 A | 2024-12-30 A | PG-11044 FF+6d | 100% |  |
| PG-11046 |  | Final Fix - CP & Sanitary fixtures | 11.5d | 2025-02-15 A | 2025-02-28 A | PG-11316, PG-11322 FF+6d | 100% |  |
|  | 1.3.1.2.3.6.2 | **Fire Fighting Works** |  | 2024-12-17 | 2025-03-01 |  |  |  |

| ID | WBS | Task | Duration | Start | Finish | Predecessors | Complete | Total float |
| --- | --- | --- | --- | --- | --- | --- | --- | --- |
| PG-11047 |  | 1st Fix - Piping and Shaft hydrant works | 11.67d | 2024-12-17 A | 2024-12-31 A | PG-11313 FF+6d | 100% |  |
| PG-11048 |  | 2nd Fix - Sprinkler fixing & Pressure testing | 9.67d | 2025-01-24 A | 2025-02-05 A | PG-11321 FF+6d | 100% |  |
| PG-11049 |  | Final Fix - Smoke & heat detectors, FHC , FAS Etc. | 11.5d | 2025-02-15 A | 2025-03-01 A | PG-11048, PG-11322 FF+6d | 100% |  |
|  | 1.3.1.2.3.6.3 | **Electrical Works** |  | 2024-12-07 | 2025-03-01 |  |  |  |
| PG-11050 |  | 1st Fix - GI wire pulling | 8d | 2024-12-07 A | 2024-12-17 A | PG-10912 | 100% |  |
| PG-11051 |  | 2nd Fix - Wiring works | 14.67d | 2025-01-17 A | 2025-02-03 A | PG-11321 FF+5d | 100% |  |
| PG-11052 |  | Final Fix - Electrical Fixtures | 6.5d | 2025-02-21 A | 2025-03-01 A | PG-11051, PG-11322 FF+6d | 100% |  |
|  | 1.3.1.2.3.7 | **Floor 4** |  | 2024-12-23 | 2025-03-19 |  |  |  |
|  | 1.3.1.2.3.7.1 | **PHE Works** |  | 2024-12-23 | 2025-03-19 |  |  |  |
| PG-11053 |  | 1st Fix - Piping works | 12d | 2024-12-23 A | 2025-01-06 A | PG-10917 | 100% |  |
| PG-11054 |  | 2nd Fix - diverter fixing & Pressure testing | 10d | 2025-01-01 A | 2025-01-13 A | PG-11053 FF+6d | 100% |  |
| PG-11055 |  | Final Fix - CP & Sanitary fixtures | 10.5d | 2025-03-06 A | 2025-03-19 A | PG-11330, PG-11336 FF+6d | 100% |  |
|  | 1.3.1.2.3.7.2 | **Fire Fighting Works** |  | 2025-01-02 | 2025-03-19 |  |  |  |
| PG-11056 |  | 1st Fix - Piping and Shaft hydrant works | 11.67d | 2025-01-02 A | 2025-01-16 A | PG-11327 FF+6d | 100% |  |
| PG-11057 |  | 2nd Fix - Sprinkler fixing & Pressure testing | 9.67d | 2025-02-08 A | 2025-02-21 A | PG-11335 FF+6d | 100% |  |
| PG-11058 |  | Final Fix - Smoke & heat detectors, FHC , FAS Etc. | 9.5d | 2025-03-07 A | 2025-03-19 A | PG-11057, PG-11336 FF+6d | 100% |  |
|  | 1.3.1.2.3.7.3 | **Electrical Works** |  | 2024-12-23 | 2025-03-19 |  |  |  |
| PG-11059 |  | 1st Fix - GI wire pulling | 8d | 2024-12-23 A | 2025-01-01 A | PG-10917 | 100% |  |
| PG-11060 |  | 2nd Fix - Wiring works | 14.67d | 2025-02-01 A | 2025-02-20 A | PG-11335 FF+5d | 100% |  |
| PG-11061 |  | Final Fix - Electrical Fixtures | 5.5d | 2025-03-12 A | 2025-03-19 A | PG-11060, PG-11336 FF+6d | 100% |  |
|  | 1.3.1.2.3.8 | **Floor 5** |  | 2025-01-07 | 2025-03-31 |  |  |  |
|  | 1.3.1.2.3.8.1 | **PHE Works** |  | 2025-01-07 | 2025-03-31 |  |  |  |
| PG-11062 |  | 1st Fix - Piping works | 12d | 2025-01-07 A | 2025-01-22 A | PG-10922 | 100% |  |
| PG-11063 |  | 2nd Fix - diverter fixing & Pressure testing | 10d | 2025-01-17 A | 2025-01-29 A | PG-11062 FF+6d | 100% |  |
| PG-11064 |  | Final Fix - CP & Sanitary fixtures | 10.5d | 2025-03-18 A | 2025-03-31 A | PG-11344, PG-11350 FF+6d | 100% |  |
|  | 1.3.1.2.3.8.2 | **Fire Fighting Works** |  | 2025-01-16 | 2025-03-31 |  |  |  |
| PG-11065 |  | 1st Fix - Piping and Shaft hydrant works | 11.67d | 2025-01-16 A | 2025-01-30 A | PG-11341 FF+6d | 100% |  |
| PG-11066 |  | 2nd Fix - Sprinkler fixing & Pressure testing | 9.67d | 2025-02-25 A | 2025-03-08 A | PG-11349 FF+6d | 100% |  |
| PG-11067 |  | Final Fix - Smoke & heat detectors, FHC , FAS Etc. | 10.5d | 2025-03-18 A | 2025-03-31 A | PG-11066, PG-11350 FF+6d | 100% |  |
|  | 1.3.1.2.3.8.3 | **Electrical Works** |  | 2025-01-07 | 2025-03-31 |  |  |  |
| PG-11068 |  | 1st Fix - GI wire pulling | 8d | 2025-01-07 A | 2025-01-17 A | PG-10922 | 100% |  |
| PG-11069 |  | 2nd Fix - Wiring works | 14.67d | 2025-02-18 A | 2025-03-08 A | PG-11349 FF+5d | 100% |  |
| PG-11070 |  | Final Fix - Electrical Fixtures | 5.5d | 2025-03-24 A | 2025-03-31 A | PG-11069, PG-11350 FF+6d | 100% |  |
|  | 1.3.1.2.3.9 | **Floor 6** |  | 2025-01-23 | 2025-04-17 |  |  |  |
|  | 1.3.1.2.3.9.1 | **PHE Works** |  | 2025-01-23 | 2025-04-17 |  |  |  |
| PG-11071 |  | 1st Fix - Piping works | 12d | 2025-01-23 A | 2025-02-06 A | PG-10927 | 100% |  |
| PG-11072 |  | 2nd Fix - diverter fixing & Pressure testing | 10d | 2025-02-01 A | 2025-02-14 A | PG-11071 FF+6d | 100% |  |
| PG-11073 |  | Final Fix - CP & Sanitary fixtures | 11.5d | 2025-04-03 A | 2025-04-17 A | PG-11358, PG-11364 FF+6d | 100% |  |
|  | 1.3.1.2.3.9.2 | **Fire Fighting Works** |  | 2025-02-01 | 2025-04-17 |  |  |  |
| PG-11074 |  | 1st Fix - Piping and Shaft hydrant works | 12d | 2025-02-01 A | 2025-02-17 A | PG-11355 FF+6d | 100% |  |
| PG-11075 |  | 2nd Fix - Sprinkler fixing & Pressure testing | 9.67d | 2025-03-13 A | 2025-03-25 A | PG-11363 FF+6d | 100% |  |
| PG-11076 |  | Final Fix - Smoke & heat detectors, FHC , FAS Etc. | 10.5d | 2025-04-04 A | 2025-04-17 A | PG-11075, PG-11364 FF+6d | 100% |  |
|  | 1.3.1.2.3.9.3 | **Electrical Works** |  | 2025-01-23 | 2025-04-17 |  |  |  |
| PG-11077 |  | 1st Fix - GI wire pulling | 7.67d | 2025-01-23 A | 2025-01-31 A | PG-10927 | 100% |  |
| PG-11078 |  | 2nd Fix - Wiring works | 12.67d | 2025-03-08 A | 2025-03-24 A | PG-11363 FF+5d | 100% |  |
| PG-11079 |  | Final Fix - Electrical Fixtures | 5.5d | 2025-04-10 A | 2025-04-17 A | PG-11078, PG-11364 FF+6d | 100% |  |
|  | 1.3.1.2.3.10 | **Floor 7** |  | 2025-02-07 | 2025-05-01 |  |  |  |
|  | 1.3.1.2.3.10.1 | **PHE Works** |  | 2025-02-07 | 2025-05-01 |  |  |  |
| PG-11080 |  | 1st Fix - Piping works | 12d | 2025-02-07 A | 2025-02-21 A | PG-10932 | 100% |  |
| PG-11081 |  | 2nd Fix - diverter fixing & Pressure testing | 10d | 2025-02-17 A | 2025-02-28 A | PG-11080 FF+6d | 100% |  |
| PG-11082 |  | Final Fix - CP & Sanitary fixtures | 9.67d | 2025-04-19 A | 2025-05-01 A | PG-11372, PG-11378 FF+6d | 100% |  |
|  | 1.3.1.2.3.10.2 | **Fire Fighting Works** |  | 2025-02-18 | 2025-05-01 |  |  |  |
| PG-11083 |  | 1st Fix - Piping and Shaft hydrant works | 11.83d | 2025-02-18 A | 2025-03-04 A | PG-11369 FF+6d | 100% |  |
| PG-11084 |  | 2nd Fix - Sprinkler fixing & Pressure testing | 9.67d | 2025-03-27 A | 2025-04-09 A | PG-11377 FF+6d | 100% |  |
| PG-11085 |  | Final Fix - Smoke & heat detectors, FHC , FAS Etc. | 9.67d | 2025-04-19 A | 2025-05-01 A | PG-11084, PG-11378 FF+6d | 100% |  |
|  | 1.3.1.2.3.10.3 | **Electrical Works** |  | 2025-02-07 | 2025-05-01 |  |  |  |
| PG-11086 |  | 1st Fix - GI wire pulling | 7.83d | 2025-02-07 A | 2025-02-17 A | PG-10932 | 100% |  |
| PG-11087 |  | 2nd Fix - Wiring works | 14.5d | 2025-03-21 A | 2025-04-08 A | PG-11377 FF+5d | 100% |  |
| PG-11088 |  | Final Fix - Electrical Fixtures | 5.67d | 2025-04-24 A | 2025-05-01 A | PG-11087, PG-11378 FF+6d | 100% |  |
|  | 1.3.1.2.3.11 | **Floor 8** |  | 2025-02-22 | 2025-05-20 |  |  |  |
|  | 1.3.1.2.3.11.1 | **PHE Works** |  | 2025-02-22 | 2025-05-20 |  |  |  |
| PG-11089 |  | 1st Fix - Piping works | 12d | 2025-02-22 A | 2025-03-10 A | PG-10937 | 100% |  |
| PG-11090 |  | 2nd Fix - diverter fixing & Pressure testing | 10d | 2025-03-05 A | 2025-03-18 A | PG-11089 FF+6d | 100% |  |
| PG-11091 |  | Final Fix - CP & Sanitary fixtures | 10.5d | 2025-05-09 A | 2025-05-20 | PG-11386, PG-11392 FF+6d | 8% | 391.76d |
|  | 1.3.1.2.3.11.2 | **Fire Fighting Works** |  | 2025-03-04 | 2025-05-20 |  |  |  |
| PG-11092 |  | 1st Fix - Piping and Shaft hydrant works | 12d | 2025-03-04 A | 2025-03-19 A | PG-11383 FF+6d | 100% |  |
| PG-11093 |  | 2nd Fix - Sprinkler fixing & Pressure testing | 9.67d | 2025-04-14 A | 2025-04-25 A | PG-11391 FF+6d | 100% |  |
| PG-11094 |  | Final Fix - Smoke & heat detectors, FHC , FAS Etc. | 9.5d | 2025-05-09 | 2025-05-20 | PG-11093, PG-11392 FF+6d |  | 391.76d |
|  | 1.3.1.2.3.11.3 | **Electrical Works** |  | 2025-02-22 | 2025-05-20 |  |  |  |
| PG-11095 |  | 1st Fix - GI wire pulling | 7.67d | 2025-02-22 A | 2025-03-04 A | PG-10937 | 100% |  |

| ID | WBS | Task | Duration | Start | Finish | Predecessors | Complete | Total float |
| --- | --- | --- | --- | --- | --- | --- | --- | --- |
| PG-11096 |  | 2nd Fix - Wiring works | 12.67d | 2025-04-09 A | 2025-04-24 A | PG-11391 FF+5d | 100% |  |
| PG-11097 |  | Final Fix - Electrical Fixtures | 5.5d | 2025-05-14 | 2025-05-20 | PG-11096, PG-11392 FF+6d |  | 391.76d |
|  | 1.3.1.2.3.12 | **Floor 9** |  | 2025-03-11 | 2025-05-30 |  |  |  |
|  | 1.3.1.2.3.12.1 | **PHE Works** |  | 2025-03-11 | 2025-05-30 |  |  |  |
| PG-11098 |  | 1st Fix - Piping works | 12d | 2025-03-11 A | 2025-03-24 A | PG-10942 | 100% |  |
| PG-11099 |  | 2nd Fix - diverter fixing & Pressure testing | 10d | 2025-03-19 A | 2025-03-31 A | PG-11098 FF+6d | 100% |  |
| PG-11100 |  | Final Fix - CP & Sanitary fixtures | 9.33d | 2025-05-19 | 2025-05-30 | PG-11400, PG-11406 FF+6d |  | 383.21d |
|  | 1.3.1.2.3.12.2 | **Fire Fighting Works** |  | 2025-03-21 | 2025-05-30 |  |  |  |
| PG-11101 |  | 1st Fix - Piping and Shaft hydrant works | 12d | 2025-03-21 A | 2025-04-04 A | PG-11397 FF+6d | 100% |  |
| PG-11102 |  | 2nd Fix - Sprinkler fixing & Pressure testing | 9.67d | 2025-04-26 A | 2025-05-09 A | PG-11405 FF+6d | 100% |  |
| PG-11103 |  | Final Fix - Smoke & heat detectors, FHC , FAS Etc. | 9.33d | 2025-05-19 | 2025-05-30 | PG-11102, PG-11406 FF+6d |  | 383.21d |
|  | 1.3.1.2.3.12.3 | **Electrical Works** |  | 2025-03-11 | 2025-05-30 |  |  |  |
| PG-11104 |  | 1st Fix - GI wire pulling | 8.67d | 2025-03-11 A | 2025-03-21 A | PG-10942 | 100% |  |
| PG-11105 |  | 2nd Fix - Wiring works | 14.5d | 2025-04-21 A | 2025-05-09 A | PG-11405 FF+5d | 100% |  |
| PG-11106 |  | Final Fix - Electrical Fixtures | 5.5d | 2025-05-23 | 2025-05-30 | PG-11105, PG-11406 FF+6d |  | 383.21d |
|  | 1.3.1.2.3.13 | **Floor 10** |  | 2025-03-27 | 2025-06-16 |  |  |  |
|  | 1.3.1.2.3.13.1 | **PHE Works** |  | 2025-03-27 | 2025-06-16 |  |  |  |
| PG-11107 |  | 1st Fix - Piping works | 12d | 2025-03-27 A | 2025-04-10 A | PG-10947 | 100% |  |
| PG-11108 |  | 2nd Fix - diverter fixing & Pressure testing | 10d | 2025-04-05 A | 2025-04-17 A | PG-11107 FF+6d | 100% |  |
| PG-11109 |  | Final Fix - CP & Sanitary fixtures | 10.5d | 2025-06-04 | 2025-06-16 | PG-11414, PG-11420 FF+6d |  | 368.75d |
|  | 1.3.1.2.3.13.2 | **Fire Fighting Works** |  | 2025-04-05 | 2025-06-16 |  |  |  |
| PG-11110 |  | 1st Fix - Piping and Shaft hydrant works | 12d | 2025-04-05 A | 2025-04-19 A | PG-11411 FF+6d | 100% |  |
| PG-11111 |  | 2nd Fix - Sprinkler fixing & Pressure testing | 9.83d | 2025-05-14 | 2025-05-26 | PG-11419 FF+6d |  | 376.58d |
| PG-11112 |  | Final Fix - Smoke & heat detectors, FHC , FAS Etc. | 10.5d | 2025-06-04 | 2025-06-16 | PG-11111, PG-11420 FF+6d |  | 368.75d |
|  | 1.3.1.2.3.13.3 | **Electrical Works** |  | 2025-03-27 | 2025-06-16 |  |  |  |
| PG-11113 |  | 1st Fix - GI wire pulling | 7.67d | 2025-03-27 A | 2025-04-05 A | PG-10947 | 100% |  |
| PG-11114 |  | 2nd Fix - Wiring works | 12.67d | 2025-05-09 A | 2025-05-24 | PG-11419 FF+5d | 3% | 382.42d |
| PG-11115 |  | Final Fix - Electrical Fixtures | 5.67d | 2025-06-09 | 2025-06-16 | PG-11114, PG-11420 FF+6d |  | 368.75d |
|  | 1.3.1.2.3.14 | **Floor 11** |  | 2025-04-09 | 2025-06-27 |  |  |  |
|  | 1.3.1.2.3.14.1 | **PHE Works** |  | 2025-04-09 | 2025-06-27 |  |  |  |
| PG-11116 |  | 1st Fix - Piping works | 12d | 2025-04-09 A | 2025-04-23 A | PG-10952 | 100% |  |
| PG-11117 |  | 2nd Fix - diverter fixing & Pressure testing | 10d | 2025-04-18 A | 2025-04-30 A | PG-11116 FF+6d | 100% |  |
| PG-11118 |  | Final Fix - CP & Sanitary fixtures | 10.5d | 2025-06-16 | 2025-06-27 | PG-11428, PG-11434 FF+6d |  | 358.72d |
|  | 1.3.1.2.3.14.2 | **Fire Fighting Works** |  | 2025-04-18 | 2025-06-27 |  |  |  |
| PG-11119 |  | 1st Fix - Piping and Shaft hydrant works | 11.83d | 2025-04-18 A | 2025-05-02 A | PG-11425 FF+6d | 100% |  |
| PG-11120 |  | 2nd Fix - Sprinkler fixing & Pressure testing | 10d | 2025-05-26 | 2025-06-06 | PG-11433 FF+6d |  | 366.55d |
| PG-11121 |  | Final Fix - Smoke & heat detectors, FHC , FAS Etc. | 10.5d | 2025-06-16 | 2025-06-27 | PG-11120, PG-11434 FF+6d |  | 358.72d |
|  | 1.3.1.2.3.14.3 | **Electrical Works** |  | 2025-04-09 | 2025-06-27 |  |  |  |
| PG-11122 |  | 1st Fix - GI wire pulling | 7.67d | 2025-04-09 A | 2025-04-18 A | PG-10952 | 100% |  |
| PG-11123 |  | 2nd Fix - Wiring works | 12.67d | 2025-05-21 | 2025-06-05 | PG-11433 FF+5d |  | 372.38d |
| PG-11124 |  | Final Fix - Electrical Fixtures | 5.67d | 2025-06-20 | 2025-06-27 | PG-11123, PG-11434 FF+6d |  | 358.72d |
|  | 1.3.1.2.3.15 | **Floor 12** |  | 2025-04-22 | 2025-07-11 |  |  |  |
|  | 1.3.1.2.3.15.1 | **PHE Works** |  | 2025-04-22 | 2025-07-11 |  |  |  |
| PG-11125 |  | 1st Fix - Piping works | 12d | 2025-04-22 A | 2025-05-07 A | PG-10957 | 100% |  |
| PG-11126 |  | 2nd Fix - diverter fixing & Pressure testing | 10d | 2025-05-02 A | 2025-05-14 | PG-11125 FF+6d | 64% | 346.67d |
| PG-11127 |  | Final Fix - CP & Sanitary fixtures | 9.5d | 2025-07-01 | 2025-07-11 | PG-11442, PG-11448 FF+6d |  | 346.67d |
|  | 1.3.1.2.3.15.2 | **Fire Fighting Works** |  | 2025-05-03 | 2025-07-11 |  |  |  |
| PG-11128 |  | 1st Fix - Piping and Shaft hydrant works | 11.33d | 2025-05-03 A | 2025-05-15 | PG-11439 FF+6d | 60% | 394.42d |
| PG-11129 |  | 2nd Fix - Sprinkler fixing & Pressure testing | 10d | 2025-06-09 | 2025-06-20 | PG-11447 FF+6d |  | 355.67d |
| PG-11130 |  | Final Fix - Smoke & heat detectors, FHC , FAS Etc. | 9.5d | 2025-07-01 | 2025-07-11 | PG-11129, PG-11448 FF+6d |  | 346.67d |
|  | 1.3.1.2.3.15.3 | **Electrical Works** |  | 2025-04-22 | 2025-07-11 |  |  |  |
| PG-11131 |  | 1st Fix - GI wire pulling | 7.83d | 2025-04-22 A | 2025-05-01 A | PG-10957 | 100% |  |
| PG-11132 |  | 2nd Fix - Wiring works | 12.83d | 2025-06-04 | 2025-06-19 | PG-11447 FF+5d |  | 360.67d |
| PG-11133 |  | Final Fix - Electrical Fixtures | 5.5d | 2025-07-05 | 2025-07-11 | PG-11132, PG-11448 FF+6d |  | 346.67d |
|  | 1.3.1.2.3.16 | **Floor 13** |  | 2025-05-06 | 2025-07-24 |  |  |  |
|  | 1.3.1.2.3.16.1 | **PHE Works** |  | 2025-05-06 | 2025-07-24 |  |  |  |
| PG-11134 |  | 1st Fix - Piping works | 12d | 2025-05-06 A | 2025-05-19 | PG-10962 | 29% | 336.42d |
| PG-11135 |  | 2nd Fix - diverter fixing & Pressure testing | 10d | 2025-05-14 | 2025-05-26 | PG-11134 FF+6d |  | 336.42d |
| PG-11136 |  | Final Fix - CP & Sanitary fixtures | 10.5d | 2025-07-12 | 2025-07-24 | PG-11456, PG-11462 FF+6d |  | 336.42d |
|  | 1.3.1.2.3.16.2 | **Fire Fighting Works** |  | 2025-05-14 | 2025-07-24 |  |  |  |
| PG-11137 |  | 1st Fix - Piping and Shaft hydrant works | 11.67d | 2025-05-14 | 2025-05-28 | PG-11453 FF+6d |  | 383.15d |
| PG-11138 |  | 2nd Fix - Sprinkler fixing & Pressure testing | 10d | 2025-06-20 | 2025-07-02 | PG-11461 FF+6d |  | 345.42d |
| PG-11139 |  | Final Fix - Smoke & heat detectors, FHC , FAS Etc. | 10.5d | 2025-07-12 | 2025-07-24 | PG-11138, PG-11462 FF+6d |  | 336.42d |
|  | 1.3.1.2.3.16.3 | **Electrical Works** |  | 2025-05-06 | 2025-07-24 |  |  |  |
| PG-11140 |  | 1st Fix - GI wire pulling | 7.67d | 2025-05-06 A | 2025-05-14 | PG-10962 | 42% | 383.15d |
| PG-11141 |  | 2nd Fix - Wiring works | 12.83d | 2025-06-16 | 2025-07-01 | PG-11461 FF+5d |  | 351.42d |
| PG-11142 |  | Final Fix - Electrical Fixtures | 5.5d | 2025-07-18 | 2025-07-24 | PG-11141, PG-11462 FF+6d |  | 336.42d |
|  | 1.3.1.2.3.17 | **Floor 14** |  | 2025-05-17 | 2025-08-07 |  |  |  |
|  | 1.3.1.2.3.17.1 | **PHE Works** |  | 2025-05-17 | 2025-08-07 |  |  |  |
| PG-11143 |  | 1st Fix - Piping works | 12d | 2025-05-17 | 2025-05-31 | PG-10967 |  | 325.07d |

| ID | WBS | Task | Duration | Start | Finish | Predecessors | Total float |
| --- | --- | --- | --- | --- | --- | --- | --- |
| PG-11144 |  | 2nd Fix - diverter fixing & Pressure testing | 10d | 2025-05-27 | 2025-06-07 | PG-11143 FF+6d | 325.07d |
| PG-11145 |  | Final Fix - CP & Sanitary fixtures | 9.5d | 2025-07-26 | 2025-08-07 | PG-11470, PG-11476 FF+6d | 325.07d |
|  | 1.3.1.2.3.17.2 | **Fire Fighting Works** |  | 2025-05-28 | 2025-08-07 |  |  |
| PG-11146 |  | 1st Fix - Piping and Shaft hydrant works | 11.67d | 2025-05-28 | 2025-06-11 | PG-11467 FF+6d | 371.07d |
| PG-11147 |  | 2nd Fix - Sprinkler fixing & Pressure testing | 10d | 2025-07-03 | 2025-07-15 | PG-11475 FF+6d | 335.07d |
| PG-11148 |  | Final Fix - Smoke & heat detectors, FHC , FAS Etc. | 9.5d | 2025-07-26 | 2025-08-07 | PG-11147, PG-11476 FF+6d | 325.07d |
|  | 1.3.1.2.3.17.3 | **Electrical Works** |  | 2025-05-17 | 2025-08-07 |  |  |
| PG-11149 |  | 1st Fix - GI wire pulling | 8.67d | 2025-05-17 | 2025-05-28 | PG-10967 | 371.07d |
| PG-11150 |  | 2nd Fix - Wiring works | 12.83d | 2025-06-30 | 2025-07-14 | PG-11475 FF+5d | 340.07d |
| PG-11151 |  | Final Fix - Electrical Fixtures | 5.5d | 2025-07-31 | 2025-08-07 | PG-11150, PG-11476 FF+6d | 325.07d |
|  | 1.3.1.2.3.18 | **Floor 15** |  | 2025-05-30 | 2025-08-20 |  |  |
|  | 1.3.1.2.3.18.1 | **PHE Works** |  | 2025-05-30 | 2025-08-20 |  |  |
| PG-11152 |  | 1st Fix - Piping works | 12d | 2025-05-30 | 2025-06-13 | PG-10972 | 164.07d |
| PG-11153 |  | 2nd Fix - diverter fixing & Pressure testing | 10d | 2025-06-09 | 2025-06-20 | PG-11152 FF+6d | 164.07d |
| PG-11154 |  | Final Fix - CP & Sanitary fixtures | 9.5d | 2025-08-07 | 2025-08-20 | PG-11484, PG-11490 FF+6d | 315.07d |
|  | 1.3.1.2.3.18.2 | **Fire Fighting Works** |  | 2025-06-09 | 2025-08-20 |  |  |
| PG-11155 |  | 1st Fix - Piping and Shaft hydrant works | 11.67d | 2025-06-09 | 2025-06-23 | PG-11481 FF+6d | 361.73d |
| PG-11156 |  | 2nd Fix - Sprinkler fixing & Pressure testing | 10d | 2025-07-16 | 2025-07-28 | PG-11489 FF+6d | 324.07d |
| PG-11157 |  | Final Fix - Smoke & heat detectors, FHC , FAS Etc. | 9.5d | 2025-08-07 | 2025-08-20 | PG-11156, PG-11490 FF+6d | 315.07d |
|  | 1.3.1.2.3.18.3 | **Electrical Works** |  | 2025-05-30 | 2025-08-20 |  |  |
| PG-11158 |  | 1st Fix - GI wire pulling | 7.83d | 2025-05-30 | 2025-06-09 | PG-10972 | 361.73d |
| PG-11159 |  | 2nd Fix - Wiring works | 14.67d | 2025-07-10 | 2025-07-26 | PG-11489 FF+5d | 329.07d |
| PG-11160 |  | Final Fix - Electrical Fixtures | 5.5d | 2025-08-12 | 2025-08-20 | PG-11159, PG-11490 FF+6d | 315.07d |
|  | 1.3.1.2.3.19 | **Floor 16** |  | 2025-06-12 | 2025-09-01 |  |  |
|  | 1.3.1.2.3.19.1 | **PHE Works** |  | 2025-06-12 | 2025-09-01 |  |  |
| PG-11161 |  | 1st Fix - Piping works | 12d | 2025-06-12 | 2025-06-26 | PG-10977 | 304.73d |
| PG-11162 |  | 2nd Fix - diverter fixing & Pressure testing | 10d | 2025-06-21 | 2025-07-03 | PG-11161 FF+6d | 304.73d |
| PG-11163 |  | Final Fix - CP & Sanitary fixtures | 10.33d | 2025-08-20 | 2025-09-01 | PG-11498, PG-11504 FF+6d | 304.73d |
|  | 1.3.1.2.3.19.2 | **Fire Fighting Works** |  | 2025-06-21 | 2025-09-01 |  |  |
| PG-11164 |  | 1st Fix - Piping and Shaft hydrant works | 11.67d | 2025-06-21 | 2025-07-05 | PG-11495 FF+6d | 350.57d |
| PG-11165 |  | 2nd Fix - Sprinkler fixing & Pressure testing | 10d | 2025-07-29 | 2025-08-09 | PG-11503 FF+6d | 311.9d |
| PG-11166 |  | Final Fix - Smoke & heat detectors, FHC , FAS Etc. | 10.33d | 2025-08-20 | 2025-09-01 | PG-11165, PG-11504 FF+6d | 304.73d |
|  | 1.3.1.2.3.19.3 | **Electrical Works** |  | 2025-06-12 | 2025-09-01 |  |  |
| PG-11167 |  | 1st Fix - GI wire pulling | 7.83d | 2025-06-12 | 2025-06-21 | PG-10977 | 350.57d |
| PG-11168 |  | 2nd Fix - Wiring works | 13.67d | 2025-07-24 | 2025-08-08 | PG-11503 FF+5d | 317.73d |
| PG-11169 |  | Final Fix - Electrical Fixtures | 5.5d | 2025-08-25 | 2025-09-01 | PG-11168, PG-11504 FF+6d | 304.73d |
|  | 1.3.1.2.3.20 | **Floor 17** |  | 2025-06-25 | 2025-09-13 |  |  |
|  | 1.3.1.2.3.20.1 | **PHE Works** |  | 2025-06-25 | 2025-09-13 |  |  |
| PG-11170 |  | 1st Fix - Piping works | 12d | 2025-06-25 | 2025-07-09 | PG-10982 | 293.73d |
| PG-11171 |  | 2nd Fix - diverter fixing & Pressure testing | 10d | 2025-07-04 | 2025-07-16 | PG-11170 FF+6d | 293.73d |
| PG-11172 |  | Final Fix - CP & Sanitary fixtures | 10.33d | 2025-09-02 | 2025-09-13 | PG-11512, PG-11518 FF+6d | 293.73d |
|  | 1.3.1.2.3.20.2 | **Fire Fighting Works** |  | 2025-07-04 | 2025-09-13 |  |  |
| PG-11173 |  | 1st Fix - Piping and Shaft hydrant works | 11.67d | 2025-07-04 | 2025-07-18 | PG-11509 FF+6d | 339.57d |
| PG-11174 |  | 2nd Fix - Sprinkler fixing & Pressure testing | 10d | 2025-08-11 | 2025-08-23 | PG-11517 FF+6d | 300.9d |
| PG-11175 |  | Final Fix - Smoke & heat detectors, FHC , FAS Etc. | 10.33d | 2025-09-02 | 2025-09-13 | PG-11174, PG-11518 FF+6d | 293.73d |
|  | 1.3.1.2.3.20.3 | **Electrical Works** |  | 2025-06-25 | 2025-09-13 |  |  |
| PG-11176 |  | 1st Fix - GI wire pulling | 7.83d | 2025-06-25 | 2025-07-04 | PG-10982 | 339.57d |
| PG-11177 |  | 2nd Fix - Wiring works | 13.67d | 2025-08-06 | 2025-08-22 | PG-11517 FF+5d | 306.73d |
| PG-11178 |  | Final Fix - Electrical Fixtures | 5.5d | 2025-09-06 | 2025-09-13 | PG-11177, PG-11518 FF+6d | 293.73d |
|  | 1.3.1.2.3.21 | **Floor 18** |  | 2025-07-08 | 2025-09-27 |  |  |
|  | 1.3.1.2.3.21.1 | **PHE Works** |  | 2025-07-08 | 2025-09-27 |  |  |
| PG-11179 |  | 1st Fix - Piping works | 11.67d | 2025-07-08 | 2025-07-22 | PG-10987 | 281.9d |
| PG-11180 |  | 2nd Fix - diverter fixing & Pressure testing | 8.67d | 2025-07-18 | 2025-07-29 | PG-11179 FF+6d | 281.9d |
| PG-11181 |  | Final Fix - CP & Sanitary fixtures | 10.67d | 2025-09-15 | 2025-09-27 | PG-11526, PG-11532 FF+6d | 281.9d |
|  | 1.3.1.2.3.21.2 | **Fire Fighting Works** |  | 2025-07-18 | 2025-09-27 |  |  |
| PG-11182 |  | 1st Fix - Piping and Shaft hydrant works | 11.67d | 2025-07-18 | 2025-07-31 | PG-11523 FF+6d | 329.57d |
| PG-11183 |  | 2nd Fix - Sprinkler fixing & Pressure testing | 10.5d | 2025-08-25 | 2025-09-05 | PG-11531 FF+6d | 289.9d |
| PG-11184 |  | Final Fix - Smoke & heat detectors, FHC , FAS Etc. | 10.67d | 2025-09-15 | 2025-09-27 | PG-11183, PG-11532 FF+6d | 281.9d |
|  | 1.3.1.2.3.21.3 | **Electrical Works** |  | 2025-07-08 | 2025-09-27 |  |  |
| PG-11185 |  | 1st Fix - GI wire pulling | 7.83d | 2025-07-08 | 2025-07-17 | PG-10987 | 329.57d |
| PG-11186 |  | 2nd Fix - Wiring works | 15.5d | 2025-08-18 | 2025-09-04 | PG-11531 FF+5d | 295.9d |
| PG-11187 |  | Final Fix - Electrical Fixtures | 5.67d | 2025-09-20 | 2025-09-27 | PG-11186, PG-11532 FF+6d | 281.9d |
|  | 1.3.1.2.3.22 | **Floor 19** |  | 2025-07-21 | 2025-10-11 |  |  |
|  | 1.3.1.2.3.22.1 | **PHE Works** |  | 2025-07-21 | 2025-10-11 |  |  |
| PG-11188 |  | 1st Fix - Piping works | 11.67d | 2025-07-21 | 2025-08-04 | PG-10992 | 270.9d |
| PG-11189 |  | 2nd Fix - diverter fixing & Pressure testing | 8.67d | 2025-07-31 | 2025-08-11 | PG-11188 FF+6d | 270.9d |
| PG-11190 |  | Final Fix - CP & Sanitary fixtures | 10.67d | 2025-09-27 | 2025-10-11 | PG-11540, PG-11546 FF+6d | 270.9d |
|  | 1.3.1.2.3.22.2 | **Fire Fighting Works** |  | 2025-07-30 | 2025-10-11 |  |  |
| PG-11191 |  | 1st Fix - Piping and Shaft hydrant works | 12.67d | 2025-07-30 | 2025-08-13 | PG-11537 FF+6d | 318.57d |
| PG-11192 |  | 2nd Fix - Sprinkler fixing & Pressure testing | 10.5d | 2025-09-06 | 2025-09-18 | PG-11545 FF+6d | 278.9d |

| ID | WBS | Task | Duration | Start | Finish | Predecessors | Total float |
| --- | --- | --- | --- | --- | --- | --- | --- |
| PG-11193 |  | Final Fix - Smoke & heat detectors, FHC , FAS Etc. | 10.67d | 2025-09-27 | 2025-10-11 | PG-11192, PG-11546 FF+6d | 270.9d |
|  | 1.3.1.2.3.22.3 | **Electrical Works** |  | 2025-07-21 | 2025-10-11 |  |  |
| PG-11194 |  | 1st Fix - GI wire pulling | 7.83d | 2025-07-21 | 2025-07-30 | PG-10992 | 318.57d |
| PG-11195 |  | 2nd Fix - Wiring works | 15.5d | 2025-08-30 | 2025-09-17 | PG-11545 FF+5d | 284.9d |
| PG-11196 |  | Final Fix - Electrical Fixtures | 5.67d | 2025-10-04 | 2025-10-11 | PG-11195, PG-11546 FF+6d | 270.9d |
|  | 1.3.1.2.3.23 | **Floor 20** |  | 2025-08-02 | 2025-10-25 |  |  |
|  | 1.3.1.2.3.23.1 | **PHE Works** |  | 2025-08-02 | 2025-10-25 |  |  |
| PG-11197 |  | 1st Fix - Piping works | 12.67d | 2025-08-02 | 2025-08-19 | PG-10997 | 258.9d |
| PG-11198 |  | 2nd Fix - diverter fixing & Pressure testing | 8.67d | 2025-08-14 | 2025-08-26 | PG-11197 FF+6d | 258.9d |
| PG-11199 |  | Final Fix - CP & Sanitary fixtures | 10.67d | 2025-10-13 | 2025-10-25 | PG-11554, PG-11560 FF+6d | 258.9d |
|  | 1.3.1.2.3.23.2 | **Fire Fighting Works** |  | 2025-08-14 | 2025-10-25 |  |  |
| PG-11200 |  | 1st Fix - Piping and Shaft hydrant works | 11.5d | 2025-08-14 | 2025-08-28 | PG-11551 FF+6d | 306.73d |
| PG-11201 |  | 2nd Fix - Sprinkler fixing & Pressure testing | 10.5d | 2025-09-20 | 2025-10-03 | PG-11559 FF+6d | 266.9d |
| PG-11202 |  | Final Fix - Smoke & heat detectors, FHC , FAS Etc. | 10.67d | 2025-10-13 | 2025-10-25 | PG-11201, PG-11560 FF+6d | 258.9d |
|  | 1.3.1.2.3.23.3 | **Electrical Works** |  | 2025-08-02 | 2025-10-25 |  |  |
| PG-11203 |  | 1st Fix - GI wire pulling | 8.67d | 2025-08-02 | 2025-08-13 | PG-10997 | 306.73d |
| PG-11204 |  | 2nd Fix - Wiring works | 15.5d | 2025-09-13 | 2025-10-01 | PG-11559 FF+5d | 272.9d |
| PG-11205 |  | Final Fix - Electrical Fixtures | 5.67d | 2025-10-18 | 2025-10-25 | PG-11204, PG-11560 FF+6d | 258.9d |
|  | 1.3.1.2.3.24 | **Floor 21** |  | 2025-08-16 | 2025-11-07 |  |  |
|  | 1.3.1.2.3.24.1 | **PHE Works** |  | 2025-08-16 | 2025-11-07 |  |  |
| PG-11206 |  | 1st Fix - Piping works | 10.67d | 2025-08-16 | 2025-08-29 | PG-11002 | 16.4d |
| PG-11207 |  | 2nd Fix - diverter fixing & Pressure testing | 9.67d | 2025-08-25 | 2025-09-05 | PG-11206 FF+6d | 249.23d |
| PG-11208 |  | Final Fix - CP & Sanitary fixtures | 10.67d | 2025-10-24 | 2025-11-07 | PG-11568, PG-11574 FF+6d | 249.23d |
|  | 1.3.1.2.3.24.2 | **Fire Fighting Works** |  | 2025-08-25 | 2025-11-07 |  |  |
| PG-11209 |  | 1st Fix - Piping and Shaft hydrant works | 11.67d | 2025-08-25 | 2025-09-08 | PG-11565 FF+6d | 296.9d |
| PG-11210 |  | 2nd Fix - Sprinkler fixing & Pressure testing | 9.5d | 2025-10-03 | 2025-10-14 | PG-11573 FF+6d | 258.23d |
| PG-11211 |  | Final Fix - Smoke & heat detectors, FHC , FAS Etc. | 10.67d | 2025-10-24 | 2025-11-07 | PG-11210, PG-11574 FF+6d | 249.23d |
|  | 1.3.1.2.3.24.3 | **Electrical Works** |  | 2025-08-16 | 2025-10-25 |  |  |
| PG-11212 |  | 1st Fix - GI wire pulling | 6.67d | 2025-08-16 | 2025-08-25 | PG-11002 | 296.9d |
| PG-11213 |  | 2nd Fix - Wiring works | 15.5d | 2025-09-13 | 2025-10-01 | PG-11559 FF+5d | 273.23d |
| PG-11214 |  | Final Fix - Electrical Fixtures | 5.67d | 2025-10-18 | 2025-10-25 | PG-11213, PG-11560 FF+6d | 259.23d |
|  | 1.3.1.2.3.25 | **Floor 22** |  | 2025-09-06 | 2025-11-29 |  |  |
|  | 1.3.1.2.3.25.1 | **PHE Works** |  | 2025-09-06 | 2025-11-29 |  |  |
| PG-11215 |  | 1st Fix - Piping works | 11.83d | 2025-09-06 | 2025-09-20 | PG-11206 FS+7d | 125.23d |
| PG-11216 |  | 2nd Fix - diverter fixing & Pressure testing | 10.67d | 2025-09-15 | 2025-09-27 | PG-11215 FF+6d | 134.73d |
| PG-11217 |  | Final Fix - CP & Sanitary fixtures | 9.67d | 2025-11-18 | 2025-11-29 | PG-11582, PG-11588 FF+6d | 229.4d |
|  | 1.3.1.2.3.25.2 | **Fire Fighting Works** |  | 2025-09-16 | 2025-11-29 |  |  |
| PG-11218 |  | 1st Fix - Piping and Shaft hydrant works | 11.5d | 2025-09-16 | 2025-09-30 | PG-11579 FF+6d | 146.9d |
| PG-11219 |  | 2nd Fix - Sprinkler fixing & Pressure testing | 10.5d | 2025-10-23 | 2025-11-06 | PG-11587 FF+6d | 239.4d |
| PG-11220 |  | Final Fix - Smoke & heat detectors, FHC , FAS Etc. | 9.67d | 2025-11-18 | 2025-11-29 | PG-11219, PG-11588 FF+6d | 229.4d |
|  | 1.3.1.2.3.25.3 | **Electrical Works** |  | 2025-09-06 | 2025-11-29 |  |  |
| PG-11221 |  | 1st Fix - GI wire pulling | 7.67d | 2025-09-06 | 2025-09-16 | PG-11206 FS+7d | 16.4d |
| PG-11222 |  | 2nd Fix - Wiring works | 15.5d | 2025-10-16 | 2025-11-05 | PG-11587 FF+5d | 244.4d |
| PG-11223 |  | Final Fix - Electrical Fixtures | 5.67d | 2025-11-22 | 2025-11-29 | PG-11222, PG-11588 FF+6d | 229.4d |
|  | 1.3.1.2.3.26 | **Floor 23** |  | 2025-09-29 | 2025-12-19 |  |  |
|  | 1.3.1.2.3.26.1 | **PHE Works** |  | 2025-09-29 | 2025-12-19 |  |  |
| PG-11224 |  | 1st Fix - Piping works | 10.67d | 2025-09-29 | 2025-10-13 | PG-11215 FS+7d | 125.23d |
| PG-11225 |  | 2nd Fix - diverter fixing & Pressure testing | 8.67d | 2025-10-09 | 2025-10-20 | PG-11224 FF+6d | 211.4d |
| PG-11226 |  | Final Fix - CP & Sanitary fixtures | 9.67d | 2025-12-09 | 2025-12-19 | PG-11596, PG-11602 FF+6d | 211.4d |
|  | 1.3.1.2.3.26.2 | **Fire Fighting Works** |  | 2025-10-09 | 2025-12-19 |  |  |
| PG-11227 |  | 1st Fix - Piping and Shaft hydrant works | 11.67d | 2025-10-09 | 2025-10-23 | PG-11593 FF+6d | 258.23d |
| PG-11228 |  | 2nd Fix - Sprinkler fixing & Pressure testing | 9.33d | 2025-11-15 | 2025-11-27 | PG-11601 FF+6d | 221.4d |
| PG-11229 |  | Final Fix - Smoke & heat detectors, FHC , FAS Etc. | 9.67d | 2025-12-09 | 2025-12-19 | PG-11228, PG-11602 FF+6d | 211.4d |
|  | 1.3.1.2.3.26.3 | **Electrical Works** |  | 2025-09-29 | 2025-12-19 |  |  |
| PG-11230 |  | 1st Fix - GI wire pulling | 7.67d | 2025-09-29 | 2025-10-09 | PG-11215 FS+7d | 258.23d |
| PG-11231 |  | 2nd Fix - Wiring works | 14.33d | 2025-11-08 | 2025-11-26 | PG-11601 FF+5d | 226.4d |
| PG-11232 |  | Final Fix - Electrical Fixtures | 5.67d | 2025-12-13 | 2025-12-19 | PG-11231, PG-11602 FF+6d | 211.4d |
|  | 1.3.1.2.3.27 | **Floor 24** |  | 2025-10-21 | 2026-01-09 |  |  |
|  | 1.3.1.2.3.27.1 | **PHE Works** |  | 2025-10-21 | 2026-01-09 |  |  |
| PG-11233 |  | 1st Fix - Piping works | 11.67d | 2025-10-21 | 2025-11-04 | PG-11224 FS+7d | 125.23d |
| PG-11234 |  | 2nd Fix - diverter fixing & Pressure testing | 9.67d | 2025-10-30 | 2025-11-11 | PG-11233 FF+6d | 192.23d |
| PG-11235 |  | Final Fix - CP & Sanitary fixtures | 9.67d | 2025-12-29 | 2026-01-09 | PG-11610, PG-11616 FF+6d | 192.23d |
|  | 1.3.1.2.3.27.2 | **Fire Fighting Works** |  | 2025-10-30 | 2026-01-09 |  |  |
| PG-11236 |  | 1st Fix - Piping and Shaft hydrant works | 11.33d | 2025-10-30 | 2025-11-13 | PG-11607 FF+6d | 240.9d |
| PG-11237 |  | 2nd Fix - Sprinkler fixing & Pressure testing | 9.67d | 2025-12-08 | 2025-12-18 | PG-11615 FF+6d | 200.73d |
| PG-11238 |  | Final Fix - Smoke & heat detectors, FHC , FAS Etc. | 9.67d | 2025-12-29 | 2026-01-09 | PG-11237, PG-11616 FF+6d | 192.23d |
|  | 1.3.1.2.3.27.3 | **Electrical Works** |  | 2025-10-21 | 2026-01-09 |  |  |
| PG-11239 |  | 1st Fix - GI wire pulling | 7.67d | 2025-10-21 | 2025-10-29 | PG-11224 FS+7d | 240.9d |
| PG-11240 |  | 2nd Fix - Wiring works | 14.67d | 2025-12-01 | 2025-12-17 | PG-11615 FF+5d | 206.23d |
| PG-11241 |  | Final Fix - Electrical Fixtures | 5.5d | 2026-01-02 | 2026-01-09 | PG-11240, PG-11616 FF+6d | 192.23d |

| ID | WBS | Task | Duration | Start | Finish | Predecessors | Complete | Total float |
| --- | --- | --- | --- | --- | --- | --- | --- | --- |
|  | 1.3.1.2.3.28 | **Floor 25** |  | 2025-11-12 | 2026-02-03 |  |  |  |
|  | 1.3.1.2.3.28.1 | **PHE Works** |  | 2025-11-12 | 2026-02-03 |  |  |  |
| PG-11242 |  | 1st Fix - Piping works | 11.67d | 2025-11-12 | 2025-11-26 | PG-11233 FS+7d |  | 125.23d |
| PG-11243 |  | 2nd Fix - diverter fixing & Pressure testing | 9.67d | 2025-11-21 | 2025-12-03 | PG-11242 FF+6d |  | 172.73d |
| PG-11244 |  | Final Fix - CP & Sanitary fixtures | 10.33d | 2026-01-21 | 2026-02-03 | PG-11624, PG-11630 FF+6d |  | 172.73d |
|  | 1.3.1.2.3.28.2 | **Fire Fighting Works** |  | 2025-11-22 | 2026-02-03 |  |  |  |
| PG-11245 |  | 1st Fix - Piping and Shaft hydrant works | 11.33d | 2025-11-22 | 2025-12-05 | PG-11621 FF+6d |  | 220.4d |
| PG-11246 |  | 2nd Fix - Sprinkler fixing & Pressure testing | 9.33d | 2025-12-30 | 2026-01-09 | PG-11629 FF+6d |  | 182.73d |
| PG-11247 |  | Final Fix - Smoke & heat detectors, FHC , FAS Etc. | 10.33d | 2026-01-21 | 2026-02-03 | PG-11246, PG-11630 FF+6d |  | 172.73d |
|  | 1.3.1.2.3.28.3 | **Electrical Works** |  | 2025-11-12 | 2026-02-03 |  |  |  |
| PG-11248 |  | 1st Fix - GI wire pulling | 7.67d | 2025-11-12 | 2025-11-21 | PG-11233 FS+7d |  | 220.4d |
| PG-11249 |  | 2nd Fix - Wiring works | 13.5d | 2025-12-23 | 2026-01-08 | PG-11629 FF+5d |  | 188.73d |
| PG-11250 |  | Final Fix - Electrical Fixtures | 5.33d | 2026-01-28 | 2026-02-03 | PG-11249, PG-11630 FF+6d |  | 172.73d |
|  | 1.3.1.2.3.29 | **Floor 26** |  | 2025-12-04 | 2026-02-24 |  |  |  |
|  | 1.3.1.2.3.29.1 | **PHE Works** |  | 2025-12-04 | 2026-02-24 |  |  |  |
| PG-11251 |  | 1st Fix - Piping works | 11.67d | 2025-12-04 | 2025-12-18 | PG-11242 FS+7d |  | 125.23d |
| PG-11252 |  | 2nd Fix - diverter fixing & Pressure testing | 9.67d | 2025-12-13 | 2025-12-25 | PG-11251 FF+6d |  | 125.23d |
| PG-11253 |  | Final Fix - CP & Sanitary fixtures | 10.33d | 2026-02-12 | 2026-02-24 | PG-11638, PG-11644 FF+6d |  | 125.23d |
|  | 1.3.1.2.3.29.2 | **Fire Fighting Works** |  | 2025-12-13 | 2026-02-24 |  |  |  |
| PG-11254 |  | 1st Fix - Piping and Shaft hydrant works | 11.5d | 2025-12-13 | 2025-12-27 | PG-11635 FF+6d |  | 203.4d |
| PG-11255 |  | 2nd Fix - Sprinkler fixing & Pressure testing | 10.33d | 2026-01-19 | 2026-02-02 | PG-11643 FF+6d |  | 134.23d |
| PG-11256 |  | Final Fix - Smoke & heat detectors, FHC , FAS Etc. | 10.33d | 2026-02-12 | 2026-02-24 | PG-11255, PG-11644 FF+6d |  | 125.23d |
|  | 1.3.1.2.3.29.3 | **Electrical Works** |  | 2025-12-04 | 2026-02-24 |  |  |  |
| PG-11257 |  | 1st Fix - GI wire pulling | 7.83d | 2025-12-04 | 2025-12-13 | PG-11242 FS+7d |  | 203.4d |
| PG-11258 |  | 2nd Fix - Wiring works | 15.33d | 2026-01-12 | 2026-01-31 | PG-11643 FF+5d |  | 140.23d |
| PG-11259 |  | Final Fix - Electrical Fixtures | 5.33d | 2026-02-18 | 2026-02-24 | PG-11258, PG-11644 FF+6d |  | 125.23d |
|  | 1.3.1.2.4 | **Civil Finishes - Units** |  | 2024-10-21 | 2026-02-17 |  |  |  |
|  | 1.3.1.2.4.1 | **LBF** |  | 2024-10-21 | 2025-01-29 |  |  |  |
| PG-11260 |  | Backfilling Above Raft | 30d | 2024-10-21 A | 2024-11-26 A | PG-10897 | 100% |  |
| PG-11261 |  | Car wash water collection sump with cap | 15d | 2024-11-14 A | 2024-12-03 A | PG-11260 FF+5d, PG-11010 FF+5d | 100% |  |
| PG-11262 |  | Surface Drain to slope | 10d | 2024-11-27 A | 2024-12-09 A | PG-11261 FF+5d | 100% |  |
| PG-11263 |  | Grade Slab | 10d | 2024-12-03 A | 2024-12-14 A | PG-11262 FF+5d | 100% |  |
| PG-11264 |  | First Coat Painting works | 14.67d | 2024-12-09 A | 2024-12-27 A | PG-11263 FF+10d | 100% |  |
| PG-11265 |  | Final coat painting | 9.67d | 2025-01-11 A | 2025-01-23 A | PG-11016, PG-11013 | 100% |  |
| PG-11266 |  | Car park marking and column corner beading fixing | 9.67d | 2025-01-18 A | 2025-01-29 A | PG-11265 FF+5d | 100% |  |
|  | 1.3.1.2.4.2 | **UBF** |  | 2024-12-07 | 2025-02-15 |  |  |  |
| PG-11267 |  | Surface Drain with Grade Slab to slope | 15d | 2024-12-07 A | 2024-12-26 A | PG-11260 FS+10d | 100% |  |
| PG-11268 |  | First Coat Paint works | 11.67d | 2025-01-08 A | 2025-01-24 A | PG-11267, PG-11015, PG-11014 | 100% |  |
| PG-11269 |  | Final Coat Paint Works | 7.5d | 2025-01-24 A | 2025-02-01 A | PG-11268, PG-11016 FF+5d | 100% |  |
| PG-11270 |  | Car park marking and column corner beading fixing | 10.67d | 2025-02-01 A | 2025-02-15 A | PG-11269 | 100% |  |
|  | 1.3.1.2.4.3 | **Ground Floor** |  | 2024-10-21 | 2025-01-06 |  |  |  |
|  | 1.3.1.2.4.3.1 | **Ceiling Finishing works - Civil** |  | 2024-10-30 | 2025-01-06 |  |  |  |
| PG-11271 |  | Gypsum Plastering | 6d | 2024-10-30 A | 2024-11-07 A | PG-11023 | 100% |  |
| PG-11272 |  | Cornice fixing | 4d | 2024-11-16 A | 2024-11-22 A | PG-11020 FF+6d | 100% |  |
| PG-11274 |  | Toilet False ceiling | 4d | 2024-11-26 A | 2024-11-30 A | PG-11282 FF+5d | 100% |  |
| PG-11273 |  | Painting Works - Putty, Primer and 1st | 6d | 2024-12-06 A | 2024-12-13 A | PG-11272, PG-11277 | 100% |  |
| PG-11275 |  | Final Coat Painting | 18.5d | 2024-12-13 A | 2025-01-06 A | PG-11273, PG-11284 | 100% |  |
|  | 1.3.1.2.4.3.2 | **Wall Finishing works - Civil** |  | 2024-10-21 | 2025-01-04 |  |  |  |
| PG-11276 |  | Balcony Railing Fixing works | 4d | 2024-10-21 A | 2024-10-25 A | PG-10897 | 100% |  |
| PG-11278 |  | Dadoing - Wet area | 5d | 2024-11-12 A | 2024-11-19 A | PG-11018 | 100% |  |
| PG-11277 |  | UPVC Windows & Sliding doors | 5d | 2024-11-29 A | 2024-12-06 A | PG-11276, PG-11283 FF+5d | 100% |  |
| PG-11279 |  | Painting Works - Putty, Primer and 1st | 6d | 2024-12-06 A | 2024-12-13 A | PG-11277 | 100% |  |
| PG-11280 |  | Final Coat Painting | 18.5d | 2024-12-13 A | 2025-01-04 A | PG-11284 | 100% |  |
|  | 1.3.1.2.4.3.3 | **Floor Finishing Works - Civil** |  | 2024-10-21 | 2024-12-13 |  |  |  |
| PG-11281 |  | Waterproofing for sunken areas | 3d | 2024-10-21 A | 2024-10-24 A | PG-10897 | 100% |  |
| PG-11282 |  | Floor Tiling - Wet area | 5d | 2024-11-19 A | 2024-11-25 A | PG-11281, PG-11278 | 100% |  |
| PG-11283 |  | Floor Tiling - Dry area | 5d | 2024-11-25 A | 2024-11-29 A | PG-11282 FF+5d | 100% |  |
| PG-11284 |  | Wooden doors | 5d | 2024-12-07 A | 2024-12-13 A | PG-11279 FF | 100% |  |
|  | 1.3.1.2.4.4 | **Floor 1** |  | 2024-11-06 | 2025-01-22 |  |  |  |
|  | 1.3.1.2.4.4.1 | **Ceiling Finishing works - Civil** |  | 2024-11-15 | 2025-01-22 |  |  |  |
| PG-11285 |  | Gypsum Plastering | 6d | 2024-11-15 A | 2024-11-22 A | PG-11032 | 100% |  |
| PG-11286 |  | Cornice fixing | 4d | 2024-12-02 A | 2024-12-07 A | PG-11029 FF+6d | 100% |  |
| PG-11288 |  | Toilet False ceiling | 4d | 2024-12-11 A | 2024-12-16 A | PG-11296 FF+5d | 100% |  |
| PG-11287 |  | Painting Works - Putty, Primer and 1st | 6d | 2024-12-23 A | 2024-12-30 A | PG-11286, PG-11291 | 100% |  |
| PG-11289 |  | Final Coat Painting | 18.5d | 2024-12-30 A | 2025-01-22 A | PG-11287, PG-11298 | 100% |  |
|  | 1.3.1.2.4.4.2 | **Wall Finishing works - Civil** |  | 2024-11-06 | 2025-01-21 |  |  |  |
| PG-11290 |  | Balcony Railing Fixing works | 4d | 2024-11-06 A | 2024-11-12 A | PG-10902 | 100% |  |
| PG-11292 |  | Dadoing - Wet area | 5d | 2024-11-28 A | 2024-12-04 A | PG-11027 | 100% |  |
| PG-11291 |  | UPVC Windows & Sliding doors | 5d | 2024-12-16 A | 2024-12-23 A | PG-11290, PG-11297 FF+5d | 100% |  |
| PG-11293 |  | Painting Works - Putty, Primer and 1st | 6d | 2024-12-23 A | 2024-12-30 A | PG-11291 | 100% |  |

| ID | WBS | Task | Duration | Start | Finish | Predecessors | Complete |
| --- | --- | --- | --- | --- | --- | --- | --- |
| PG-11294 |  | Final Coat Painting | 18.5d | 2024-12-30 A | 2025-01-21 A | PG-11298 | 100% |
|  | 1.3.1.2.4.4.3 | **Floor Finishing Works - Civil** |  | 2024-11-06 | 2024-12-30 |  |  |
| PG-11295 |  | Waterproofing for sunken areas | 3d | 2024-11-06 A | 2024-11-09 A | PG-10902 | 100% |
| PG-11296 |  | Floor Tiling - Wet area | 5d | 2024-12-04 A | 2024-12-10 A | PG-11295, PG-11292 | 100% |
| PG-11297 |  | Floor Tiling - Dry area | 5d | 2024-12-10 A | 2024-12-16 A | PG-11296 FF+5d | 100% |
| PG-11298 |  | Wooden doors | 5d | 2024-12-24 A | 2024-12-30 A | PG-11293 FF | 100% |
|  | 1.3.1.2.4.5 | **Floor 2** |  | 2024-11-22 | 2025-02-06 |  |  |
|  | 1.3.1.2.4.5.1 | **Ceiling Finishing works - Civil** |  | 2024-12-02 | 2025-02-06 |  |  |
| PG-11299 |  | Gypsum Plastering | 6d | 2024-12-02 A | 2024-12-09 A | PG-11041 | 100% |
| PG-11300 |  | Cornice fixing | 4d | 2024-12-18 A | 2024-12-23 A | PG-11038 FF+6d | 100% |
| PG-11302 |  | Toilet False ceiling | 4d | 2024-12-26 A | 2024-12-31 A | PG-11310 FF+5d | 100% |
| PG-11301 |  | Painting Works - Putty, Primer and 1st | 6d | 2025-01-06 A | 2025-01-13 A | PG-11300, PG-11305 | 100% |
| PG-11303 |  | Final Coat Painting | 18.5d | 2025-01-14 A | 2025-02-06 A | PG-11301, PG-11312 | 100% |
|  | 1.3.1.2.4.5.2 | **Wall Finishing works - Civil** |  | 2024-11-22 | 2025-02-04 |  |  |
| PG-11304 |  | Balcony Railing Fixing works | 4d | 2024-11-22 A | 2024-11-27 A | PG-10907 | 100% |
| PG-11306 |  | Dadoing - Wet area | 5d | 2024-12-13 A | 2024-12-19 A | PG-11036 | 100% |
| PG-11305 |  | UPVC Windows & Sliding doors | 5d | 2024-12-31 A | 2025-01-06 A | PG-11304, PG-11311 FF+5d | 100% |
| PG-11307 |  | Painting Works - Putty, Primer and 1st | 6d | 2025-01-06 A | 2025-01-14 A | PG-11305 | 100% |
| PG-11308 |  | Final Coat Painting | 18.5d | 2025-01-14 A | 2025-02-04 A | PG-11312 | 100% |
|  | 1.3.1.2.4.5.3 | **Floor Finishing Works - Civil** |  | 2024-11-22 | 2025-01-14 |  |  |
| PG-11309 |  | Waterproofing for sunken areas | 3d | 2024-11-22 A | 2024-11-26 A | PG-10907 | 100% |
| PG-11310 |  | Floor Tiling - Wet area | 5d | 2024-12-19 A | 2024-12-25 A | PG-11309, PG-11306 | 100% |
| PG-11311 |  | Floor Tiling - Dry area | 5d | 2024-12-25 A | 2024-12-31 A | PG-11310 FF+5d | 100% |
| PG-11312 |  | Wooden doors | 5d | 2025-01-08 A | 2025-01-14 A | PG-11307 FF | 100% |
|  | 1.3.1.2.4.6 | **Floor 3** |  | 2024-12-07 | 2025-02-21 |  |  |
|  | 1.3.1.2.4.6.1 | **Ceiling Finishing works - Civil** |  | 2024-12-17 | 2025-02-20 |  |  |
| PG-11313 |  | Gypsum Plastering | 6d | 2024-12-17 A | 2024-12-24 A | PG-11050 | 100% |
| PG-11314 |  | Cornice fixing | 4d | 2025-01-02 A | 2025-01-07 A | PG-11047 FF+6d | 100% |
| PG-11316 |  | Toilet False ceiling | 4d | 2025-01-11 A | 2025-01-16 A | PG-11324 FF+5d | 100% |
| PG-11315 |  | Painting Works - Putty, Primer and 1st | 6d | 2025-01-22 A | 2025-01-29 A | PG-11314, PG-11319 | 100% |
| PG-11317 |  | Final Coat Painting | 18.5d | 2025-01-29 A | 2025-02-20 A | PG-11315, PG-11326 | 100% |
|  | 1.3.1.2.4.6.2 | **Wall Finishing works - Civil** |  | 2024-12-07 | 2025-02-21 |  |  |
| PG-11318 |  | Balcony Railing Fixing works | 4d | 2024-12-07 A | 2024-12-12 A | PG-10912 | 100% |
| PG-11320 |  | Dadoing - Wet area | 5d | 2024-12-30 A | 2025-01-04 A | PG-11045 | 100% |
| PG-11319 |  | UPVC Windows & Sliding doors | 5d | 2025-01-16 A | 2025-01-22 A | PG-11318, PG-11325 FF+5d | 100% |
| PG-11321 |  | Painting Works - Putty, Primer and 1st | 6d | 2025-01-22 A | 2025-01-29 A | PG-11319 | 100% |
| PG-11322 |  | Final Coat Painting | 18.5d | 2025-01-29 A | 2025-02-21 A | PG-11326 | 100% |
|  | 1.3.1.2.4.6.3 | **Floor Finishing Works - Civil** |  | 2024-12-07 | 2025-01-29 |  |  |
| PG-11323 |  | Waterproofing for sunken areas | 3d | 2024-12-07 A | 2024-12-11 A | PG-10912 | 100% |
| PG-11324 |  | Floor Tiling - Wet area | 5d | 2025-01-04 A | 2025-01-10 A | PG-11323, PG-11320 | 100% |
| PG-11325 |  | Floor Tiling - Dry area | 5d | 2025-01-10 A | 2025-01-16 A | PG-11324 FF+5d | 100% |
| PG-11326 |  | Wooden doors | 5d | 2025-01-23 A | 2025-01-29 A | PG-11321 FF | 100% |
|  | 1.3.1.2.4.7 | **Floor 4** |  | 2024-12-23 | 2025-03-12 |  |  |
|  | 1.3.1.2.4.7.1 | **Ceiling Finishing works - Civil** |  | 2025-01-01 | 2025-03-12 |  |  |
| PG-11327 |  | Gypsum Plastering | 6d | 2025-01-01 A | 2025-01-09 A | PG-11059 | 100% |
| PG-11328 |  | Cornice fixing | 4d | 2025-01-18 A | 2025-01-23 A | PG-11056 FF+6d | 100% |
| PG-11330 |  | Toilet False ceiling | 4d | 2025-01-27 A | 2025-01-31 A | PG-11338 FF+5d | 100% |
| PG-11329 |  | Painting Works - Putty, Primer and 1st | 6d | 2025-02-06 A | 2025-02-13 A | PG-11328, PG-11333 | 100% |
| PG-11331 |  | Final Coat Painting | 19.5d | 2025-02-14 A | 2025-03-12 A | PG-11329, PG-11340 | 100% |
|  | 1.3.1.2.4.7.2 | **Wall Finishing works - Civil** |  | 2024-12-23 | 2025-03-12 |  |  |
| PG-11332 |  | Balcony Railing Fixing works | 4d | 2024-12-23 A | 2024-12-27 A | PG-10917 | 100% |
| PG-11334 |  | Dadoing - Wet area | 5d | 2025-01-13 A | 2025-01-20 A | PG-11054 | 100% |
| PG-11333 |  | UPVC Windows & Sliding doors | 5d | 2025-01-31 A | 2025-02-06 A | PG-11332, PG-11339 FF+5d | 100% |
| PG-11335 |  | Painting Works - Putty, Primer and 1st | 6d | 2025-02-06 A | 2025-02-13 A | PG-11333 | 100% |
| PG-11336 |  | Final Coat Painting | 19.5d | 2025-02-14 A | 2025-03-12 A | PG-11340 | 100% |
|  | 1.3.1.2.4.7.3 | **Floor Finishing Works - Civil** |  | 2024-12-23 | 2025-02-14 |  |  |
| PG-11337 |  | Waterproofing for sunken areas | 3d | 2024-12-23 A | 2024-12-26 A | PG-10917 | 100% |
| PG-11338 |  | Floor Tiling - Wet area | 5d | 2025-01-20 A | 2025-01-25 A | PG-11337, PG-11334 | 100% |
| PG-11339 |  | Floor Tiling - Dry area | 5d | 2025-01-25 A | 2025-01-31 A | PG-11338 FF+5d | 100% |
| PG-11340 |  | Wooden doors | 5d | 2025-02-07 A | 2025-02-14 A | PG-11335 FF | 100% |
|  | 1.3.1.2.4.8 | **Floor 5** |  | 2025-01-07 | 2025-03-25 |  |  |
|  | 1.3.1.2.4.8.1 | **Ceiling Finishing works - Civil** |  | 2025-01-17 | 2025-03-25 |  |  |
| PG-11341 |  | Gypsum Plastering | 6d | 2025-01-17 A | 2025-01-23 A | PG-11068 | 100% |
| PG-11342 |  | Cornice fixing | 4d | 2025-02-01 A | 2025-02-06 A | PG-11065 FF+6d | 100% |
| PG-11344 |  | Toilet False ceiling | 4d | 2025-02-12 A | 2025-02-17 A | PG-11352 FF+5d | 100% |
| PG-11343 |  | Painting Works - Putty, Primer and 1st | 6d | 2025-02-22 A | 2025-03-01 A | PG-11342, PG-11347 | 100% |
| PG-11345 |  | Final Coat Painting | 18.5d | 2025-03-01 A | 2025-03-25 A | PG-11343, PG-11354 | 100% |
|  | 1.3.1.2.4.8.2 | **Wall Finishing works - Civil** |  | 2025-01-07 | 2025-03-22 |  |  |
| PG-11346 |  | Balcony Railing Fixing works | 4d | 2025-01-07 A | 2025-01-11 A | PG-10922 | 100% |
| PG-11348 |  | Dadoing - Wet area | 5d | 2025-01-29 A | 2025-02-04 A | PG-11063 | 100% |

| ID | WBS | Task | Duration | Start | Finish | Predecessors | Complete | Total float |
| --- | --- | --- | --- | --- | --- | --- | --- | --- |
| PG-11347 |  | UPVC Windows & Sliding doors | 5d | 2025-02-17 A | 2025-02-22 A | PG-11346, PG-11353 FF+5d | 100% |  |
| PG-11349 |  | Painting Works - Putty, Primer and 1st | 6d | 2025-02-22 A | 2025-03-01 A | PG-11347 | 100% |  |
| PG-11350 |  | Final Coat Painting | 18.5d | 2025-03-01 A | 2025-03-22 A | PG-11354 | 100% |  |
|  | 1.3.1.2.4.8.3 | **Floor Finishing Works - Civil** |  | 2025-01-07 | 2025-03-01 |  |  |  |
| PG-11351 |  | Waterproofing for sunken areas | 3d | 2025-01-07 A | 2025-01-10 A | PG-10922 | 100% |  |
| PG-11352 |  | Floor Tiling - Wet area | 5d | 2025-02-04 A | 2025-02-11 A | PG-11351, PG-11348 | 100% |  |
| PG-11353 |  | Floor Tiling - Dry area | 5d | 2025-02-11 A | 2025-02-17 A | PG-11352 FF+5d | 100% |  |
| PG-11354 |  | Wooden doors | 5d | 2025-02-24 A | 2025-03-01 A | PG-11349 FF | 100% |  |
|  | 1.3.1.2.4.9 | **Floor 6** |  | 2025-01-23 | 2025-04-14 |  |  |  |
|  | 1.3.1.2.4.9.1 | **Ceiling Finishing works - Civil** |  | 2025-01-31 | 2025-04-14 |  |  |  |
| PG-11355 |  | Gypsum Plastering | 6d | 2025-01-31 A | 2025-02-08 A | PG-11077 | 100% |  |
| PG-11356 |  | Cornice fixing | 4d | 2025-02-19 A | 2025-02-24 A | PG-11074 FF+6d | 100% |  |
| PG-11358 |  | Toilet False ceiling | 4d | 2025-02-27 A | 2025-03-04 A | PG-11366 FF+5d | 100% |  |
| PG-11357 |  | Painting Works - Putty, Primer and 1st | 6d | 2025-03-10 A | 2025-03-17 A | PG-11356, PG-11361 | 100% |  |
| PG-11359 |  | Final Coat Painting | 20.67d | 2025-03-18 A | 2025-04-14 A | PG-11357, PG-11368 | 100% |  |
|  | 1.3.1.2.4.9.2 | **Wall Finishing works - Civil** |  | 2025-01-23 | 2025-04-10 |  |  |  |
| PG-11360 |  | Balcony Railing Fixing works | 4d | 2025-01-23 A | 2025-01-28 A | PG-10927 | 100% |  |
| PG-11362 |  | Dadoing - Wet area | 5d | 2025-02-14 A | 2025-02-20 A | PG-11072 | 100% |  |
| PG-11361 |  | UPVC Windows & Sliding doors | 5d | 2025-03-04 A | 2025-03-10 A | PG-11360, PG-11367 FF+5d | 100% |  |
| PG-11363 |  | Painting Works - Putty, Primer and 1st | 6d | 2025-03-10 A | 2025-03-18 A | PG-11361 | 100% |  |
| PG-11364 |  | Final Coat Painting | 19.5d | 2025-03-18 A | 2025-04-10 A | PG-11368 | 100% |  |
|  | 1.3.1.2.4.9.3 | **Floor Finishing Works - Civil** |  | 2025-01-23 | 2025-03-18 |  |  |  |
| PG-11365 |  | Waterproofing for sunken areas | 3d | 2025-01-23 A | 2025-01-27 A | PG-10927 | 100% |  |
| PG-11366 |  | Floor Tiling - Wet area | 5d | 2025-02-20 A | 2025-02-26 A | PG-11365, PG-11362 | 100% |  |
| PG-11367 |  | Floor Tiling - Dry area | 5d | 2025-02-26 A | 2025-03-04 A | PG-11366 FF+5d | 100% |  |
| PG-11368 |  | Wooden doors | 5d | 2025-03-12 A | 2025-03-18 A | PG-11363 FF | 100% |  |
|  | 1.3.1.2.4.10 | **Floor 7** |  | 2025-02-07 | 2025-04-25 |  |  |  |
|  | 1.3.1.2.4.10.1 | **Ceiling Finishing works - Civil** |  | 2025-02-17 | 2025-04-25 |  |  |  |
| PG-11369 |  | Gypsum Plastering | 6d | 2025-02-17 A | 2025-02-25 A | PG-11086 | 100% |  |
| PG-11370 |  | Cornice fixing | 4d | 2025-03-06 A | 2025-03-11 A | PG-11083 FF+6d | 100% |  |
| PG-11372 |  | Toilet False ceiling | 4d | 2025-03-13 A | 2025-03-19 A | PG-11380 FF+5d | 100% |  |
| PG-11371 |  | Painting Works - Putty, Primer and 1st | 6d | 2025-03-24 A | 2025-04-01 A | PG-11370, PG-11375 | 100% |  |
| PG-11373 |  | Final Coat Painting | 19.5d | 2025-04-01 A | 2025-04-25 A | PG-11371, PG-11382 | 100% |  |
|  | 1.3.1.2.4.10.2 | **Wall Finishing works - Civil** |  | 2025-02-07 | 2025-04-24 |  |  |  |
| PG-11374 |  | Balcony Railing Fixing works | 4d | 2025-02-07 A | 2025-02-13 A | PG-10932 | 100% |  |
| PG-11376 |  | Dadoing - Wet area | 5d | 2025-02-28 A | 2025-03-06 A | PG-11081 | 100% |  |
| PG-11375 |  | UPVC Windows & Sliding doors | 5d | 2025-03-19 A | 2025-03-24 A | PG-11374, PG-11381 FF+5d | 100% |  |
| PG-11377 |  | Painting Works - Putty, Primer and 1st | 6d | 2025-03-24 A | 2025-04-01 A | PG-11375 | 100% |  |
| PG-11378 |  | Final Coat Painting | 18.67d | 2025-04-01 A | 2025-04-24 A | PG-11382 | 100% |  |
|  | 1.3.1.2.4.10.3 | **Floor Finishing Works - Civil** |  | 2025-02-07 | 2025-04-01 |  |  |  |
| PG-11379 |  | Waterproofing for sunken areas | 3d | 2025-02-07 A | 2025-02-11 A | PG-10932 | 100% |  |
| PG-11380 |  | Floor Tiling - Wet area | 5d | 2025-03-06 A | 2025-03-12 A | PG-11379, PG-11376 | 100% |  |
| PG-11381 |  | Floor Tiling - Dry area | 5d | 2025-03-12 A | 2025-03-19 A | PG-11380 FF+5d | 100% |  |
| PG-11382 |  | Wooden doors | 5d | 2025-03-26 A | 2025-04-01 A | PG-11377 FF | 100% |  |
|  | 1.3.1.2.4.11 | **Floor 8** |  | 2025-02-22 | 2025-05-15 |  |  |  |
|  | 1.3.1.2.4.11.1 | **Ceiling Finishing works - Civil** |  | 2025-03-04 | 2025-05-15 |  |  |  |
| PG-11383 |  | Gypsum Plastering | 6d | 2025-03-04 A | 2025-03-11 A | PG-11095 | 100% |  |
| PG-11384 |  | Cornice fixing | 4d | 2025-03-21 A | 2025-03-26 A | PG-11092 FF+6d | 100% |  |
| PG-11386 |  | Toilet False ceiling | 4d | 2025-04-01 A | 2025-04-04 A | PG-11394 FF+5d | 100% |  |
| PG-11385 |  | Painting Works - Putty, Primer and 1st | 6d | 2025-04-11 A | 2025-04-18 A | PG-11384, PG-11389 | 100% |  |
| PG-11387 |  | Final Coat Painting | 20.67d | 2025-04-18 A | 2025-05-15 | PG-11385, PG-11396 | 75% | 424.94d |
|  | 1.3.1.2.4.11.2 | **Wall Finishing works - Civil** |  | 2025-02-22 | 2025-05-13 |  |  |  |
| PG-11388 |  | Balcony Railing Fixing works | 4d | 2025-02-22 A | 2025-02-28 A | PG-10937 | 100% |  |
| PG-11390 |  | Dadoing - Wet area | 5d | 2025-03-18 A | 2025-03-24 A | PG-11090 | 100% |  |
| PG-11389 |  | UPVC Windows & Sliding doors | 5d | 2025-04-04 A | 2025-04-11 A | PG-11388, PG-11395 FF+5d | 100% |  |
| PG-11391 |  | Painting Works - Putty, Primer and 1st | 6d | 2025-04-11 A | 2025-04-18 A | PG-11389 | 100% |  |
| PG-11392 |  | Final Coat Painting | 19.5d | 2025-04-18 A | 2025-05-13 | PG-11396 | 81% | 391.76d |
|  | 1.3.1.2.4.11.3 | **Floor Finishing Works - Civil** |  | 2025-02-22 | 2025-04-18 |  |  |  |
| PG-11393 |  | Waterproofing for sunken areas | 3d | 2025-02-22 A | 2025-02-26 A | PG-10937 | 100% |  |
| PG-11394 |  | Floor Tiling - Wet area | 5d | 2025-03-24 A | 2025-03-31 A | PG-11393, PG-11390 | 100% |  |
| PG-11395 |  | Floor Tiling - Dry area | 5d | 2025-03-31 A | 2025-04-04 A | PG-11394 FF+5d | 100% |  |
| PG-11396 |  | Wooden doors | 5d | 2025-04-12 A | 2025-04-18 A | PG-11391 FF | 100% |  |
|  | 1.3.1.2.4.12 | **Floor 9** |  | 2025-03-11 | 2025-05-23 |  |  |  |
|  | 1.3.1.2.4.12.1 | **Ceiling Finishing works - Civil** |  | 2025-03-21 | 2025-05-23 |  |  |  |
| PG-11397 |  | Gypsum Plastering | 6d | 2025-03-21 A | 2025-03-28 A | PG-11104 | 100% |  |
| PG-11398 |  | Cornice fixing | 4d | 2025-04-07 A | 2025-04-11 A | PG-11101 FF+6d | 100% |  |
| PG-11400 |  | Toilet False ceiling | 4d | 2025-04-14 A | 2025-04-18 A | PG-11408 FF+5d | 100% |  |
| PG-11399 |  | Painting Works - Putty, Primer and 1st | 6d | 2025-04-24 A | 2025-05-01 A | PG-11398, PG-11403 | 100% |  |
| PG-11401 |  | Final Coat Painting | 18.67d | 2025-05-01 A | 2025-05-23 | PG-11399, PG-11410 | 36% | 417.89d |
|  | 1.3.1.2.4.12.2 | **Wall Finishing works - Civil** |  | 2025-03-11 | 2025-05-23 |  |  |  |

| ID | WBS | Task | Duration | Start | Finish | Predecessors | Complete | Total float |
| --- | --- | --- | --- | --- | --- | --- | --- | --- |
| PG-11402 |  | Balcony Railing Fixing works | 4d | 2025-03-11 A | 2025-03-15 A | PG-10942 | 100% |  |
| PG-11404 |  | Dadoing - Wet area | 5d | 2025-03-31 A | 2025-04-07 A | PG-11099 | 100% |  |
| PG-11403 |  | UPVC Windows & Sliding doors | 5d | 2025-04-18 A | 2025-04-24 A | PG-11402, PG-11409 FF+5d | 100% |  |
| PG-11405 |  | Painting Works - Putty, Primer and 1st | 6d | 2025-04-24 A | 2025-05-01 A | PG-11403 | 100% |  |
| PG-11406 |  | Final Coat Painting | 18.5d | 2025-05-01 A | 2025-05-23 | PG-11410 | 35% | 383.21d |
|  | 1.3.1.2.4.12.3 | **Floor Finishing Works - Civil** |  | 2025-03-11 | 2025-05-01 |  |  |  |
| PG-11407 |  | Waterproofing for sunken areas | 3d | 2025-03-11 A | 2025-03-14 A | PG-10942 | 100% |  |
| PG-11408 |  | Floor Tiling - Wet area | 5d | 2025-04-07 A | 2025-04-12 A | PG-11407, PG-11404 | 100% |  |
| PG-11409 |  | Floor Tiling - Dry area | 5d | 2025-04-12 A | 2025-04-18 A | PG-11408 FF+5d | 100% |  |
| PG-11410 |  | Wooden doors | 5d | 2025-04-25 A | 2025-05-01 A | PG-11405 FF | 100% |  |
|  | 1.3.1.2.4.13 | **Floor 10** |  | 2025-03-27 | 2025-06-09 |  |  |  |
|  | 1.3.1.2.4.13.1 | **Ceiling Finishing works - Civil** |  | 2025-04-05 | 2025-06-09 |  |  |  |
| PG-11411 |  | Gypsum Plastering | 6d | 2025-04-05 A | 2025-04-12 A | PG-11113 | 100% |  |
| PG-11412 |  | Cornice fixing | 4d | 2025-04-22 A | 2025-04-26 A | PG-11110 FF+6d | 100% |  |
| PG-11414 |  | Toilet False ceiling | 4d | 2025-04-30 A | 2025-05-05 A | PG-11422 FF+5d | 100% |  |
| PG-11413 |  | Painting Works - Putty, Primer and 1st | 6d | 2025-05-12 | 2025-05-19 | PG-11412, PG-11417 |  | 404.08d |
| PG-11415 |  | Final Coat Painting | 18.67d | 2025-05-19 | 2025-06-09 | PG-11413, PG-11424 |  | 404.08d |
|  | 1.3.1.2.4.13.2 | **Wall Finishing works - Civil** |  | 2025-03-27 | 2025-06-09 |  |  |  |
| PG-11416 |  | Balcony Railing Fixing works | 4d | 2025-03-27 A | 2025-04-01 A | PG-10947 | 100% |  |
| PG-11418 |  | Dadoing - Wet area | 5d | 2025-04-17 A | 2025-04-23 A | PG-11108 | 100% |  |
| PG-11417 |  | UPVC Windows & Sliding doors | 5d | 2025-05-06 A | 2025-05-12 | PG-11416, PG-11423 FF+5d | 71% | 368.75d |
| PG-11419 |  | Painting Works - Putty, Primer and 1st | 6d | 2025-05-12 | 2025-05-19 | PG-11417 |  | 368.75d |
| PG-11420 |  | Final Coat Painting | 18.33d | 2025-05-19 | 2025-06-09 | PG-11424 |  | 368.75d |
|  | 1.3.1.2.4.13.3 | **Floor Finishing Works - Civil** |  | 2025-03-27 | 2025-05-19 |  |  |  |
| PG-11421 |  | Waterproofing for sunken areas | 3d | 2025-03-27 A | 2025-03-31 A | PG-10947 | 100% |  |
| PG-11422 |  | Floor Tiling - Wet area | 5d | 2025-04-23 A | 2025-04-29 A | PG-11421, PG-11418 | 100% |  |
| PG-11423 |  | Floor Tiling - Dry area | 5d | 2025-04-29 A | 2025-05-06 A | PG-11422 FF+5d | 100% |  |
| PG-11424 |  | Wooden doors | 5d | 2025-05-13 | 2025-05-19 | PG-11419 FF |  | 368.75d |
|  | 1.3.1.2.4.14 | **Floor 11** |  | 2025-04-09 | 2025-06-20 |  |  |  |
|  | 1.3.1.2.4.14.1 | **Ceiling Finishing works - Civil** |  | 2025-04-18 | 2025-06-20 |  |  |  |
| PG-11425 |  | Gypsum Plastering | 6d | 2025-04-18 A | 2025-04-25 A | PG-11122 | 100% |  |
| PG-11426 |  | Cornice fixing | 4d | 2025-05-05 A | 2025-05-09 A | PG-11119 FF+6d | 100% |  |
| PG-11428 |  | Toilet False ceiling | 4d | 2025-05-13 | 2025-05-17 | PG-11436 FF+5d |  | 383.55d |
| PG-11427 |  | Painting Works - Putty, Primer and 1st | 6d | 2025-05-23 | 2025-05-30 | PG-11426, PG-11431 |  | 394.05d |
| PG-11429 |  | Final Coat Painting | 18.67d | 2025-05-30 | 2025-06-20 | PG-11427, PG-11438 |  | 394.05d |
|  | 1.3.1.2.4.14.2 | **Wall Finishing works - Civil** |  | 2025-04-09 | 2025-06-20 |  |  |  |
| PG-11430 |  | Balcony Railing Fixing works | 4d | 2025-04-09 A | 2025-04-14 A | PG-10952 | 100% |  |
| PG-11432 |  | Dadoing - Wet area | 5d | 2025-04-30 A | 2025-05-07 A | PG-11117 | 100% |  |
| PG-11431 |  | UPVC Windows & Sliding doors | 5d | 2025-05-17 | 2025-05-23 | PG-11430, PG-11437 FF+5d |  | 358.72d |
| PG-11433 |  | Painting Works - Putty, Primer and 1st | 6d | 2025-05-23 | 2025-05-30 | PG-11431 |  | 358.72d |
| PG-11434 |  | Final Coat Painting | 18.33d | 2025-05-30 | 2025-06-20 | PG-11438 |  | 358.72d |
|  | 1.3.1.2.4.14.3 | **Floor Finishing Works - Civil** |  | 2025-04-09 | 2025-05-30 |  |  |  |
| PG-11435 |  | Waterproofing for sunken areas | 3d | 2025-04-09 A | 2025-04-12 A | PG-10952 | 100% |  |
| PG-11436 |  | Floor Tiling - Wet area | 5d | 2025-05-07 A | 2025-05-12 | PG-11435, PG-11432 | 56% | 358.72d |
| PG-11437 |  | Floor Tiling - Dry area | 5d | 2025-05-12 | 2025-05-17 | PG-11436 FF+5d |  | 358.72d |
| PG-11438 |  | Wooden doors | 5d | 2025-05-24 | 2025-05-30 | PG-11433 FF |  | 358.72d |
|  | 1.3.1.2.4.15 | **Floor 12** |  | 2025-04-22 | 2025-07-04 |  |  |  |
|  | 1.3.1.2.4.15.1 | **Ceiling Finishing works - Civil** |  | 2025-05-01 | 2025-07-04 |  |  |  |
| PG-11439 |  | Gypsum Plastering | 6d | 2025-05-01 A | 2025-05-09 A | PG-11131 | 100% |  |
| PG-11440 |  | Cornice fixing | 4d | 2025-05-19 | 2025-05-22 | PG-11128 FF+6d |  | 394.42d |
| PG-11442 |  | Toilet False ceiling | 4d | 2025-05-27 | 2025-05-31 | PG-11450 FF+5d |  | 372.67d |
| PG-11441 |  | Painting Works - Putty, Primer and 1st | 6d | 2025-06-06 | 2025-06-13 | PG-11440, PG-11445 |  | 382.17d |
| PG-11443 |  | Final Coat Painting | 18.67d | 2025-06-13 | 2025-07-04 | PG-11441, PG-11452 |  | 382.17d |
|  | 1.3.1.2.4.15.2 | **Wall Finishing works - Civil** |  | 2025-04-22 | 2025-07-04 |  |  |  |
| PG-11444 |  | Balcony Railing Fixing works | 4d | 2025-04-22 A | 2025-04-28 A | PG-10957 | 100% |  |
| PG-11446 |  | Dadoing - Wet area | 5d | 2025-05-14 | 2025-05-20 | PG-11126 |  | 346.67d |
| PG-11445 |  | UPVC Windows & Sliding doors | 5d | 2025-05-31 | 2025-06-06 | PG-11444, PG-11451 FF+5d |  | 346.67d |
| PG-11447 |  | Painting Works - Putty, Primer and 1st | 6d | 2025-06-06 | 2025-06-13 | PG-11445 |  | 346.67d |
| PG-11448 |  | Final Coat Painting | 18.5d | 2025-06-13 | 2025-07-04 | PG-11452 |  | 346.67d |
|  | 1.3.1.2.4.15.3 | **Floor Finishing Works - Civil** |  | 2025-04-22 | 2025-06-13 |  |  |  |
| PG-11449 |  | Waterproofing for sunken areas | 3d | 2025-04-22 A | 2025-04-25 A | PG-10957 | 100% |  |
| PG-11450 |  | Floor Tiling - Wet area | 5d | 2025-05-20 | 2025-05-26 | PG-11449, PG-11446 |  | 346.67d |
| PG-11451 |  | Floor Tiling - Dry area | 5d | 2025-05-26 | 2025-05-31 | PG-11450 FF+5d |  | 346.67d |
| PG-11452 |  | Wooden doors | 5d | 2025-06-07 | 2025-06-13 | PG-11447 FF |  | 346.67d |
|  | 1.3.1.2.4.16 | **Floor 13** |  | 2025-05-06 | 2025-07-17 |  |  |  |
|  | 1.3.1.2.4.16.1 | **Ceiling Finishing works - Civil** |  | 2025-05-14 | 2025-07-17 |  |  |  |
| PG-11453 |  | Gypsum Plastering | 6d | 2025-05-14 | 2025-05-21 | PG-11140 |  | 383.15d |
| PG-11454 |  | Cornice fixing | 4d | 2025-05-30 | 2025-06-04 | PG-11137 FF+6d |  | 383.15d |
| PG-11456 |  | Toilet False ceiling | 4d | 2025-06-07 | 2025-06-12 | PG-11464 FF+5d |  | 362.42d |
| PG-11455 |  | Painting Works - Putty, Primer and 1st | 6d | 2025-06-18 | 2025-06-25 | PG-11454, PG-11459 |  | 371.08d |

| ID | WBS | Task | Duration | Start | Finish | Predecessors | Complete | Total float |
| --- | --- | --- | --- | --- | --- | --- | --- | --- |
| PG-11457 |  | Final Coat Painting | 19.5d | 2025-06-25 | 2025-07-17 | PG-11455, PG-11466 |  | 371.08d |
|  | 1.3.1.2.4.16.2 | **Wall Finishing works - Civil** |  | 2025-05-06 | 2025-07-17 |  |  |  |
| PG-11458 |  | Balcony Railing Fixing works | 4d | 2025-05-06 A | 2025-05-09 | PG-10962 | 84% | 365.26d |
| PG-11460 |  | Dadoing - Wet area | 5d | 2025-05-26 | 2025-05-31 | PG-11135 |  | 336.42d |
| PG-11459 |  | UPVC Windows & Sliding doors | 5d | 2025-06-12 | 2025-06-18 | PG-11458, PG-11465 FF+5d |  | 336.42d |
| PG-11461 |  | Painting Works - Putty, Primer and 1st | 6d | 2025-06-18 | 2025-06-25 | PG-11459 |  | 336.42d |
| PG-11462 |  | Final Coat Painting | 19.5d | 2025-06-25 | 2025-07-17 | PG-11466 |  | 336.42d |
|  | 1.3.1.2.4.16.3 | **Floor Finishing Works - Civil** |  | 2025-05-06 | 2025-06-25 |  |  |  |
| PG-11463 |  | Waterproofing for sunken areas | 3d | 2025-05-06 A | 2025-05-09 A | PG-10962 | 100% |  |
| PG-11464 |  | Floor Tiling - Wet area | 5d | 2025-05-31 | 2025-06-06 | PG-11463, PG-11460 |  | 336.42d |
| PG-11465 |  | Floor Tiling - Dry area | 5d | 2025-06-06 | 2025-06-12 | PG-11464 FF+5d |  | 336.42d |
| PG-11466 |  | Wooden doors | 5d | 2025-06-19 | 2025-06-25 | PG-11461 FF |  | 336.42d |
|  | 1.3.1.2.4.17 | **Floor 14** |  | 2025-05-17 | 2025-07-31 |  |  |  |
|  | 1.3.1.2.4.17.1 | **Ceiling Finishing works - Civil** |  | 2025-05-28 | 2025-07-31 |  |  |  |
| PG-11467 |  | Gypsum Plastering | 6d | 2025-05-28 | 2025-06-04 | PG-11149 |  | 371.07d |
| PG-11468 |  | Cornice fixing | 4d | 2025-06-13 | 2025-06-18 | PG-11146 FF+6d |  | 371.07d |
| PG-11470 |  | Toilet False ceiling | 4d | 2025-06-20 | 2025-06-25 | PG-11478 FF+5d |  | 352.07d |
| PG-11469 |  | Painting Works - Putty, Primer and 1st | 6d | 2025-07-01 | 2025-07-08 | PG-11468, PG-11473 |  | 359.73d |
| PG-11471 |  | Final Coat Painting | 19.5d | 2025-07-08 | 2025-07-31 | PG-11469, PG-11480 |  | 359.73d |
|  | 1.3.1.2.4.17.2 | **Wall Finishing works - Civil** |  | 2025-05-17 | 2025-07-31 |  |  |  |
| PG-11472 |  | Balcony Railing Fixing works | 4d | 2025-05-17 | 2025-05-22 | PG-10967 |  | 354.07d |
| PG-11474 |  | Dadoing - Wet area | 5d | 2025-06-07 | 2025-06-13 | PG-11144 |  | 325.07d |
| PG-11473 |  | UPVC Windows & Sliding doors | 5d | 2025-06-25 | 2025-07-01 | PG-11472, PG-11479 FF+5d |  | 325.07d |
| PG-11475 |  | Painting Works - Putty, Primer and 1st | 6d | 2025-07-01 | 2025-07-08 | PG-11473 |  | 325.07d |
| PG-11476 |  | Final Coat Painting | 19.5d | 2025-07-08 | 2025-07-31 | PG-11480 |  | 325.07d |
|  | 1.3.1.2.4.17.3 | **Floor Finishing Works - Civil** |  | 2025-05-17 | 2025-07-08 |  |  |  |
| PG-11477 |  | Waterproofing for sunken areas | 3d | 2025-05-17 | 2025-05-21 | PG-10967 |  | 345.07d |
| PG-11478 |  | Floor Tiling - Wet area | 5d | 2025-06-13 | 2025-06-19 | PG-11477, PG-11474 |  | 325.07d |
| PG-11479 |  | Floor Tiling - Dry area | 5d | 2025-06-19 | 2025-06-25 | PG-11478 FF+5d |  | 325.07d |
| PG-11480 |  | Wooden doors | 5d | 2025-07-02 | 2025-07-08 | PG-11475 FF |  | 325.07d |
|  | 1.3.1.2.4.18 | **Floor 15** |  | 2025-05-30 | 2025-08-12 |  |  |  |
|  | 1.3.1.2.4.18.1 | **Ceiling Finishing works - Civil** |  | 2025-06-09 | 2025-08-12 |  |  |  |
| PG-11481 |  | Gypsum Plastering | 6d | 2025-06-09 | 2025-06-16 | PG-11158 |  | 361.73d |
| PG-11482 |  | Cornice fixing | 4d | 2025-06-25 | 2025-06-30 | PG-11155 FF+6d |  | 361.73d |
| PG-11484 |  | Toilet False ceiling | 4d | 2025-07-03 | 2025-07-08 | PG-11492 FF+5d |  | 341.07d |
| PG-11483 |  | Painting Works - Putty, Primer and 1st | 6d | 2025-07-14 | 2025-07-21 | PG-11482, PG-11487 |  | 349.57d |
| PG-11485 |  | Final Coat Painting | 18.67d | 2025-07-21 | 2025-08-12 | PG-11483, PG-11494 |  | 349.57d |
|  | 1.3.1.2.4.18.2 | **Wall Finishing works - Civil** |  | 2025-05-30 | 2025-08-12 |  |  |  |
| PG-11486 |  | Balcony Railing Fixing works | 4d | 2025-05-30 | 2025-06-04 | PG-10972 |  | 193.07d |
| PG-11488 |  | Dadoing - Wet area | 5d | 2025-06-20 | 2025-06-26 | PG-11153 |  | 164.07d |
| PG-11487 |  | UPVC Windows & Sliding doors | 5d | 2025-07-08 | 2025-07-14 | PG-11486, PG-11493 FF+5d |  | 164.07d |
| PG-11489 |  | Painting Works - Putty, Primer and 1st | 6d | 2025-07-14 | 2025-07-21 | PG-11487 |  | 164.07d |
| PG-11490 |  | Final Coat Painting | 18.5d | 2025-07-21 | 2025-08-12 | PG-11494 |  | 315.07d |
|  | 1.3.1.2.4.18.3 | **Floor Finishing Works - Civil** |  | 2025-05-30 | 2025-07-21 |  |  |  |
| PG-11491 |  | Waterproofing for sunken areas | 3d | 2025-05-30 | 2025-06-03 | PG-10972 |  | 184.07d |
| PG-11492 |  | Floor Tiling - Wet area | 5d | 2025-06-26 | 2025-07-02 | PG-11491, PG-11488 |  | 164.07d |
| PG-11493 |  | Floor Tiling - Dry area | 5d | 2025-07-02 | 2025-07-08 | PG-11492 FF+5d |  | 164.07d |
| PG-11494 |  | Wooden doors | 5d | 2025-07-15 | 2025-07-21 | PG-11489 FF |  | 164.07d |
|  | 1.3.1.2.4.19 | **Floor 16** |  | 2025-06-12 | 2025-08-26 |  |  |  |
|  | 1.3.1.2.4.19.1 | **Ceiling Finishing works - Civil** |  | 2025-06-21 | 2025-08-26 |  |  |  |
| PG-11495 |  | Gypsum Plastering | 6d | 2025-06-21 | 2025-06-28 | PG-11167 |  | 350.57d |
| PG-11496 |  | Cornice fixing | 4d | 2025-07-08 | 2025-07-12 | PG-11164 FF+6d |  | 350.57d |
| PG-11498 |  | Toilet False ceiling | 4d | 2025-07-16 | 2025-07-21 | PG-11506 FF+5d |  | 328.9d |
| PG-11497 |  | Painting Works - Putty, Primer and 1st | 6d | 2025-07-26 | 2025-08-02 | PG-11496, PG-11501 |  | 338.4d |
| PG-11499 |  | Final Coat Painting | 18.67d | 2025-08-02 | 2025-08-26 | PG-11497, PG-11508 |  | 338.4d |
|  | 1.3.1.2.4.19.2 | **Wall Finishing works - Civil** |  | 2025-06-12 | 2025-08-25 |  |  |  |
| PG-11500 |  | Balcony Railing Fixing works | 4d | 2025-06-12 | 2025-06-17 | PG-10977 |  | 333.73d |
| PG-11502 |  | Dadoing - Wet area | 5d | 2025-07-03 | 2025-07-09 | PG-11162 |  | 304.73d |
| PG-11501 |  | UPVC Windows & Sliding doors | 5d | 2025-07-21 | 2025-07-26 | PG-11500, PG-11507 FF+5d |  | 304.73d |
| PG-11503 |  | Painting Works - Putty, Primer and 1st | 6d | 2025-07-26 | 2025-08-02 | PG-11501 |  | 304.73d |
| PG-11504 |  | Final Coat Painting | 17.5d | 2025-08-02 | 2025-08-25 | PG-11508 |  | 304.73d |
|  | 1.3.1.2.4.19.3 | **Floor Finishing Works - Civil** |  | 2025-06-12 | 2025-08-02 |  |  |  |
| PG-11505 |  | Waterproofing for sunken areas | 3d | 2025-06-12 | 2025-06-16 | PG-10977 |  | 324.73d |
| PG-11506 |  | Floor Tiling - Wet area | 5d | 2025-07-09 | 2025-07-15 | PG-11505, PG-11502 |  | 304.73d |
| PG-11507 |  | Floor Tiling - Dry area | 5d | 2025-07-15 | 2025-07-21 | PG-11506 FF+5d |  | 304.73d |
| PG-11508 |  | Wooden doors | 5d | 2025-07-28 | 2025-08-02 | PG-11503 FF |  | 304.73d |
|  | 1.3.1.2.4.20 | **Floor 17** |  | 2025-06-25 | 2025-09-08 |  |  |  |
|  | 1.3.1.2.4.20.1 | **Ceiling Finishing works - Civil** |  | 2025-07-04 | 2025-09-08 |  |  |  |
| PG-11509 |  | Gypsum Plastering | 6d | 2025-07-04 | 2025-07-11 | PG-11176 |  | 339.57d |
| PG-11510 |  | Cornice fixing | 4d | 2025-07-21 | 2025-07-25 | PG-11173 FF+6d |  | 339.57d |

| ID | WBS | Task | Duration | Start | Finish | Predecessors | Total float |
| --- | --- | --- | --- | --- | --- | --- | --- |
| PG-11512 |  | Toilet False ceiling | 4d | 2025-07-29 | 2025-08-02 | PG-11520 FF+5d | 317.9d |
| PG-11511 |  | Painting Works - Putty, Primer and 1st | 6d | 2025-08-08 | 2025-08-16 | PG-11510, PG-11515 | 327.4d |
| PG-11513 |  | Final Coat Painting | 18.67d | 2025-08-16 | 2025-09-08 | PG-11511, PG-11522 | 327.4d |
|  | 1.3.1.2.4.20.2 | **Wall Finishing works - Civil** |  | 2025-06-25 | 2025-09-06 |  |  |
| PG-11514 |  | Balcony Railing Fixing works | 4d | 2025-06-25 | 2025-06-30 | PG-10982 | 322.73d |
| PG-11516 |  | Dadoing - Wet area | 5d | 2025-07-16 | 2025-07-22 | PG-11171 | 293.73d |
| PG-11515 |  | UPVC Windows & Sliding doors | 5d | 2025-08-02 | 2025-08-08 | PG-11514, PG-11521 FF+5d | 293.73d |
| PG-11517 |  | Painting Works - Putty, Primer and 1st | 6d | 2025-08-08 | 2025-08-16 | PG-11515 | 293.73d |
| PG-11518 |  | Final Coat Painting | 17.5d | 2025-08-16 | 2025-09-06 | PG-11522 | 293.73d |
|  | 1.3.1.2.4.20.3 | **Floor Finishing Works - Civil** |  | 2025-06-25 | 2025-08-16 |  |  |
| PG-11519 |  | Waterproofing for sunken areas | 3d | 2025-06-25 | 2025-06-28 | PG-10982 | 313.73d |
| PG-11520 |  | Floor Tiling - Wet area | 5d | 2025-07-22 | 2025-07-28 | PG-11519, PG-11516 | 293.73d |
| PG-11521 |  | Floor Tiling - Dry area | 5d | 2025-07-28 | 2025-08-02 | PG-11520 FF+5d | 293.73d |
| PG-11522 |  | Wooden doors | 5d | 2025-08-09 | 2025-08-16 | PG-11517 FF | 293.73d |
|  | 1.3.1.2.4.21 | **Floor 18** |  | 2025-07-08 | 2025-09-20 |  |  |
|  | 1.3.1.2.4.21.1 | **Ceiling Finishing works - Civil** |  | 2025-07-17 | 2025-09-20 |  |  |
| PG-11523 |  | Gypsum Plastering | 6d | 2025-07-17 | 2025-07-24 | PG-11185 | 329.57d |
| PG-11524 |  | Cornice fixing | 4d | 2025-08-02 | 2025-08-07 | PG-11182 FF+6d | 329.57d |
| PG-11526 |  | Toilet False ceiling | 4d | 2025-08-11 | 2025-08-16 | PG-11534 FF+5d | 306.9d |
| PG-11525 |  | Painting Works - Putty, Primer and 1st | 6d | 2025-08-22 | 2025-08-29 | PG-11524, PG-11529 | 317.73d |
| PG-11527 |  | Final Coat Painting | 18.67d | 2025-08-29 | 2025-09-20 | PG-11525, PG-11536 | 317.73d |
|  | 1.3.1.2.4.21.2 | **Wall Finishing works - Civil** |  | 2025-07-08 | 2025-09-20 |  |  |
| PG-11528 |  | Balcony Railing Fixing works | 4d | 2025-07-08 | 2025-07-12 | PG-10987 | 310.57d |
| PG-11530 |  | Dadoing - Wet area | 5d | 2025-07-29 | 2025-08-04 | PG-11180 | 281.9d |
| PG-11529 |  | UPVC Windows & Sliding doors | 5d | 2025-08-16 | 2025-08-22 | PG-11528, PG-11535 FF+5d | 281.9d |
| PG-11531 |  | Painting Works - Putty, Primer and 1st | 6d | 2025-08-22 | 2025-08-29 | PG-11529 | 281.9d |
| PG-11532 |  | Final Coat Painting | 18.67d | 2025-08-29 | 2025-09-20 | PG-11536 | 281.9d |
|  | 1.3.1.2.4.21.3 | **Floor Finishing Works - Civil** |  | 2025-07-08 | 2025-08-29 |  |  |
| PG-11533 |  | Waterproofing for sunken areas | 3d | 2025-07-08 | 2025-07-11 | PG-10987 | 301.57d |
| PG-11534 |  | Floor Tiling - Wet area | 5d | 2025-08-04 | 2025-08-09 | PG-11533, PG-11530 | 281.9d |
| PG-11535 |  | Floor Tiling - Dry area | 5d | 2025-08-09 | 2025-08-16 | PG-11534 FF+5d | 281.9d |
| PG-11536 |  | Wooden doors | 5d | 2025-08-23 | 2025-08-29 | PG-11531 FF | 281.9d |
|  | 1.3.1.2.4.22 | **Floor 19** |  | 2025-07-21 | 2025-10-04 |  |  |
|  | 1.3.1.2.4.22.1 | **Ceiling Finishing works - Civil** |  | 2025-07-30 | 2025-10-04 |  |  |
| PG-11537 |  | Gypsum Plastering | 6d | 2025-07-30 | 2025-08-06 | PG-11194 | 318.57d |
| PG-11538 |  | Cornice fixing | 3.67d | 2025-08-18 | 2025-08-21 | PG-11191 FF+6d | 318.57d |
| PG-11540 |  | Toilet False ceiling | 4d | 2025-08-25 | 2025-08-29 | PG-11548 FF+5d | 295.9d |
| PG-11539 |  | Painting Works - Putty, Primer and 1st | 6d | 2025-09-04 | 2025-09-11 | PG-11538, PG-11543 | 306.73d |
| PG-11541 |  | Final Coat Painting | 18.67d | 2025-09-11 | 2025-10-04 | PG-11539, PG-11550 | 306.73d |
|  | 1.3.1.2.4.22.2 | **Wall Finishing works - Civil** |  | 2025-07-21 | 2025-10-04 |  |  |
| PG-11542 |  | Balcony Railing Fixing works | 4d | 2025-07-21 | 2025-07-25 | PG-10992 | 299.57d |
| PG-11544 |  | Dadoing - Wet area | 5d | 2025-08-11 | 2025-08-18 | PG-11189 | 270.9d |
| PG-11543 |  | UPVC Windows & Sliding doors | 5d | 2025-08-29 | 2025-09-04 | PG-11542, PG-11549 FF+5d | 270.9d |
| PG-11545 |  | Painting Works - Putty, Primer and 1st | 6d | 2025-09-04 | 2025-09-11 | PG-11543 | 270.9d |
| PG-11546 |  | Final Coat Painting | 18.67d | 2025-09-11 | 2025-10-04 | PG-11550 | 270.9d |
|  | 1.3.1.2.4.22.3 | **Floor Finishing Works - Civil** |  | 2025-07-21 | 2025-09-11 |  |  |
| PG-11547 |  | Waterproofing for sunken areas | 3d | 2025-07-21 | 2025-07-24 | PG-10992 | 290.57d |
| PG-11548 |  | Floor Tiling - Wet area | 5d | 2025-08-18 | 2025-08-23 | PG-11547, PG-11544 | 270.9d |
| PG-11549 |  | Floor Tiling - Dry area | 5d | 2025-08-23 | 2025-08-29 | PG-11548 FF+5d | 270.9d |
| PG-11550 |  | Wooden doors | 5d | 2025-09-05 | 2025-09-11 | PG-11545 FF | 270.9d |
|  | 1.3.1.2.4.23 | **Floor 20** |  | 2025-08-02 | 2025-10-18 |  |  |
|  | 1.3.1.2.4.23.1 | **Ceiling Finishing works - Civil** |  | 2025-08-13 | 2025-10-18 |  |  |
| PG-11551 |  | Gypsum Plastering | 6d | 2025-08-13 | 2025-08-21 | PG-11203 | 306.73d |
| PG-11552 |  | Cornice fixing | 3.67d | 2025-08-30 | 2025-09-04 | PG-11200 FF+6d | 306.73d |
| PG-11554 |  | Toilet False ceiling | 4d | 2025-09-08 | 2025-09-12 | PG-11562 FF+5d | 283.9d |
| PG-11553 |  | Painting Works - Putty, Primer and 1st | 6d | 2025-09-18 | 2025-09-25 | PG-11552, PG-11557 | 294.73d |
| PG-11555 |  | Final Coat Painting | 18.67d | 2025-09-25 | 2025-10-18 | PG-11553, PG-11564 | 294.73d |
|  | 1.3.1.2.4.23.2 | **Wall Finishing works - Civil** |  | 2025-08-02 | 2025-10-18 |  |  |
| PG-11556 |  | Balcony Railing Fixing works | 4d | 2025-08-02 | 2025-08-07 | PG-10997 | 288.57d |
| PG-11558 |  | Dadoing - Wet area | 5d | 2025-08-26 | 2025-09-01 | PG-11198 | 258.9d |
| PG-11557 |  | UPVC Windows & Sliding doors | 5d | 2025-09-12 | 2025-09-18 | PG-11556, PG-11563 FF+5d | 258.9d |
| PG-11559 |  | Painting Works - Putty, Primer and 1st | 6d | 2025-09-18 | 2025-09-25 | PG-11557 | 258.9d |
| PG-11560 |  | Final Coat Painting | 18.67d | 2025-09-25 | 2025-10-18 | PG-11564 | 258.9d |
|  | 1.3.1.2.4.23.3 | **Floor Finishing Works - Civil** |  | 2025-08-02 | 2025-09-25 |  |  |
| PG-11561 |  | Waterproofing for sunken areas | 3d | 2025-08-02 | 2025-08-06 | PG-10997 | 279.57d |
| PG-11562 |  | Floor Tiling - Wet area | 5d | 2025-09-01 | 2025-09-06 | PG-11561, PG-11558 | 258.9d |
| PG-11563 |  | Floor Tiling - Dry area | 5d | 2025-09-06 | 2025-09-12 | PG-11562 FF+5d | 258.9d |
| PG-11564 |  | Wooden doors | 5d | 2025-09-19 | 2025-09-25 | PG-11559 FF | 258.9d |
|  | 1.3.1.2.4.24 | **Floor 21** |  | 2025-08-16 | 2025-10-30 |  |  |
|  | 1.3.1.2.4.24.1 | **Ceiling Finishing works - Civil** |  | 2025-08-25 | 2025-10-30 |  |  |

| ID | WBS | Task | Duration | Start | Finish | Predecessors | Total float |
| --- | --- | --- | --- | --- | --- | --- | --- |
| PG-11565 |  | Gypsum Plastering | 6d | 2025-08-25 | 2025-09-01 | PG-11212 | 296.9d |
| PG-11566 |  | Cornice fixing | 3.67d | 2025-09-10 | 2025-09-15 | PG-11209 FF+6d | 296.9d |
| PG-11568 |  | Toilet False ceiling | 4d | 2025-09-18 | 2025-09-23 | PG-11576 FF+5d | 275.23d |
| PG-11567 |  | Painting Works - Putty, Primer and 1st | 6d | 2025-09-29 | 2025-10-07 | PG-11566, PG-11571 | 284.9d |
| PG-11569 |  | Final Coat Painting | 19.67d | 2025-10-07 | 2025-10-30 | PG-11567, PG-11578 | 284.9d |
|  | 1.3.1.2.4.24.2 | **Wall Finishing works - Civil** |  | 2025-08-16 | 2025-10-30 |  |  |
| PG-11570 |  | Balcony Railing Fixing works | 4d | 2025-08-16 | 2025-08-21 | PG-11002 | 276.9d |
| PG-11572 |  | Dadoing - Wet area | 5d | 2025-09-05 | 2025-09-11 | PG-11207 | 249.23d |
| PG-11571 |  | UPVC Windows & Sliding doors | 5d | 2025-09-23 | 2025-09-29 | PG-11570, PG-11577 FF+5d | 249.23d |
| PG-11573 |  | Painting Works - Putty, Primer and 1st | 6d | 2025-09-29 | 2025-10-07 | PG-11571 | 249.23d |
| PG-11574 |  | Final Coat Painting | 19.67d | 2025-10-07 | 2025-10-30 | PG-11578 | 249.23d |
|  | 1.3.1.2.4.24.3 | **Floor Finishing Works - Civil** |  | 2025-08-16 | 2025-10-07 |  |  |
| PG-11575 |  | Waterproofing for sunken areas | 3d | 2025-08-16 | 2025-08-20 | PG-11002 | 267.9d |
| PG-11576 |  | Floor Tiling - Wet area | 5d | 2025-09-11 | 2025-09-17 | PG-11575, PG-11572 | 249.23d |
| PG-11577 |  | Floor Tiling - Dry area | 5d | 2025-09-17 | 2025-09-23 | PG-11576 FF+5d | 249.23d |
| PG-11578 |  | Wooden doors | 5d | 2025-09-30 | 2025-10-07 | PG-11573 FF | 249.23d |
|  | 1.3.1.2.4.25 | **Floor 22** |  | 2025-09-06 | 2025-11-22 |  |  |
|  | 1.3.1.2.4.25.1 | **Ceiling Finishing works - Civil** |  | 2025-09-16 | 2025-11-22 |  |  |
| PG-11579 |  | Gypsum Plastering | 6d | 2025-09-16 | 2025-09-23 | PG-11221 | 146.9d |
| PG-11580 |  | Cornice fixing | 3.67d | 2025-10-03 | 2025-10-08 | PG-11218 FF+6d | 146.9d |
| PG-11582 |  | Toilet False ceiling | 4d | 2025-10-11 | 2025-10-16 | PG-11590 FF+5d | 256.4d |
| PG-11581 |  | Painting Works - Putty, Primer and 1st | 6d | 2025-10-22 | 2025-10-29 | PG-11580, PG-11585 | 134.73d |
| PG-11583 |  | Final Coat Painting | 19.67d | 2025-10-29 | 2025-11-22 | PG-11581, PG-11592 | 264.07d |
|  | 1.3.1.2.4.25.2 | **Wall Finishing works - Civil** |  | 2025-09-06 | 2025-11-22 |  |  |
| PG-11584 |  | Balcony Railing Fixing works | 4d | 2025-09-06 | 2025-09-11 | PG-11206 FS+7d | 163.57d |
| PG-11586 |  | Dadoing - Wet area | 5d | 2025-09-27 | 2025-10-04 | PG-11216 | 134.73d |
| PG-11585 |  | UPVC Windows & Sliding doors | 5d | 2025-10-16 | 2025-10-22 | PG-11584, PG-11591 FF+5d | 134.73d |
| PG-11587 |  | Painting Works - Putty, Primer and 1st | 6d | 2025-10-22 | 2025-10-29 | PG-11585 | 229.4d |
| PG-11588 |  | Final Coat Painting | 19.67d | 2025-10-29 | 2025-11-22 | PG-11592 | 229.4d |
|  | 1.3.1.2.4.25.3 | **Floor Finishing Works - Civil** |  | 2025-09-06 | 2025-10-29 |  |  |
| PG-11589 |  | Waterproofing for sunken areas | 3d | 2025-09-06 | 2025-09-10 | PG-11206 FS+7d | 154.57d |
| PG-11590 |  | Floor Tiling - Wet area | 5d | 2025-10-04 | 2025-10-10 | PG-11589, PG-11586 | 134.73d |
| PG-11591 |  | Floor Tiling - Dry area | 5d | 2025-10-10 | 2025-10-16 | PG-11590 FF+5d | 134.73d |
| PG-11592 |  | Wooden doors | 5d | 2025-10-23 | 2025-10-29 | PG-11587 FF | 229.4d |
|  | 1.3.1.2.4.26 | **Floor 23** |  | 2025-09-29 | 2025-12-12 |  |  |
|  | 1.3.1.2.4.26.1 | **Ceiling Finishing works - Civil** |  | 2025-10-09 | 2025-12-12 |  |  |
| PG-11593 |  | Gypsum Plastering | 6d | 2025-10-09 | 2025-10-16 | PG-11230 | 258.23d |
| PG-11594 |  | Cornice fixing | 4d | 2025-10-25 | 2025-10-30 | PG-11227 FF+6d | 258.23d |
| PG-11596 |  | Toilet False ceiling | 4d | 2025-11-03 | 2025-11-07 | PG-11604 FF+5d | 238.4d |
| PG-11595 |  | Painting Works - Putty, Primer and 1st | 6d | 2025-11-13 | 2025-11-20 | PG-11594, PG-11599 | 247.23d |
| PG-11597 |  | Final Coat Painting | 19.67d | 2025-11-20 | 2025-12-12 | PG-11595, PG-11606 | 247.23d |
|  | 1.3.1.2.4.26.2 | **Wall Finishing works - Civil** |  | 2025-09-29 | 2025-12-12 |  |  |
| PG-11598 |  | Balcony Railing Fixing works | 4d | 2025-09-29 | 2025-10-04 | PG-11215 FS+7d | 239.07d |
| PG-11600 |  | Dadoing - Wet area | 5d | 2025-10-20 | 2025-10-25 | PG-11225 | 211.4d |
| PG-11599 |  | UPVC Windows & Sliding doors | 5d | 2025-11-07 | 2025-11-13 | PG-11598, PG-11605 FF+5d | 211.4d |
| PG-11601 |  | Painting Works - Putty, Primer and 1st | 6d | 2025-11-13 | 2025-11-20 | PG-11599 | 211.4d |
| PG-11602 |  | Final Coat Painting | 19.67d | 2025-11-20 | 2025-12-12 | PG-11606 | 211.4d |
|  | 1.3.1.2.4.26.3 | **Floor Finishing Works - Civil** |  | 2025-09-29 | 2025-11-20 |  |  |
| PG-11603 |  | Waterproofing for sunken areas | 3d | 2025-09-29 | 2025-10-03 | PG-11215 FS+7d | 230.07d |
| PG-11604 |  | Floor Tiling - Wet area | 5d | 2025-10-25 | 2025-10-31 | PG-11603, PG-11600 | 211.4d |
| PG-11605 |  | Floor Tiling - Dry area | 5d | 2025-10-31 | 2025-11-07 | PG-11604 FF+5d | 211.4d |
| PG-11606 |  | Wooden doors | 5d | 2025-11-14 | 2025-11-20 | PG-11601 FF | 211.4d |
|  | 1.3.1.2.4.27 | **Floor 24** |  | 2025-10-21 | 2026-01-02 |  |  |
|  | 1.3.1.2.4.27.1 | **Ceiling Finishing works - Civil** |  | 2025-10-29 | 2026-01-02 |  |  |
| PG-11607 |  | Gypsum Plastering | 6d | 2025-10-29 | 2025-11-06 | PG-11239 | 240.9d |
| PG-11608 |  | Cornice fixing | 3.67d | 2025-11-17 | 2025-11-20 | PG-11236 FF+6d | 240.9d |
| PG-11610 |  | Toilet False ceiling | 4d | 2025-11-24 | 2025-11-28 | PG-11618 FF+5d | 217.73d |
| PG-11609 |  | Painting Works - Putty, Primer and 1st | 6d | 2025-12-04 | 2025-12-11 | PG-11608, PG-11613 | 228.9d |
| PG-11611 |  | Final Coat Painting | 18.5d | 2025-12-11 | 2026-01-02 | PG-11609, PG-11620 | 228.9d |
|  | 1.3.1.2.4.27.2 | **Wall Finishing works - Civil** |  | 2025-10-21 | 2026-01-02 |  |  |
| PG-11612 |  | Balcony Railing Fixing works | 4d | 2025-10-21 | 2025-10-25 | PG-11224 FS+7d | 220.9d |
| PG-11614 |  | Dadoing - Wet area | 5d | 2025-11-11 | 2025-11-17 | PG-11234 | 192.23d |
| PG-11613 |  | UPVC Windows & Sliding doors | 5d | 2025-11-28 | 2025-12-04 | PG-11612, PG-11619 FF+5d | 192.23d |
| PG-11615 |  | Painting Works - Putty, Primer and 1st | 6d | 2025-12-04 | 2025-12-11 | PG-11613 | 192.23d |
| PG-11616 |  | Final Coat Painting | 18.5d | 2025-12-11 | 2026-01-02 | PG-11620 | 192.23d |
|  | 1.3.1.2.4.27.3 | **Floor Finishing Works - Civil** |  | 2025-10-21 | 2025-12-11 |  |  |
| PG-11617 |  | Waterproofing for sunken areas | 3d | 2025-10-21 | 2025-10-24 | PG-11224 FS+7d | 211.9d |
| PG-11618 |  | Floor Tiling - Wet area | 5d | 2025-11-17 | 2025-11-22 | PG-11617, PG-11614 | 192.23d |
| PG-11619 |  | Floor Tiling - Dry area | 5d | 2025-11-22 | 2025-11-28 | PG-11618 FF+5d | 192.23d |
| PG-11620 |  | Wooden doors | 5d | 2025-12-05 | 2025-12-11 | PG-11615 FF | 192.23d |

| ID | WBS | Task | Duration | Start | Finish | Predecessors | Total float |
| --- | --- | --- | --- | --- | --- | --- | --- |
|  | 1.3.1.2.4.28 | **Floor 25** |  | 2025-11-12 | 2026-01-27 |  |  |
|  | 1.3.1.2.4.28.1 | **Ceiling Finishing works - Civil** |  | 2025-11-21 | 2026-01-27 |  |  |
| PG-11621 |  | Gypsum Plastering | 6d | 2025-11-21 | 2025-11-28 | PG-11248 | 220.4d |
| PG-11622 |  | Cornice fixing | 3.67d | 2025-12-08 | 2025-12-12 | PG-11245 FF+6d | 220.4d |
| PG-11624 |  | Toilet False ceiling | 4d | 2025-12-16 | 2025-12-20 | PG-11632 FF+5d | 199.73d |
| PG-11623 |  | Painting Works - Putty, Primer and 1st | 6d | 2025-12-26 | 2026-01-02 | PG-11622, PG-11627 | 208.4d |
| PG-11625 |  | Final Coat Painting | 20.33d | 2026-01-02 | 2026-01-27 | PG-11623, PG-11634 | 208.4d |
|  | 1.3.1.2.4.28.2 | **Wall Finishing works - Civil** |  | 2025-11-12 | 2026-01-27 |  |  |
| PG-11626 |  | Balcony Railing Fixing works | 4d | 2025-11-12 | 2025-11-17 | PG-11233 FS+7d | 201.4d |
| PG-11628 |  | Dadoing - Wet area | 5d | 2025-12-03 | 2025-12-09 | PG-11243 | 172.73d |
| PG-11627 |  | UPVC Windows & Sliding doors | 5d | 2025-12-20 | 2025-12-26 | PG-11626, PG-11633 FF+5d | 172.73d |
| PG-11629 |  | Painting Works - Putty, Primer and 1st | 6d | 2025-12-26 | 2026-01-02 | PG-11627 | 172.73d |
| PG-11630 |  | Final Coat Painting | 20.33d | 2026-01-02 | 2026-01-27 | PG-11634 | 172.73d |
|  | 1.3.1.2.4.28.3 | **Floor Finishing Works - Civil** |  | 2025-11-12 | 2026-01-02 |  |  |
| PG-11631 |  | Waterproofing for sunken areas | 3d | 2025-11-12 | 2025-11-15 | PG-11233 FS+7d | 192.4d |
| PG-11632 |  | Floor Tiling - Wet area | 5d | 2025-12-09 | 2025-12-15 | PG-11631, PG-11628 | 172.73d |
| PG-11633 |  | Floor Tiling - Dry area | 5d | 2025-12-15 | 2025-12-20 | PG-11632 FF+5d | 172.73d |
| PG-11634 |  | Wooden doors | 5d | 2025-12-27 | 2026-01-02 | PG-11629 FF | 172.73d |
|  | 1.3.1.2.4.29 | **Floor 26** |  | 2025-12-04 | 2026-02-17 |  |  |
|  | 1.3.1.2.4.29.1 | **Ceiling Finishing works - Civil** |  | 2025-12-13 | 2026-02-17 |  |  |
| PG-11635 |  | Gypsum Plastering | 6d | 2025-12-13 | 2025-12-20 | PG-11257 | 203.4d |
| PG-11636 |  | Cornice fixing | 3.67d | 2025-12-30 | 2026-01-03 | PG-11254 FF+6d | 203.4d |
| PG-11638 |  | Toilet False ceiling | 4d | 2026-01-07 | 2026-01-12 | PG-11646 FF+5d | 151.23d |
| PG-11637 |  | Painting Works - Putty, Primer and 1st | 6d | 2026-01-17 | 2026-01-24 | PG-11636, PG-11641 | 191.57d |
| PG-11639 |  | Final Coat Painting | 19.33d | 2026-01-24 | 2026-02-17 | PG-11637, PG-11648 | 191.57d |
|  | 1.3.1.2.4.29.2 | **Wall Finishing works - Civil** |  | 2025-12-04 | 2026-02-17 |  |  |
| PG-11640 |  | Balcony Railing Fixing works | 4d | 2025-12-04 | 2025-12-09 | PG-11242 FS+7d | 153.9d |
| PG-11642 |  | Dadoing - Wet area | 5d | 2025-12-25 | 2025-12-31 | PG-11252 | 125.23d |
| PG-11641 |  | UPVC Windows & Sliding doors | 5d | 2026-01-12 | 2026-01-17 | PG-11640, PG-11647 FF+5d | 125.23d |
| PG-11643 |  | Painting Works - Putty, Primer and 1st | 6d | 2026-01-17 | 2026-01-24 | PG-11641 | 125.23d |
| PG-11644 |  | Final Coat Painting | 19.33d | 2026-01-24 | 2026-02-17 | PG-11648 | 125.23d |
|  | 1.3.1.2.4.29.3 | **Floor Finishing Works - Civil** |  | 2025-12-04 | 2026-01-24 |  |  |
| PG-11645 |  | Waterproofing for sunken areas | 3d | 2025-12-04 | 2025-12-08 | PG-11242 FS+7d | 144.9d |
| PG-11646 |  | Floor Tiling - Wet area | 5d | 2025-12-31 | 2026-01-06 | PG-11645, PG-11642 | 125.23d |
| PG-11647 |  | Floor Tiling - Dry area | 5d | 2026-01-06 | 2026-01-12 | PG-11646 FF+5d | 125.23d |
| PG-11648 |  | Wooden doors | 5d | 2026-01-19 | 2026-01-24 | PG-11643 FF | 125.23d |
|  | 1.3.1.2.4.30 | **External Finishing works** |  | 2025-09-13 | 2026-01-10 |  |  |
| PG-11649 |  | External walls tie rod hole plugging with GP2 | 30d | 2025-09-13 | 2025-10-20 | PG-11008 | 221.4d |
| PG-11650 |  | External walls grinding works | 40d | 2025-10-08 | 2025-11-25 | PG-11649 FF+30d | 221.4d |
| PG-11651 |  | Texture and painting works | 45d | 2025-11-19 | 2026-01-10 | PG-11650 FF+40d | 221.4d |
|  | 1.3.1.2.5 | **Corridor & Fire Staircase Finishing works** |  | 2025-11-20 | 2026-03-20 |  |  |
|  | 1.3.1.2.5.1 | **Ceiling Finishing works - Civil** |  | 2025-11-20 | 2026-02-13 |  |  |
| PG-11652 |  | Gypsum Plastering | 6d | 2025-11-20 | 2025-11-27 | PG-11221 FF+60d | 16.4d |
| PG-11653 |  | Cornice fixing | 4d | 2025-11-26 | 2025-12-01 | PG-11580 FF+45d | 146.9d |
| PG-11654 |  | Painting Works - Putty, Primer and 1st | 6d | 2025-12-15 | 2025-12-22 | PG-11581 FF+45d, PG-11653 | 134.73d |
| PG-11655 |  | False ceiling | 30d | 2025-12-22 | 2026-01-27 | PG-11654 | 134.73d |
| PG-11656 |  | Final Coat Painting | 30.67d | 2026-01-07 | 2026-02-13 | PG-11655 FF+15d | 164.73d |
|  | 1.3.1.2.5.2 | **Wall Finishing works - Civil** |  | 2025-12-26 | 2026-03-20 |  |  |
| PG-11657 |  | UPVC Windows & Sliding doors | 5d | 2025-12-26 | 2026-01-01 | PG-11585 FF+60d | 140.73d |
| PG-11658 |  | Wall Cladding Upto 1.2 Mts | 20d | 2026-01-13 | 2026-02-06 | PG-11657 FF+30d | 140.73d |
| PG-11659 |  | Painting Works - Texture & one coat Painting works | 15d | 2026-02-13 | 2026-03-03 | PG-11658, PG-11655 FF+30d | 134.73d |
| PG-11660 |  | Final Coat Painting | 20.67d | 2026-02-24 | 2026-03-20 | PG-11659 FF+15d, PG-11662 | 134.73d |
|  | 1.3.1.2.5.3 | **Floor Finishing Works - Civil** |  | 2025-11-27 | 2025-12-26 |  |  |
| PG-11661 |  | Fire Doors installation | 10d | 2025-11-27 | 2025-12-09 | PG-11652 | 185.23d |
| PG-11662 |  | Vitrified tile flooring works | 15d | 2025-12-09 | 2025-12-26 | PG-11661 | 185.23d |
|  | 1.3.1.2.5.4 | **Fire Staircase Finishing Works - Civil** |  | 2025-11-27 | 2026-03-19 |  |  |
| PG-11663 |  | Staircase Railing Fixing works | 20d | 2025-11-27 | 2025-12-20 | PG-11652 | 16.4d |
| PG-11664 |  | Wall and ceiling Gypsum plastering | 29.67d | 2025-12-09 | 2026-01-13 | PG-11663 FF+20d | 16.4d |
| PG-11665 |  | Staircase Flooring and Skirting Works | 40d | 2025-12-26 | 2026-02-12 | PG-11664 FF+25d | 16.4d |
| PG-11666 |  | UPVC Window fixing works | 14d | 2026-02-13 | 2026-03-02 | PG-11665 FF+15d | 16.4d |
| PG-11667 |  | Staircase Painting works | 20d | 2026-02-24 | 2026-03-19 | PG-11666 FF+15d | 16.4d |
|  | 1.3.1.2.6 | **MEP Civil Works (Shaft, Lift Shaft & OHT )** |  | 2025-08-30 | 2026-01-29 |  |  |
|  | 1.3.1.2.6.1 | **Lift Shaft Works** |  | 2025-08-30 | 2026-01-29 |  |  |
| PG-11668 |  | Tie rod hole packing | 8d | 2025-08-30 | 2025-09-09 | PG-11005 | 121.9d |
| PG-11669 |  | Grinding works | 5d | 2025-09-09 | 2025-09-15 | PG-11668 | 121.9d |
| PG-11670 |  | Lift pit water proofing works | 20.33d | 2025-09-15 | 2025-10-09 | PG-11669 | 121.9d |
| PG-11671 |  | Shaft door opening finishing | 6.67d | 2025-10-09 | 2025-10-17 | PG-11670 | 121.9d |
| PG-11672 |  | Painting works | 8d | 2025-10-17 | 2025-10-27 | PG-11671 | 121.9d |
| PG-11673 |  | Lift Wall Cladding Works | 14.5d | 2026-01-12 | 2026-01-29 | PG-11708 | 157.57d |
|  | 1.3.1.2.6.2 | **Electrical Shaft works** |  | 2025-08-30 | 2025-10-03 |  |  |

| ID | WBS | Task | Duration | Start | Finish | Predecessors | Complete | Total float |
| --- | --- | --- | --- | --- | --- | --- | --- | --- |
| PG-11674 |  | Tie rod hole packing | 8d | 2025-08-30 | 2025-09-09 | PG-11005 |  | 228.57d |
| PG-11675 |  | Grinding works | 5d | 2025-09-09 | 2025-09-15 | PG-11674 |  | 228.57d |
| PG-11676 |  | Shaft door opening finishing | 7d | 2025-09-15 | 2025-09-23 | PG-11675 |  | 228.57d |
| PG-11677 |  | Painting works | 8d | 2025-09-23 | 2025-10-03 | PG-11676 |  | 228.57d |
|  | 1.3.1.2.6.3 | **FPS Shaft works** |  | 2025-08-30 | 2025-10-03 |  |  |  |
| PG-11678 |  | Tie rod hole packing | 8d | 2025-08-30 | 2025-09-09 | PG-11005 |  | 228.4d |
| PG-11679 |  | Grinding works | 5d | 2025-09-09 | 2025-09-15 | PG-11678 |  | 228.4d |
| PG-11680 |  | Shaft door opening finishing | 7d | 2025-09-15 | 2025-09-23 | PG-11679 |  | 228.4d |
| PG-11681 |  | Painting works | 8d | 2025-09-23 | 2025-10-03 | PG-11680 |  | 228.4d |
|  | 1.3.1.2.6.4 | **PHE Shaft works** |  | 2025-08-30 | 2025-10-03 |  |  |  |
| PG-11682 |  | Tie rod hole packing | 8d | 2025-08-30 | 2025-09-09 | PG-11005 |  | 187.23d |
| PG-11683 |  | Grinding works | 5d | 2025-09-09 | 2025-09-15 | PG-11682 |  | 187.23d |
| PG-11684 |  | Shaft door opening finishing | 7d | 2025-09-15 | 2025-09-23 | PG-11683 |  | 187.23d |
| PG-11685 |  | Painting works | 8d | 2025-09-23 | 2025-10-03 | PG-11684 |  | 187.23d |
|  | 1.3.1.2.6.5 | **Data & Communication Shaft** |  | 2025-08-30 | 2025-09-30 |  |  |  |
| PG-11686 |  | Tie rod hole packing | 8d | 2025-08-30 | 2025-09-09 | PG-11005 |  | 223.07d |
| PG-11687 |  | Grinding works | 5d | 2025-09-09 | 2025-09-15 | PG-11686 |  | 223.07d |
| PG-11688 |  | Shaft door opening finishing | 5d | 2025-09-15 | 2025-09-20 | PG-11687 |  | 223.07d |
| PG-11689 |  | Painting works | 8d | 2025-09-20 | 2025-09-30 | PG-11688 |  | 223.07d |
|  | 1.3.1.2.6.6 | **OHT Works** |  | 2025-08-30 | 2025-10-20 |  |  |  |
| PG-11690 |  | Tank materials Supply & Shifting | 10d | 2025-08-30 | 2025-09-11 | PG-11005 |  | 194.57d |
| PG-11691 |  | Assembling OHT FRP Tank | 10d | 2025-09-11 | 2025-09-23 | PG-11690 |  | 194.57d |
| PG-11692 |  | Installation of OHT Tank | 15d | 2025-09-23 | 2025-10-11 | PG-11691 |  | 194.57d |
| PG-11693 |  | Water tightness works and checking | 7d | 2025-10-11 | 2025-10-20 | PG-11692 |  | 194.57d |
|  | 1.3.1.2.7 | **MEP Shaft works** |  | 2025-09-30 | 2025-12-23 |  |  |  |
|  | 1.3.1.2.7.1 | **Electrical** |  | 2025-10-03 | 2025-11-13 |  |  |  |
| PG-11694 |  | Tray Works | 9.67d | 2025-10-03 | 2025-10-15 | PG-11677 |  | 228.57d |
| PG-11695 |  | Cable & Conducting works | 9.5d | 2025-10-15 | 2025-10-25 | PG-11694 |  | 228.57d |
| PG-11696 |  | Wiring/DB/connector box installation and termination works | 14.67d | 2025-10-25 | 2025-11-13 | PG-11695 |  | 228.57d |
|  | 1.3.1.2.7.2 | **FPS** |  | 2025-10-03 | 2025-11-13 |  |  |  |
| PG-11697 |  | Shaft MS Piping & fixtures installation | 19.67d | 2025-10-03 | 2025-10-27 | PG-11681 |  | 228.4d |
| PG-11698 |  | Tray / cabling / conducting & wiring works | 14d | 2025-10-27 | 2025-11-13 | PG-11697 |  | 228.4d |
|  | 1.3.1.2.7.3 | **Data & Communication** |  | 2025-09-30 | 2025-11-19 |  |  |  |
| PG-11699 |  | Tray Works | 11.67d | 2025-09-30 | 2025-10-15 | PG-11689 |  | 223.07d |
| PG-11700 |  | Tray / cabling / conducting & wiring works | 14.5d | 2025-10-15 | 2025-10-31 | PG-11699 |  | 223.07d |
| PG-11701 |  | Wiring/DB/connector box installation and termination works | 14.67d | 2025-10-31 | 2025-11-19 | PG-11700 |  | 223.07d |
|  | 1.3.1.2.7.4 | **PHE** |  | 2025-10-03 | 2025-12-23 |  |  |  |
| PG-11702 |  | Bracket fixing works | 6.83d | 2025-10-03 | 2025-10-11 | PG-11685 |  | 187.23d |
| PG-11703 |  | Piping Works | 15d | 2025-10-11 | 2025-10-28 | PG-11702 |  | 187.23d |
| PG-11704 |  | Terrace Ring main & OHT Connection works | 40d | 2025-10-28 | 2025-12-15 | PG-11009, PG-11703, PG-11693 |  | 187.23d |
| PG-11705 |  | Commissioning | 6.67d | 2025-12-15 | 2025-12-23 | PG-11704 |  | 187.23d |
|  | 1.3.1.2.8 | **Lift Installation and Testing works** |  | 2025-09-15 | 2026-04-16 |  |  |  |
| PG-11706 |  | Lift Shaft Survey works | 9.33d | 2025-09-15 | 2025-09-25 | PG-11669 |  | 147.57d |
| PG-11707 |  | Guide Rails fixing works | 39.83d | 2025-10-27 | 2025-12-13 | PG-11706, PG-11672 |  | 121.9d |
| PG-11708 |  | Lift Frame fixing works | 24.67d | 2025-12-13 | 2026-01-12 | PG-11707 |  | 121.9d |
| PG-11709 |  | CAR Assembly works | 19.67d | 2026-01-12 | 2026-02-04 | PG-11708 |  | 121.9d |
| PG-11710 |  | Lift Machine Room Works | 30.5d | 2026-02-04 | 2026-03-12 | PG-11709 |  | 121.9d |
| PG-11711 |  | Slow Speed & High Speed Testing works | 30.67d | 2026-03-12 | 2026-04-16 | PG-11673, PG-11710 |  | 121.9d |
|  | 1.3.1.2.9 | **Electrical Panel Works** |  | 2025-07-21 | 2026-02-25 |  |  |  |
|  | 1.3.1.2.9.1 | **Civil Finishing Works** |  | 2025-07-21 | 2025-09-03 |  |  |  |
| PG-11712 |  | Wall Tie rod hole packing & Grinding works. | 13.67d | 2025-07-21 | 2025-08-06 | PG-11494 |  | 164.07d |
| PG-11713 |  | Window, Louver and Door fixing works | 7d | 2025-08-06 | 2025-08-14 | PG-11712 |  | 164.07d |
| PG-11714 |  | Pedestal works | 10d | 2025-08-14 | 2025-08-26 | PG-11713 |  | 164.07d |
| PG-11715 |  | Painting works | 6.5d | 2025-08-26 | 2025-09-03 | PG-11714 |  | 164.07d |
|  | 1.3.1.2.9.2 | **Electrical Panel works** |  | 2025-09-03 | 2026-02-25 |  |  |  |
| PG-11716 |  | Electrical Panel assembly works | 58.5d | 2025-09-03 | 2025-11-12 | PG-11715 |  | 164.07d |
| PG-11717 |  | Electrical Panel installation and cable termination. | 58.67d | 2025-11-12 | 2026-01-20 | PG-11716 |  | 164.07d |
| PG-11718 |  | Electrical Panel Testing and commissioning works | 30d | 2026-01-20 | 2026-02-25 | PG-11717 |  | 164.07d |
|  | 1.3.1.2.10 | **Entrance Lobby works** |  | 2026-03-19 | 2026-08-05 |  |  |  |
| PG-11719 |  | Flooring Works | 30.5d | 2026-03-19 | 2026-04-23 | PG-11667 |  | 16.4d |
| PG-11720 |  | Glass Door and installation Works | 30d | 2026-04-23 | 2026-05-28 | PG-11719 |  | 16.4d |
| PG-11722 |  | Canopy Works | 25d | 2026-04-23 | 2026-05-22 | PG-11719 |  | 36.07d |
| PG-11721 |  | Painting Works | 15d | 2026-05-28 | 2026-06-15 | PG-11720 |  | 16.4d |
| PG-11723 |  | Interior Works | 44.67d | 2026-06-15 | 2026-08-05 | PG-11722, PG-11721 |  | 16.4d |
|  | 1.3.1.2.11 | **Lightening Arrester works** |  | 2026-01-10 | 2026-01-22 |  |  |  |
| PG-11724 |  | Conductor will be lifted with RCC Works, But Terrace works will be done once Parapet Painting done | 10.33d | 2026-01-10 | 2026-01-22 | PG-11651 |  | 221.4d |
|  | 1.3.1.3 | **Tower 3 ( 2B+G+29 ) TYP 4 Units - 118 Units** |  | 2023-10-04 | 2026-10-17 |  |  |  |
|  | 1.3.1.3.1 | **Foundation works** |  | 2023-10-04 | 2024-04-11 |  |  |  |
| PG-11725 |  | Setting out - Marking | 3d | 2023-10-04 A | 2023-10-07 A | PG-0998 SS | 100% |  |
| PG-11726 |  | Excavation Works | 45d | 2023-10-07 A | 2023-11-30 A | PG-11725 | 100% |  |

| ID | WBS | Task | Duration | Start | Finish | Predecessors | Complete |
| --- | --- | --- | --- | --- | --- | --- | --- |
| PG-11727 |  | Piling Works - 177 Nos | 45d | 2023-12-06 A | 2024-01-30 A | PG-11726 FF+50d | 100% |
| PG-11728 |  | Backfilling and Consolidation | 19.67d | 2024-01-19 A | 2024-02-13 A | PG-0999, PG-11727 FF+12d | 100% |
| PG-11729 |  | Waterproofing & PCC works | 15d | 2024-02-09 A | 2024-02-27 A | PG-11728 FF+12d | 100% |
| PG-11730 |  | Raft Reinforcement | 15d | 2024-02-27 A | 2024-03-15 A | PG-11729 FF+15d | 100% |
| PG-11731 |  | Raft Formwork | 8d | 2024-03-23 A | 2024-04-02 A | PG-11730 FF+15d | 100% |
| PG-11732 |  | Raft Concreting | 3d | 2024-04-08 A | 2024-04-11 A | PG-11731 FF+8d | 100% |
|  | 1.3.1.3.2 | **Structure works** |  | 2024-04-11 | 2026-01-10 |  |  |
|  | 1.3.1.3.2.1 | **LBF** |  | 2024-04-11 | 2024-05-10 |  |  |
|  | 1.3.1.3.2.1.1 | **Columns / shear walls** |  | 2024-04-11 | 2024-04-29 |  |  |
| PG-11733 |  | Reinforcement | 4d | 2024-04-11 A | 2024-04-16 A | PG-11732 | 100% |
| PG-11735 |  | Concrete | 9.5d | 2024-04-17 A | 2024-04-29 A | PG-11734 FF+5d | 100% |
| PG-11734 |  | Formwork | 4d | 2024-04-17 A | 2024-04-23 A | PG-11733 FF+5d | 100% |
|  | 1.3.1.3.2.1.2 | **Slab, Beams & Staircase** |  | 2024-04-29 | 2024-05-10 |  |  |
| PG-11736 |  | Formwork | 3d | 2024-04-29 A | 2024-05-02 A | PG-11735 | 100% |
| PG-11737 |  | Reinforcement | 3d | 2024-05-04 A | 2024-05-08 A | PG-11736 FF+5d | 100% |
| PG-11738 |  | Concrete | 1d | 2024-05-09 A | 2024-05-10 A | PG-11737 FS+1d | 100% |
|  | 1.3.1.3.2.2 | **UBF** |  | 2024-05-10 | 2024-06-07 |  |  |
|  | 1.3.1.3.2.2.1 | **Columns / shear walls** |  | 2024-05-10 | 2024-05-27 |  |  |
| PG-11739 |  | Reinforcement | 4d | 2024-05-10 A | 2024-05-15 A | PG-11738 | 100% |
| PG-11741 |  | Concrete | 9.5d | 2024-05-15 A | 2024-05-27 A | PG-11740 FF+5d | 100% |
| PG-11740 |  | Formwork | 4d | 2024-05-16 A | 2024-05-21 A | PG-11739 FF+5d | 100% |
|  | 1.3.1.3.2.2.2 | **Slab, Beams & Staircase** |  | 2024-05-27 | 2024-06-07 |  |  |
| PG-11742 |  | Formwork | 3d | 2024-05-27 A | 2024-05-30 A | PG-11741 | 100% |
| PG-11743 |  | Reinforcement | 3d | 2024-06-01 A | 2024-06-05 A | PG-11742 FF+5d | 100% |
| PG-11744 |  | Concrete | 1d | 2024-06-06 A | 2024-06-07 A | PG-11743 FS+1d | 100% |
|  | 1.3.1.3.2.3 | **Ground Floor** |  | 2024-06-07 | 2024-08-29 |  |  |
|  | 1.3.1.3.2.3.1 | **Columns / shear walls** |  | 2024-06-07 | 2024-08-19 |  |  |
| PG-11745 |  | Reinforcement | 4d | 2024-06-07 A | 2024-06-12 A | PG-11744 | 100% |
| PG-11747 |  | Concrete | 7.5d | 2024-08-08 A | 2024-08-19 A | PG-11746 FF+3d | 100% |
| PG-11746 |  | Formwork | 4d | 2024-08-09 A | 2024-08-14 A | PG-10003, PG-11745 FF+4d | 100% |
|  | 1.3.1.3.2.3.2 | **Slab, Beams & Staircase** |  | 2024-08-19 | 2024-08-29 |  |  |
| PG-11748 |  | Formwork | 3d | 2024-08-19 A | 2024-08-22 A | PG-11747 | 100% |
| PG-11749 |  | Reinforcement | 3d | 2024-08-23 A | 2024-08-27 A | PG-11748 FF+4d | 100% |
| PG-11750 |  | Concrete | 1d | 2024-08-28 A | 2024-08-29 A | PG-11749 FS+1d | 100% |
|  | 1.3.1.3.2.4 | **Floor 01** |  | 2024-08-29 | 2024-09-23 |  |  |
|  | 1.3.1.3.2.4.1 | **Columns / shear walls** |  | 2024-08-29 | 2024-09-11 |  |  |
| PG-11751 |  | Reinforcement | 4d | 2024-08-29 A | 2024-09-03 A | PG-11750 | 100% |
| PG-11753 |  | Concrete | 7.5d | 2024-09-02 A | 2024-09-11 A | PG-11752 FF+3d | 100% |
| PG-11752 |  | Formwork | 4d | 2024-09-03 A | 2024-09-07 A | PG-11751 FF+4d | 100% |
|  | 1.3.1.3.2.4.2 | **Slab, Beams & Staircase** |  | 2024-09-11 | 2024-09-23 |  |  |
| PG-11754 |  | Formwork | 3d | 2024-09-11 A | 2024-09-16 A | PG-11753 | 100% |
| PG-11755 |  | Reinforcement | 3d | 2024-09-17 A | 2024-09-20 A | PG-11754 FF+4d | 100% |
| PG-11756 |  | Concrete | 1d | 2024-09-21 A | 2024-09-23 A | PG-11755 FS+1d | 100% |
|  | 1.3.1.3.2.5 | **Floor 02** |  | 2024-09-23 | 2024-10-17 |  |  |
|  | 1.3.1.3.2.5.1 | **Columns / shear walls** |  | 2024-09-23 | 2024-10-07 |  |  |
| PG-11757 |  | Reinforcement | 4d | 2024-09-23 A | 2024-09-27 A | PG-11756 | 100% |
| PG-11758 |  | Formwork | 4d | 2024-09-27 A | 2024-10-03 A | PG-11757 FF+4d | 100% |
| PG-11759 |  | Concrete | 3.67d | 2024-10-01 A | 2024-10-07 A | PG-11758 FF+3d | 100% |
|  | 1.3.1.3.2.5.2 | **Slab, Beams & Staircase** |  | 2024-10-07 | 2024-10-17 |  |  |
| PG-11760 |  | Formwork | 3d | 2024-10-07 A | 2024-10-10 A | PG-11759 | 100% |
| PG-11761 |  | Reinforcement | 3d | 2024-10-11 A | 2024-10-15 A | PG-11760 FF+4d | 100% |
| PG-11762 |  | Concrete | 1d | 2024-10-16 A | 2024-10-17 A | PG-11761 FS+1d | 100% |
|  | 1.3.1.3.2.6 | **Floor 03** |  | 2024-10-17 | 2024-11-12 |  |  |
|  | 1.3.1.3.2.6.1 | **Columns / shear walls** |  | 2024-10-17 | 2024-10-30 |  |  |
| PG-11763 |  | Reinforcement | 4d | 2024-10-17 A | 2024-10-22 A | PG-11762 | 100% |
| PG-11764 |  | Formwork | 4d | 2024-10-22 A | 2024-10-26 A | PG-11763 FF+4d | 100% |
| PG-11765 |  | Concrete | 3.67d | 2024-10-25 A | 2024-10-30 A | PG-11764 FF+3d | 100% |
|  | 1.3.1.3.2.6.2 | **Slab, Beams & Staircase** |  | 2024-10-30 | 2024-11-12 |  |  |
| PG-11766 |  | Formwork | 3d | 2024-10-30 A | 2024-11-04 A | PG-11765 | 100% |
| PG-11767 |  | Reinforcement | 3d | 2024-11-05 A | 2024-11-08 A | PG-11766 FF+4d | 100% |
| PG-11768 |  | Concrete | 1d | 2024-11-09 A | 2024-11-12 A | PG-11767 FS+1d | 100% |
|  | 1.3.1.3.2.7 | **Floor 04** |  | 2024-11-12 | 2024-12-02 |  |  |
|  | 1.3.1.3.2.7.1 | **Columns / shear walls** |  | 2024-11-12 | 2024-11-21 |  |  |
| PG-11769 |  | Reinforcement | 4d | 2024-11-12 A | 2024-11-16 A | PG-11768 | 100% |
| PG-11770 |  | Formwork | 4d | 2024-11-16 A | 2024-11-21 A | PG-11769 FF+4d | 100% |
|  | 1.3.1.3.2.7.2 | **Slab, Beams & Staircase** |  | 2024-11-22 | 2024-12-02 |  |  |
| PG-11771 |  | Formwork | 3d | 2024-11-22 A | 2024-11-26 A | PG-11770 FF+4d | 100% |
| PG-11772 |  | Reinforcement | 3d | 2024-11-27 A | 2024-11-30 A | PG-11771 FF+4d | 100% |
| PG-11773 |  | Concrete | 1d | 2024-11-30 A | 2024-12-02 A | PG-11772 | 100% |
|  | 1.3.1.3.2.8 | **Floor 05** |  | 2024-12-02 | 2024-12-23 |  |  |

| ID | WBS | Task | Duration | Start | Finish | Predecessors | Complete |
| --- | --- | --- | --- | --- | --- | --- | --- |
|  | 1.3.1.3.2.8.1 | **Columns / shear walls** |  | 2024-12-02 | 2024-12-11 |  |  |
| PG-11774 |  | Reinforcement | 4d | 2024-12-02 A | 2024-12-06 A | PG-11773 | 100% |
| PG-11775 |  | Formwork | 4d | 2024-12-06 A | 2024-12-11 A | PG-11774 FF+4d | 100% |
|  | 1.3.1.3.2.8.2 | **Slab, Beams & Staircase** |  | 2024-12-12 | 2024-12-23 |  |  |
| PG-11776 |  | Formwork | 3d | 2024-12-12 A | 2024-12-16 A | PG-11775 FF+4d | 100% |
| PG-11777 |  | Reinforcement | 3d | 2024-12-17 A | 2024-12-20 A | PG-11776 FF+4d | 100% |
| PG-11778 |  | Concrete | 1d | 2024-12-20 A | 2024-12-23 A | PG-11777 | 100% |
|  | 1.3.1.3.2.9 | **Floor 06** |  | 2024-12-23 | 2025-01-07 |  |  |
|  | 1.3.1.3.2.9.1 | **Columns / shear walls** |  | 2024-12-23 | 2025-01-01 |  |  |
| PG-11779 |  | Reinforcement | 4d | 2024-12-23 A | 2024-12-27 A | PG-11778 | 100% |
| PG-11780 |  | Formwork | 4d | 2024-12-27 A | 2025-01-01 A | PG-11779 FF+4d | 100% |
|  | 1.3.1.3.2.9.2 | **Slab, Beams & Staircase** |  | 2024-12-31 | 2025-01-07 |  |  |
| PG-11781 |  | Formwork | 3d | 2024-12-31 A | 2025-01-03 A | PG-11780 FF+2d | 100% |
| PG-11782 |  | Reinforcement | 3d | 2025-01-02 A | 2025-01-06 A | PG-11781 FF+2d | 100% |
| PG-11783 |  | Concrete | 1d | 2025-01-06 A | 2025-01-07 A | PG-11782 | 100% |
|  | 1.3.1.3.2.10 | **Floor 07** |  | 2025-01-07 | 2025-01-22 |  |  |
|  | 1.3.1.3.2.10.1 | **Columns / shear walls** |  | 2025-01-07 | 2025-01-16 |  |  |
| PG-11784 |  | Reinforcement | 4d | 2025-01-07 A | 2025-01-11 A | PG-11783 | 100% |
| PG-11785 |  | Formwork | 4d | 2025-01-11 A | 2025-01-16 A | PG-11784 FF+4d | 100% |
|  | 1.3.1.3.2.10.2 | **Slab, Beams & Staircase** |  | 2025-01-15 | 2025-01-22 |  |  |
| PG-11786 |  | Formwork | 3d | 2025-01-15 A | 2025-01-18 A | PG-11785 FF+2d | 100% |
| PG-11787 |  | Reinforcement | 3d | 2025-01-17 A | 2025-01-21 A | PG-11786 FF+2d | 100% |
| PG-11788 |  | Concrete | 1d | 2025-01-21 A | 2025-01-22 A | PG-11787 | 100% |
|  | 1.3.1.3.2.11 | **Floor 08** |  | 2025-01-22 | 2025-02-07 |  |  |
|  | 1.3.1.3.2.11.1 | **Columns / shear walls** |  | 2025-01-22 | 2025-01-31 |  |  |
| PG-11789 |  | Reinforcement | 4d | 2025-01-22 A | 2025-01-27 A | PG-11788 | 100% |
| PG-11790 |  | Formwork | 4d | 2025-01-27 A | 2025-01-31 A | PG-11789 FF+4d | 100% |
|  | 1.3.1.3.2.11.2 | **Slab, Beams & Staircase** |  | 2025-01-30 | 2025-02-07 |  |  |
| PG-11791 |  | Formwork | 3d | 2025-01-30 A | 2025-02-04 A | PG-11790 FF+2d | 100% |
| PG-11792 |  | Reinforcement | 3d | 2025-02-03 A | 2025-02-06 A | PG-11791 FF+2d | 100% |
| PG-11793 |  | Concrete | 1d | 2025-02-06 A | 2025-02-07 A | PG-11792 | 100% |
|  | 1.3.1.3.2.12 | **Floor 09** |  | 2025-02-07 | 2025-02-24 |  |  |
|  | 1.3.1.3.2.12.1 | **Columns / shear walls** |  | 2025-02-07 | 2025-02-17 |  |  |
| PG-11794 |  | Reinforcement | 4d | 2025-02-07 A | 2025-02-12 A | PG-11793 | 100% |
| PG-11795 |  | Formwork | 4d | 2025-02-12 A | 2025-02-17 A | PG-11794 FF+4d | 100% |
|  | 1.3.1.3.2.12.2 | **Slab, Beams & Staircase** |  | 2025-02-15 | 2025-02-24 |  |  |
| PG-11796 |  | Formwork | 3d | 2025-02-15 A | 2025-02-19 A | PG-11795 FF+2d | 100% |
| PG-11797 |  | Reinforcement | 3d | 2025-02-18 A | 2025-02-22 A | PG-11796 FF+2d | 100% |
| PG-11798 |  | Concrete | 1d | 2025-02-22 A | 2025-02-24 A | PG-11797 | 100% |
|  | 1.3.1.3.2.13 | **Floor 10** |  | 2025-02-24 | 2025-03-11 |  |  |
|  | 1.3.1.3.2.13.1 | **Columns / shear walls** |  | 2025-02-24 | 2025-03-05 |  |  |
| PG-11799 |  | Reinforcement | 4d | 2025-02-24 A | 2025-02-28 A | PG-11798 | 100% |
| PG-11800 |  | Formwork | 4d | 2025-02-28 A | 2025-03-05 A | PG-11799 FF+4d | 100% |
|  | 1.3.1.3.2.13.2 | **Slab, Beams & Staircase** |  | 2025-03-04 | 2025-03-11 |  |  |
| PG-11801 |  | Formwork | 3d | 2025-03-04 A | 2025-03-07 A | PG-11800 FF+2d | 100% |
| PG-11802 |  | Reinforcement | 3d | 2025-03-06 A | 2025-03-10 A | PG-11801 FF+2d | 100% |
| PG-11803 |  | Concrete | 1d | 2025-03-10 A | 2025-03-11 A | PG-11802 | 100% |
|  | 1.3.1.3.2.14 | **Floor 11** |  | 2025-03-11 | 2025-03-27 |  |  |
|  | 1.3.1.3.2.14.1 | **Columns / shear walls** |  | 2025-03-11 | 2025-03-21 |  |  |
| PG-11804 |  | Reinforcement | 4d | 2025-03-11 A | 2025-03-15 A | PG-11803 | 100% |
| PG-11805 |  | Formwork | 4d | 2025-03-15 A | 2025-03-21 A | PG-11804 FF+4d | 100% |
|  | 1.3.1.3.2.14.2 | **Slab, Beams & Staircase** |  | 2025-03-20 | 2025-03-27 |  |  |
| PG-11806 |  | Formwork | 3d | 2025-03-20 A | 2025-03-24 A | PG-11805 FF+2d | 100% |
| PG-11807 |  | Reinforcement | 3d | 2025-03-22 A | 2025-03-26 A | PG-11806 FF+2d | 100% |
| PG-11808 |  | Concrete | 1d | 2025-03-26 A | 2025-03-27 A | PG-11807 | 100% |
|  | 1.3.1.3.2.15 | **Floor 12** |  | 2025-03-27 | 2025-04-14 |  |  |
|  | 1.3.1.3.2.15.1 | **Columns / shear walls** |  | 2025-03-27 | 2025-04-05 |  |  |
| PG-11809 |  | Reinforcement | 4d | 2025-03-27 A | 2025-04-01 A | PG-11808 | 100% |
| PG-11810 |  | Formwork | 4d | 2025-04-01 A | 2025-04-05 A | PG-11809 FF+4d | 100% |
|  | 1.3.1.3.2.15.2 | **Slab, Beams & Staircase** |  | 2025-04-04 | 2025-04-14 |  |  |
| PG-11811 |  | Formwork | 3d | 2025-04-04 A | 2025-04-08 A | PG-11810 FF+2d | 100% |
| PG-11812 |  | Reinforcement | 3d | 2025-04-07 A | 2025-04-12 A | PG-11811 FF+2d | 100% |
| PG-11813 |  | Concrete | 1d | 2025-04-12 A | 2025-04-14 A | PG-11812 | 100% |
|  | 1.3.1.3.2.16 | **Floor 13** |  | 2025-04-14 | 2025-05-03 |  |  |
|  | 1.3.1.3.2.16.1 | **Columns / shear walls** |  | 2025-04-14 | 2025-04-25 |  |  |
| PG-11814 |  | Reinforcement | 4d | 2025-04-14 A | 2025-04-21 A | PG-11813 | 100% |
| PG-11815 |  | Formwork | 4d | 2025-04-21 A | 2025-04-25 A | PG-11814 FF+4d | 100% |
|  | 1.3.1.3.2.16.2 | **Slab, Beams & Staircase** |  | 2025-04-24 | 2025-05-03 |  |  |
| PG-11816 |  | Formwork | 3d | 2025-04-24 A | 2025-04-28 A | PG-11815 FF+2d | 100% |
| PG-11817 |  | Reinforcement | 3d | 2025-04-26 A | 2025-05-02 A | PG-11816 FF+2d | 100% |

| ID | WBS | Task | Duration | Start | Finish | Predecessors | Complete | Total float |
| --- | --- | --- | --- | --- | --- | --- | --- | --- |
| PG-11818 |  | Concrete | 1d | 2025-05-02 A | 2025-05-03 A | PG-11817 | 100% |  |
|  | 1.3.1.3.2.17 | **Floor 14** |  | 2025-05-03 | 2025-05-19 |  |  |  |
|  | 1.3.1.3.2.17.1 | **Columns / shear walls** |  | 2025-05-03 | 2025-05-13 |  |  |  |
| PG-11819 |  | Reinforcement | 4d | 2025-05-03 A | 2025-05-08 A | PG-11818 | 100% |  |
| PG-11820 |  | Formwork | 4d | 2025-05-08 A | 2025-05-13 | PG-11819 FF+4d | 33% | 0d |
|  | 1.3.1.3.2.17.2 | **Slab, Beams & Staircase** |  | 2025-05-12 | 2025-05-19 |  |  |  |
| PG-11821 |  | Formwork | 3d | 2025-05-12 | 2025-05-15 | PG-11820 FF+2d |  | 0d |
| PG-11822 |  | Reinforcement | 3d | 2025-05-14 | 2025-05-17 | PG-11821 FF+2d |  | 0d |
| PG-11823 |  | Concrete | 1d | 2025-05-17 | 2025-05-19 | PG-11822 |  | 0d |
|  | 1.3.1.3.2.18 | **Floor 15** |  | 2025-05-19 | 2025-06-03 |  |  |  |
|  | 1.3.1.3.2.18.1 | **Columns / shear walls** |  | 2025-05-19 | 2025-05-28 |  |  |  |
| PG-11824 |  | Reinforcement | 4d | 2025-05-19 | 2025-05-23 | PG-11823 |  | 0d |
| PG-11825 |  | Formwork | 4d | 2025-05-23 | 2025-05-28 | PG-11824 FF+4d |  | 0d |
|  | 1.3.1.3.2.18.2 | **Slab, Beams & Staircase** |  | 2025-05-27 | 2025-06-03 |  |  |  |
| PG-11826 |  | Formwork | 3d | 2025-05-27 | 2025-05-30 | PG-11825 FF+2d |  | 0d |
| PG-11827 |  | Reinforcement | 3d | 2025-05-29 | 2025-06-02 | PG-11826 FF+2d |  | 0d |
| PG-11828 |  | Concrete | 1d | 2025-06-02 | 2025-06-03 | PG-11827 |  | 0d |
|  | 1.3.1.3.2.19 | **Floor 16** |  | 2025-06-03 | 2025-06-16 |  |  |  |
|  | 1.3.1.3.2.19.1 | **Columns / shear walls** |  | 2025-06-03 | 2025-06-10 |  |  |  |
| PG-11829 |  | Reinforcement | 4d | 2025-06-03 | 2025-06-07 | PG-11828 |  | 0d |
| PG-11830 |  | Formwork | 4d | 2025-06-05 | 2025-06-10 | PG-11829 FF+2d |  | 0d |
|  | 1.3.1.3.2.19.2 | **Slab, Beams & Staircase** |  | 2025-06-09 | 2025-06-16 |  |  |  |
| PG-11831 |  | Formwork | 3d | 2025-06-09 | 2025-06-12 | PG-11830 FF+2d |  | 0d |
| PG-11832 |  | Reinforcement | 3d | 2025-06-11 | 2025-06-14 | PG-11831 FF+2d |  | 0d |
| PG-11833 |  | Concrete | 1d | 2025-06-14 | 2025-06-16 | PG-11832 |  | 0d |
|  | 1.3.1.3.2.20 | **Floor 17** |  | 2025-06-16 | 2025-06-28 |  |  |  |
|  | 1.3.1.3.2.20.1 | **Columns / shear walls** |  | 2025-06-16 | 2025-06-23 |  |  |  |
| PG-11834 |  | Reinforcement | 4d | 2025-06-16 | 2025-06-20 | PG-11833 |  | 0d |
| PG-11835 |  | Formwork | 4d | 2025-06-18 | 2025-06-23 | PG-11834 FF+2d |  | 0d |
|  | 1.3.1.3.2.20.2 | **Slab, Beams & Staircase** |  | 2025-06-21 | 2025-06-28 |  |  |  |
| PG-11836 |  | Formwork | 3d | 2025-06-21 | 2025-06-25 | PG-11835 FF+2d |  | 0d |
| PG-11837 |  | Reinforcement | 3d | 2025-06-24 | 2025-06-27 | PG-11836 FF+2d |  | 0d |
| PG-11838 |  | Concrete | 1d | 2025-06-27 | 2025-06-28 | PG-11837 |  | 0d |
|  | 1.3.1.3.2.21 | **Floor 18** |  | 2025-06-28 | 2025-07-11 |  |  |  |
|  | 1.3.1.3.2.21.1 | **Columns / shear walls** |  | 2025-06-28 | 2025-07-05 |  |  |  |
| PG-11839 |  | Reinforcement | 4d | 2025-06-28 | 2025-07-03 | PG-11838 |  | 0d |
| PG-11840 |  | Formwork | 4d | 2025-07-01 | 2025-07-05 | PG-11839 FF+2d |  | 0d |
|  | 1.3.1.3.2.21.2 | **Slab, Beams & Staircase** |  | 2025-07-04 | 2025-07-11 |  |  |  |
| PG-11841 |  | Formwork | 3d | 2025-07-04 | 2025-07-08 | PG-11840 FF+2d |  | 0d |
| PG-11842 |  | Reinforcement | 3d | 2025-07-07 | 2025-07-10 | PG-11841 FF+2d |  | 0d |
| PG-11843 |  | Concrete | 1d | 2025-07-10 | 2025-07-11 | PG-11842 |  | 0d |
|  | 1.3.1.3.2.22 | **Floor 19** |  | 2025-07-11 | 2025-07-24 |  |  |  |
|  | 1.3.1.3.2.22.1 | **Columns / shear walls** |  | 2025-07-11 | 2025-07-18 |  |  |  |
| PG-11844 |  | Reinforcement | 4d | 2025-07-11 | 2025-07-16 | PG-11843 |  | 0d |
| PG-11845 |  | Formwork | 4d | 2025-07-14 | 2025-07-18 | PG-11844 FF+2d |  | 0d |
|  | 1.3.1.3.2.22.2 | **Slab, Beams & Staircase** |  | 2025-07-17 | 2025-07-24 |  |  |  |
| PG-11846 |  | Formwork | 3d | 2025-07-17 | 2025-07-21 | PG-11845 FF+2d |  | 0d |
| PG-11847 |  | Reinforcement | 3d | 2025-07-19 | 2025-07-23 | PG-11846 FF+2d |  | 0d |
| PG-11848 |  | Concrete | 1d | 2025-07-23 | 2025-07-24 | PG-11847 |  | 0d |
|  | 1.3.1.3.2.23 | **Floor 20** |  | 2025-07-24 | 2025-08-06 |  |  |  |
|  | 1.3.1.3.2.23.1 | **Columns / shear walls** |  | 2025-07-24 | 2025-07-31 |  |  |  |
| PG-11849 |  | Reinforcement | 4d | 2025-07-24 | 2025-07-29 | PG-11848 |  | 0d |
| PG-11850 |  | Formwork | 4d | 2025-07-26 | 2025-07-31 | PG-11849 FF+2d |  | 0d |
|  | 1.3.1.3.2.23.2 | **Slab, Beams & Staircase** |  | 2025-07-30 | 2025-08-06 |  |  |  |
| PG-11851 |  | Formwork | 3d | 2025-07-30 | 2025-08-02 | PG-11850 FF+2d |  | 0d |
| PG-11852 |  | Reinforcement | 3d | 2025-08-01 | 2025-08-05 | PG-11851 FF+2d |  | 0d |
| PG-11853 |  | Concrete | 1d | 2025-08-05 | 2025-08-06 | PG-11852 |  | 0d |
|  | 1.3.1.3.2.24 | **Floor 21** |  | 2025-08-06 | 2025-08-20 |  |  |  |
|  | 1.3.1.3.2.24.1 | **Columns / shear walls** |  | 2025-08-06 | 2025-08-13 |  |  |  |
| PG-11854 |  | Reinforcement | 4d | 2025-08-06 | 2025-08-11 | PG-11853 |  | 0d |
| PG-11855 |  | Formwork | 4d | 2025-08-08 | 2025-08-13 | PG-11854 FF+2d |  | 0d |
|  | 1.3.1.3.2.24.2 | **Slab, Beams & Staircase** |  | 2025-08-12 | 2025-08-20 |  |  |  |
| PG-11856 |  | Formwork | 3d | 2025-08-12 | 2025-08-16 | PG-11855 FF+2d |  | 0d |
| PG-11857 |  | Reinforcement | 3d | 2025-08-14 | 2025-08-19 | PG-11856 FF+2d |  | 0d |
| PG-11858 |  | Concrete | 1d | 2025-08-19 | 2025-08-20 | PG-11857 |  | 0d |
|  | 1.3.1.3.2.25 | **Floor 22** |  | 2025-08-20 | 2025-09-02 |  |  |  |
|  | 1.3.1.3.2.25.1 | **Columns / shear walls** |  | 2025-08-20 | 2025-08-27 |  |  |  |
| PG-11859 |  | Reinforcement | 4d | 2025-08-20 | 2025-08-25 | PG-11858 |  | 0d |
| PG-11860 |  | Formwork | 4d | 2025-08-22 | 2025-08-27 | PG-11859 FF+2d |  | 0d |
|  | 1.3.1.3.2.25.2 | **Slab, Beams & Staircase** |  | 2025-08-26 | 2025-09-02 |  |  |  |

| ID | WBS | Task | Duration | Start | Finish | Predecessors | Total float |
| --- | --- | --- | --- | --- | --- | --- | --- |
| PG-11861 |  | Formwork | 3d | 2025-08-26 | 2025-08-29 | PG-11860 FF+2d | 0d |
| PG-11862 |  | Reinforcement | 3d | 2025-08-28 | 2025-09-01 | PG-11861 FF+2d | 0d |
| PG-11863 |  | Concrete | 1d | 2025-09-01 | 2025-09-02 | PG-11862 | 0d |
|  | 1.3.1.3.2.26 | **Floor 23** |  | 2025-09-02 | 2025-09-15 |  |  |
|  | 1.3.1.3.2.26.1 | **Columns / shear walls** |  | 2025-09-02 | 2025-09-09 |  |  |
| PG-11864 |  | Reinforcement | 4d | 2025-09-02 | 2025-09-06 | PG-11863 | 0d |
| PG-11865 |  | Formwork | 4d | 2025-09-04 | 2025-09-09 | PG-11864 FF+2d | 0d |
|  | 1.3.1.3.2.26.2 | **Slab, Beams & Staircase** |  | 2025-09-08 | 2025-09-15 |  |  |
| PG-11866 |  | Formwork | 3d | 2025-09-08 | 2025-09-11 | PG-11865 FF+2d | 0d |
| PG-11867 |  | Reinforcement | 3d | 2025-09-10 | 2025-09-13 | PG-11866 FF+2d | 0d |
| PG-11868 |  | Concrete | 1d | 2025-09-13 | 2025-09-15 | PG-11867 | 0d |
|  | 1.3.1.3.2.27 | **Floor 24** |  | 2025-09-15 | 2025-09-27 |  |  |
|  | 1.3.1.3.2.27.1 | **Columns / shear walls** |  | 2025-09-15 | 2025-09-22 |  |  |
| PG-11869 |  | Reinforcement | 4d | 2025-09-15 | 2025-09-19 | PG-11868 | 0d |
| PG-11870 |  | Formwork | 4d | 2025-09-17 | 2025-09-22 | PG-11869 FF+2d | 0d |
|  | 1.3.1.3.2.27.2 | **Slab, Beams & Staircase** |  | 2025-09-20 | 2025-09-27 |  |  |
| PG-11871 |  | Formwork | 3d | 2025-09-20 | 2025-09-24 | PG-11870 FF+2d | 0d |
| PG-11872 |  | Reinforcement | 3d | 2025-09-23 | 2025-09-26 | PG-11871 FF+2d | 0d |
| PG-11873 |  | Concrete | 1d | 2025-09-26 | 2025-09-27 | PG-11872 | 0d |
|  | 1.3.1.3.2.28 | **Floor 25** |  | 2025-09-27 | 2025-10-11 |  |  |
|  | 1.3.1.3.2.28.1 | **Columns / shear walls** |  | 2025-09-27 | 2025-10-06 |  |  |
| PG-11874 |  | Reinforcement | 4d | 2025-09-27 | 2025-10-03 | PG-11873 | 0d |
| PG-11875 |  | Formwork | 4d | 2025-09-30 | 2025-10-06 | PG-11874 FF+2d | 0d |
|  | 1.3.1.3.2.28.2 | **Slab, Beams & Staircase** |  | 2025-10-04 | 2025-10-11 |  |  |
| PG-11876 |  | Formwork | 3d | 2025-10-04 | 2025-10-08 | PG-11875 FF+2d | 0d |
| PG-11877 |  | Reinforcement | 3d | 2025-10-07 | 2025-10-10 | PG-11876 FF+2d | 0d |
| PG-11878 |  | Concrete | 1d | 2025-10-10 | 2025-10-11 | PG-11877 | 0d |
|  | 1.3.1.3.2.29 | **Floor 26** |  | 2025-10-11 | 2025-10-24 |  |  |
|  | 1.3.1.3.2.29.1 | **Columns / shear walls** |  | 2025-10-11 | 2025-10-18 |  |  |
| PG-11879 |  | Reinforcement | 4d | 2025-10-11 | 2025-10-16 | PG-11878 | 0d |
| PG-11880 |  | Formwork | 4d | 2025-10-14 | 2025-10-18 | PG-11879 FF+2d | 0d |
|  | 1.3.1.3.2.29.2 | **Slab, Beams & Staircase** |  | 2025-10-17 | 2025-10-24 |  |  |
| PG-11881 |  | Formwork | 3d | 2025-10-17 | 2025-10-21 | PG-11880 FF+2d | 0d |
| PG-11882 |  | Reinforcement | 3d | 2025-10-20 | 2025-10-23 | PG-11881 FF+2d | 0d |
| PG-11883 |  | Concrete | 1d | 2025-10-23 | 2025-10-24 | PG-11882 | 0d |
|  | 1.3.1.3.2.30 | **Floor 27** |  | 2025-10-24 | 2025-11-07 |  |  |
|  | 1.3.1.3.2.30.1 | **Columns / shear walls** |  | 2025-10-24 | 2025-10-31 |  |  |
| PG-11884 |  | Reinforcement | 4d | 2025-10-24 | 2025-10-29 | PG-11883 | 0d |
| PG-11885 |  | Formwork | 4d | 2025-10-27 | 2025-10-31 | PG-11884 FF+2d | 0d |
|  | 1.3.1.3.2.30.2 | **Slab, Beams & Staircase** |  | 2025-10-30 | 2025-11-07 |  |  |
| PG-11886 |  | Formwork | 3d | 2025-10-30 | 2025-11-04 | PG-11885 FF+2d | 0d |
| PG-11887 |  | Reinforcement | 3d | 2025-11-03 | 2025-11-06 | PG-11886 FF+2d | 0d |
| PG-11888 |  | Concrete | 1d | 2025-11-06 | 2025-11-07 | PG-11887 | 0d |
|  | 1.3.1.3.2.31 | **Floor 28** |  | 2025-11-07 | 2025-11-20 |  |  |
|  | 1.3.1.3.2.31.1 | **Columns / shear walls** |  | 2025-11-07 | 2025-11-14 |  |  |
| PG-11889 |  | Reinforcement | 4d | 2025-11-07 | 2025-11-12 | PG-11888 | 0d |
| PG-11890 |  | Formwork | 4d | 2025-11-10 | 2025-11-14 | PG-11889 FF+2d | 0d |
|  | 1.3.1.3.2.31.2 | **Slab, Beams & Staircase** |  | 2025-11-13 | 2025-11-20 |  |  |
| PG-11891 |  | Formwork | 3d | 2025-11-13 | 2025-11-17 | PG-11890 FF+2d | 0d |
| PG-11892 |  | Reinforcement | 3d | 2025-11-15 | 2025-11-19 | PG-11891 FF+2d | 0d |
| PG-11893 |  | Concrete | 1d | 2025-11-19 | 2025-11-20 | PG-11892 | 0d |
|  | 1.3.1.3.2.32 | **Floor 29** |  | 2025-11-20 | 2025-12-03 |  |  |
|  | 1.3.1.3.2.32.1 | **Columns / shear walls** |  | 2025-11-20 | 2025-11-27 |  |  |
| PG-11894 |  | Reinforcement | 4d | 2025-11-20 | 2025-11-25 | PG-11893 | 0d |
| PG-11895 |  | Formwork | 4d | 2025-11-22 | 2025-11-27 | PG-11894 FF+2d | 0d |
|  | 1.3.1.3.2.32.2 | **Slab, Beams & Staircase** |  | 2025-11-26 | 2025-12-03 |  |  |
| PG-11896 |  | Formwork | 3d | 2025-11-26 | 2025-11-29 | PG-11895 FF+2d | 0d |
| PG-11897 |  | Reinforcement | 3d | 2025-11-28 | 2025-12-02 | PG-11896 FF+2d | 0d |
| PG-11898 |  | Concrete | 1d | 2025-12-02 | 2025-12-03 | PG-11897 | 0d |
|  | 1.3.1.3.2.33 | **Above Terrace Floor** |  | 2025-12-03 | 2026-01-10 |  |  |
|  | 1.3.1.3.2.33.1 | **Columns / shear walls/Parapet Walls** |  | 2025-12-03 | 2025-12-16 |  |  |
| PG-11899 |  | Reinforcement | 4d | 2025-12-03 | 2025-12-08 | PG-11898, PG-11893, PG-11888, PG-11883, PG-11878, PG-11873, PG-11868 | 51.67d |
| PG-11900 |  | Formwork | 5d | 2025-12-05 | 2025-12-11 | PG-11899 FF+3d | 51.67d |
| PG-11901 |  | Concrete | 4.67d | 2025-12-11 | 2025-12-16 | PG-11900 | 51.67d |
|  | 1.3.1.3.2.33.2 | **Slab, Beams & Staircase Head rooms, Lift headroom** |  | 2025-12-08 | 2026-01-10 |  |  |
| PG-11905 |  | Terrace Waterproofing and Protective finishing. | 29.67d | 2025-12-08 | 2026-01-10 | PG-11904 FF+10d | 165.5d |
| PG-11902 |  | Formwork | 5d | 2025-12-16 | 2025-12-22 | PG-11901 | 58.83d |
| PG-11903 |  | Reinforcement | 5d | 2025-12-22 | 2025-12-27 | PG-11902 FF+5d | 58.83d |
| PG-11904 |  | Concrete | 2d | 2025-12-27 | 2025-12-30 | PG-11903 | 58.83d |
|  | 1.3.1.3.3 | **MEP Internal works** |  | 2024-12-23 | 2026-06-11 |  |  |

| ID | WBS | Task | Duration | Start | Finish | Predecessors | Complete | Total float |
| --- | --- | --- | --- | --- | --- | --- | --- | --- |
|  | 1.3.1.3.3.1 | **LBF** |  | 2024-12-23 | 2025-03-10 |  |  |  |
| PG-11906 |  | Surface Drainage System (Chambers and Pipeline for Sump) | 15d | 2024-12-23 A | 2025-01-09 A | PG-11778 | 100% |  |
| PG-11907 |  | Pump fixing for collection sump | 2.67d | 2025-02-01 A | 2025-02-05 A | PG-12184 | 100% |  |
| PG-11908 |  | FPS Piping and Sprinkler Fixing works | 9.5d | 2025-02-22 A | 2025-03-06 A | PG-11907, PG-12187 FF+5d | 100% |  |
| PG-11909 |  | Electrical Conducting and Light Fixing works | 9.5d | 2025-02-25 A | 2025-03-10 A | PG-12187 FF+7d | 100% |  |
|  | 1.3.1.3.3.2 | **UBF** |  | 2025-02-17 | 2025-03-17 |  |  |  |
| PG-11910 |  | Piping for Rainwater and Soil lines in Ceiling | 20d | 2025-02-17 A | 2025-03-13 A | PG-12187 FF+10d | 100% |  |
| PG-11911 |  | FPS Piping and Sprinkler Fixing works | 9.67d | 2025-02-28 A | 2025-03-13 A | PG-11908 FF+5d | 100% |  |
| PG-11912 |  | Electrical Conducting and Light Fixing works | 9.5d | 2025-03-04 A | 2025-03-17 A | PG-11909 FF+5d | 100% |  |
|  | 1.3.1.3.3.3 | **Ground Floor** |  | 2024-12-23 | 2025-03-17 |  |  |  |
|  | 1.3.1.3.3.3.1 | **PHE Works** |  | 2024-12-23 | 2025-03-17 |  |  |  |
| PG-11913 |  | 1st Fix - Piping works | 12d | 2024-12-23 A | 2025-01-06 A | PG-11778 | 100% |  |
| PG-11914 |  | 2nd Fix - diverter fixing & Pressure testing | 10d | 2025-01-01 A | 2025-01-14 A | PG-11913 FF+6d | 100% |  |
| PG-11915 |  | Final Fix - CP & Sanitary fixtures | 9.67d | 2025-03-04 A | 2025-03-17 A | PG-12197, PG-12203 FF+6d | 100% |  |
|  | 1.3.1.3.3.3.2 | **Fire Fighting Works** |  | 2025-01-01 | 2025-03-15 |  |  |  |
| PG-11916 |  | 1st Fix - Piping and Shaft hydrant works | 11.67d | 2025-01-01 A | 2025-01-16 A | PG-12194 FF+6d | 100% |  |
| PG-11917 |  | 2nd Fix - Sprinkler fixing & Pressure testing | 9.67d | 2025-02-10 A | 2025-02-21 A | PG-12202 FF+6d | 100% |  |
| PG-11918 |  | Final Fix - Smoke & heat detectors, FHC , FAS Etc. | 9.67d | 2025-03-04 A | 2025-03-15 A | PG-11917, PG-12203 FF+6d | 100% |  |
|  | 1.3.1.3.3.3.3 | **Electrical Works** |  | 2024-12-23 | 2025-03-15 |  |  |  |
| PG-11919 |  | 1st Fix - GI wire pulling | 8d | 2024-12-23 A | 2025-01-01 A | PG-11778 | 100% |  |
| PG-11920 |  | 2nd Fix - Wiring works | 14.67d | 2025-02-03 A | 2025-02-20 A | PG-12202 FF+5d | 100% |  |
| PG-11921 |  | Final Fix - Electrical Fixtures | 5.67d | 2025-03-08 A | 2025-03-15 A | PG-11920, PG-12203 FF+6d | 100% |  |
|  | 1.3.1.3.3.4 | **Floor 1** |  | 2025-01-07 | 2025-04-03 |  |  |  |
|  | 1.3.1.3.3.4.1 | **PHE Works** |  | 2025-01-07 | 2025-04-03 |  |  |  |
| PG-11922 |  | 1st Fix - Piping works | 12d | 2025-01-07 A | 2025-01-22 A | PG-11783 | 100% |  |
| PG-11923 |  | 2nd Fix - diverter fixing & Pressure testing | 10d | 2025-01-17 A | 2025-01-30 A | PG-11922 FF+6d | 100% |  |
| PG-11924 |  | Final Fix - CP & Sanitary fixtures | 9.5d | 2025-03-21 A | 2025-04-03 A | PG-12211, PG-12217 FF+6d | 100% |  |
|  | 1.3.1.3.3.4.2 | **Fire Fighting Works** |  | 2025-01-17 | 2025-04-02 |  |  |  |
| PG-11925 |  | 1st Fix - Piping and Shaft hydrant works | 11.67d | 2025-01-17 A | 2025-01-31 A | PG-12208 FF+6d | 100% |  |
| PG-11926 |  | 2nd Fix - Sprinkler fixing & Pressure testing | 9.67d | 2025-02-26 A | 2025-03-10 A | PG-12216 FF+6d | 100% |  |
| PG-11927 |  | Final Fix - Smoke & heat detectors, FHC , FAS Etc. | 9.5d | 2025-03-21 A | 2025-04-02 A | PG-11926, PG-12217 FF+6d | 100% |  |
|  | 1.3.1.3.3.4.3 | **Electrical Works** |  | 2025-01-07 | 2025-04-02 |  |  |  |
| PG-11928 |  | 1st Fix - GI wire pulling | 8d | 2025-01-07 A | 2025-01-16 A | PG-11783 | 100% |  |
| PG-11929 |  | 2nd Fix - Wiring works | 14.67d | 2025-02-19 A | 2025-03-10 A | PG-12216 FF+5d | 100% |  |
| PG-11930 |  | Final Fix - Electrical Fixtures | 5.5d | 2025-03-26 A | 2025-04-02 A | PG-11929, PG-12217 FF+6d | 100% |  |
|  | 1.3.1.3.3.5 | **Floor 2** |  | 2025-01-22 | 2025-04-16 |  |  |  |
|  | 1.3.1.3.3.5.1 | **PHE Works** |  | 2025-01-22 | 2025-04-16 |  |  |  |
| PG-11931 |  | 1st Fix - Piping works | 12d | 2025-01-22 A | 2025-02-06 A | PG-11788 | 100% |  |
| PG-11932 |  | 2nd Fix - diverter fixing & Pressure testing | 10d | 2025-02-01 A | 2025-02-14 A | PG-11931 FF+6d | 100% |  |
| PG-11933 |  | Final Fix - CP & Sanitary fixtures | 10.5d | 2025-04-03 A | 2025-04-16 A | PG-12225, PG-12231 FF+6d | 100% |  |
|  | 1.3.1.3.3.5.2 | **Fire Fighting Works** |  | 2025-02-01 | 2025-04-16 |  |  |  |
| PG-11934 |  | 1st Fix - Piping and Shaft hydrant works | 11.67d | 2025-02-01 A | 2025-02-17 A | PG-12222 FF+6d | 100% |  |
| PG-11935 |  | 2nd Fix - Sprinkler fixing & Pressure testing | 9.67d | 2025-03-13 A | 2025-03-26 A | PG-12230 FF+6d | 100% |  |
| PG-11936 |  | Final Fix - Smoke & heat detectors, FHC , FAS Etc. | 10.5d | 2025-04-03 A | 2025-04-16 A | PG-11935, PG-12231 FF+6d | 100% |  |
|  | 1.3.1.3.3.5.3 | **Electrical Works** |  | 2025-01-22 | 2025-04-16 |  |  |  |
| PG-11937 |  | 1st Fix - GI wire pulling | 8d | 2025-01-22 A | 2025-02-01 A | PG-11788 | 100% |  |
| PG-11938 |  | 2nd Fix - Wiring works | 14.67d | 2025-03-06 A | 2025-03-24 A | PG-12230 FF+5d | 100% |  |
| PG-11939 |  | Final Fix - Electrical Fixtures | 6.5d | 2025-04-08 A | 2025-04-16 A | PG-11938, PG-12231 FF+6d | 100% |  |
|  | 1.3.1.3.3.6 | **Floor 3** |  | 2025-02-07 | 2025-05-09 |  |  |  |
|  | 1.3.1.3.3.6.1 | **PHE Works** |  | 2025-02-07 | 2025-05-09 |  |  |  |
| PG-11940 |  | 1st Fix - Piping works | 12d | 2025-02-07 A | 2025-02-22 A | PG-11793 | 100% |  |
| PG-11941 |  | 2nd Fix - diverter fixing & Pressure testing | 10d | 2025-02-18 A | 2025-03-04 A | PG-11940 FF+6d | 100% |  |
| PG-11942 |  | Final Fix - CP & Sanitary fixtures | 9.5d | 2025-04-26 A | 2025-05-09 A | PG-12239, PG-12245 FF+6d | 100% |  |
|  | 1.3.1.3.3.6.2 | **Fire Fighting Works** |  | 2025-02-18 | 2025-05-08 |  |  |  |
| PG-11943 |  | 1st Fix - Piping and Shaft hydrant works | 11.67d | 2025-02-18 A | 2025-03-04 A | PG-12236 FF+6d | 100% |  |
| PG-11944 |  | 2nd Fix - Sprinkler fixing & Pressure testing | 9.83d | 2025-03-31 A | 2025-04-11 A | PG-12244 FF+6d | 100% |  |
| PG-11945 |  | Final Fix - Smoke & heat detectors, FHC , FAS Etc. | 9.5d | 2025-04-26 A | 2025-05-08 A | PG-11944, PG-12245 FF+6d | 100% |  |
|  | 1.3.1.3.3.6.3 | **Electrical Works** |  | 2025-02-07 | 2025-05-08 |  |  |  |
| PG-11946 |  | 1st Fix - GI wire pulling | 8d | 2025-02-07 A | 2025-02-17 A | PG-11793 | 100% |  |
| PG-11947 |  | 2nd Fix - Wiring works | 14.83d | 2025-03-24 A | 2025-04-10 A | PG-12244 FF+5d | 100% |  |
| PG-11948 |  | Final Fix - Electrical Fixtures | 5.5d | 2025-05-01 A | 2025-05-08 A | PG-11947, PG-12245 FF+6d | 100% |  |
|  | 1.3.1.3.3.7 | **Floor 4** |  | 2025-02-24 | 2025-05-20 |  |  |  |
|  | 1.3.1.3.3.7.1 | **PHE Works** |  | 2025-02-24 | 2025-05-20 |  |  |  |
| PG-11949 |  | 1st Fix - Piping works | 12d | 2025-02-24 A | 2025-03-10 A | PG-11798 | 100% |  |
| PG-11950 |  | 2nd Fix - diverter fixing & Pressure testing | 10d | 2025-03-05 A | 2025-03-18 A | PG-11949 FF+6d | 100% |  |
| PG-11951 |  | Final Fix - CP & Sanitary fixtures | 8.5d | 2025-05-09 | 2025-05-20 | PG-12253, PG-12259 FF+6d |  | 390.04d |
|  | 1.3.1.3.3.7.2 | **Fire Fighting Works** |  | 2025-03-05 | 2025-05-20 |  |  |  |
| PG-11952 |  | 1st Fix - Piping and Shaft hydrant works | 11.67d | 2025-03-05 A | 2025-03-20 A | PG-12250 FF+6d | 100% |  |
| PG-11953 |  | 2nd Fix - Sprinkler fixing & Pressure testing | 10d | 2025-04-14 A | 2025-04-26 A | PG-12258 FF+6d | 100% |  |
| PG-11954 |  | Final Fix - Smoke & heat detectors, FHC , FAS Etc. | 8.5d | 2025-05-09 | 2025-05-20 | PG-11953, PG-12259 FF+6d |  | 390.04d |

| ID | WBS | Task | Duration | Start | Finish | Predecessors | Complete | Total float |
| --- | --- | --- | --- | --- | --- | --- | --- | --- |
|  | 1.3.1.3.3.7.3 | **Electrical Works** |  | 2025-02-24 | 2025-05-20 |  |  |  |
| PG-11955 |  | 1st Fix - GI wire pulling | 8d | 2025-02-24 A | 2025-03-04 A | PG-11798 | 100% |  |
| PG-11956 |  | 2nd Fix - Wiring works | 15d | 2025-04-07 A | 2025-04-25 A | PG-12258 FF+5d | 100% |  |
| PG-11957 |  | Final Fix - Electrical Fixtures | 5.5d | 2025-05-13 | 2025-05-20 | PG-11956, PG-12259 FF+6d |  | 390.04d |
|  | 1.3.1.3.3.8 | **Floor 5** |  | 2025-03-11 | 2025-08-12 |  |  |  |
|  | 1.3.1.3.3.8.1 | **PHE Works** |  | 2025-03-11 | 2025-08-12 |  |  |  |
| PG-11958 |  | 1st Fix - Piping works | 12d | 2025-03-11 A | 2025-03-26 A | PG-11803 | 100% |  |
| PG-11959 |  | 2nd Fix - diverter fixing & Pressure testing | 10d | 2025-03-21 A | 2025-04-02 A | PG-11958 FF+6d | 100% |  |
| PG-11960 |  | Final Fix - CP & Sanitary fixtures | 10.5d | 2025-07-30 | 2025-08-12 | PG-12267, PG-12273 FF+6d |  | 320.25d |
|  | 1.3.1.3.3.8.2 | **Fire Fighting Works** |  | 2025-03-20 | 2025-08-12 |  |  |  |
| PG-11961 |  | 1st Fix - Piping and Shaft hydrant works | 11.67d | 2025-03-20 A | 2025-04-03 A | PG-12264 FF+6d | 100% |  |
| PG-11962 |  | 2nd Fix - Sprinkler fixing & Pressure testing | 10d | 2025-07-09 | 2025-07-21 | PG-12272 FF+6d |  | 328.25d |
| PG-11963 |  | Final Fix - Smoke & heat detectors, FHC , FAS Etc. | 10.5d | 2025-07-30 | 2025-08-12 | PG-11962, PG-12273 FF+6d |  | 320.25d |
|  | 1.3.1.3.3.8.3 | **Electrical Works** |  | 2025-03-11 | 2025-08-12 |  |  |  |
| PG-11964 |  | 1st Fix - GI wire pulling | 7.67d | 2025-03-11 A | 2025-03-19 A | PG-11803 | 100% |  |
| PG-11965 |  | 2nd Fix - Wiring works | 12.83d | 2025-07-04 | 2025-07-19 | PG-12272 FF+5d |  | 333.25d |
| PG-11966 |  | Final Fix - Electrical Fixtures | 6.5d | 2025-08-04 | 2025-08-12 | PG-11965, PG-12273 FF+6d |  | 320.25d |
|  | 1.3.1.3.3.9 | **Floor 6** |  | 2025-03-27 | 2025-06-19 |  |  |  |
|  | 1.3.1.3.3.9.1 | **PHE Works** |  | 2025-03-27 | 2025-06-19 |  |  |  |
| PG-11967 |  | 1st Fix - Piping works | 12d | 2025-03-27 A | 2025-04-10 A | PG-11808 | 100% |  |
| PG-11968 |  | 2nd Fix - diverter fixing & Pressure testing | 10d | 2025-04-05 A | 2025-04-19 A | PG-11967 FF+6d | 100% |  |
| PG-11969 |  | Final Fix - CP & Sanitary fixtures | 9.5d | 2025-06-09 | 2025-06-19 | PG-12281, PG-12287 FF+6d |  | 365.92d |
|  | 1.3.1.3.3.9.2 | **Fire Fighting Works** |  | 2025-04-07 | 2025-06-19 |  |  |  |
| PG-11970 |  | 1st Fix - Piping and Shaft hydrant works | 11.67d | 2025-04-07 A | 2025-04-22 A | PG-12278 FF+6d | 100% |  |
| PG-11971 |  | 2nd Fix - Sprinkler fixing & Pressure testing | 10d | 2025-05-16 | 2025-05-27 | PG-12286 FF+6d |  | 375.92d |
| PG-11972 |  | Final Fix - Smoke & heat detectors, FHC , FAS Etc. | 9.5d | 2025-06-09 | 2025-06-19 | PG-11971, PG-12287 FF+6d |  | 365.92d |
|  | 1.3.1.3.3.9.3 | **Electrical Works** |  | 2025-03-27 | 2025-06-19 |  |  |  |
| PG-11973 |  | 1st Fix - GI wire pulling | 7.67d | 2025-03-27 A | 2025-04-05 A | PG-11808 | 100% |  |
| PG-11974 |  | 2nd Fix - Wiring works | 13.67d | 2025-05-10 | 2025-05-26 | PG-12286 FF+5d |  | 380.92d |
| PG-11975 |  | Final Fix - Electrical Fixtures | 5.5d | 2025-06-13 | 2025-06-19 | PG-11974, PG-12287 FF+6d |  | 365.92d |
|  | 1.3.1.3.3.10 | **Floor 7** |  | 2025-04-14 | 2025-07-04 |  |  |  |
|  | 1.3.1.3.3.10.1 | **PHE Works** |  | 2025-04-14 | 2025-07-04 |  |  |  |
| PG-11976 |  | 1st Fix - Piping works | 12d | 2025-04-14 A | 2025-04-29 A | PG-11813 | 100% |  |
| PG-11977 |  | 2nd Fix - diverter fixing & Pressure testing | 10d | 2025-04-24 A | 2025-05-08 A | PG-11976 FF+6d | 100% |  |
| PG-11978 |  | Final Fix - CP & Sanitary fixtures | 8.5d | 2025-06-25 | 2025-07-04 | PG-12295, PG-12301 FF+6d |  | 353.75d |
|  | 1.3.1.3.3.10.2 | **Fire Fighting Works** |  | 2025-04-24 | 2025-07-04 |  |  |  |
| PG-11979 |  | 1st Fix - Piping and Shaft hydrant works | 11.67d | 2025-04-24 A | 2025-05-09 A | PG-12292 FF+6d | 100% |  |
| PG-11980 |  | 2nd Fix - Sprinkler fixing & Pressure testing | 10d | 2025-06-02 | 2025-06-13 | PG-12300 FF+6d |  | 363.75d |
| PG-11981 |  | Final Fix - Smoke & heat detectors, FHC , FAS Etc. | 8.5d | 2025-06-25 | 2025-07-04 | PG-11980, PG-12301 FF+6d |  | 353.75d |
|  | 1.3.1.3.3.10.3 | **Electrical Works** |  | 2025-04-14 | 2025-07-04 |  |  |  |
| PG-11982 |  | 1st Fix - GI wire pulling | 7.67d | 2025-04-14 A | 2025-04-23 A | PG-11813 | 100% |  |
| PG-11983 |  | 2nd Fix - Wiring works | 14.67d | 2025-05-26 | 2025-06-12 | PG-12300 FF+5d |  | 367.75d |
| PG-11984 |  | Final Fix - Electrical Fixtures | 5.5d | 2025-06-28 | 2025-07-04 | PG-11983, PG-12301 FF+6d |  | 353.75d |
|  | 1.3.1.3.3.11 | **Floor 8** |  | 2025-05-03 | 2025-07-23 |  |  |  |
|  | 1.3.1.3.3.11.1 | **PHE Works** |  | 2025-05-03 | 2025-07-23 |  |  |  |
| PG-11985 |  | 1st Fix - Piping works | 12d | 2025-05-03 A | 2025-05-16 | PG-11818 | 44% | 337.17d |
| PG-11986 |  | 2nd Fix - diverter fixing & Pressure testing | 10d | 2025-05-12 | 2025-05-23 | PG-11985 FF+6d |  | 337.17d |
| PG-11987 |  | Final Fix - CP & Sanitary fixtures | 9.5d | 2025-07-11 | 2025-07-23 | PG-12309, PG-12315 FF+6d |  | 337.17d |
|  | 1.3.1.3.3.11.2 | **Fire Fighting Works** |  | 2025-05-10 | 2025-07-23 |  |  |  |
| PG-11988 |  | 1st Fix - Piping and Shaft hydrant works | 11.67d | 2025-05-10 | 2025-05-24 | PG-12306 FF+6d |  | 383.61d |
| PG-11989 |  | 2nd Fix - Sprinkler fixing & Pressure testing | 10d | 2025-06-18 | 2025-06-30 | PG-12314 FF+6d |  | 347.17d |
| PG-11990 |  | Final Fix - Smoke & heat detectors, FHC , FAS Etc. | 9.5d | 2025-07-11 | 2025-07-23 | PG-11989, PG-12315 FF+6d |  | 337.17d |
|  | 1.3.1.3.3.11.3 | **Electrical Works** |  | 2025-05-03 | 2025-07-23 |  |  |  |
| PG-11991 |  | 1st Fix - GI wire pulling | 7.67d | 2025-05-03 A | 2025-05-10 | PG-11818 | 74% | 383.61d |
| PG-11992 |  | 2nd Fix - Wiring works | 13.67d | 2025-06-13 | 2025-06-28 | PG-12314 FF+5d |  | 352.17d |
| PG-11993 |  | Final Fix - Electrical Fixtures | 5.5d | 2025-07-16 | 2025-07-23 | PG-11992, PG-12315 FF+6d |  | 337.17d |
|  | 1.3.1.3.3.12 | **Floor 9** |  | 2025-05-19 | 2025-08-05 |  |  |  |
|  | 1.3.1.3.3.12.1 | **PHE Works** |  | 2025-05-19 | 2025-08-05 |  |  |  |
| PG-11994 |  | 1st Fix - Piping works | 12d | 2025-05-19 | 2025-06-02 | PG-11823 |  | 325.33d |
| PG-11995 |  | 2nd Fix - diverter fixing & Pressure testing | 10d | 2025-05-28 | 2025-06-09 | PG-11994 FF+6d |  | 325.33d |
| PG-11996 |  | Final Fix - CP & Sanitary fixtures | 9.33d | 2025-07-25 | 2025-08-05 | PG-12323, PG-12329 FF+6d |  | 325.33d |
|  | 1.3.1.3.3.12.2 | **Fire Fighting Works** |  | 2025-05-28 | 2025-08-05 |  |  |  |
| PG-11997 |  | 1st Fix - Piping and Shaft hydrant works | 11.67d | 2025-05-28 | 2025-06-11 | PG-12320 FF+6d |  | 371.17d |
| PG-11998 |  | 2nd Fix - Sprinkler fixing & Pressure testing | 10d | 2025-07-04 | 2025-07-16 | PG-12328 FF+6d |  | 333.5d |
| PG-11999 |  | Final Fix - Smoke & heat detectors, FHC , FAS Etc. | 9.33d | 2025-07-25 | 2025-08-05 | PG-11998, PG-12329 FF+6d |  | 325.33d |
|  | 1.3.1.3.3.12.3 | **Electrical Works** |  | 2025-05-19 | 2025-08-05 |  |  |  |
| PG-12000 |  | 1st Fix - GI wire pulling | 7.83d | 2025-05-19 | 2025-05-28 | PG-11823 |  | 371.17d |
| PG-12001 |  | 2nd Fix - Wiring works | 13.67d | 2025-06-28 | 2025-07-15 | PG-12328 FF+5d |  | 338.33d |
| PG-12002 |  | Final Fix - Electrical Fixtures | 5.5d | 2025-07-30 | 2025-08-05 | PG-12001, PG-12329 FF+6d |  | 325.33d |
|  | 1.3.1.3.3.13 | **Floor 10** |  | 2025-06-03 | 2025-08-22 |  |  |  |

| ID | WBS | Task | Duration | Start | Finish | Predecessors | Total float |
| --- | --- | --- | --- | --- | --- | --- | --- |
|  | 1.3.1.3.3.13.1 | **PHE Works** |  | 2025-06-03 | 2025-08-22 |  |  |
| PG-12003 |  | 1st Fix - Piping works | 12d | 2025-06-03 | 2025-06-17 | PG-11828 | 311.17d |
| PG-12004 |  | 2nd Fix - diverter fixing & Pressure testing | 10d | 2025-06-12 | 2025-06-24 | PG-12003 FF+6d | 311.17d |
| PG-12005 |  | Final Fix - CP & Sanitary fixtures | 9.5d | 2025-08-11 | 2025-08-22 | PG-12337, PG-12343 FF+6d | 311.17d |
|  | 1.3.1.3.3.13.2 | **Fire Fighting Works** |  | 2025-06-12 | 2025-08-22 |  |  |
| PG-12006 |  | 1st Fix - Piping and Shaft hydrant works | 11.67d | 2025-06-12 | 2025-06-26 | PG-12334 FF+6d | 358.17d |
| PG-12007 |  | 2nd Fix - Sprinkler fixing & Pressure testing | 10d | 2025-07-19 | 2025-07-31 | PG-12342 FF+6d | 320.17d |
| PG-12008 |  | Final Fix - Smoke & heat detectors, FHC , FAS Etc. | 9.5d | 2025-08-11 | 2025-08-22 | PG-12007, PG-12343 FF+6d | 311.17d |
|  | 1.3.1.3.3.13.3 | **Electrical Works** |  | 2025-06-03 | 2025-08-22 |  |  |
| PG-12009 |  | 1st Fix - GI wire pulling | 7.67d | 2025-06-03 | 2025-06-12 | PG-11828 | 358.17d |
| PG-12010 |  | 2nd Fix - Wiring works | 12.83d | 2025-07-15 | 2025-07-30 | PG-12342 FF+5d | 325.17d |
| PG-12011 |  | Final Fix - Electrical Fixtures | 5.5d | 2025-08-16 | 2025-08-22 | PG-12010, PG-12343 FF+6d | 311.17d |
|  | 1.3.1.3.3.14 | **Floor 11** |  | 2025-06-16 | 2025-09-04 |  |  |
|  | 1.3.1.3.3.14.1 | **PHE Works** |  | 2025-06-16 | 2025-09-04 |  |  |
| PG-12012 |  | 1st Fix - Piping works | 12d | 2025-06-16 | 2025-06-30 | PG-11833 | 300.5d |
| PG-12013 |  | 2nd Fix - diverter fixing & Pressure testing | 10d | 2025-06-25 | 2025-07-07 | PG-12012 FF+6d | 300.5d |
| PG-12014 |  | Final Fix - CP & Sanitary fixtures | 9.5d | 2025-08-25 | 2025-09-04 | PG-12351, PG-12357 FF+6d | 300.5d |
|  | 1.3.1.3.3.14.2 | **Fire Fighting Works** |  | 2025-06-25 | 2025-09-04 |  |  |
| PG-12015 |  | 1st Fix - Piping and Shaft hydrant works | 11.67d | 2025-06-25 | 2025-07-09 | PG-12348 FF+6d | 347.17d |
| PG-12016 |  | 2nd Fix - Sprinkler fixing & Pressure testing | 10d | 2025-08-01 | 2025-08-13 | PG-12356 FF+6d | 309.5d |
| PG-12017 |  | Final Fix - Smoke & heat detectors, FHC , FAS Etc. | 9.5d | 2025-08-25 | 2025-09-04 | PG-12016, PG-12357 FF+6d | 300.5d |
|  | 1.3.1.3.3.14.3 | **Electrical Works** |  | 2025-06-16 | 2025-09-04 |  |  |
| PG-12018 |  | 1st Fix - GI wire pulling | 7.83d | 2025-06-16 | 2025-06-25 | PG-11833 | 347.17d |
| PG-12019 |  | 2nd Fix - Wiring works | 12.83d | 2025-07-28 | 2025-08-12 | PG-12356 FF+5d | 314.5d |
| PG-12020 |  | Final Fix - Electrical Fixtures | 5.5d | 2025-08-29 | 2025-09-04 | PG-12019, PG-12357 FF+6d | 300.5d |
|  | 1.3.1.3.3.15 | **Floor 12** |  | 2025-06-28 | 2025-09-20 |  |  |
|  | 1.3.1.3.3.15.1 | **PHE Works** |  | 2025-06-28 | 2025-09-20 |  |  |
| PG-12021 |  | 1st Fix - Piping works | 12d | 2025-06-28 | 2025-07-12 | PG-11838 | 287.17d |
| PG-12022 |  | 2nd Fix - diverter fixing & Pressure testing | 10d | 2025-07-08 | 2025-07-19 | PG-12021 FF+6d | 287.17d |
| PG-12023 |  | Final Fix - CP & Sanitary fixtures | 11.5d | 2025-09-08 | 2025-09-20 | PG-12365, PG-12371 FF+6d | 287.17d |
|  | 1.3.1.3.3.15.2 | **Fire Fighting Works** |  | 2025-07-08 | 2025-09-20 |  |  |
| PG-12024 |  | 1st Fix - Piping and Shaft hydrant works | 11.67d | 2025-07-08 | 2025-07-22 | PG-12362 FF+6d | 334.33d |
| PG-12025 |  | 2nd Fix - Sprinkler fixing & Pressure testing | 9.67d | 2025-08-14 | 2025-08-27 | PG-12370 FF+6d | 297.17d |
| PG-12026 |  | Final Fix - Smoke & heat detectors, FHC , FAS Etc. | 11.5d | 2025-09-08 | 2025-09-20 | PG-12025, PG-12371 FF+6d | 287.17d |
|  | 1.3.1.3.3.15.3 | **Electrical Works** |  | 2025-06-28 | 2025-09-20 |  |  |
| PG-12027 |  | 1st Fix - GI wire pulling | 7.67d | 2025-06-28 | 2025-07-08 | PG-11838 | 334.33d |
| PG-12028 |  | 2nd Fix - Wiring works | 13.5d | 2025-08-08 | 2025-08-26 | PG-12370 FF+5d | 304.17d |
| PG-12029 |  | Final Fix - Electrical Fixtures | 5.5d | 2025-09-15 | 2025-09-20 | PG-12028, PG-12371 FF+6d | 287.17d |
|  | 1.3.1.3.3.16 | **Floor 13** |  | 2025-07-11 | 2025-10-04 |  |  |
|  | 1.3.1.3.3.16.1 | **PHE Works** |  | 2025-07-11 | 2025-10-04 |  |  |
| PG-12030 |  | 1st Fix - Piping works | 12d | 2025-07-11 | 2025-07-25 | PG-11843 | 276.5d |
| PG-12031 |  | 2nd Fix - diverter fixing & Pressure testing | 10d | 2025-07-21 | 2025-08-01 | PG-12030 FF+6d | 276.5d |
| PG-12032 |  | Final Fix - CP & Sanitary fixtures | 10.5d | 2025-09-22 | 2025-10-04 | PG-12379, PG-12385 FF+6d | 276.5d |
|  | 1.3.1.3.3.16.2 | **Fire Fighting Works** |  | 2025-07-21 | 2025-10-04 |  |  |
| PG-12033 |  | 1st Fix - Piping and Shaft hydrant works | 11.67d | 2025-07-21 | 2025-08-04 | PG-12376 FF+6d | 323.5d |
| PG-12034 |  | 2nd Fix - Sprinkler fixing & Pressure testing | 9.67d | 2025-08-28 | 2025-09-09 | PG-12384 FF+6d | 287.5d |
| PG-12035 |  | Final Fix - Smoke & heat detectors, FHC , FAS Etc. | 10.5d | 2025-09-22 | 2025-10-04 | PG-12034, PG-12385 FF+6d | 276.5d |
|  | 1.3.1.3.3.16.3 | **Electrical Works** |  | 2025-07-11 | 2025-10-04 |  |  |
| PG-12036 |  | 1st Fix - GI wire pulling | 7.67d | 2025-07-11 | 2025-07-21 | PG-11843 | 323.5d |
| PG-12037 |  | 2nd Fix - Wiring works | 13.5d | 2025-08-22 | 2025-09-08 | PG-12384 FF+5d | 293.5d |
| PG-12038 |  | Final Fix - Electrical Fixtures | 5.5d | 2025-09-27 | 2025-10-04 | PG-12037, PG-12385 FF+6d | 276.5d |
|  | 1.3.1.3.3.17 | **Floor 14** |  | 2025-07-24 | 2025-10-15 |  |  |
|  | 1.3.1.3.3.17.1 | **PHE Works** |  | 2025-07-24 | 2025-10-15 |  |  |
| PG-12039 |  | 1st Fix - Piping works | 12d | 2025-07-24 | 2025-08-07 | PG-11848 | 267.5d |
| PG-12040 |  | 2nd Fix - diverter fixing & Pressure testing | 10d | 2025-08-02 | 2025-08-14 | PG-12039 FF+6d | 267.5d |
| PG-12041 |  | Final Fix - CP & Sanitary fixtures | 9.5d | 2025-10-04 | 2025-10-15 | PG-12393, PG-12399 FF+6d | 267.5d |
|  | 1.3.1.3.3.17.2 | **Fire Fighting Works** |  | 2025-08-02 | 2025-10-15 |  |  |
| PG-12042 |  | 1st Fix - Piping and Shaft hydrant works | 11.67d | 2025-08-02 | 2025-08-18 | PG-12390 FF+6d | 314.5d |
| PG-12043 |  | 2nd Fix - Sprinkler fixing & Pressure testing | 9.67d | 2025-09-10 | 2025-09-22 | PG-12398 FF+6d | 277.5d |
| PG-12044 |  | Final Fix - Smoke & heat detectors, FHC , FAS Etc. | 9.5d | 2025-10-04 | 2025-10-15 | PG-12043, PG-12399 FF+6d | 267.5d |
|  | 1.3.1.3.3.17.3 | **Electrical Works** |  | 2025-07-24 | 2025-10-15 |  |  |
| PG-12045 |  | 1st Fix - GI wire pulling | 7.67d | 2025-07-24 | 2025-08-02 | PG-11848 | 314.5d |
| PG-12046 |  | 2nd Fix - Wiring works | 14.5d | 2025-09-03 | 2025-09-20 | PG-12398 FF+5d | 282.5d |
| PG-12047 |  | Final Fix - Electrical Fixtures | 5.5d | 2025-10-09 | 2025-10-15 | PG-12046, PG-12399 FF+6d | 267.5d |
|  | 1.3.1.3.3.18 | **Floor 15** |  | 2025-08-06 | 2026-01-14 |  |  |
|  | 1.3.1.3.3.18.1 | **PHE Works** |  | 2025-08-06 | 2026-01-14 |  |  |
| PG-12048 |  | 1st Fix - Piping works | 12d | 2025-08-06 | 2025-08-21 | PG-11853 | 113.5d |
| PG-12049 |  | 2nd Fix - diverter fixing & Pressure testing | 10d | 2025-08-16 | 2025-08-28 | PG-12048 FF+6d | 113.5d |
| PG-12050 |  | Final Fix - CP & Sanitary fixtures | 10.5d | 2026-01-02 | 2026-01-14 | PG-12407, PG-12413 FF+6d | 189.25d |
|  | 1.3.1.3.3.18.2 | **Fire Fighting Works** |  | 2025-08-16 | 2026-01-14 |  |  |

| ID | WBS | Task | Duration | Start | Finish | Predecessors | Total float |
| --- | --- | --- | --- | --- | --- | --- | --- |
| PG-12051 |  | 1st Fix - Piping and Shaft hydrant works | 11.67d | 2025-08-16 | 2025-08-30 | PG-12404 FF+6d | 303.33d |
| PG-12052 |  | 2nd Fix - Sprinkler fixing & Pressure testing | 9.67d | 2025-12-11 | 2025-12-23 | PG-12412 FF+6d | 198.25d |
| PG-12053 |  | Final Fix - Smoke & heat detectors, FHC , FAS Etc. | 10.5d | 2026-01-02 | 2026-01-14 | PG-12052, PG-12413 FF+6d | 189.25d |
|  | 1.3.1.3.3.18.3 | **Electrical Works** |  | 2025-08-06 | 2026-01-14 |  |  |
| PG-12054 |  | 1st Fix - GI wire pulling | 7.67d | 2025-08-06 | 2025-08-16 | PG-11853 | 303.33d |
| PG-12055 |  | 2nd Fix - Wiring works | 13.5d | 2025-12-05 | 2025-12-22 | PG-12412 FF+5d | 204.25d |
| PG-12056 |  | Final Fix - Electrical Fixtures | 5.5d | 2026-01-08 | 2026-01-14 | PG-12055, PG-12413 FF+6d | 189.25d |
|  | 1.3.1.3.3.19 | **Floor 16** |  | 2025-08-20 | 2025-11-12 |  |  |
|  | 1.3.1.3.3.19.1 | **PHE Works** |  | 2025-08-20 | 2025-11-12 |  |  |
| PG-12057 |  | 1st Fix - Piping works | 12d | 2025-08-20 | 2025-09-03 | PG-11858 | 245.33d |
| PG-12058 |  | 2nd Fix - diverter fixing & Pressure testing | 10d | 2025-08-29 | 2025-09-10 | PG-12057 FF+6d | 245.33d |
| PG-12059 |  | Final Fix - CP & Sanitary fixtures | 10.67d | 2025-10-29 | 2025-11-12 | PG-12421, PG-12427 FF+6d | 245.33d |
|  | 1.3.1.3.3.19.2 | **Fire Fighting Works** |  | 2025-08-29 | 2025-11-12 |  |  |
| PG-12060 |  | 1st Fix - Piping and Shaft hydrant works | 11.67d | 2025-08-29 | 2025-09-12 | PG-12418 FF+6d | 292.5d |
| PG-12061 |  | 2nd Fix - Sprinkler fixing & Pressure testing | 9.83d | 2025-10-07 | 2025-10-18 | PG-12426 FF+6d | 254.33d |
| PG-12062 |  | Final Fix - Smoke & heat detectors, FHC , FAS Etc. | 10.67d | 2025-10-29 | 2025-11-12 | PG-12061, PG-12427 FF+6d | 245.33d |
|  | 1.3.1.3.3.19.3 | **Electrical Works** |  | 2025-08-20 | 2025-11-12 |  |  |
| PG-12063 |  | 1st Fix - GI wire pulling | 7.67d | 2025-08-20 | 2025-08-29 | PG-11858 | 292.5d |
| PG-12064 |  | 2nd Fix - Wiring works | 12.5d | 2025-10-01 | 2025-10-17 | PG-12426 FF+5d | 260.33d |
| PG-12065 |  | Final Fix - Electrical Fixtures | 5.67d | 2025-11-05 | 2025-11-12 | PG-12064, PG-12427 FF+6d | 245.33d |
|  | 1.3.1.3.3.20 | **Floor 17** |  | 2025-09-02 | 2025-11-24 |  |  |
|  | 1.3.1.3.3.20.1 | **PHE Works** |  | 2025-09-02 | 2025-11-24 |  |  |
| PG-12066 |  | 1st Fix - Piping works | 12d | 2025-09-02 | 2025-09-16 | PG-11863 | 234.33d |
| PG-12067 |  | 2nd Fix - diverter fixing & Pressure testing | 10d | 2025-09-11 | 2025-09-23 | PG-12066 FF+6d | 234.33d |
| PG-12068 |  | Final Fix - CP & Sanitary fixtures | 10.67d | 2025-11-11 | 2025-11-24 | PG-12435, PG-12441 FF+6d | 234.33d |
|  | 1.3.1.3.3.20.2 | **Fire Fighting Works** |  | 2025-09-11 | 2025-11-24 |  |  |
| PG-12069 |  | 1st Fix - Piping and Shaft hydrant works | 11.67d | 2025-09-11 | 2025-09-25 | PG-12432 FF+6d | 282.33d |
| PG-12070 |  | 2nd Fix - Sprinkler fixing & Pressure testing | 10d | 2025-10-20 | 2025-10-31 | PG-12440 FF+6d | 242.33d |
| PG-12071 |  | Final Fix - Smoke & heat detectors, FHC , FAS Etc. | 10.67d | 2025-11-11 | 2025-11-24 | PG-12070, PG-12441 FF+6d | 234.33d |
|  | 1.3.1.3.3.20.3 | **Electrical Works** |  | 2025-09-02 | 2025-11-24 |  |  |
| PG-12072 |  | 1st Fix - GI wire pulling | 7.67d | 2025-09-02 | 2025-09-11 | PG-11863 | 282.33d |
| PG-12073 |  | 2nd Fix - Wiring works | 13.5d | 2025-10-14 | 2025-10-30 | PG-12440 FF+5d | 248.33d |
| PG-12074 |  | Final Fix - Electrical Fixtures | 5.67d | 2025-11-17 | 2025-11-24 | PG-12073, PG-12441 FF+6d | 234.33d |
|  | 1.3.1.3.3.21 | **Floor 18** |  | 2025-09-15 | 2025-12-06 |  |  |
|  | 1.3.1.3.3.21.1 | **PHE Works** |  | 2025-09-15 | 2025-12-06 |  |  |
| PG-12075 |  | 1st Fix - Piping works | 12d | 2025-09-15 | 2025-09-29 | PG-11868 | 223.33d |
| PG-12076 |  | 2nd Fix - diverter fixing & Pressure testing | 10d | 2025-09-24 | 2025-10-07 | PG-12075 FF+6d | 223.33d |
| PG-12077 |  | Final Fix - CP & Sanitary fixtures | 10.67d | 2025-11-24 | 2025-12-06 | PG-12449, PG-12455 FF+6d | 223.33d |
|  | 1.3.1.3.3.21.2 | **Fire Fighting Works** |  | 2025-09-24 | 2025-12-06 |  |  |
| PG-12078 |  | 1st Fix - Piping and Shaft hydrant works | 11.67d | 2025-09-24 | 2025-10-09 | PG-12446 FF+6d | 271.33d |
| PG-12079 |  | 2nd Fix - Sprinkler fixing & Pressure testing | 10d | 2025-11-03 | 2025-11-14 | PG-12454 FF+6d | 231.33d |
| PG-12080 |  | Final Fix - Smoke & heat detectors, FHC , FAS Etc. | 10.67d | 2025-11-24 | 2025-12-06 | PG-12079, PG-12455 FF+6d | 223.33d |
|  | 1.3.1.3.3.21.3 | **Electrical Works** |  | 2025-09-15 | 2025-12-06 |  |  |
| PG-12081 |  | 1st Fix - GI wire pulling | 7.67d | 2025-09-15 | 2025-09-24 | PG-11868 | 271.33d |
| PG-12082 |  | 2nd Fix - Wiring works | 13.5d | 2025-10-27 | 2025-11-13 | PG-12454 FF+5d | 237.33d |
| PG-12083 |  | Final Fix - Electrical Fixtures | 5.67d | 2025-11-29 | 2025-12-06 | PG-12082, PG-12455 FF+6d | 223.33d |
|  | 1.3.1.3.3.22 | **Floor 19** |  | 2025-09-27 | 2025-12-19 |  |  |
|  | 1.3.1.3.3.22.1 | **PHE Works** |  | 2025-09-27 | 2025-12-19 |  |  |
| PG-12084 |  | 1st Fix - Piping works | 12d | 2025-09-27 | 2025-10-13 | PG-11873 | 212.33d |
| PG-12085 |  | 2nd Fix - diverter fixing & Pressure testing | 10d | 2025-10-08 | 2025-10-20 | PG-12084 FF+6d | 212.33d |
| PG-12086 |  | Final Fix - CP & Sanitary fixtures | 10.67d | 2025-12-06 | 2025-12-19 | PG-12463, PG-12469 FF+6d | 212.33d |
|  | 1.3.1.3.3.22.2 | **Fire Fighting Works** |  | 2025-10-08 | 2025-12-19 |  |  |
| PG-12087 |  | 1st Fix - Piping and Shaft hydrant works | 11.67d | 2025-10-08 | 2025-10-22 | PG-12460 FF+6d | 260.33d |
| PG-12088 |  | 2nd Fix - Sprinkler fixing & Pressure testing | 10d | 2025-11-15 | 2025-11-27 | PG-12468 FF+6d | 220.33d |
| PG-12089 |  | Final Fix - Smoke & heat detectors, FHC , FAS Etc. | 10.67d | 2025-12-06 | 2025-12-19 | PG-12088, PG-12469 FF+6d | 212.33d |
|  | 1.3.1.3.3.22.3 | **Electrical Works** |  | 2025-09-27 | 2025-12-19 |  |  |
| PG-12090 |  | 1st Fix - GI wire pulling | 7.67d | 2025-09-27 | 2025-10-08 | PG-11873 | 260.33d |
| PG-12091 |  | 2nd Fix - Wiring works | 13.5d | 2025-11-10 | 2025-11-26 | PG-12468 FF+5d | 226.33d |
| PG-12092 |  | Final Fix - Electrical Fixtures | 5.67d | 2025-12-12 | 2025-12-19 | PG-12091, PG-12469 FF+6d | 212.33d |
|  | 1.3.1.3.3.23 | **Floor 20** |  | 2025-10-11 | 2026-01-01 |  |  |
|  | 1.3.1.3.3.23.1 | **PHE Works** |  | 2025-10-11 | 2026-01-01 |  |  |
| PG-12093 |  | 1st Fix - Piping works | 12d | 2025-10-11 | 2025-10-25 | PG-11878 | 200.67d |
| PG-12094 |  | 2nd Fix - diverter fixing & Pressure testing | 10d | 2025-10-21 | 2025-11-03 | PG-12093 FF+6d | 200.67d |
| PG-12095 |  | Final Fix - CP & Sanitary fixtures | 9.33d | 2025-12-22 | 2026-01-01 | PG-12477, PG-12483 FF+6d | 200.67d |
|  | 1.3.1.3.3.23.2 | **Fire Fighting Works** |  | 2025-10-21 | 2026-01-01 |  |  |
| PG-12096 |  | 1st Fix - Piping and Shaft hydrant works | 11.67d | 2025-10-21 | 2025-11-05 | PG-12474 FF+6d | 248.5d |
| PG-12097 |  | 2nd Fix - Sprinkler fixing & Pressure testing | 9.67d | 2025-11-28 | 2025-12-10 | PG-12482 FF+6d | 210.67d |
| PG-12098 |  | Final Fix - Smoke & heat detectors, FHC , FAS Etc. | 9.33d | 2025-12-22 | 2026-01-01 | PG-12097, PG-12483 FF+6d | 200.67d |
|  | 1.3.1.3.3.23.3 | **Electrical Works** |  | 2025-10-11 | 2026-01-01 |  |  |
| PG-12099 |  | 1st Fix - GI wire pulling | 7.83d | 2025-10-11 | 2025-10-21 | PG-11878 | 248.5d |

| ID | WBS | Task | Duration | Start | Finish | Predecessors | Total float |
| --- | --- | --- | --- | --- | --- | --- | --- |
| PG-12100 |  | 2nd Fix - Wiring works | 13.67d | 2025-11-22 | 2025-12-09 | PG-12482 FF+5d | 215.67d |
| PG-12101 |  | Final Fix - Electrical Fixtures | 5.33d | 2025-12-26 | 2026-01-01 | PG-12100, PG-12483 FF+6d | 200.67d |
|  | 1.3.1.3.3.24 | **Floor 21** |  | 2025-10-24 | 2026-01-14 |  |  |
|  | 1.3.1.3.3.24.1 | **PHE Works** |  | 2025-10-24 | 2026-01-14 |  |  |
| PG-12102 |  | 1st Fix - Piping works | 11.67d | 2025-10-24 | 2025-11-08 | PG-11883 | 189.83d |
| PG-12103 |  | 2nd Fix - diverter fixing & Pressure testing | 8.67d | 2025-11-05 | 2025-11-15 | PG-12102 FF+6d | 189.83d |
| PG-12104 |  | Final Fix - CP & Sanitary fixtures | 10.5d | 2026-01-02 | 2026-01-14 | PG-12491, PG-12497 FF+6d | 189.83d |
|  | 1.3.1.3.3.24.2 | **Fire Fighting Works** |  | 2025-11-04 | 2026-01-14 |  |  |
| PG-12105 |  | 1st Fix - Piping and Shaft hydrant works | 11.67d | 2025-11-04 | 2025-11-18 | PG-12488 FF+6d | 237.33d |
| PG-12106 |  | 2nd Fix - Sprinkler fixing & Pressure testing | 9.5d | 2025-12-11 | 2025-12-23 | PG-12496 FF+6d | 198.83d |
| PG-12107 |  | Final Fix - Smoke & heat detectors, FHC , FAS Etc. | 10.5d | 2026-01-02 | 2026-01-14 | PG-12497 FF+6d, PG-12106 | 189.83d |
|  | 1.3.1.3.3.24.3 | **Electrical Works** |  | 2025-10-24 | 2026-01-01 |  |  |
| PG-12108 |  | 1st Fix - GI wire pulling | 7.83d | 2025-10-24 | 2025-11-04 | PG-11883 | 237.33d |
| PG-12109 |  | 2nd Fix - Wiring works | 13.67d | 2025-11-22 | 2025-12-09 | PG-12482 FF+5d | 215.67d |
| PG-12110 |  | Final Fix - Electrical Fixtures | 5.33d | 2025-12-26 | 2026-01-01 | PG-12109, PG-12483 FF+6d | 200.67d |
|  | 1.3.1.3.3.25 | **Floor 22** |  | 2025-11-07 | 2026-01-28 |  |  |
|  | 1.3.1.3.3.25.1 | **PHE Works** |  | 2025-11-07 | 2026-01-28 |  |  |
| PG-12111 |  | 1st Fix - Piping works | 11.67d | 2025-11-07 | 2025-11-21 | PG-11888 | 178.83d |
| PG-12112 |  | 2nd Fix - diverter fixing & Pressure testing | 8.67d | 2025-11-18 | 2025-11-28 | PG-12111 FF+6d | 178.83d |
| PG-12113 |  | Final Fix - CP & Sanitary fixtures | 10.5d | 2026-01-15 | 2026-01-28 | PG-12505, PG-12511 FF+6d | 178.83d |
|  | 1.3.1.3.3.25.2 | **Fire Fighting Works** |  | 2025-11-17 | 2026-01-28 |  |  |
| PG-12114 |  | 1st Fix - Piping and Shaft hydrant works | 11.67d | 2025-11-17 | 2025-12-01 | PG-12502 FF+6d | 226.33d |
| PG-12115 |  | 2nd Fix - Sprinkler fixing & Pressure testing | 9.5d | 2025-12-24 | 2026-01-05 | PG-12510 FF+6d | 187.83d |
| PG-12116 |  | Final Fix - Smoke & heat detectors, FHC , FAS Etc. | 10.5d | 2026-01-15 | 2026-01-28 | PG-12115, PG-12511 FF+6d | 178.83d |
|  | 1.3.1.3.3.25.3 | **Electrical Works** |  | 2025-11-07 | 2026-01-28 |  |  |
| PG-12117 |  | 1st Fix - GI wire pulling | 7.83d | 2025-11-07 | 2025-11-17 | PG-11888 | 226.33d |
| PG-12118 |  | 2nd Fix - Wiring works | 13.5d | 2025-12-18 | 2026-01-03 | PG-12510 FF+5d | 193.83d |
| PG-12119 |  | Final Fix - Electrical Fixtures | 5.5d | 2026-01-21 | 2026-01-28 | PG-12118, PG-12511 FF+6d | 178.83d |
|  | 1.3.1.3.3.26 | **Floor 23** |  | 2025-11-20 | 2026-02-10 |  |  |
|  | 1.3.1.3.3.26.1 | **PHE Works** |  | 2025-11-20 | 2026-02-10 |  |  |
| PG-12120 |  | 1st Fix - Piping works | 10.67d | 2025-11-20 | 2025-12-02 | PG-11893 | 168.17d |
| PG-12121 |  | 2nd Fix - diverter fixing & Pressure testing | 9.67d | 2025-11-28 | 2025-12-09 | PG-12120 FF+6d | 168.17d |
| PG-12122 |  | Final Fix - CP & Sanitary fixtures | 9.33d | 2026-01-29 | 2026-02-10 | PG-12519, PG-12525 FF+6d | 168.17d |
|  | 1.3.1.3.3.26.2 | **Fire Fighting Works** |  | 2025-11-28 | 2026-02-10 |  |  |
| PG-12123 |  | 1st Fix - Piping and Shaft hydrant works | 11.83d | 2025-11-28 | 2025-12-12 | PG-12516 FF+6d | 215.67d |
| PG-12124 |  | 2nd Fix - Sprinkler fixing & Pressure testing | 10.67d | 2026-01-03 | 2026-01-15 | PG-12524 FF+6d | 179.17d |
| PG-12125 |  | Final Fix - Smoke & heat detectors, FHC , FAS Etc. | 9.33d | 2026-01-29 | 2026-02-10 | PG-12124, PG-12525 FF+6d | 168.17d |
|  | 1.3.1.3.3.26.3 | **Electrical Works** |  | 2025-11-20 | 2026-02-10 |  |  |
| PG-12126 |  | 1st Fix - GI wire pulling | 6.83d | 2025-11-20 | 2025-11-28 | PG-11893 | 215.67d |
| PG-12127 |  | 2nd Fix - Wiring works | 14.67d | 2025-12-29 | 2026-01-14 | PG-12524 FF+5d | 184.17d |
| PG-12128 |  | Final Fix - Electrical Fixtures | 5.33d | 2026-02-03 | 2026-02-10 | PG-12127, PG-12525 FF+6d | 168.17d |
|  | 1.3.1.3.3.27 | **Floor 24** |  | 2025-12-03 | 2026-02-23 |  |  |
|  | 1.3.1.3.3.27.1 | **PHE Works** |  | 2025-12-03 | 2026-02-23 |  |  |
| PG-12129 |  | 1st Fix - Piping works | 11.67d | 2025-12-03 | 2025-12-16 | PG-11898 | 0d |
| PG-12130 |  | 2nd Fix - diverter fixing & Pressure testing | 9.67d | 2025-12-12 | 2025-12-23 | PG-12129 FF+6d | 156.83d |
| PG-12131 |  | Final Fix - CP & Sanitary fixtures | 9.67d | 2026-02-11 | 2026-02-23 | PG-12533, PG-12539 FF+6d | 156.83d |
|  | 1.3.1.3.3.27.2 | **Fire Fighting Works** |  | 2025-12-12 | 2026-02-23 |  |  |
| PG-12132 |  | 1st Fix - Piping and Shaft hydrant works | 11.33d | 2025-12-12 | 2025-12-26 | PG-12530 FF+6d | 204.33d |
| PG-12133 |  | 2nd Fix - Sprinkler fixing & Pressure testing | 10.33d | 2026-01-17 | 2026-01-30 | PG-12538 FF+6d | 166.83d |
| PG-12134 |  | Final Fix - Smoke & heat detectors, FHC , FAS Etc. | 9.67d | 2026-02-11 | 2026-02-23 | PG-12133, PG-12539 FF+6d | 156.83d |
|  | 1.3.1.3.3.27.3 | **Electrical Works** |  | 2025-12-03 | 2026-02-23 |  |  |
| PG-12135 |  | 1st Fix - GI wire pulling | 7.83d | 2025-12-03 | 2025-12-12 | PG-11898 | 204.33d |
| PG-12136 |  | 2nd Fix - Wiring works | 14.33d | 2026-01-12 | 2026-01-29 | PG-12538 FF+5d | 171.83d |
| PG-12137 |  | Final Fix - Electrical Fixtures | 5.67d | 2026-02-16 | 2026-02-23 | PG-12136, PG-12539 FF+6d | 156.83d |
|  | 1.3.1.3.3.28 | **Floor 25** |  | 2025-12-24 | 2026-03-16 |  |  |
|  | 1.3.1.3.3.28.1 | **PHE Works** |  | 2025-12-24 | 2026-03-16 |  |  |
| PG-12138 |  | 1st Fix - Piping works | 10.83d | 2025-12-24 | 2026-01-06 | PG-12129 FS+7d | 64.17d |
| PG-12139 |  | 2nd Fix - diverter fixing & Pressure testing | 8.67d | 2026-01-03 | 2026-01-13 | PG-12138 FF+6d | 89.17d |
| PG-12140 |  | Final Fix - CP & Sanitary fixtures | 9.33d | 2026-03-05 | 2026-03-16 | PG-12547, PG-12553 FF+6d | 137.67d |
|  | 1.3.1.3.3.28.2 | **Fire Fighting Works** |  | 2026-01-03 | 2026-03-16 |  |  |
| PG-12141 |  | 1st Fix - Piping and Shaft hydrant works | 11.5d | 2026-01-03 | 2026-01-16 | PG-12544 FF+6d | 100.33d |
| PG-12142 |  | 2nd Fix - Sprinkler fixing & Pressure testing | 9.33d | 2026-02-10 | 2026-02-20 | PG-12552 FF+6d | 148.33d |
| PG-12143 |  | Final Fix - Smoke & heat detectors, FHC , FAS Etc. | 9.33d | 2026-03-05 | 2026-03-16 | PG-12142, PG-12553 FF+6d | 137.67d |
|  | 1.3.1.3.3.28.3 | **Electrical Works** |  | 2025-12-24 | 2026-03-16 |  |  |
| PG-12144 |  | 1st Fix - GI wire pulling | 7.67d | 2025-12-24 | 2026-01-02 | PG-12129 FS+7d | 0d |
| PG-12145 |  | 2nd Fix - Wiring works | 15.33d | 2026-02-02 | 2026-02-19 | PG-12552 FF+5d | 153.33d |
| PG-12146 |  | Final Fix - Electrical Fixtures | 5.33d | 2026-03-10 | 2026-03-16 | PG-12145, PG-12553 FF+6d | 137.67d |
|  | 1.3.1.3.3.29 | **Floor 26** |  | 2026-01-14 | 2026-04-06 |  |  |
|  | 1.3.1.3.3.29.1 | **PHE Works** |  | 2026-01-14 | 2026-04-06 |  |  |
| PG-12147 |  | 1st Fix - Piping works | 11.83d | 2026-01-14 | 2026-01-29 | PG-12138 FS+7d | 64.17d |

| ID | WBS | Task | Duration | Start | Finish | Predecessors | Complete | Total float | Constraint |
| --- | --- | --- | --- | --- | --- | --- | --- | --- | --- |
| PG-12148 |  | 2nd Fix - diverter fixing & Pressure testing | 10.67d | 2026-01-22 | 2026-02-05 | PG-12147 FF+6d |  | 118.33d |  |
| PG-12149 |  | Final Fix - CP & Sanitary fixtures | 8.33d | 2026-03-27 | 2026-04-06 | PG-12561, PG-12567 FF+6d |  | 118.33d |  |
|  | 1.3.1.3.3.29.2 | **Fire Fighting Works** |  | 2026-01-23 | 2026-04-06 |  |  |  |  |
| PG-12150 |  | 1st Fix - Piping and Shaft hydrant works | 11.67d | 2026-01-23 | 2026-02-07 | PG-12558 FF+6d |  | 167.5d |  |
| PG-12151 |  | 2nd Fix - Sprinkler fixing & Pressure testing | 10.33d | 2026-03-03 | 2026-03-14 | PG-12566 FF+6d |  | 129.33d |  |
| PG-12152 |  | Final Fix - Smoke & heat detectors, FHC , FAS Etc. | 8.33d | 2026-03-27 | 2026-04-06 | PG-12151, PG-12567 FF+6d |  | 118.33d |  |
|  | 1.3.1.3.3.29.3 | **Electrical Works** |  | 2026-01-14 | 2026-04-06 |  |  |  |  |
| PG-12153 |  | 1st Fix - GI wire pulling | 7.67d | 2026-01-14 | 2026-01-23 | PG-12138 FS+7d |  | 167.5d |  |
| PG-12154 |  | 2nd Fix - Wiring works | 15.33d | 2026-02-24 | 2026-03-13 | PG-12566 FF+5d |  | 133.33d |  |
| PG-12155 |  | Final Fix - Electrical Fixtures | 5.33d | 2026-03-31 | 2026-04-06 | PG-12154, PG-12567 FF+6d |  | 118.33d |  |
|  | 1.3.1.3.3.30 | **Floor 27** |  | 2026-02-06 | 2026-04-28 |  |  |  |  |
|  | 1.3.1.3.3.30.1 | **PHE Works** |  | 2026-02-06 | 2026-04-28 |  |  |  |  |
| PG-12156 |  | 1st Fix - Piping works | 11.67d | 2026-02-06 | 2026-02-20 | PG-12147 FS+7d |  | 64.17d |  |
| PG-12157 |  | 2nd Fix - diverter fixing & Pressure testing | 9.67d | 2026-02-16 | 2026-02-27 | PG-12156 FF+6d |  | 100.5d |  |
| PG-12158 |  | Final Fix - CP & Sanitary fixtures | 10.67d | 2026-04-16 | 2026-04-28 | PG-12575, PG-12581 FF+6d |  | 100.5d |  |
|  | 1.3.1.3.3.30.2 | **Fire Fighting Works** |  | 2026-02-16 | 2026-04-28 |  |  |  |  |
| PG-12159 |  | 1st Fix - Piping and Shaft hydrant works | 11.67d | 2026-02-16 | 2026-03-02 | PG-12572 FF+6d |  | 149.17d |  |
| PG-12160 |  | 2nd Fix - Sprinkler fixing & Pressure testing | 8.5d | 2026-03-26 | 2026-04-06 | PG-12580 FF+6d |  | 109.5d |  |
| PG-12161 |  | Final Fix - Smoke & heat detectors, FHC , FAS Etc. | 10.67d | 2026-04-16 | 2026-04-28 | PG-12160, PG-12581 FF+6d |  | 100.5d |  |
|  | 1.3.1.3.3.30.3 | **Electrical Works** |  | 2026-02-06 | 2026-04-28 |  |  |  |  |
| PG-12162 |  | 1st Fix - GI wire pulling | 7.67d | 2026-02-06 | 2026-02-16 | PG-12147 FS+7d |  | 149.17d |  |
| PG-12163 |  | 2nd Fix - Wiring works | 13.5d | 2026-03-19 | 2026-04-04 | PG-12580 FF+5d |  | 115.5d |  |
| PG-12164 |  | Final Fix - Electrical Fixtures | 5.67d | 2026-04-22 | 2026-04-28 | PG-12163, PG-12581 FF+6d |  | 100.5d |  |
|  | 1.3.1.3.3.31 | **Floor 28** |  | 2026-02-28 | 2026-05-20 |  |  |  |  |
|  | 1.3.1.3.3.31.1 | **PHE Works** |  | 2026-02-28 | 2026-05-20 |  |  |  |  |
| PG-12165 |  | 1st Fix - Piping works | 11.67d | 2026-02-28 | 2026-03-13 | PG-12156 FS+7d |  | 64.17d |  |
| PG-12166 |  | 2nd Fix - diverter fixing & Pressure testing | 9.67d | 2026-03-10 | 2026-03-20 | PG-12165 FF+6d |  | 82.5d |  |
| PG-12167 |  | Final Fix - CP & Sanitary fixtures | 9.67d | 2026-05-09 | 2026-05-20 | PG-12589, PG-12595 FF+6d |  | 82.5d |  |
|  | 1.3.1.3.3.31.2 | **Fire Fighting Works** |  | 2026-03-10 | 2026-05-20 |  |  |  |  |
| PG-12168 |  | 1st Fix - Piping and Shaft hydrant works | 11.67d | 2026-03-10 | 2026-03-23 | PG-12586 FF+6d |  | 130.17d |  |
| PG-12169 |  | 2nd Fix - Sprinkler fixing & Pressure testing | 9.5d | 2026-04-16 | 2026-04-27 | PG-12594 FF+6d |  | 92.83d |  |
| PG-12170 |  | Final Fix - Smoke & heat detectors, FHC , FAS Etc. | 9.67d | 2026-05-09 | 2026-05-20 | PG-12169, PG-12595 FF+6d |  | 82.5d |  |
|  | 1.3.1.3.3.31.3 | **Electrical Works** |  | 2026-02-28 | 2026-05-20 |  |  |  |  |
| PG-12171 |  | 1st Fix - GI wire pulling | 7.67d | 2026-02-28 | 2026-03-09 | PG-12156 FS+7d |  | 130.17d |  |
| PG-12172 |  | 2nd Fix - Wiring works | 14.5d | 2026-04-09 | 2026-04-25 | PG-12594 FF+5d |  | 97.83d |  |
| PG-12173 |  | Final Fix - Electrical Fixtures | 5.67d | 2026-05-14 | 2026-05-20 | PG-12172, PG-12595 FF+6d |  | 82.5d |  |
|  | 1.3.1.3.3.32 | **Floor 29** |  | 2026-03-21 | 2026-06-11 |  |  |  |  |
|  | 1.3.1.3.3.32.1 | **PHE Works** |  | 2026-03-21 | 2026-06-11 |  |  |  |  |
| PG-12174 |  | 1st Fix - Piping works | 11.67d | 2026-03-21 | 2026-04-04 | PG-12165 FS+7d |  | 64.17d |  |
| PG-12175 |  | 2nd Fix - diverter fixing & Pressure testing | 9.67d | 2026-03-31 | 2026-04-11 | PG-12174 FF+6d |  | 64.17d |  |
| PG-12176 |  | Final Fix - CP & Sanitary fixtures | 9.67d | 2026-05-30 | 2026-06-11 | PG-12603, PG-12609 FF+6d |  | 64.17d |  |
|  | 1.3.1.3.3.32.2 | **Fire Fighting Works** |  | 2026-03-31 | 2026-06-11 |  |  |  |  |
| PG-12177 |  | 1st Fix - Piping and Shaft hydrant works | 12.5d | 2026-03-31 | 2026-04-14 | PG-12600 FF+6d |  | 105.83d |  |
| PG-12178 |  | 2nd Fix - Sprinkler fixing & Pressure testing | 9.5d | 2026-05-08 | 2026-05-19 | PG-12608 FF+6d |  | 74.17d |  |
| PG-12179 |  | Final Fix - Smoke & heat detectors, FHC , FAS Etc. | 9.67d | 2026-05-30 | 2026-06-11 | PG-12178, PG-12609 FF+6d |  | 64.17d |  |
|  | 1.3.1.3.3.32.3 | **Electrical Works** |  | 2026-03-21 | 2026-06-11 |  |  |  |  |
| PG-12180 |  | 1st Fix - GI wire pulling | 7.67d | 2026-03-21 | 2026-03-31 | PG-12165 FS+7d |  | 105.83d |  |
| PG-12181 |  | 2nd Fix - Wiring works | 16.5d | 2026-04-29 | 2026-05-18 | PG-12608 FF+5d |  | 79.17d |  |
| PG-12182 |  | Final Fix - Electrical Fixtures | 5.67d | 2026-06-04 | 2026-06-11 | PG-12181, PG-12609 FF+6d |  | 64.17d |  |
|  | 1.3.1.3.4 | **Civil Finishes - Units** |  | 2024-12-23 | 2026-06-04 |  |  |  |  |
|  | 1.3.1.3.4.1 | **LBF** |  | 2024-12-23 | 2025-04-03 |  |  |  |  |
| PG-12183 |  | Backfilling Above Raft | 30d | 2024-12-23 A | 2025-01-27 A | PG-11778 | 100% |  |  |
| PG-12184 |  | Car wash water collection sump with cap | 12.83d | 2025-01-17 A | 2025-02-01 A | PG-11906 FF+5d, PG-12183 FF+5d | 100% |  | finish on or after 2023-10-20 |
| PG-12185 |  | Surface Drain to slope | 8.67d | 2025-01-28 A | 2025-02-08 A | PG-12184 FF+5d | 100% |  |  |
| PG-12186 |  | Grade Slab | 10.67d | 2025-02-01 A | 2025-02-15 A | PG-12185 FF+5d | 100% |  |  |
| PG-12187 |  | First Coat Painting works | 14.67d | 2025-02-10 A | 2025-02-28 A | PG-12186 FF+10d | 100% |  |  |
| PG-12188 |  | Final coat painting | 9.5d | 2025-03-17 A | 2025-03-28 A | PG-11912, PG-11909 | 100% |  |  |
| PG-12189 |  | Car park marking and column corner beading fixing | 8.67d | 2025-03-24 A | 2025-04-03 A | PG-12188 FF+5d | 100% |  |  |
|  | 1.3.1.3.4.2 | **UBF** |  | 2025-02-07 | 2025-04-12 |  |  |  |  |
| PG-12190 |  | Surface Drain with Grade Slab to slope | 15d | 2025-02-07 A | 2025-02-25 A | PG-12183 FS+10d | 100% |  |  |
| PG-12191 |  | First Coat Paint works | 11.67d | 2025-03-13 A | 2025-03-28 A | PG-12190, PG-11911, PG-11910 | 100% |  |  |
| PG-12192 |  | Final Coat Paint Works | 9.67d | 2025-03-18 A | 2025-03-31 A | PG-12191, PG-11912 FF+5d | 100% |  |  |
| PG-12193 |  | Car park marking and column corner beading fixing | 9.67d | 2025-03-31 A | 2025-04-12 A | PG-12192 | 100% |  |  |
|  | 1.3.1.3.4.3 | **Ground Floor** |  | 2024-12-23 | 2025-03-08 |  |  |  |  |
|  | 1.3.1.3.4.3.1 | **Ceiling Finishing works - Civil** |  | 2025-01-01 | 2025-03-08 |  |  |  |  |
| PG-12194 |  | Gypsum Plastering | 6d | 2025-01-01 A | 2025-01-08 A | PG-11919 | 100% |  |  |
| PG-12195 |  | Cornice fixing | 4d | 2025-01-18 A | 2025-01-24 A | PG-11916 FF+6d | 100% |  |  |
| PG-12197 |  | Toilet False ceiling | 4d | 2025-01-27 A | 2025-01-31 A | PG-12205 FF+5d | 100% |  |  |
| PG-12196 |  | Painting Works - Putty, Primer and 1st | 6d | 2025-02-06 A | 2025-02-14 A | PG-12195, PG-12200 | 100% |  |  |
| PG-12198 |  | Final Coat Painting | 17.67d | 2025-02-14 A | 2025-03-08 A | PG-12196, PG-12207 | 100% |  |  |

| ID | WBS | Task | Duration | Start | Finish | Predecessors | Complete |
| --- | --- | --- | --- | --- | --- | --- | --- |
|  | 1.3.1.3.4.3.2 | **Wall Finishing works - Civil** |  | 2024-12-23 | 2025-03-08 |  |  |
| PG-12199 |  | Balcony Railing Fixing works | 4d | 2024-12-23 A | 2024-12-27 A | PG-11778 | 100% |
| PG-12201 |  | Dadoing - Wet area | 5d | 2025-01-14 A | 2025-01-20 A | PG-11914 | 100% |
| PG-12200 |  | UPVC Windows & Sliding doors | 5d | 2025-01-31 A | 2025-02-06 A | PG-12199, PG-12206 FF+5d | 100% |
| PG-12202 |  | Painting Works - Putty, Primer and 1st | 6d | 2025-02-06 A | 2025-02-14 A | PG-12200 | 100% |
| PG-12203 |  | Final Coat Painting | 17.67d | 2025-02-14 A | 2025-03-08 A | PG-12207 | 100% |
|  | 1.3.1.3.4.3.3 | **Floor Finishing Works - Civil** |  | 2024-12-23 | 2025-02-14 |  |  |
| PG-12204 |  | Waterproofing for sunken areas | 3d | 2024-12-23 A | 2024-12-26 A | PG-11778 | 100% |
| PG-12205 |  | Floor Tiling - Wet area | 5d | 2025-01-20 A | 2025-01-25 A | PG-12204, PG-12201 | 100% |
| PG-12206 |  | Floor Tiling - Dry area | 5d | 2025-01-25 A | 2025-01-31 A | PG-12205 FF+5d | 100% |
| PG-12207 |  | Wooden doors | 5d | 2025-02-08 A | 2025-02-14 A | PG-12202 FF | 100% |
|  | 1.3.1.3.4.4 | **Floor 1** |  | 2025-01-07 | 2025-03-26 |  |  |
|  | 1.3.1.3.4.4.1 | **Ceiling Finishing works - Civil** |  | 2025-01-16 | 2025-03-26 |  |  |
| PG-12208 |  | Gypsum Plastering | 6d | 2025-01-16 A | 2025-01-24 A | PG-11928 | 100% |
| PG-12209 |  | Cornice fixing | 4d | 2025-02-03 A | 2025-02-07 A | PG-11925 FF+6d | 100% |
| PG-12211 |  | Toilet False ceiling | 4d | 2025-02-13 A | 2025-02-18 A | PG-12219 FF+5d | 100% |
| PG-12210 |  | Painting Works - Putty, Primer and 1st | 6d | 2025-02-24 A | 2025-03-04 A | PG-12209, PG-12214 | 100% |
| PG-12212 |  | Final Coat Painting | 18.5d | 2025-03-04 A | 2025-03-26 A | PG-12210, PG-12221 | 100% |
|  | 1.3.1.3.4.4.2 | **Wall Finishing works - Civil** |  | 2025-01-07 | 2025-03-25 |  |  |
| PG-12213 |  | Balcony Railing Fixing works | 4d | 2025-01-07 A | 2025-01-11 A | PG-11783 | 100% |
| PG-12215 |  | Dadoing - Wet area | 5d | 2025-01-30 A | 2025-02-05 A | PG-11923 | 100% |
| PG-12214 |  | UPVC Windows & Sliding doors | 5d | 2025-02-18 A | 2025-02-24 A | PG-12213, PG-12220 FF+5d | 100% |
| PG-12216 |  | Painting Works - Putty, Primer and 1st | 6d | 2025-02-24 A | 2025-03-03 A | PG-12214 | 100% |
| PG-12217 |  | Final Coat Painting | 18.5d | 2025-03-04 A | 2025-03-25 A | PG-12221 | 100% |
|  | 1.3.1.3.4.4.3 | **Floor Finishing Works - Civil** |  | 2025-01-07 | 2025-03-04 |  |  |
| PG-12218 |  | Waterproofing for sunken areas | 3d | 2025-01-07 A | 2025-01-10 A | PG-11783 | 100% |
| PG-12219 |  | Floor Tiling - Wet area | 5d | 2025-02-05 A | 2025-02-12 A | PG-12218, PG-12215 | 100% |
| PG-12220 |  | Floor Tiling - Dry area | 5d | 2025-02-12 A | 2025-02-18 A | PG-12219 FF+5d | 100% |
| PG-12221 |  | Wooden doors | 5d | 2025-02-25 A | 2025-03-04 A | PG-12216 FF | 100% |
|  | 1.3.1.3.4.5 | **Floor 2** |  | 2025-01-22 | 2025-04-10 |  |  |
|  | 1.3.1.3.4.5.1 | **Ceiling Finishing works - Civil** |  | 2025-02-01 | 2025-04-10 |  |  |
| PG-12222 |  | Gypsum Plastering | 6d | 2025-02-01 A | 2025-02-08 A | PG-11937 | 100% |
| PG-12223 |  | Cornice fixing | 4d | 2025-02-19 A | 2025-02-24 A | PG-11934 FF+6d | 100% |
| PG-12225 |  | Toilet False ceiling | 4d | 2025-02-27 A | 2025-03-04 A | PG-12233 FF+5d | 100% |
| PG-12224 |  | Painting Works - Putty, Primer and 1st | 6d | 2025-03-11 A | 2025-03-18 A | PG-12223, PG-12228 | 100% |
| PG-12226 |  | Final Coat Painting | 17.67d | 2025-03-18 A | 2025-04-10 A | PG-12224, PG-12235 | 100% |
|  | 1.3.1.3.4.5.2 | **Wall Finishing works - Civil** |  | 2025-01-22 | 2025-04-08 |  |  |
| PG-12227 |  | Balcony Railing Fixing works | 4d | 2025-01-22 A | 2025-01-28 A | PG-11788 | 100% |
| PG-12229 |  | Dadoing - Wet area | 5d | 2025-02-14 A | 2025-02-20 A | PG-11932 | 100% |
| PG-12228 |  | UPVC Windows & Sliding doors | 5d | 2025-03-04 A | 2025-03-11 A | PG-12227, PG-12234 FF+5d | 100% |
| PG-12230 |  | Painting Works - Putty, Primer and 1st | 6d | 2025-03-11 A | 2025-03-18 A | PG-12228 | 100% |
| PG-12231 |  | Final Coat Painting | 17.67d | 2025-03-18 A | 2025-04-08 A | PG-12235 | 100% |
|  | 1.3.1.3.4.5.3 | **Floor Finishing Works - Civil** |  | 2025-01-22 | 2025-03-18 |  |  |
| PG-12232 |  | Waterproofing for sunken areas | 3d | 2025-01-22 A | 2025-01-27 A | PG-11788 | 100% |
| PG-12233 |  | Floor Tiling - Wet area | 5d | 2025-02-20 A | 2025-02-26 A | PG-12232, PG-12229 | 100% |
| PG-12234 |  | Floor Tiling - Dry area | 5d | 2025-02-26 A | 2025-03-04 A | PG-12233 FF+5d | 100% |
| PG-12235 |  | Wooden doors | 5d | 2025-03-12 A | 2025-03-18 A | PG-12230 FF | 100% |
|  | 1.3.1.3.4.6 | **Floor 3** |  | 2025-02-07 | 2025-04-30 |  |  |
|  | 1.3.1.3.4.6.1 | **Ceiling Finishing works - Civil** |  | 2025-02-17 | 2025-04-29 |  |  |
| PG-12236 |  | Gypsum Plastering | 6d | 2025-02-17 A | 2025-02-25 A | PG-11946 | 100% |
| PG-12237 |  | Cornice fixing | 4d | 2025-03-06 A | 2025-03-11 A | PG-11943 FF+6d | 100% |
| PG-12239 |  | Toilet False ceiling | 4d | 2025-03-17 A | 2025-03-21 A | PG-12247 FF+5d | 100% |
| PG-12238 |  | Painting Works - Putty, Primer and 1st | 6d | 2025-03-27 A | 2025-04-03 A | PG-12237, PG-12242 | 100% |
| PG-12240 |  | Final Coat Painting | 19.33d | 2025-04-04 A | 2025-04-29 A | PG-12238, PG-12249 | 100% |
|  | 1.3.1.3.4.6.2 | **Wall Finishing works - Civil** |  | 2025-02-07 | 2025-04-30 |  |  |
| PG-12241 |  | Balcony Railing Fixing works | 4d | 2025-02-07 A | 2025-02-12 A | PG-11793 | 100% |
| PG-12243 |  | Dadoing - Wet area | 5d | 2025-03-04 A | 2025-03-10 A | PG-11941 | 100% |
| PG-12242 |  | UPVC Windows & Sliding doors | 5d | 2025-03-21 A | 2025-03-27 A | PG-12241, PG-12248 FF+5d | 100% |
| PG-12244 |  | Painting Works - Putty, Primer and 1st | 6d | 2025-03-27 A | 2025-04-04 A | PG-12242 | 100% |
| PG-12245 |  | Final Coat Painting | 19.33d | 2025-04-04 A | 2025-04-30 A | PG-12249 | 100% |
|  | 1.3.1.3.4.6.3 | **Floor Finishing Works - Civil** |  | 2025-02-07 | 2025-04-04 |  |  |
| PG-12246 |  | Waterproofing for sunken areas | 3d | 2025-02-07 A | 2025-02-11 A | PG-11793 | 100% |
| PG-12247 |  | Floor Tiling - Wet area | 5d | 2025-03-10 A | 2025-03-15 A | PG-12246, PG-12243 | 100% |
| PG-12248 |  | Floor Tiling - Dry area | 5d | 2025-03-15 A | 2025-03-21 A | PG-12247 FF+5d | 100% |
| PG-12249 |  | Wooden doors | 5d | 2025-03-29 A | 2025-04-04 A | PG-12244 FF | 100% |
|  | 1.3.1.3.4.7 | **Floor 4** |  | 2025-02-24 | 2025-05-13 |  |  |
|  | 1.3.1.3.4.7.1 | **Ceiling Finishing works - Civil** |  | 2025-03-04 | 2025-05-13 |  |  |
| PG-12250 |  | Gypsum Plastering | 6d | 2025-03-04 A | 2025-03-12 A | PG-11955 | 100% |
| PG-12251 |  | Cornice fixing | 4d | 2025-03-22 A | 2025-03-27 A | PG-11952 FF+6d | 100% |
| PG-12253 |  | Toilet False ceiling | 4d | 2025-04-01 A | 2025-04-05 A | PG-12261 FF+5d | 100% |

| ID | WBS | Task | Duration | Start | Finish | Predecessors | Complete | Total float |
| --- | --- | --- | --- | --- | --- | --- | --- | --- |
| PG-12252 |  | Painting Works - Putty, Primer and 1st | 6d | 2025-04-11 A | 2025-04-19 A | PG-12251, PG-12256 | 100% |  |
| PG-12254 |  | Final Coat Painting | 18.33d | 2025-04-19 A | 2025-05-13 | PG-12252, PG-12263 | 83% | 426.92d |
|  | 1.3.1.3.4.7.2 | **Wall Finishing works - Civil** |  | 2025-02-24 | 2025-05-13 |  |  |  |
| PG-12255 |  | Balcony Railing Fixing works | 4d | 2025-02-24 A | 2025-02-28 A | PG-11798 | 100% |  |
| PG-12257 |  | Dadoing - Wet area | 5d | 2025-03-18 A | 2025-03-24 A | PG-11950 | 100% |  |
| PG-12256 |  | UPVC Windows & Sliding doors | 5d | 2025-04-05 A | 2025-04-11 A | PG-12255, PG-12262 FF+5d | 100% |  |
| PG-12258 |  | Painting Works - Putty, Primer and 1st | 6d | 2025-04-11 A | 2025-04-18 A | PG-12256 | 100% |  |
| PG-12259 |  | Final Coat Painting | 18.33d | 2025-04-19 A | 2025-05-13 | PG-12263 | 82% | 390.04d |
|  | 1.3.1.3.4.7.3 | **Floor Finishing Works - Civil** |  | 2025-02-24 | 2025-04-19 |  |  |  |
| PG-12260 |  | Waterproofing for sunken areas | 3d | 2025-02-24 A | 2025-02-27 A | PG-11798 | 100% |  |
| PG-12261 |  | Floor Tiling - Wet area | 5d | 2025-03-24 A | 2025-03-31 A | PG-12260, PG-12257 | 100% |  |
| PG-12262 |  | Floor Tiling - Dry area | 5d | 2025-03-31 A | 2025-04-05 A | PG-12261 FF+5d | 100% |  |
| PG-12263 |  | Wooden doors | 5d | 2025-04-12 A | 2025-04-19 A | PG-12258 FF | 100% |  |
|  | 1.3.1.3.4.8 | **Floor 5** |  | 2025-03-11 | 2025-08-05 |  |  |  |
|  | 1.3.1.3.4.8.1 | **Ceiling Finishing works - Civil** |  | 2025-03-19 | 2025-08-05 |  |  |  |
| PG-12264 |  | Gypsum Plastering | 6d | 2025-03-19 A | 2025-03-27 A | PG-11964 | 100% |  |
| PG-12265 |  | Cornice fixing | 4d | 2025-04-05 A | 2025-04-11 A | PG-11961 FF+6d | 100% |  |
| PG-12267 |  | Toilet False ceiling | 4d | 2025-06-26 | 2025-07-01 | PG-12275 FF+5d |  | 345.25d |
| PG-12266 |  | Painting Works - Putty, Primer and 1st | 6d | 2025-07-07 | 2025-07-14 | PG-12265, PG-12270 |  | 355.92d |
| PG-12268 |  | Final Coat Painting | 18.5d | 2025-07-14 | 2025-08-05 | PG-12266, PG-12277 |  | 355.92d |
|  | 1.3.1.3.4.8.2 | **Wall Finishing works - Civil** |  | 2025-03-11 | 2025-08-05 |  |  |  |
| PG-12269 |  | Balcony Railing Fixing works | 4d | 2025-03-11 A | 2025-03-15 A | PG-11803 | 100% |  |
| PG-12271 |  | Dadoing - Wet area | 5d | 2025-06-13 | 2025-06-19 | PG-10006, PG-11959 |  | 320.25d |
| PG-12270 |  | UPVC Windows & Sliding doors | 5d | 2025-07-01 | 2025-07-07 | PG-12269, PG-12276 FF+5d |  | 320.25d |
| PG-12272 |  | Painting Works - Putty, Primer and 1st | 6d | 2025-07-07 | 2025-07-14 | PG-12270 |  | 320.25d |
| PG-12273 |  | Final Coat Painting | 18.5d | 2025-07-14 | 2025-08-05 | PG-12277 |  | 320.25d |
|  | 1.3.1.3.4.8.3 | **Floor Finishing Works - Civil** |  | 2025-03-11 | 2025-07-14 |  |  |  |
| PG-12274 |  | Waterproofing for sunken areas | 3d | 2025-03-11 A | 2025-03-14 A | PG-11803 | 100% |  |
| PG-12275 |  | Floor Tiling - Wet area | 5d | 2025-06-19 | 2025-06-25 | PG-12274, PG-12271 |  | 320.25d |
| PG-12276 |  | Floor Tiling - Dry area | 5d | 2025-06-25 | 2025-07-01 | PG-12275 FF+5d |  | 320.25d |
| PG-12277 |  | Wooden doors | 5d | 2025-07-08 | 2025-07-14 | PG-12272 FF |  | 320.25d |
|  | 1.3.1.3.4.9 | **Floor 6** |  | 2025-03-27 | 2025-06-13 |  |  |  |
|  | 1.3.1.3.4.9.1 | **Ceiling Finishing works - Civil** |  | 2025-04-05 | 2025-06-13 |  |  |  |
| PG-12278 |  | Gypsum Plastering | 6d | 2025-04-05 A | 2025-04-14 A | PG-11973 | 100% |  |
| PG-12279 |  | Cornice fixing | 4d | 2025-04-24 A | 2025-04-29 A | PG-11970 FF+6d | 100% |  |
| PG-12281 |  | Toilet False ceiling | 4d | 2025-05-02 A | 2025-05-07 A | PG-12289 FF+5d | 100% |  |
| PG-12280 |  | Painting Works - Putty, Primer and 1st | 6d | 2025-05-14 | 2025-05-20 | PG-12279, PG-12284 |  | 400.58d |
| PG-12282 |  | Final Coat Painting | 20.5d | 2025-05-21 | 2025-06-13 | PG-12280, PG-12291 |  | 400.58d |
|  | 1.3.1.3.4.9.2 | **Wall Finishing works - Civil** |  | 2025-03-27 | 2025-06-12 |  |  |  |
| PG-12283 |  | Balcony Railing Fixing works | 4d | 2025-03-27 A | 2025-04-01 A | PG-11808 | 100% |  |
| PG-12285 |  | Dadoing - Wet area | 5d | 2025-04-19 A | 2025-04-25 A | PG-11968 | 100% |  |
| PG-12284 |  | UPVC Windows & Sliding doors | 5d | 2025-05-07 A | 2025-05-13 | PG-12283, PG-12290 FF+5d | 33% | 365.92d |
| PG-12286 |  | Painting Works - Putty, Primer and 1st | 6d | 2025-05-14 | 2025-05-20 | PG-12284 |  | 365.92d |
| PG-12287 |  | Final Coat Painting | 19.5d | 2025-05-21 | 2025-06-12 | PG-12291 |  | 365.92d |
|  | 1.3.1.3.4.9.3 | **Floor Finishing Works - Civil** |  | 2025-03-27 | 2025-05-20 |  |  |  |
| PG-12288 |  | Waterproofing for sunken areas | 3d | 2025-03-27 A | 2025-03-31 A | PG-11808 | 100% |  |
| PG-12289 |  | Floor Tiling - Wet area | 5d | 2025-04-25 A | 2025-05-01 A | PG-12288, PG-12285 | 100% |  |
| PG-12290 |  | Floor Tiling - Dry area | 5d | 2025-05-01 A | 2025-05-07 A | PG-12289 FF+5d | 100% |  |
| PG-12291 |  | Wooden doors | 5d | 2025-05-15 | 2025-05-20 | PG-12286 FF |  | 365.92d |
|  | 1.3.1.3.4.10 | **Floor 7** |  | 2025-04-14 | 2025-06-28 |  |  |  |
|  | 1.3.1.3.4.10.1 | **Ceiling Finishing works - Civil** |  | 2025-04-23 | 2025-06-28 |  |  |  |
| PG-12292 |  | Gypsum Plastering | 6d | 2025-04-23 A | 2025-05-01 A | PG-11982 | 100% |  |
| PG-12293 |  | Cornice fixing | 4d | 2025-05-12 | 2025-05-15 | PG-11979 FF+6d |  | 399.58d |
| PG-12295 |  | Toilet False ceiling | 4d | 2025-05-20 | 2025-05-24 | PG-12303 FF+5d |  | 380.75d |
| PG-12294 |  | Painting Works - Putty, Primer and 1st | 6d | 2025-05-30 | 2025-06-06 | PG-12293, PG-12298 |  | 387.41d |
| PG-12296 |  | Final Coat Painting | 19.5d | 2025-06-06 | 2025-06-28 | PG-12294, PG-12305 |  | 387.41d |
|  | 1.3.1.3.4.10.2 | **Wall Finishing works - Civil** |  | 2025-04-14 | 2025-06-27 |  |  |  |
| PG-12297 |  | Balcony Railing Fixing works | 4d | 2025-04-14 A | 2025-04-18 A | PG-11813 | 100% |  |
| PG-12299 |  | Dadoing - Wet area | 5d | 2025-05-08 A | 2025-05-13 | PG-11977 | 37% | 353.75d |
| PG-12298 |  | UPVC Windows & Sliding doors | 5d | 2025-05-24 | 2025-05-30 | PG-12297, PG-12304 FF+5d |  | 353.75d |
| PG-12300 |  | Painting Works - Putty, Primer and 1st | 6d | 2025-05-30 | 2025-06-06 | PG-12298 |  | 353.75d |
| PG-12301 |  | Final Coat Painting | 18.5d | 2025-06-06 | 2025-06-27 | PG-12305 |  | 353.75d |
|  | 1.3.1.3.4.10.3 | **Floor Finishing Works - Civil** |  | 2025-04-14 | 2025-06-06 |  |  |  |
| PG-12302 |  | Waterproofing for sunken areas | 3d | 2025-04-14 A | 2025-04-17 A | PG-11813 | 100% |  |
| PG-12303 |  | Floor Tiling - Wet area | 5d | 2025-05-13 | 2025-05-19 | PG-12302, PG-12299 |  | 353.75d |
| PG-12304 |  | Floor Tiling - Dry area | 5d | 2025-05-19 | 2025-05-24 | PG-12303 FF+5d |  | 353.75d |
| PG-12305 |  | Wooden doors | 5d | 2025-05-31 | 2025-06-06 | PG-12300 FF |  | 353.75d |
|  | 1.3.1.3.4.11 | **Floor 8** |  | 2025-05-03 | 2025-07-17 |  |  |  |
|  | 1.3.1.3.4.11.1 | **Ceiling Finishing works - Civil** |  | 2025-05-10 | 2025-07-17 |  |  |  |
| PG-12306 |  | Gypsum Plastering | 6d | 2025-05-10 | 2025-05-17 | PG-11991 |  | 383.61d |

| ID | WBS | Task | Duration | Start | Finish | Predecessors | Complete | Total float |
| --- | --- | --- | --- | --- | --- | --- | --- | --- |
| PG-12307 |  | Cornice fixing | 4d | 2025-05-27 | 2025-05-31 | PG-11988 FF+6d |  | 383.61d |
| PG-12309 |  | Toilet False ceiling | 4d | 2025-06-05 | 2025-06-10 | PG-12317 FF+5d |  | 364.17d |
| PG-12308 |  | Painting Works - Putty, Primer and 1st | 6d | 2025-06-16 | 2025-06-23 | PG-12307, PG-12312 |  | 370.83d |
| PG-12310 |  | Final Coat Painting | 20.5d | 2025-06-23 | 2025-07-17 | PG-12308, PG-12319 |  | 370.83d |
|  | 1.3.1.3.4.11.2 | **Wall Finishing works - Civil** |  | 2025-05-03 | 2025-07-16 |  |  |  |
| PG-12311 |  | Balcony Railing Fixing works | 4d | 2025-05-03 A | 2025-05-08 A | PG-11818 | 100% |  |
| PG-12313 |  | Dadoing - Wet area | 5d | 2025-05-23 | 2025-05-29 | PG-11986 |  | 337.17d |
| PG-12312 |  | UPVC Windows & Sliding doors | 5d | 2025-06-10 | 2025-06-16 | PG-12311, PG-12318 FF+5d |  | 337.17d |
| PG-12314 |  | Painting Works - Putty, Primer and 1st | 6d | 2025-06-16 | 2025-06-23 | PG-12312 |  | 337.17d |
| PG-12315 |  | Final Coat Painting | 19.5d | 2025-06-23 | 2025-07-16 | PG-12319 |  | 337.17d |
|  | 1.3.1.3.4.11.3 | **Floor Finishing Works - Civil** |  | 2025-05-03 | 2025-06-23 |  |  |  |
| PG-12316 |  | Waterproofing for sunken areas | 3d | 2025-05-03 A | 2025-05-07 A | PG-11818 | 100% |  |
| PG-12317 |  | Floor Tiling - Wet area | 5d | 2025-05-29 | 2025-06-04 | PG-12316, PG-12313 |  | 337.17d |
| PG-12318 |  | Floor Tiling - Dry area | 5d | 2025-06-04 | 2025-06-10 | PG-12317 FF+5d |  | 337.17d |
| PG-12319 |  | Wooden doors | 5d | 2025-06-17 | 2025-06-23 | PG-12314 FF |  | 337.17d |
|  | 1.3.1.3.4.12 | **Floor 9** |  | 2025-05-19 | 2025-07-31 |  |  |  |
|  | 1.3.1.3.4.12.1 | **Ceiling Finishing works - Civil** |  | 2025-05-28 | 2025-07-31 |  |  |  |
| PG-12320 |  | Gypsum Plastering | 6d | 2025-05-28 | 2025-06-04 | PG-12000 |  | 371.17d |
| PG-12321 |  | Cornice fixing | 4d | 2025-06-13 | 2025-06-18 | PG-11997 FF+6d |  | 371.17d |
| PG-12323 |  | Toilet False ceiling | 4d | 2025-06-21 | 2025-06-26 | PG-12331 FF+5d |  | 350.5d |
| PG-12322 |  | Painting Works - Putty, Primer and 1st | 6d | 2025-07-02 | 2025-07-09 | PG-12321, PG-12326 |  | 359d |
| PG-12324 |  | Final Coat Painting | 18.67d | 2025-07-09 | 2025-07-31 | PG-12322, PG-12333 |  | 359d |
|  | 1.3.1.3.4.12.2 | **Wall Finishing works - Civil** |  | 2025-05-19 | 2025-07-29 |  |  |  |
| PG-12325 |  | Balcony Railing Fixing works | 4d | 2025-05-19 | 2025-05-23 | PG-11823 |  | 354.33d |
| PG-12327 |  | Dadoing - Wet area | 5d | 2025-06-09 | 2025-06-14 | PG-11995 |  | 325.33d |
| PG-12326 |  | UPVC Windows & Sliding doors | 5d | 2025-06-26 | 2025-07-02 | PG-12325, PG-12332 FF+5d |  | 325.33d |
| PG-12328 |  | Painting Works - Putty, Primer and 1st | 6d | 2025-07-02 | 2025-07-09 | PG-12326 |  | 325.33d |
| PG-12329 |  | Final Coat Painting | 17.5d | 2025-07-09 | 2025-07-29 | PG-12333 |  | 325.33d |
|  | 1.3.1.3.4.12.3 | **Floor Finishing Works - Civil** |  | 2025-05-19 | 2025-07-09 |  |  |  |
| PG-12330 |  | Waterproofing for sunken areas | 3d | 2025-05-19 | 2025-05-22 | PG-11823 |  | 345.33d |
| PG-12331 |  | Floor Tiling - Wet area | 5d | 2025-06-14 | 2025-06-20 | PG-12330, PG-12327 |  | 325.33d |
| PG-12332 |  | Floor Tiling - Dry area | 5d | 2025-06-20 | 2025-06-26 | PG-12331 FF+5d |  | 325.33d |
| PG-12333 |  | Wooden doors | 5d | 2025-07-03 | 2025-07-09 | PG-12328 FF |  | 325.33d |
|  | 1.3.1.3.4.13 | **Floor 10** |  | 2025-06-03 | 2025-08-16 |  |  |  |
|  | 1.3.1.3.4.13.1 | **Ceiling Finishing works - Civil** |  | 2025-06-12 | 2025-08-16 |  |  |  |
| PG-12334 |  | Gypsum Plastering | 6d | 2025-06-12 | 2025-06-19 | PG-12009 |  | 358.17d |
| PG-12335 |  | Cornice fixing | 4d | 2025-06-28 | 2025-07-03 | PG-12006 FF+6d |  | 358.17d |
| PG-12337 |  | Toilet False ceiling | 4d | 2025-07-07 | 2025-07-11 | PG-12345 FF+5d |  | 337.17d |
| PG-12336 |  | Painting Works - Putty, Primer and 1st | 6d | 2025-07-17 | 2025-07-24 | PG-12335, PG-12340 |  | 345.83d |
| PG-12338 |  | Final Coat Painting | 19.5d | 2025-07-24 | 2025-08-16 | PG-12336, PG-12347 |  | 345.83d |
|  | 1.3.1.3.4.13.2 | **Wall Finishing works - Civil** |  | 2025-06-03 | 2025-08-14 |  |  |  |
| PG-12339 |  | Balcony Railing Fixing works | 4d | 2025-06-03 | 2025-06-07 | PG-11828 |  | 340.17d |
| PG-12341 |  | Dadoing - Wet area | 5d | 2025-06-24 | 2025-06-30 | PG-12004 |  | 311.17d |
| PG-12340 |  | UPVC Windows & Sliding doors | 5d | 2025-07-11 | 2025-07-17 | PG-12339, PG-12346 FF+5d |  | 311.17d |
| PG-12342 |  | Painting Works - Putty, Primer and 1st | 6d | 2025-07-17 | 2025-07-24 | PG-12340 |  | 311.17d |
| PG-12343 |  | Final Coat Painting | 18.5d | 2025-07-24 | 2025-08-14 | PG-12347 |  | 311.17d |
|  | 1.3.1.3.4.13.3 | **Floor Finishing Works - Civil** |  | 2025-06-03 | 2025-07-24 |  |  |  |
| PG-12344 |  | Waterproofing for sunken areas | 3d | 2025-06-03 | 2025-06-06 | PG-11828 |  | 331.17d |
| PG-12345 |  | Floor Tiling - Wet area | 5d | 2025-06-30 | 2025-07-05 | PG-12344, PG-12341 |  | 311.17d |
| PG-12346 |  | Floor Tiling - Dry area | 5d | 2025-07-05 | 2025-07-11 | PG-12345 FF+5d |  | 311.17d |
| PG-12347 |  | Wooden doors | 5d | 2025-07-18 | 2025-07-24 | PG-12342 FF |  | 311.17d |
|  | 1.3.1.3.4.14 | **Floor 11** |  | 2025-06-16 | 2025-08-30 |  |  |  |
|  | 1.3.1.3.4.14.1 | **Ceiling Finishing works - Civil** |  | 2025-06-25 | 2025-08-30 |  |  |  |
| PG-12348 |  | Gypsum Plastering | 6d | 2025-06-25 | 2025-07-02 | PG-12018 |  | 347.17d |
| PG-12349 |  | Cornice fixing | 4d | 2025-07-11 | 2025-07-16 | PG-12015 FF+6d |  | 347.17d |
| PG-12351 |  | Toilet False ceiling | 4d | 2025-07-19 | 2025-07-24 | PG-12359 FF+5d |  | 326.5d |
| PG-12350 |  | Painting Works - Putty, Primer and 1st | 6d | 2025-07-30 | 2025-08-06 | PG-12349, PG-12354 |  | 335d |
| PG-12352 |  | Final Coat Painting | 19.67d | 2025-08-06 | 2025-08-30 | PG-12350, PG-12361 |  | 335d |
|  | 1.3.1.3.4.14.2 | **Wall Finishing works - Civil** |  | 2025-06-16 | 2025-08-28 |  |  |  |
| PG-12353 |  | Balcony Railing Fixing works | 4d | 2025-06-16 | 2025-06-20 | PG-11833 |  | 329.5d |
| PG-12355 |  | Dadoing - Wet area | 5d | 2025-07-07 | 2025-07-12 | PG-12013 |  | 300.5d |
| PG-12354 |  | UPVC Windows & Sliding doors | 5d | 2025-07-24 | 2025-07-30 | PG-12353, PG-12360 FF+5d |  | 300.5d |
| PG-12356 |  | Painting Works - Putty, Primer and 1st | 6d | 2025-07-30 | 2025-08-06 | PG-12354 |  | 300.5d |
| PG-12357 |  | Final Coat Painting | 18.5d | 2025-08-06 | 2025-08-28 | PG-12361 |  | 300.5d |
|  | 1.3.1.3.4.14.3 | **Floor Finishing Works - Civil** |  | 2025-06-16 | 2025-08-06 |  |  |  |
| PG-12358 |  | Waterproofing for sunken areas | 3d | 2025-06-16 | 2025-06-19 | PG-11833 |  | 320.5d |
| PG-12359 |  | Floor Tiling - Wet area | 5d | 2025-07-12 | 2025-07-18 | PG-12358, PG-12355 |  | 300.5d |
| PG-12360 |  | Floor Tiling - Dry area | 5d | 2025-07-18 | 2025-07-24 | PG-12359 FF+5d |  | 300.5d |
| PG-12361 |  | Wooden doors | 5d | 2025-07-31 | 2025-08-06 | PG-12356 FF |  | 300.5d |
|  | 1.3.1.3.4.15 | **Floor 12** |  | 2025-06-28 | 2025-09-13 |  |  |  |

| ID | WBS | Task | Duration | Start | Finish | Predecessors | Total float |
| --- | --- | --- | --- | --- | --- | --- | --- |
|  | 1.3.1.3.4.15.1 | **Ceiling Finishing works - Civil** |  | 2025-07-08 | 2025-09-13 |  |  |
| PG-12362 |  | Gypsum Plastering | 6d | 2025-07-08 | 2025-07-15 | PG-12027 | 334.33d |
| PG-12363 |  | Cornice fixing | 4d | 2025-07-24 | 2025-07-29 | PG-12024 FF+6d | 334.33d |
| PG-12365 |  | Toilet False ceiling | 4d | 2025-08-01 | 2025-08-06 | PG-12373 FF+5d | 314.17d |
| PG-12364 |  | Painting Works - Putty, Primer and 1st | 6d | 2025-08-12 | 2025-08-20 | PG-12363, PG-12368 | 322d |
| PG-12366 |  | Final Coat Painting | 21.5d | 2025-08-20 | 2025-09-13 | PG-12364, PG-12375 | 322d |
|  | 1.3.1.3.4.15.2 | **Wall Finishing works - Civil** |  | 2025-06-28 | 2025-09-13 |  |  |
| PG-12367 |  | Balcony Railing Fixing works | 4d | 2025-06-28 | 2025-07-03 | PG-11838 | 316.17d |
| PG-12369 |  | Dadoing - Wet area | 5d | 2025-07-19 | 2025-07-25 | PG-12022 | 287.17d |
| PG-12368 |  | UPVC Windows & Sliding doors | 5d | 2025-08-06 | 2025-08-12 | PG-12367, PG-12374 FF+5d | 287.17d |
| PG-12370 |  | Painting Works - Putty, Primer and 1st | 6d | 2025-08-12 | 2025-08-20 | PG-12368 | 287.17d |
| PG-12371 |  | Final Coat Painting | 21.5d | 2025-08-20 | 2025-09-13 | PG-12375 | 287.17d |
|  | 1.3.1.3.4.15.3 | **Floor Finishing Works - Civil** |  | 2025-06-28 | 2025-08-20 |  |  |
| PG-12372 |  | Waterproofing for sunken areas | 3d | 2025-06-28 | 2025-07-02 | PG-11838 | 307.17d |
| PG-12373 |  | Floor Tiling - Wet area | 5d | 2025-07-25 | 2025-07-31 | PG-12372, PG-12369 | 287.17d |
| PG-12374 |  | Floor Tiling - Dry area | 5d | 2025-07-31 | 2025-08-06 | PG-12373 FF+5d | 287.17d |
| PG-12375 |  | Wooden doors | 5d | 2025-08-13 | 2025-08-20 | PG-12370 FF | 287.17d |
|  | 1.3.1.3.4.16 | **Floor 13** |  | 2025-07-11 | 2025-09-26 |  |  |
|  | 1.3.1.3.4.16.1 | **Ceiling Finishing works - Civil** |  | 2025-07-21 | 2025-09-26 |  |  |
| PG-12376 |  | Gypsum Plastering | 6d | 2025-07-21 | 2025-07-28 | PG-12036 | 323.5d |
| PG-12377 |  | Cornice fixing | 4d | 2025-08-06 | 2025-08-11 | PG-12033 FF+6d | 323.5d |
| PG-12379 |  | Toilet False ceiling | 4d | 2025-08-14 | 2025-08-20 | PG-12387 FF+5d | 304.5d |
| PG-12378 |  | Painting Works - Putty, Primer and 1st | 6d | 2025-08-26 | 2025-09-02 | PG-12377, PG-12382 | 311.17d |
| PG-12380 |  | Final Coat Painting | 21.5d | 2025-09-02 | 2025-09-26 | PG-12378, PG-12389 | 311.17d |
|  | 1.3.1.3.4.16.2 | **Wall Finishing works - Civil** |  | 2025-07-11 | 2025-09-26 |  |  |
| PG-12381 |  | Balcony Railing Fixing works | 4d | 2025-07-11 | 2025-07-16 | PG-11843 | 305.5d |
| PG-12383 |  | Dadoing - Wet area | 5d | 2025-08-01 | 2025-08-07 | PG-12031 | 276.5d |
| PG-12382 |  | UPVC Windows & Sliding doors | 5d | 2025-08-20 | 2025-08-26 | PG-12381, PG-12388 FF+5d | 276.5d |
| PG-12384 |  | Painting Works - Putty, Primer and 1st | 6d | 2025-08-26 | 2025-09-02 | PG-12382 | 276.5d |
| PG-12385 |  | Final Coat Painting | 21.5d | 2025-09-02 | 2025-09-26 | PG-12389 | 276.5d |
|  | 1.3.1.3.4.16.3 | **Floor Finishing Works - Civil** |  | 2025-07-11 | 2025-09-02 |  |  |
| PG-12386 |  | Waterproofing for sunken areas | 3d | 2025-07-11 | 2025-07-15 | PG-11843 | 296.5d |
| PG-12387 |  | Floor Tiling - Wet area | 5d | 2025-08-07 | 2025-08-13 | PG-12386, PG-12383 | 276.5d |
| PG-12388 |  | Floor Tiling - Dry area | 5d | 2025-08-13 | 2025-08-20 | PG-12387 FF+5d | 276.5d |
| PG-12389 |  | Wooden doors | 5d | 2025-08-27 | 2025-09-02 | PG-12384 FF | 276.5d |
|  | 1.3.1.3.4.17 | **Floor 14** |  | 2025-07-24 | 2025-10-08 |  |  |
|  | 1.3.1.3.4.17.1 | **Ceiling Finishing works - Civil** |  | 2025-08-02 | 2025-10-08 |  |  |
| PG-12390 |  | Gypsum Plastering | 6d | 2025-08-02 | 2025-08-09 | PG-12045 | 314.5d |
| PG-12391 |  | Cornice fixing | 4d | 2025-08-20 | 2025-08-25 | PG-12042 FF+6d | 314.5d |
| PG-12393 |  | Toilet False ceiling | 4d | 2025-08-28 | 2025-09-02 | PG-12401 FF+5d | 294.5d |
| PG-12392 |  | Painting Works - Putty, Primer and 1st | 6d | 2025-09-08 | 2025-09-15 | PG-12391, PG-12396 | 302.17d |
| PG-12394 |  | Final Coat Painting | 19.5d | 2025-09-15 | 2025-10-08 | PG-12392, PG-12403 | 302.17d |
|  | 1.3.1.3.4.17.2 | **Wall Finishing works - Civil** |  | 2025-07-24 | 2025-10-08 |  |  |
| PG-12395 |  | Balcony Railing Fixing works | 4d | 2025-07-24 | 2025-07-29 | PG-11848 | 296.5d |
| PG-12397 |  | Dadoing - Wet area | 5d | 2025-08-14 | 2025-08-21 | PG-12040 | 267.5d |
| PG-12396 |  | UPVC Windows & Sliding doors | 5d | 2025-09-02 | 2025-09-08 | PG-12395, PG-12402 FF+5d | 267.5d |
| PG-12398 |  | Painting Works - Putty, Primer and 1st | 6d | 2025-09-08 | 2025-09-15 | PG-12396 | 267.5d |
| PG-12399 |  | Final Coat Painting | 19.5d | 2025-09-15 | 2025-10-08 | PG-12403 | 267.5d |
|  | 1.3.1.3.4.17.3 | **Floor Finishing Works - Civil** |  | 2025-07-24 | 2025-09-15 |  |  |
| PG-12400 |  | Waterproofing for sunken areas | 3d | 2025-07-24 | 2025-07-28 | PG-11848 | 287.5d |
| PG-12401 |  | Floor Tiling - Wet area | 5d | 2025-08-21 | 2025-08-27 | PG-12400, PG-12397 | 267.5d |
| PG-12402 |  | Floor Tiling - Dry area | 5d | 2025-08-27 | 2025-09-02 | PG-12401 FF+5d | 267.5d |
| PG-12403 |  | Wooden doors | 5d | 2025-09-09 | 2025-09-15 | PG-12398 FF | 267.5d |
|  | 1.3.1.3.4.18 | **Floor 15** |  | 2025-08-06 | 2026-01-07 |  |  |
|  | 1.3.1.3.4.18.1 | **Ceiling Finishing works - Civil** |  | 2025-08-16 | 2026-01-07 |  |  |
| PG-12404 |  | Gypsum Plastering | 6d | 2025-08-16 | 2025-08-23 | PG-12054 | 303.33d |
| PG-12405 |  | Cornice fixing | 4d | 2025-09-02 | 2025-09-06 | PG-12051 FF+6d | 303.33d |
| PG-12407 |  | Toilet False ceiling | 4d | 2025-11-28 | 2025-12-03 | PG-12415 FF+5d | 215.25d |
| PG-12406 |  | Painting Works - Putty, Primer and 1st | 6d | 2025-12-09 | 2025-12-16 | PG-12405, PG-12410 | 225.08d |
| PG-12408 |  | Final Coat Painting | 19.5d | 2025-12-16 | 2026-01-07 | PG-12406, PG-12417 | 225.08d |
|  | 1.3.1.3.4.18.2 | **Wall Finishing works - Civil** |  | 2025-08-06 | 2026-01-07 |  |  |
| PG-12409 |  | Balcony Railing Fixing works | 4d | 2025-08-06 | 2025-08-11 | PG-11853 | 142.5d |
| PG-12411 |  | Dadoing - Wet area | 5d | 2025-11-15 | 2025-11-21 | PG-10007, PG-12049 | 47.58d |
| PG-12410 |  | UPVC Windows & Sliding doors | 5d | 2025-12-03 | 2025-12-09 | PG-12409, PG-12416 FF+5d | 47.58d |
| PG-12412 |  | Painting Works - Putty, Primer and 1st | 6d | 2025-12-09 | 2025-12-16 | PG-12410 | 47.58d |
| PG-12413 |  | Final Coat Painting | 19.5d | 2025-12-16 | 2026-01-07 | PG-12417 | 189.25d |
|  | 1.3.1.3.4.18.3 | **Floor Finishing Works - Civil** |  | 2025-08-06 | 2025-12-16 |  |  |
| PG-12414 |  | Waterproofing for sunken areas | 3d | 2025-08-06 | 2025-08-09 | PG-11853 | 133.5d |
| PG-12415 |  | Floor Tiling - Wet area | 5d | 2025-11-21 | 2025-11-27 | PG-12414, PG-12411 | 47.58d |
| PG-12416 |  | Floor Tiling - Dry area | 5d | 2025-11-27 | 2025-12-03 | PG-12415 FF+5d | 47.58d |

| ID | WBS | Task | Duration | Start | Finish | Predecessors | Total float |
| --- | --- | --- | --- | --- | --- | --- | --- |
| PG-12417 |  | Wooden doors | 5d | 2025-12-10 | 2025-12-16 | PG-12412 FF | 47.58d |
|  | 1.3.1.3.4.19 | **Floor 16** |  | 2025-08-20 | 2025-11-05 |  |  |
|  | 1.3.1.3.4.19.1 | **Ceiling Finishing works - Civil** |  | 2025-08-29 | 2025-11-04 |  |  |
| PG-12418 |  | Gypsum Plastering | 6d | 2025-08-29 | 2025-09-05 | PG-12063 | 292.5d |
| PG-12419 |  | Cornice fixing | 4d | 2025-09-15 | 2025-09-19 | PG-12060 FF+6d | 292.5d |
| PG-12421 |  | Toilet False ceiling | 4d | 2025-09-23 | 2025-09-27 | PG-12429 FF+5d | 271.33d |
| PG-12420 |  | Painting Works - Putty, Primer and 1st | 6d | 2025-10-04 | 2025-10-11 | PG-12419, PG-12424 | 280.17d |
| PG-12422 |  | Final Coat Painting | 19.5d | 2025-10-11 | 2025-11-04 | PG-12420, PG-12431 | 280.17d |
|  | 1.3.1.3.4.19.2 | **Wall Finishing works - Civil** |  | 2025-08-20 | 2025-11-05 |  |  |
| PG-12423 |  | Balcony Railing Fixing works | 4d | 2025-08-20 | 2025-08-25 | PG-11858 | 274.33d |
| PG-12425 |  | Dadoing - Wet area | 5d | 2025-09-10 | 2025-09-16 | PG-12058 | 245.33d |
| PG-12424 |  | UPVC Windows & Sliding doors | 5d | 2025-09-27 | 2025-10-04 | PG-12423, PG-12430 FF+5d | 245.33d |
| PG-12426 |  | Painting Works - Putty, Primer and 1st | 6d | 2025-10-04 | 2025-10-11 | PG-12424 | 245.33d |
| PG-12427 |  | Final Coat Painting | 19.67d | 2025-10-11 | 2025-11-05 | PG-12431 | 245.33d |
|  | 1.3.1.3.4.19.3 | **Floor Finishing Works - Civil** |  | 2025-08-20 | 2025-10-11 |  |  |
| PG-12428 |  | Waterproofing for sunken areas | 3d | 2025-08-20 | 2025-08-23 | PG-11858 | 265.33d |
| PG-12429 |  | Floor Tiling - Wet area | 5d | 2025-09-16 | 2025-09-22 | PG-12428, PG-12425 | 245.33d |
| PG-12430 |  | Floor Tiling - Dry area | 5d | 2025-09-22 | 2025-09-27 | PG-12429 FF+5d | 245.33d |
| PG-12431 |  | Wooden doors | 5d | 2025-10-06 | 2025-10-11 | PG-12426 FF | 245.33d |
|  | 1.3.1.3.4.20 | **Floor 17** |  | 2025-09-02 | 2025-11-17 |  |  |
|  | 1.3.1.3.4.20.1 | **Ceiling Finishing works - Civil** |  | 2025-09-11 | 2025-11-17 |  |  |
| PG-12432 |  | Gypsum Plastering | 6d | 2025-09-11 | 2025-09-18 | PG-12072 | 282.33d |
| PG-12433 |  | Cornice fixing | 4d | 2025-09-27 | 2025-10-03 | PG-12069 FF+6d | 282.33d |
| PG-12435 |  | Toilet False ceiling | 4d | 2025-10-07 | 2025-10-11 | PG-12443 FF+5d | 259.33d |
| PG-12434 |  | Painting Works - Putty, Primer and 1st | 6d | 2025-10-17 | 2025-10-24 | PG-12433, PG-12438 | 270d |
| PG-12436 |  | Final Coat Painting | 18.67d | 2025-10-24 | 2025-11-17 | PG-12434, PG-12445 | 270d |
|  | 1.3.1.3.4.20.2 | **Wall Finishing works - Civil** |  | 2025-09-02 | 2025-11-17 |  |  |
| PG-12437 |  | Balcony Railing Fixing works | 4d | 2025-09-02 | 2025-09-06 | PG-11863 | 263.33d |
| PG-12439 |  | Dadoing - Wet area | 5d | 2025-09-23 | 2025-09-29 | PG-12067 | 234.33d |
| PG-12438 |  | UPVC Windows & Sliding doors | 5d | 2025-10-11 | 2025-10-17 | PG-12437, PG-12444 FF+5d | 234.33d |
| PG-12440 |  | Painting Works - Putty, Primer and 1st | 6d | 2025-10-17 | 2025-10-24 | PG-12438 | 234.33d |
| PG-12441 |  | Final Coat Painting | 18.67d | 2025-10-24 | 2025-11-17 | PG-12445 | 234.33d |
|  | 1.3.1.3.4.20.3 | **Floor Finishing Works - Civil** |  | 2025-09-02 | 2025-10-24 |  |  |
| PG-12442 |  | Waterproofing for sunken areas | 3d | 2025-09-02 | 2025-09-05 | PG-11863 | 254.33d |
| PG-12443 |  | Floor Tiling - Wet area | 5d | 2025-09-29 | 2025-10-06 | PG-12442, PG-12439 | 234.33d |
| PG-12444 |  | Floor Tiling - Dry area | 5d | 2025-10-06 | 2025-10-11 | PG-12443 FF+5d | 234.33d |
| PG-12445 |  | Wooden doors | 5d | 2025-10-18 | 2025-10-24 | PG-12440 FF | 234.33d |
|  | 1.3.1.3.4.21 | **Floor 18** |  | 2025-09-15 | 2025-11-29 |  |  |
|  | 1.3.1.3.4.21.1 | **Ceiling Finishing works - Civil** |  | 2025-09-24 | 2025-11-29 |  |  |
| PG-12446 |  | Gypsum Plastering | 6d | 2025-09-24 | 2025-10-01 | PG-12081 | 271.33d |
| PG-12447 |  | Cornice fixing | 4d | 2025-10-11 | 2025-10-16 | PG-12078 FF+6d | 271.33d |
| PG-12449 |  | Toilet False ceiling | 4d | 2025-10-20 | 2025-10-24 | PG-12457 FF+5d | 248.33d |
| PG-12448 |  | Painting Works - Putty, Primer and 1st | 6d | 2025-10-30 | 2025-11-07 | PG-12447, PG-12452 | 259d |
| PG-12450 |  | Final Coat Painting | 18.67d | 2025-11-07 | 2025-11-29 | PG-12448, PG-12459 | 259d |
|  | 1.3.1.3.4.21.2 | **Wall Finishing works - Civil** |  | 2025-09-15 | 2025-11-29 |  |  |
| PG-12451 |  | Balcony Railing Fixing works | 4d | 2025-09-15 | 2025-09-19 | PG-11868 | 252.33d |
| PG-12453 |  | Dadoing - Wet area | 5d | 2025-10-07 | 2025-10-13 | PG-12076 | 223.33d |
| PG-12452 |  | UPVC Windows & Sliding doors | 5d | 2025-10-24 | 2025-10-30 | PG-12451, PG-12458 FF+5d | 223.33d |
| PG-12454 |  | Painting Works - Putty, Primer and 1st | 6d | 2025-10-30 | 2025-11-07 | PG-12452 | 223.33d |
| PG-12455 |  | Final Coat Painting | 18.67d | 2025-11-07 | 2025-11-29 | PG-12459 | 223.33d |
|  | 1.3.1.3.4.21.3 | **Floor Finishing Works - Civil** |  | 2025-09-15 | 2025-11-07 |  |  |
| PG-12456 |  | Waterproofing for sunken areas | 3d | 2025-09-15 | 2025-09-18 | PG-11868 | 243.33d |
| PG-12457 |  | Floor Tiling - Wet area | 5d | 2025-10-13 | 2025-10-18 | PG-12456, PG-12453 | 223.33d |
| PG-12458 |  | Floor Tiling - Dry area | 5d | 2025-10-18 | 2025-10-24 | PG-12457 FF+5d | 223.33d |
| PG-12459 |  | Wooden doors | 5d | 2025-10-31 | 2025-11-07 | PG-12454 FF | 223.33d |
|  | 1.3.1.3.4.22 | **Floor 19** |  | 2025-09-27 | 2025-12-12 |  |  |
|  | 1.3.1.3.4.22.1 | **Ceiling Finishing works - Civil** |  | 2025-10-08 | 2025-12-12 |  |  |
| PG-12460 |  | Gypsum Plastering | 6d | 2025-10-08 | 2025-10-15 | PG-12090 | 260.33d |
| PG-12461 |  | Cornice fixing | 4d | 2025-10-24 | 2025-10-29 | PG-12087 FF+6d | 260.33d |
| PG-12463 |  | Toilet False ceiling | 4d | 2025-11-03 | 2025-11-07 | PG-12471 FF+5d | 237.33d |
| PG-12462 |  | Painting Works - Putty, Primer and 1st | 6d | 2025-11-13 | 2025-11-20 | PG-12461, PG-12466 | 248d |
| PG-12464 |  | Final Coat Painting | 18.67d | 2025-11-20 | 2025-12-12 | PG-12462, PG-12473 | 248d |
|  | 1.3.1.3.4.22.2 | **Wall Finishing works - Civil** |  | 2025-09-27 | 2025-12-12 |  |  |
| PG-12465 |  | Balcony Railing Fixing works | 4d | 2025-09-27 | 2025-10-03 | PG-11873 | 241.33d |
| PG-12467 |  | Dadoing - Wet area | 5d | 2025-10-20 | 2025-10-25 | PG-12085 | 212.33d |
| PG-12466 |  | UPVC Windows & Sliding doors | 5d | 2025-11-07 | 2025-11-13 | PG-12465, PG-12472 FF+5d | 212.33d |
| PG-12468 |  | Painting Works - Putty, Primer and 1st | 6d | 2025-11-13 | 2025-11-20 | PG-12466 | 212.33d |
| PG-12469 |  | Final Coat Painting | 18.67d | 2025-11-20 | 2025-12-12 | PG-12473 | 212.33d |
|  | 1.3.1.3.4.22.3 | **Floor Finishing Works - Civil** |  | 2025-09-27 | 2025-11-20 |  |  |
| PG-12470 |  | Waterproofing for sunken areas | 3d | 2025-09-27 | 2025-10-01 | PG-11873 | 232.33d |

| ID | WBS | Task | Duration | Start | Finish | Predecessors | Total float |
| --- | --- | --- | --- | --- | --- | --- | --- |
| PG-12471 |  | Floor Tiling - Wet area | 5d | 2025-10-25 | 2025-10-31 | PG-12470, PG-12467 | 212.33d |
| PG-12472 |  | Floor Tiling - Dry area | 5d | 2025-10-31 | 2025-11-07 | PG-12471 FF+5d | 212.33d |
| PG-12473 |  | Wooden doors | 5d | 2025-11-14 | 2025-11-20 | PG-12468 FF | 212.33d |
|  | 1.3.1.3.4.23 | **Floor 20** |  | 2025-10-11 | 2025-12-25 |  |  |
|  | 1.3.1.3.4.23.1 | **Ceiling Finishing works - Civil** |  | 2025-10-21 | 2025-12-25 |  |  |
| PG-12474 |  | Gypsum Plastering | 6d | 2025-10-21 | 2025-10-28 | PG-12099 | 248.5d |
| PG-12475 |  | Cornice fixing | 4d | 2025-11-07 | 2025-11-12 | PG-12096 FF+6d | 248.5d |
| PG-12477 |  | Toilet False ceiling | 4d | 2025-11-15 | 2025-11-20 | PG-12485 FF+5d | 227.67d |
| PG-12476 |  | Painting Works - Putty, Primer and 1st | 6d | 2025-11-26 | 2025-12-03 | PG-12480, PG-12475 | 236.33d |
| PG-12478 |  | Final Coat Painting | 19.33d | 2025-12-03 | 2025-12-25 | PG-12476, PG-12487 | 236.33d |
|  | 1.3.1.3.4.23.2 | **Wall Finishing works - Civil** |  | 2025-10-11 | 2025-12-25 |  |  |
| PG-12479 |  | Balcony Railing Fixing works | 4d | 2025-10-11 | 2025-10-16 | PG-11878 | 229.67d |
| PG-12481 |  | Dadoing - Wet area | 5d | 2025-11-03 | 2025-11-08 | PG-12094 | 200.67d |
| PG-12480 |  | UPVC Windows & Sliding doors | 5d | 2025-11-20 | 2025-11-26 | PG-12507, PG-12479, PG-12486 FF+5d | 200.67d |
| PG-12482 |  | Painting Works - Putty, Primer and 1st | 6d | 2025-11-26 | 2025-12-03 | PG-12480 | 200.67d |
| PG-12483 |  | Final Coat Painting | 19.33d | 2025-12-03 | 2025-12-25 | PG-12487 | 200.67d |
|  | 1.3.1.3.4.23.3 | **Floor Finishing Works - Civil** |  | 2025-10-11 | 2025-12-03 |  |  |
| PG-12484 |  | Waterproofing for sunken areas | 3d | 2025-10-11 | 2025-10-15 | PG-11878 | 220.67d |
| PG-12485 |  | Floor Tiling - Wet area | 5d | 2025-11-08 | 2025-11-14 | PG-12484, PG-12481 | 200.67d |
| PG-12486 |  | Floor Tiling - Dry area | 5d | 2025-11-14 | 2025-11-20 | PG-12485 FF+5d | 200.67d |
| PG-12487 |  | Wooden doors | 5d | 2025-11-27 | 2025-12-03 | PG-12482 FF | 200.67d |
|  | 1.3.1.3.4.24 | **Floor 21** |  | 2025-10-24 | 2026-01-07 |  |  |
|  | 1.3.1.3.4.24.1 | **Ceiling Finishing works - Civil** |  | 2025-11-04 | 2026-01-07 |  |  |
| PG-12488 |  | Gypsum Plastering | 6d | 2025-11-04 | 2025-11-11 | PG-12108 | 237.33d |
| PG-12489 |  | Cornice fixing | 4d | 2025-11-20 | 2025-11-25 | PG-12105 FF+6d | 237.33d |
| PG-12491 |  | Toilet False ceiling | 4d | 2025-11-28 | 2025-12-03 | PG-12499 FF+5d | 215.83d |
| PG-12490 |  | Painting Works - Putty, Primer and 1st | 6d | 2025-12-09 | 2025-12-16 | PG-12489, PG-12494 | 225.5d |
| PG-12492 |  | Final Coat Painting | 19.5d | 2025-12-16 | 2026-01-07 | PG-12490, PG-12501 | 225.5d |
|  | 1.3.1.3.4.24.2 | **Wall Finishing works - Civil** |  | 2025-10-24 | 2026-01-07 |  |  |
| PG-12493 |  | Balcony Railing Fixing works | 4d | 2025-10-24 | 2025-10-29 | PG-11883 | 218.5d |
| PG-12495 |  | Dadoing - Wet area | 5d | 2025-11-15 | 2025-11-21 | PG-12103 | 189.83d |
| PG-12494 |  | UPVC Windows & Sliding doors | 5d | 2025-12-03 | 2025-12-09 | PG-12493, PG-12500 FF+5d | 189.83d |
| PG-12496 |  | Painting Works - Putty, Primer and 1st | 6d | 2025-12-09 | 2025-12-16 | PG-12494 | 189.83d |
| PG-12497 |  | Final Coat Painting | 19.5d | 2025-12-16 | 2026-01-07 | PG-12501 | 189.83d |
|  | 1.3.1.3.4.24.3 | **Floor Finishing Works - Civil** |  | 2025-10-24 | 2025-12-16 |  |  |
| PG-12498 |  | Waterproofing for sunken areas | 3d | 2025-10-24 | 2025-10-28 | PG-11883 | 209.5d |
| PG-12499 |  | Floor Tiling - Wet area | 5d | 2025-11-21 | 2025-11-27 | PG-12495, PG-12498 | 189.83d |
| PG-12500 |  | Floor Tiling - Dry area | 5d | 2025-11-27 | 2025-12-03 | PG-12499 FF+5d | 189.83d |
| PG-12501 |  | Wooden doors | 5d | 2025-12-10 | 2025-12-16 | PG-12496 FF | 189.83d |
|  | 1.3.1.3.4.25 | **Floor 22** |  | 2025-11-07 | 2026-01-20 |  |  |
|  | 1.3.1.3.4.25.1 | **Ceiling Finishing works - Civil** |  | 2025-11-17 | 2026-01-20 |  |  |
| PG-12502 |  | Gypsum Plastering | 6d | 2025-11-17 | 2025-11-24 | PG-12117 | 226.33d |
| PG-12503 |  | Cornice fixing | 4d | 2025-12-03 | 2025-12-08 | PG-12114 FF+6d | 226.33d |
| PG-12505 |  | Toilet False ceiling | 4d | 2025-12-11 | 2025-12-16 | PG-12513 FF+5d | 204.83d |
| PG-12504 |  | Painting Works - Putty, Primer and 1st | 6d | 2025-12-22 | 2025-12-29 | PG-12503, PG-12508 | 214.5d |
| PG-12506 |  | Final Coat Painting | 19.5d | 2025-12-29 | 2026-01-20 | PG-12504, PG-12515 | 214.5d |
|  | 1.3.1.3.4.25.2 | **Wall Finishing works - Civil** |  | 2025-11-07 | 2026-01-20 |  |  |
| PG-12507 |  | Balcony Railing Fixing works | 4d | 2025-11-07 | 2025-11-12 | PG-11888 | 207.67d |
| PG-12509 |  | Dadoing - Wet area | 5d | 2025-11-28 | 2025-12-04 | PG-12112 | 178.83d |
| PG-12508 |  | UPVC Windows & Sliding doors | 5d | 2025-12-16 | 2025-12-22 | PG-12514 FF+5d | 178.83d |
| PG-12510 |  | Painting Works - Putty, Primer and 1st | 6d | 2025-12-22 | 2025-12-29 | PG-12508 | 178.83d |
| PG-12511 |  | Final Coat Painting | 19.5d | 2025-12-29 | 2026-01-20 | PG-12515 | 178.83d |
|  | 1.3.1.3.4.25.3 | **Floor Finishing Works - Civil** |  | 2025-11-07 | 2025-12-29 |  |  |
| PG-12512 |  | Waterproofing for sunken areas | 3d | 2025-11-07 | 2025-11-11 | PG-11888 | 198.5d |
| PG-12513 |  | Floor Tiling - Wet area | 5d | 2025-12-04 | 2025-12-10 | PG-12512, PG-12509 | 178.83d |
| PG-12514 |  | Floor Tiling - Dry area | 5d | 2025-12-10 | 2025-12-16 | PG-12513 FF+5d | 178.83d |
| PG-12515 |  | Wooden doors | 5d | 2025-12-23 | 2025-12-29 | PG-12510 FF | 178.83d |
|  | 1.3.1.3.4.26 | **Floor 23** |  | 2025-11-20 | 2026-02-03 |  |  |
|  | 1.3.1.3.4.26.1 | **Ceiling Finishing works - Civil** |  | 2025-11-28 | 2026-02-03 |  |  |
| PG-12516 |  | Gypsum Plastering | 6d | 2025-11-28 | 2025-12-05 | PG-12126 | 215.67d |
| PG-12517 |  | Cornice fixing | 4d | 2025-12-15 | 2025-12-19 | PG-12123 FF+6d | 215.67d |
| PG-12519 |  | Toilet False ceiling | 4d | 2025-12-22 | 2025-12-26 | PG-12527 FF+5d | 196.17d |
| PG-12518 |  | Painting Works - Putty, Primer and 1st | 6d | 2026-01-01 | 2026-01-08 | PG-12517, PG-12522 | 203.83d |
| PG-12520 |  | Final Coat Painting | 19.5d | 2026-01-08 | 2026-02-03 | PG-12518, PG-12529 | 203.83d |
|  | 1.3.1.3.4.26.2 | **Wall Finishing works - Civil** |  | 2025-11-20 | 2026-02-03 |  |  |
| PG-12521 |  | Balcony Railing Fixing works | 4d | 2025-11-20 | 2025-11-25 | PG-11893 | 195.83d |
| PG-12523 |  | Dadoing - Wet area | 5d | 2025-12-09 | 2025-12-15 | PG-12121 | 168.17d |
| PG-12522 |  | UPVC Windows & Sliding doors | 5d | 2025-12-26 | 2026-01-01 | PG-12521, PG-12528 FF+5d | 168.17d |
| PG-12524 |  | Painting Works - Putty, Primer and 1st | 6d | 2026-01-01 | 2026-01-08 | PG-12522 | 168.17d |
| PG-12525 |  | Final Coat Painting | 19.5d | 2026-01-08 | 2026-02-03 | PG-12529 | 168.17d |

| ID | WBS | Task | Duration | Start | Finish | Predecessors | Total float |
| --- | --- | --- | --- | --- | --- | --- | --- |
|  | 1.3.1.3.4.26.3 | **Floor Finishing Works - Civil** |  | 2025-11-20 | 2026-01-08 |  |  |
| PG-12526 |  | Waterproofing for sunken areas | 3d | 2025-11-20 | 2025-11-24 | PG-11893 | 186.83d |
| PG-12527 |  | Floor Tiling - Wet area | 5d | 2025-12-15 | 2025-12-20 | PG-12526, PG-12523 | 168.17d |
| PG-12528 |  | Floor Tiling - Dry area | 5d | 2025-12-20 | 2025-12-26 | PG-12527 FF+5d | 168.17d |
| PG-12529 |  | Wooden doors | 5d | 2026-01-02 | 2026-01-08 | PG-12524 FF | 168.17d |
|  | 1.3.1.3.4.27 | **Floor 24** |  | 2025-12-03 | 2026-02-16 |  |  |
|  | 1.3.1.3.4.27.1 | **Ceiling Finishing works - Civil** |  | 2025-12-12 | 2026-02-16 |  |  |
| PG-12530 |  | Gypsum Plastering | 6d | 2025-12-12 | 2025-12-19 | PG-12135 | 204.33d |
| PG-12531 |  | Cornice fixing | 4d | 2025-12-29 | 2026-01-02 | PG-12132 FF+6d | 204.33d |
| PG-12533 |  | Toilet False ceiling | 4d | 2026-01-05 | 2026-01-09 | PG-12541 FF+5d | 183.83d |
| PG-12532 |  | Painting Works - Putty, Primer and 1st | 6d | 2026-01-15 | 2026-01-22 | PG-12531, PG-12536 | 192.5d |
| PG-12534 |  | Final Coat Painting | 19.67d | 2026-01-22 | 2026-02-16 | PG-12532, PG-12543 | 192.5d |
|  | 1.3.1.3.4.27.2 | **Wall Finishing works - Civil** |  | 2025-12-03 | 2026-02-16 |  |  |
| PG-12535 |  | Balcony Railing Fixing works | 4d | 2025-12-03 | 2025-12-08 | PG-11898 | 185.5d |
| PG-12537 |  | Dadoing - Wet area | 5d | 2025-12-23 | 2025-12-29 | PG-12130 | 156.83d |
| PG-12536 |  | UPVC Windows & Sliding doors | 5d | 2026-01-09 | 2026-01-15 | PG-12535, PG-12542 FF+5d | 156.83d |
| PG-12538 |  | Painting Works - Putty, Primer and 1st | 6d | 2026-01-15 | 2026-01-22 | PG-12536 | 156.83d |
| PG-12539 |  | Final Coat Painting | 19.67d | 2026-01-22 | 2026-02-16 | PG-12543 | 156.83d |
|  | 1.3.1.3.4.27.3 | **Floor Finishing Works - Civil** |  | 2025-12-03 | 2026-01-22 |  |  |
| PG-12540 |  | Waterproofing for sunken areas | 3d | 2025-12-03 | 2025-12-06 | PG-11898 | 176.5d |
| PG-12541 |  | Floor Tiling - Wet area | 5d | 2025-12-29 | 2026-01-03 | PG-12540, PG-12537 | 156.83d |
| PG-12542 |  | Floor Tiling - Dry area | 5d | 2026-01-03 | 2026-01-09 | PG-12541 FF+5d | 156.83d |
| PG-12543 |  | Wooden doors | 5d | 2026-01-16 | 2026-01-22 | PG-12538 FF | 156.83d |
|  | 1.3.1.3.4.28 | **Floor 25** |  | 2025-12-24 | 2026-03-09 |  |  |
|  | 1.3.1.3.4.28.1 | **Ceiling Finishing works - Civil** |  | 2026-01-02 | 2026-03-09 |  |  |
| PG-12544 |  | Gypsum Plastering | 6d | 2026-01-02 | 2026-01-09 | PG-12144 | 100.33d |
| PG-12545 |  | Cornice fixing | 3.67d | 2026-01-19 | 2026-01-23 | PG-12141 FF+6d | 100.33d |
| PG-12547 |  | Toilet False ceiling | 4d | 2026-01-27 | 2026-01-31 | PG-12555 FF+5d | 165.33d |
| PG-12546 |  | Painting Works - Putty, Primer and 1st | 6d | 2026-02-06 | 2026-02-13 | PG-12545, PG-12550 | 89.17d |
| PG-12548 |  | Final Coat Painting | 20d | 2026-02-13 | 2026-03-09 | PG-12546, PG-12557 | 173.33d |
|  | 1.3.1.3.4.28.2 | **Wall Finishing works - Civil** |  | 2025-12-24 | 2026-03-09 |  |  |
| PG-12549 |  | Balcony Railing Fixing works | 4d | 2025-12-24 | 2025-12-29 | PG-12129 FS+7d | 117d |
| PG-12551 |  | Dadoing - Wet area | 5d | 2026-01-13 | 2026-01-19 | PG-12139 | 89.17d |
| PG-12550 |  | UPVC Windows & Sliding doors | 5d | 2026-01-31 | 2026-02-06 | PG-12549, PG-12556 FF+5d | 89.17d |
| PG-12552 |  | Painting Works - Putty, Primer and 1st | 6d | 2026-02-06 | 2026-02-13 | PG-12550 | 137.67d |
| PG-12553 |  | Final Coat Painting | 20d | 2026-02-13 | 2026-03-09 | PG-12557 | 137.67d |
|  | 1.3.1.3.4.28.3 | **Floor Finishing Works - Civil** |  | 2025-12-24 | 2026-02-13 |  |  |
| PG-12554 |  | Waterproofing for sunken areas | 3d | 2025-12-24 | 2025-12-27 | PG-12129 FS+7d | 108d |
| PG-12555 |  | Floor Tiling - Wet area | 5d | 2026-01-19 | 2026-01-24 | PG-12554, PG-12551 | 89.17d |
| PG-12556 |  | Floor Tiling - Dry area | 5d | 2026-01-24 | 2026-01-31 | PG-12555 FF+5d | 89.17d |
| PG-12557 |  | Wooden doors | 5d | 2026-02-07 | 2026-02-13 | PG-12552 FF | 137.67d |
|  | 1.3.1.3.4.29 | **Floor 26** |  | 2026-01-14 | 2026-03-31 |  |  |
|  | 1.3.1.3.4.29.1 | **Ceiling Finishing works - Civil** |  | 2026-01-23 | 2026-03-31 |  |  |
| PG-12558 |  | Gypsum Plastering | 6d | 2026-01-23 | 2026-01-31 | PG-12153 | 167.5d |
| PG-12559 |  | Cornice fixing | 3.67d | 2026-02-10 | 2026-02-14 | PG-12150 FF+6d | 167.5d |
| PG-12561 |  | Toilet False ceiling | 4d | 2026-02-18 | 2026-02-23 | PG-12569 FF+5d | 146.33d |
| PG-12560 |  | Painting Works - Putty, Primer and 1st | 6d | 2026-02-28 | 2026-03-07 | PG-12559, PG-12564 | 155.33d |
| PG-12562 |  | Final Coat Painting | 20d | 2026-03-07 | 2026-03-31 | PG-12560, PG-12571 | 155.33d |
|  | 1.3.1.3.4.29.2 | **Wall Finishing works - Civil** |  | 2026-01-14 | 2026-03-30 |  |  |
| PG-12563 |  | Balcony Railing Fixing works | 4d | 2026-01-14 | 2026-01-19 | PG-12138 FS+7d | 147.17d |
| PG-12565 |  | Dadoing - Wet area | 5d | 2026-02-05 | 2026-02-11 | PG-12148 | 118.33d |
| PG-12564 |  | UPVC Windows & Sliding doors | 5d | 2026-02-23 | 2026-02-28 | PG-12563, PG-12570 FF+5d | 118.33d |
| PG-12566 |  | Painting Works - Putty, Primer and 1st | 6d | 2026-02-28 | 2026-03-07 | PG-12564 | 118.33d |
| PG-12567 |  | Final Coat Painting | 19.33d | 2026-03-07 | 2026-03-30 | PG-12571 | 118.33d |
|  | 1.3.1.3.4.29.3 | **Floor Finishing Works - Civil** |  | 2026-01-14 | 2026-03-07 |  |  |
| PG-12568 |  | Waterproofing for sunken areas | 3d | 2026-01-14 | 2026-01-17 | PG-12138 FS+7d | 138.17d |
| PG-12569 |  | Floor Tiling - Wet area | 5d | 2026-02-11 | 2026-02-17 | PG-12568, PG-12565 | 118.33d |
| PG-12570 |  | Floor Tiling - Dry area | 5d | 2026-02-17 | 2026-02-23 | PG-12569 FF+5d | 118.33d |
| PG-12571 |  | Wooden doors | 5d | 2026-03-02 | 2026-03-07 | PG-12566 FF | 118.33d |
|  | 1.3.1.3.4.30 | **Floor 27** |  | 2026-02-06 | 2026-04-21 |  |  |
|  | 1.3.1.3.4.30.1 | **Ceiling Finishing works - Civil** |  | 2026-02-16 | 2026-04-21 |  |  |
| PG-12572 |  | Gypsum Plastering | 6d | 2026-02-16 | 2026-02-23 | PG-12162 | 149.17d |
| PG-12573 |  | Cornice fixing | 4d | 2026-03-04 | 2026-03-09 | PG-12159 FF+6d | 149.17d |
| PG-12575 |  | Toilet False ceiling | 4d | 2026-03-12 | 2026-03-17 | PG-12583 FF+5d | 126.5d |
| PG-12574 |  | Painting Works - Putty, Primer and 1st | 6d | 2026-03-23 | 2026-03-30 | PG-12573, PG-12578 | 137.17d |
| PG-12576 |  | Final Coat Painting | 19.67d | 2026-03-30 | 2026-04-21 | PG-12574, PG-12585 | 137.17d |
|  | 1.3.1.3.4.30.2 | **Wall Finishing works - Civil** |  | 2026-02-06 | 2026-04-21 |  |  |
| PG-12577 |  | Balcony Railing Fixing works | 4d | 2026-02-06 | 2026-02-11 | PG-12147 FS+7d | 129.17d |
| PG-12579 |  | Dadoing - Wet area | 5d | 2026-02-27 | 2026-03-05 | PG-12157 | 100.5d |
| PG-12578 |  | UPVC Windows & Sliding doors | 5d | 2026-03-17 | 2026-03-23 | PG-12577, PG-12584 FF+5d | 100.5d |

| ID | WBS | Task | Duration | Start | Finish | Predecessors | Total float |
| --- | --- | --- | --- | --- | --- | --- | --- |
| PG-12580 |  | Painting Works - Putty, Primer and 1st | 6d | 2026-03-23 | 2026-03-30 | PG-12578 | 100.5d |
| PG-12581 |  | Final Coat Painting | 19.67d | 2026-03-30 | 2026-04-21 | PG-12585 | 100.5d |
|  | 1.3.1.3.4.30.3 | **Floor Finishing Works - Civil** |  | 2026-02-06 | 2026-03-30 |  |  |
| PG-12582 |  | Waterproofing for sunken areas | 3d | 2026-02-06 | 2026-02-10 | PG-12147 FS+7d | 120.17d |
| PG-12583 |  | Floor Tiling - Wet area | 5d | 2026-03-05 | 2026-03-11 | PG-12582, PG-12579 | 100.5d |
| PG-12584 |  | Floor Tiling - Dry area | 5d | 2026-03-11 | 2026-03-17 | PG-12583 FF+5d | 100.5d |
| PG-12585 |  | Wooden doors | 5d | 2026-03-24 | 2026-03-30 | PG-12580 FF | 100.5d |
|  | 1.3.1.3.4.31 | **Floor 28** |  | 2026-02-28 | 2026-05-13 |  |  |
|  | 1.3.1.3.4.31.1 | **Ceiling Finishing works - Civil** |  | 2026-03-09 | 2026-05-13 |  |  |
| PG-12586 |  | Gypsum Plastering | 6d | 2026-03-09 | 2026-03-16 | PG-12171 | 130.17d |
| PG-12587 |  | Cornice fixing | 3.67d | 2026-03-26 | 2026-03-30 | PG-12168 FF+6d | 130.17d |
| PG-12589 |  | Toilet False ceiling | 4d | 2026-04-02 | 2026-04-07 | PG-12597 FF+5d | 109.83d |
| PG-12588 |  | Painting Works - Putty, Primer and 1st | 6d | 2026-04-13 | 2026-04-20 | PG-12587, PG-12592 | 118.17d |
| PG-12590 |  | Final Coat Painting | 20d | 2026-04-20 | 2026-05-13 | PG-12588, PG-12599 | 118.17d |
|  | 1.3.1.3.4.31.2 | **Wall Finishing works - Civil** |  | 2026-02-28 | 2026-05-13 |  |  |
| PG-12591 |  | Balcony Railing Fixing works | 4d | 2026-02-28 | 2026-03-05 | PG-12156 FS+7d | 111.17d |
| PG-12593 |  | Dadoing - Wet area | 5d | 2026-03-20 | 2026-03-26 | PG-12166 | 82.5d |
| PG-12592 |  | UPVC Windows & Sliding doors | 5d | 2026-04-07 | 2026-04-13 | PG-12591, PG-12598 FF+5d | 82.5d |
| PG-12594 |  | Painting Works - Putty, Primer and 1st | 6d | 2026-04-13 | 2026-04-20 | PG-12592 | 82.5d |
| PG-12595 |  | Final Coat Painting | 20d | 2026-04-20 | 2026-05-13 | PG-12599 | 82.5d |
|  | 1.3.1.3.4.31.3 | **Floor Finishing Works - Civil** |  | 2026-02-28 | 2026-04-20 |  |  |
| PG-12596 |  | Waterproofing for sunken areas | 3d | 2026-02-28 | 2026-03-04 | PG-12156 FS+7d | 102.17d |
| PG-12597 |  | Floor Tiling - Wet area | 5d | 2026-03-26 | 2026-04-01 | PG-12596, PG-12593 | 82.5d |
| PG-12598 |  | Floor Tiling - Dry area | 5d | 2026-04-01 | 2026-04-07 | PG-12597 FF+5d | 82.5d |
| PG-12599 |  | Wooden doors | 5d | 2026-04-14 | 2026-04-20 | PG-12594 FF | 82.5d |
|  | 1.3.1.3.4.32 | **Floor 29** |  | 2026-03-21 | 2026-06-04 |  |  |
|  | 1.3.1.3.4.32.1 | **Ceiling Finishing works - Civil** |  | 2026-03-31 | 2026-06-04 |  |  |
| PG-12600 |  | Gypsum Plastering | 6d | 2026-03-31 | 2026-04-07 | PG-12180 | 105.83d |
| PG-12601 |  | Cornice fixing | 3.67d | 2026-04-23 | 2026-04-28 | PG-12177 FF+12d | 105.83d |
| PG-12603 |  | Toilet False ceiling | 4d | 2026-04-24 | 2026-04-29 | PG-12611 FF+5d | 91.17d |
| PG-12602 |  | Painting Works - Putty, Primer and 1st | 6d | 2026-05-05 | 2026-05-12 | PG-12601, PG-12606 | 99.83d |
| PG-12604 |  | Final Coat Painting | 19.67d | 2026-05-12 | 2026-06-04 | PG-12602, PG-12613 | 99.83d |
|  | 1.3.1.3.4.32.2 | **Wall Finishing works - Civil** |  | 2026-03-21 | 2026-06-04 |  |  |
| PG-12605 |  | Balcony Railing Fixing works | 4d | 2026-03-21 | 2026-03-26 | PG-12165 FS+7d | 92.83d |
| PG-12607 |  | Dadoing - Wet area | 5d | 2026-04-11 | 2026-04-17 | PG-12175 | 64.17d |
| PG-12606 |  | UPVC Windows & Sliding doors | 5d | 2026-04-29 | 2026-05-05 | PG-12605, PG-12612 FF+5d | 64.17d |
| PG-12608 |  | Painting Works - Putty, Primer and 1st | 6d | 2026-05-05 | 2026-05-12 | PG-12606 | 64.17d |
| PG-12609 |  | Final Coat Painting | 19.67d | 2026-05-12 | 2026-06-04 | PG-12613 | 64.17d |
|  | 1.3.1.3.4.32.3 | **Floor Finishing Works - Civil** |  | 2026-03-21 | 2026-05-12 |  |  |
| PG-12610 |  | Waterproofing for sunken areas | 3d | 2026-03-21 | 2026-03-25 | PG-12165 FS+7d | 83.83d |
| PG-12611 |  | Floor Tiling - Wet area | 5d | 2026-04-17 | 2026-04-23 | PG-12610, PG-12607 | 64.17d |
| PG-12612 |  | Floor Tiling - Dry area | 5d | 2026-04-23 | 2026-04-29 | PG-12611 FF+5d | 64.17d |
| PG-12613 |  | Wooden doors | 5d | 2026-05-06 | 2026-05-12 | PG-12608 FF | 64.17d |
|  | 1.3.1.3.4.33 | **External Finishing works** |  | 2025-12-30 | 2026-04-27 |  |  |
| PG-12614 |  | External walls tie rod hole plugging with GP2 | 30d | 2025-12-30 | 2026-02-04 | PG-11904 | 58.83d |
| PG-12615 |  | External walls grinding works | 40d | 2026-01-22 | 2026-03-11 | PG-12614 FF+30d | 58.83d |
| PG-12616 |  | Texture and painting works | 45d | 2026-03-05 | 2026-04-27 | PG-12615 FF+40d | 58.83d |
|  | 1.3.1.3.5 | **Corridor & Fire Staircase Finishing works** |  | 2026-03-07 | 2026-07-03 |  |  |
|  | 1.3.1.3.5.1 | **Ceiling Finishing works - Civil** |  | 2026-03-07 | 2026-05-29 |  |  |
| PG-12617 |  | Gypsum Plastering | 6d | 2026-03-07 | 2026-03-14 | PG-12144 FF+60d | 0d |
| PG-12618 |  | Cornice fixing | 4d | 2026-03-13 | 2026-03-18 | PG-12545 FF+45d | 100.33d |
| PG-12619 |  | Painting Works - Putty, Primer and 1st | 6d | 2026-03-31 | 2026-04-07 | PG-12546 FF+45d, PG-12618 | 89.17d |
| PG-12620 |  | False ceiling | 30d | 2026-04-07 | 2026-05-12 | PG-12619 | 89.17d |
| PG-12621 |  | Final Coat Painting | 30.67d | 2026-04-24 | 2026-05-29 | PG-12620 FF+15d | 119.17d |
|  | 1.3.1.3.5.2 | **Wall Finishing works - Civil** |  | 2026-04-11 | 2026-07-03 |  |  |
| PG-12622 |  | UPVC Windows & Sliding doors | 5d | 2026-04-11 | 2026-04-17 | PG-12550 FF+60d | 95.17d |
| PG-12623 |  | Wall Cladding Upto 1.2 Mts | 20d | 2026-04-29 | 2026-05-22 | PG-12622 FF+30d | 95.17d |
| PG-12624 |  | Painting Works - Texture & one coat Painting works | 15d | 2026-05-29 | 2026-06-16 | PG-12623, PG-12620 FF+30d | 89.17d |
| PG-12625 |  | Final Coat Painting | 19.67d | 2026-06-11 | 2026-07-03 | PG-12624 FF+15d, PG-12627 | 89.17d |
|  | 1.3.1.3.5.3 | **Floor Finishing Works - Civil** |  | 2026-03-14 | 2026-04-13 |  |  |
| PG-12626 |  | Fire Doors installation | 10d | 2026-03-14 | 2026-03-26 | PG-12617 | 139.67d |
| PG-12627 |  | Vitrified tile flooring works | 15d | 2026-03-26 | 2026-04-13 | PG-12626 | 139.67d |
|  | 1.3.1.3.5.4 | **Fire Staircase Finishing Works - Civil** |  | 2026-03-14 | 2026-07-03 |  |  |
| PG-12628 |  | Staircase Railing Fixing works | 20d | 2026-03-14 | 2026-04-07 | PG-12617 | 0d |
| PG-12629 |  | Wall and ceiling Gypsum plastering | 31.5d | 2026-03-25 | 2026-04-30 | PG-12628 FF+20d | 0d |
| PG-12630 |  | Staircase Flooring and Skirting Works | 39.5d | 2026-04-14 | 2026-05-29 | PG-12629 FF+25d | 0d |
| PG-12631 |  | UPVC Window fixing works | 15.5d | 2026-05-29 | 2026-06-16 | PG-12630 FF+15d | 0d |
| PG-12632 |  | Staircase Painting works | 20d | 2026-06-10 | 2026-07-03 | PG-12631 FF+15d | 0d |
|  | 1.3.1.3.6 | **MEP Civil Works (Shaft, Lift Shaft & OHT )** |  | 2025-12-16 | 2026-05-16 |  |  |
|  | 1.3.1.3.6.1 | **Lift Shaft Works** |  | 2025-12-16 | 2026-05-16 |  |  |

| ID | WBS | Task | Duration | Start | Finish | Predecessors | Total float |
| --- | --- | --- | --- | --- | --- | --- | --- |
| PG-12633 |  | Tie rod hole packing | 8d | 2025-12-16 | 2025-12-25 | PG-11901 | 51.67d |
| PG-12634 |  | Grinding works | 5d | 2025-12-25 | 2025-12-31 | PG-12633 | 51.67d |
| PG-12635 |  | Lift pit water proofing works | 20.67d | 2025-12-31 | 2026-01-24 | PG-12634 | 51.67d |
| PG-12636 |  | Shaft door opening finishing | 6.67d | 2026-01-24 | 2026-02-03 | PG-12635 | 51.67d |
| PG-12637 |  | Painting works | 8d | 2026-02-03 | 2026-02-12 | PG-12636 | 51.67d |
| PG-12638 |  | Lift Wall Cladding Works | 15.67d | 2026-04-28 | 2026-05-16 | PG-12673 | 86d |
|  | 1.3.1.3.6.2 | **Electrical Shaft works** |  | 2025-12-16 | 2026-01-17 |  |  |
| PG-12639 |  | Tie rod hole packing | 8d | 2025-12-16 | 2025-12-25 | PG-11901 | 103.33d |
| PG-12640 |  | Grinding works | 5d | 2025-12-25 | 2025-12-31 | PG-12639 | 103.33d |
| PG-12641 |  | Shaft door opening finishing | 6.67d | 2025-12-31 | 2026-01-08 | PG-12640 | 103.33d |
| PG-12642 |  | Painting works | 8d | 2026-01-08 | 2026-01-17 | PG-12641 | 103.33d |
|  | 1.3.1.3.6.3 | **FPS Shaft works** |  | 2025-12-16 | 2026-01-17 |  |  |
| PG-12643 |  | Tie rod hole packing | 8d | 2025-12-16 | 2025-12-25 | PG-11901 | 181.5d |
| PG-12644 |  | Grinding works | 5d | 2025-12-25 | 2025-12-31 | PG-12643 | 181.5d |
| PG-12645 |  | Shaft door opening finishing | 6.67d | 2025-12-31 | 2026-01-08 | PG-12644 | 181.5d |
| PG-12646 |  | Painting works | 8d | 2026-01-08 | 2026-01-17 | PG-12645 | 181.5d |
|  | 1.3.1.3.6.4 | **PHE Shaft works** |  | 2025-12-16 | 2026-01-17 |  |  |
| PG-12647 |  | Tie rod hole packing | 8d | 2025-12-16 | 2025-12-25 | PG-11901 | 138.5d |
| PG-12648 |  | Grinding works | 5d | 2025-12-25 | 2025-12-31 | PG-12647 | 138.5d |
| PG-12649 |  | Shaft door opening finishing | 6.67d | 2025-12-31 | 2026-01-08 | PG-12648 | 138.5d |
| PG-12650 |  | Painting works | 8d | 2026-01-08 | 2026-01-17 | PG-12649 | 138.5d |
|  | 1.3.1.3.6.5 | **Data & Communication Shaft** |  | 2025-12-16 | 2026-01-15 |  |  |
| PG-12651 |  | Tie rod hole packing | 8d | 2025-12-16 | 2025-12-25 | PG-11901 | 177.67d |
| PG-12652 |  | Grinding works | 5d | 2025-12-25 | 2025-12-31 | PG-12651 | 177.67d |
| PG-12653 |  | Shaft door opening finishing | 5d | 2025-12-31 | 2026-01-06 | PG-12652 | 177.67d |
| PG-12654 |  | Painting works | 8d | 2026-01-06 | 2026-01-15 | PG-12653 | 177.67d |
|  | 1.3.1.3.6.6 | **OHT Works** |  | 2025-12-16 | 2026-02-04 |  |  |
| PG-12655 |  | Tank materials Supply & Shifting | 10d | 2025-12-16 | 2025-12-27 | PG-11901 | 145.5d |
| PG-12656 |  | Assembling OHT FRP Tank | 10d | 2025-12-27 | 2026-01-08 | PG-12655 | 145.5d |
| PG-12657 |  | Installation of OHT Tank | 15d | 2026-01-08 | 2026-01-27 | PG-12656 | 145.5d |
| PG-12658 |  | Water tightness works and checking | 7d | 2026-01-27 | 2026-02-04 | PG-12657 | 145.5d |
|  | 1.3.1.3.7 | **MEP Shaft works** |  | 2026-01-15 | 2026-04-08 |  |  |
|  | 1.3.1.3.7.1 | **Electrical** |  | 2026-01-17 | 2026-02-27 |  |  |
| PG-12659 |  | Tray Works | 9.67d | 2026-01-17 | 2026-01-30 | PG-12642 | 103.33d |
| PG-12660 |  | Cable & Conducting works | 9.83d | 2026-01-30 | 2026-02-11 | PG-12659 | 103.33d |
| PG-12661 |  | Wiring/DB/connector box installation and termination works | 14.5d | 2026-02-11 | 2026-02-27 | PG-12660 | 103.33d |
|  | 1.3.1.3.7.2 | **FPS** |  | 2026-01-17 | 2026-02-27 |  |  |
| PG-12662 |  | Shaft MS Piping & fixtures installation | 19.83d | 2026-01-17 | 2026-02-11 | PG-12646 | 181.5d |
| PG-12663 |  | Tray / cabling / conducting & wiring works | 14.33d | 2026-02-11 | 2026-02-27 | PG-12662 | 181.5d |
|  | 1.3.1.3.7.3 | **Data & Communication** |  | 2026-01-15 | 2026-03-05 |  |  |
| PG-12664 |  | Tray Works | 11.67d | 2026-01-15 | 2026-01-30 | PG-12654 | 177.67d |
| PG-12665 |  | Tray / cabling / conducting & wiring works | 14.67d | 2026-01-30 | 2026-02-17 | PG-12664 | 177.67d |
| PG-12666 |  | Wiring/DB/connector box installation and termination works | 14.5d | 2026-02-17 | 2026-03-05 | PG-12665 | 177.67d |
|  | 1.3.1.3.7.4 | **PHE** |  | 2026-01-17 | 2026-04-08 |  |  |
| PG-12667 |  | Bracket fixing works | 6.67d | 2026-01-17 | 2026-01-27 | PG-12650 | 138.5d |
| PG-12668 |  | Piping Works | 14.67d | 2026-01-27 | 2026-02-12 | PG-12667 | 138.5d |
| PG-12669 |  | Terrace Ring main & OHT Connection works | 39.67d | 2026-02-12 | 2026-03-31 | PG-11905, PG-12668, PG-12658 | 138.5d |
| PG-12670 |  | Commissioning | 6.67d | 2026-03-31 | 2026-04-08 | PG-12669 | 138.5d |
|  | 1.3.1.3.8 | **Lift Installation and Testing works** |  | 2025-12-31 | 2026-07-30 |  |  |
| PG-12671 |  | Lift Shaft Survey works | 9.67d | 2025-12-31 | 2026-01-12 | PG-12634 | 77.33d |
| PG-12672 |  | Guide Rails fixing works | 40.83d | 2026-02-12 | 2026-04-01 | PG-12671, PG-12637 | 51.67d |
| PG-12673 |  | Lift Frame fixing works | 23.33d | 2026-04-01 | 2026-04-28 | PG-12672 | 51.67d |
| PG-12674 |  | CAR Assembly works | 20.67d | 2026-04-28 | 2026-05-22 | PG-12673 | 51.67d |
| PG-12675 |  | Lift Machine Room Works | 29.33d | 2026-05-22 | 2026-06-25 | PG-12674 | 51.67d |
| PG-12676 |  | Slow Speed & High Speed Testing works | 29.67d | 2026-06-25 | 2026-07-30 | PG-12638, PG-12675 | 51.67d |
|  | 1.3.1.3.9 | **Electrical Panel Works** |  | 2025-12-16 | 2026-07-22 |  |  |
|  | 1.3.1.3.9.1 | **Civil Finishing Works** |  | 2025-12-16 | 2026-01-30 |  |  |
| PG-12677 |  | Wall Tie rod hole packing & Grinding works. | 13.83d | 2025-12-16 | 2026-01-01 | PG-12417 | 47.58d |
| PG-12678 |  | Window, Louver and Door fixing works | 6.67d | 2026-01-01 | 2026-01-08 | PG-12677 | 47.58d |
| PG-12679 |  | Pedestal works | 10.67d | 2026-01-08 | 2026-01-21 | PG-12678 | 47.58d |
| PG-12680 |  | Painting works | 6.67d | 2026-01-21 | 2026-01-30 | PG-12679 | 47.58d |
|  | 1.3.1.3.9.2 | **Electrical Panel works** |  | 2026-01-30 | 2026-07-22 |  |  |
| PG-12681 |  | Electrical Panel assembly works | 58.5d | 2026-01-30 | 2026-04-08 | PG-12680 | 47.58d |
| PG-12682 |  | Electrical Panel installation and cable termination. | 60.67d | 2026-04-08 | 2026-06-18 | PG-12681 | 47.58d |
| PG-12683 |  | Electrical Panel Testing and commissioning works | 29.5d | 2026-06-18 | 2026-07-22 | PG-12682 | 47.58d |
|  | 1.3.1.3.10 | **Entrance Lobby works** |  | 2026-07-03 | 2026-10-17 |  |  |
| PG-12684 |  | Flooring Works | 14.5d | 2026-07-03 | 2026-07-21 | PG-12632 | 0d |
| PG-12685 |  | Glass Door and installation Works | 19.67d | 2026-07-21 | 2026-08-12 | PG-12684 | 0d |
| PG-12687 |  | Canopy Works | 24.83d | 2026-07-21 | 2026-08-19 | PG-12684 | 4.33d |
| PG-12686 |  | Painting Works | 9.5d | 2026-08-12 | 2026-08-25 | PG-12685 | 0d |

| ID | WBS | Task | Duration | Start | Finish | Predecessors | Complete | Total float |
| --- | --- | --- | --- | --- | --- | --- | --- | --- |
| PG-12688 |  | Interior Works | 45.67d | 2026-08-25 | 2026-10-17 | PG-12687, PG-12686 |  | 0d |
|  | 1.3.1.3.11 | **Lightening Arrester works** |  | 2026-04-27 | 2026-05-08 |  |  |  |
| PG-12689 |  | Conductor will be lifted with RCC Works, But Terrace works will be done once Parapet Painting done | 9.33d | 2026-04-27 | 2026-05-08 | PG-12616 |  | 139.17d |
|  | 1.3.1.4 | **Podium works Non Tower area** |  | 2024-02-03 | 2025-01-07 |  |  |  |
|  | 1.3.1.4.1 | **Structural works - Podium slab** |  | 2024-02-03 | 2024-09-04 |  |  |  |
|  | 1.3.1.4.1.1 | **LBF to UBF** |  | 2024-02-03 | 2024-07-01 |  |  |  |
| PG-12690 |  | Piling Works | 49.67d | 2024-02-03 A | 2024-04-02 A | PG-10049 | 100% |  |
| PG-12691 |  | Backfilling and Consolidation | 19.67d | 2024-04-02 A | 2024-04-25 A | PG-12690 | 100% |  |
| PG-12692 |  | Columns, Retaining Walls reinforcement work | 9.5d | 2024-04-25 A | 2024-05-07 A | PG-12691 FF+10d | 100% |  |
| PG-12693 |  | Columns, Retaining walls Formwork & Concrete | 14.5d | 2024-05-01 A | 2024-05-18 A | PG-12692 FF+10d | 100% |  |
| PG-12694 |  | Slab Formwork | 29.5d | 2024-05-13 A | 2024-06-17 A | PG-12693 FF+25d | 100% |  |
| PG-12695 |  | Slab reinforcement work | 14.5d | 2024-06-11 A | 2024-06-28 A | PG-12694 FF+10d | 100% |  |
| PG-12696 |  | Slab concrete works | 3.5d | 2024-06-26 A | 2024-07-01 A | PG-12695 FF+2d | 100% |  |
|  | 1.3.1.4.1.2 | **UBF to Podium Level** |  | 2024-06-28 | 2024-09-04 |  |  |  |
| PG-12697 |  | Columns, Retaining Walls reinforcement work | 9.5d | 2024-06-28 A | 2024-07-10 A | PG-12696 FF+8d | 100% |  |
| PG-12698 |  | Columns, Retaining walls Formwork & Concrete | 14.5d | 2024-07-04 A | 2024-07-22 A | PG-12697 FF+10d | 100% |  |
| PG-12699 |  | Slab Formwork | 29.5d | 2024-07-16 A | 2024-08-21 A | PG-12698 FF+25d | 100% |  |
| PG-12700 |  | Slab reinforcement work | 14.5d | 2024-08-14 A | 2024-09-02 A | PG-12699 FF+10d | 100% |  |
| PG-12701 |  | Slab concrete works | 3.5d | 2024-08-30 A | 2024-09-04 A | PG-12700 FF+2d | 100% |  |
|  | 1.3.1.4.2 | **Finishing Works - Podium slab** |  | 2024-07-01 | 2024-12-04 |  |  |  |
| PG-12702 |  | Carwash Collection Sump Works | 29.67d | 2024-07-01 A | 2024-08-05 A | PG-12696 | 100% |  |
| PG-12703 |  | Waterproofing works | 24.67d | 2024-08-05 A | 2024-09-04 A | PG-12702 | 100% |  |
| PG-12704 |  | Screed concrete works | 9.5d | 2024-09-04 A | 2024-09-14 A | PG-12703 | 100% |  |
| PG-12705 |  | Podium Waterproofing works | 34.5d | 2024-09-14 A | 2024-10-25 A | PG-12704, PG-12701 | 100% |  |
| PG-12706 |  | Painting Works | 31.17d | 2024-10-26 A | 2024-12-04 A | PG-12705 | 100% |  |
| PG-12707 |  | Fire Driveway around buildings | 31.17d | 2024-10-26 A | 2024-12-02 A | PG-12705 | 100% |  |
|  | 1.3.1.4.3 | **MEP Works** |  | 2024-04-25 | 2025-01-07 |  |  |  |
|  | 1.3.1.4.3.1 | **LBF to UBF** |  | 2024-04-25 | 2025-01-07 |  |  |  |
| PG-12708 |  | Surface Drainage System (Chambers and Pipeline for Sump) | 29.67d | 2024-04-25 A | 2024-05-30 A | PG-12690 FS+20d | 100% |  |
| PG-12709 |  | Pump fixing for collection sump | 6.67d | 2024-08-05 A | 2024-08-13 A | PG-12702 | 100% |  |
| PG-12710 |  | FPS Piping and Sprinkler Fixing works | 28.67d | 2024-12-04 A | 2025-01-07 A | PG-12709, PG-12706 | 100% |  |
| PG-12711 |  | Electrical Conducting and Light Fixing works | 14.67d | 2024-12-04 A | 2024-12-20 A | PG-12706 FF+15d | 100% |  |
|  | 1.3.1.4.3.2 | **UBF to Podium** |  | 2024-09-27 | 2024-12-27 |  |  |  |
| PG-12712 |  | Piping for Rainwater and Soil lines in Ceiling | 39.83d | 2024-09-27 A | 2024-11-16 A | PG-12701 FF+60d | 100% |  |
| PG-12713 |  | FPS Piping and Sprinkler Fixing works | 29.5d | 2024-11-05 A | 2024-12-10 A | PG-12712 FF+20d | 100% |  |
| PG-12714 |  | Electrical Conducting and Light Fixing works | 14.67d | 2024-12-10 A | 2024-12-27 A | PG-12713, PG-12706 | 100% |  |
|  | 1.3.1.5 | **Landscape and Hardscape works** |  | 2026-04-27 | 2026-08-10 |  |  |  |
| PG-12715 |  | Hardscape ( Granite, Planter, Walkways Etc..) | 44.83d | 2026-04-27 | 2026-06-18 | PG-12616 |  | 58.83d |
| PG-12716 |  | Filter media and soil filling works | 19.67d | 2026-06-13 | 2026-07-06 | PG-12715 FF+15d |  | 58.83d |
| PG-12717 |  | Irrigation piping works | 19.67d | 2026-06-25 | 2026-07-17 | PG-12716 FF+10d |  | 58.83d |
| PG-12718 |  | Planting works | 19.67d | 2026-07-17 | 2026-08-10 | PG-12717 |  | 58.83d |
|  | 1.3.9 | **Project Infrastructure Works ( Services/MEP )** |  | 2023-10-04 | 2026-09-26 |  |  |  |
|  | 1.3.9.1 | **Civil & Services Works ( Transformer, DG,STP )** |  | 2023-10-04 | 2026-09-26 |  |  |  |
|  | 1.3.9.1.1 | **Transformer Yard Civil Works** |  | 2026-03-23 | 2026-06-01 |  |  |  |
|  | 1.3.9.1.1.1 | **Transformer 01** |  | 2026-03-23 | 2026-06-01 |  |  |  |
| PG-30428 |  | Footing and Pedestal Excavation Works | 10.5d | 2026-03-23 | 2026-04-03 | PG-12661 FF+30d |  | 119d |
| PG-30429 |  | Footing and Pedestal Reinforcement works | 3.33d | 2026-04-06 | 2026-04-09 | PG-30428 FF+5d |  | 119d |
| PG-30430 |  | Footing and Pedestal Concrete works | 9.67d | 2026-04-09 | 2026-04-21 | PG-30429 |  | 119d |
| PG-30431 |  | Fencing Retaining wall footing reinforcement works | 6.33d | 2026-04-21 | 2026-04-28 | PG-30430 |  | 119d |
| PG-30432 |  | Fencing Retaining wall footing formwork and concrete works | 6.33d | 2026-04-28 | 2026-05-05 | PG-30431 |  | 119d |
| PG-30434 |  | Fencing works MS/GRC | 20.67d | 2026-05-02 | 2026-05-27 | PG-30433 FF+15d |  | 119d |
| PG-30433 |  | Retaining wall upto low level concrete works | 3.67d | 2026-05-05 | 2026-05-09 | PG-30432 |  | 119d |
| PG-30435 |  | Floor Aggregates spreading works | 3.67d | 2026-05-27 | 2026-06-01 | PG-30434 |  | 119d |
|  | 1.3.9.1.2 | **Transformer Yard Electrical works** |  | 2026-08-10 | 2026-09-26 |  |  |  |
|  | 1.3.9.1.2.1 | **Transformer 01** |  | 2026-08-10 | 2026-09-26 |  |  |  |
| PG-30460 |  | Cable Trench works | 9.5d | 2026-08-10 | 2026-08-21 | PG-30435, PG-12718 |  | 58.83d |
| PG-30461 |  | LTQS Installation Works | 7.67d | 2026-08-21 | 2026-08-31 | PG-30460 |  | 58.83d |
| PG-30462 |  | Cable laying works | 13.5d | 2026-08-31 | 2026-09-16 | PG-30461 |  | 58.83d |
| PG-30463 |  | Cable Termination works | 3.67d | 2026-09-16 | 2026-09-19 | PG-30462 |  | 58.83d |
| PG-30464 |  | Testing and commissioning works | 5.67d | 2026-09-19 | 2026-09-26 | PG-30463, PG-10036 |  | 58.83d |
|  | 1.3.9.1.3 | **DG Room & Installation Works** |  | 2023-10-04 | 2024-06-03 |  |  |  |
|  | 1.3.9.1.3.1 | **Civil Works** |  | 2023-10-04 | 2023-11-13 |  |  |  |
|  | 1.3.9.1.3.1.1 | **DG 01** |  | 2023-10-04 | 2023-11-13 |  |  |  |
| PG-30480 |  | Wall Grinding Works | 8.67d | 2023-10-04 A | 2023-10-13 A |  | 100% |  |
| PG-30481 |  | DG Exhaust works | 14.67d | 2023-10-04 A | 2023-10-20 A | PG-30480 FF+5d | 100% |  |
| PG-30482 |  | Pedestal Concrete works | 4.67d | 2023-10-20 A | 2023-10-26 A | PG-30481 | 100% |  |
| PG-30483 |  | DG Room Flooring Works | 6.5d | 2023-10-26 A | 2023-11-03 A | PG-30482 | 100% |  |
| PG-30484 |  | DG Room Painting works | 7.5d | 2023-11-03 A | 2023-11-13 A | PG-30483 | 100% |  |
|  | 1.3.9.1.3.2 | **Electrical works** |  | 2023-11-13 | 2024-06-03 |  |  |  |
|  | 1.3.9.1.3.2.1 | **DG 01** |  | 2023-11-13 | 2024-06-03 |  |  |  |

| ID | WBS | Task | Duration | Start | Finish | Predecessors | Complete | Total float |
| --- | --- | --- | --- | --- | --- | --- | --- | --- |
| PG-30495 |  | Exhaust Piping and insulation works | 89.67d | 2023-11-13 A | 2024-02-26 A | PG-30484 | 100% |  |
| PG-30496 |  | DG Cabling and conducting works | 29.67d | 2024-02-27 A | 2024-04-01 A | PG-30495 | 100% |  |
| PG-30497 |  | DG installation works | 29.67d | 2024-04-01 A | 2024-05-06 A | PG-30496 | 100% |  |
| PG-30498 |  | Light fixtures and Switch plates fixing works | 8.67d | 2024-05-06 A | 2024-05-16 A | PG-30497 | 100% |  |
| PG-30499 |  | Testing and Snag Works | 15.67d | 2024-05-16 A | 2024-06-03 A | PG-30498, PG-10034 | 100% |  |
|  | 1.3.9.1.4 | **STP Civil Works** |  | 2023-10-04 | 2024-05-28 |  |  |  |
|  | 1.3.9.1.4.1 | **Sewage Treatment Plant 01 ( 1000KLD )** |  | 2023-10-04 | 2024-05-28 |  |  |  |
| PG-30510 |  | Partition Walls RCC for SBR,Equilisation,Sledg Tank Etc. | 49d | 2023-10-04 A | 2023-12-01 A |  | 100% |  |
| PG-30511 |  | All Tank Top Slab and Working Platform RCC works | 25d | 2023-12-01 A | 2023-12-30 A | PG-30510 | 100% |  |
| PG-30512 |  | Grinding works for all RCC Walls and ceiling | 25d | 2023-12-30 A | 2024-01-30 A | PG-30511 | 100% |  |
| PG-30513 |  | Puddle Flange Fixing Works | 10d | 2024-01-30 A | 2024-02-10 A | PG-30512 | 100% |  |
| PG-30514 |  | Waterproofing inside tanks | 24.67d | 2024-02-10 A | 2024-03-11 A | PG-30513 | 100% |  |
| PG-30515 |  | Pond Testing for leakage | 21d | 2024-03-11 A | 2024-04-05 A | PG-30514 | 100% |  |
| PG-30516 |  | Pumps Pedestal works | 10d | 2024-04-05 A | 2024-04-17 A | PG-30515 | 100% |  |
| PG-30517 |  | Railing works for working platform | 14.67d | 2024-04-17 A | 2024-05-04 A | PG-30516 | 100% |  |
| PG-30518 |  | Access Ladder works | 10d | 2024-05-04 A | 2024-05-16 A | PG-30517 | 100% |  |
| PG-30519 |  | Painting Works | 9.67d | 2024-05-16 A | 2024-05-28 A | PG-30518 | 100% |  |
|  | 1.3.9.1.5 | **STP MEP Works** |  | 2024-05-28 | 2026-02-17 |  |  |  |
|  | 1.3.9.1.5.1 | **Sewage Treatment Plant 01 ( 1000KLD )** |  | 2024-05-28 | 2026-02-17 |  |  |  |
| PG-30540 |  | Piping works from Flush tank to STP | 15d | 2024-05-28 A | 2024-06-14 A | PG-10038, PG-30519 | 100% |  |
| PG-30546 |  | STP Exhaust piping and Insulation works | 162d | 2024-05-28 A | 2024-12-09 A | PG-30519 | 100% |  |
| PG-30541 |  | Piping from STP Treated water to Irrigation network | 5.67d | 2024-06-14 A | 2024-06-20 A | PG-30540 | 100% |  |
| PG-30542 |  | piping for Excess Treated water discharge | 5.67d | 2025-12-01 | 2025-12-06 | PG-30541, PG-10027 |  | 217.62d |
| PG-30543 |  | Equipment installation and Pump Fixing Works | 15.67d | 2025-12-06 | 2025-12-25 | PG-30542 |  | 217.62d |
| PG-30544 |  | Electrical Cabling works for Pumps | 9.5d | 2025-12-25 | 2026-01-05 | PG-30543 |  | 217.62d |
| PG-30545 |  | Electrical Conducting/Wiring and fixture installation | 14.67d | 2026-01-05 | 2026-01-22 | PG-30544 |  | 217.62d |
| PG-30547 |  | Testing and internal Snag | 21d | 2026-01-22 | 2026-02-17 | PG-30545, PG-30546 |  | 217.62d |
|  | 1.4 | **External Development Works** |  | 2023-10-04 | 2025-12-23 |  |  |  |
|  | 1.4.3 | **External Development works - Road Works** |  | 2023-10-04 | 2024-01-02 |  |  |  |
|  | 1.4.3.1 | **Spine Road works** |  | 2023-10-04 | 2023-11-27 |  |  |  |
| PG-30612 |  | Civil Works | 44.67d | 2023-10-04 A | 2023-11-27 A | PG-0998 SS | 100% |  |
| PG-30613 |  | Services Works | 30.67d | 2023-10-10 A | 2023-11-15 A | PG-30612 SS+5d | 100% |  |
|  | 1.4.3.2 | **CDP Road works** |  | 2023-10-04 | 2024-01-02 |  |  |  |
| PG-30614 |  | Civil Works | 74.67d | 2023-10-04 A | 2024-01-02 A | PG-30613 FF+30d, PG-0998 SS | 100% |  |
| PG-30615 |  | Services Works | 44.67d | 2023-10-21 A | 2023-12-14 A | PG-30614 SS+15d | 100% |  |
|  | 1.4.4 | **External Development Amenities** |  | 2023-10-04 | 2024-05-18 |  |  |  |
|  | 1.4.4.1 | **Swimming Pool & Lagoon Works** |  | 2023-10-04 | 2024-05-18 |  |  |  |
|  | 1.4.4.1.1 | **Civil Works** |  | 2023-10-04 | 2024-04-15 |  |  |  |
| PG-30616 |  | Excavation Works | 4.5d | 2023-10-04 A | 2023-10-09 A | MS-0000 | 100% |  |
| PG-30617 |  | PCC For Bottom Raft | 4.67d | 2023-10-10 A | 2023-10-16 A | PG-30616 | 100% |  |
| PG-30618 |  | Bottom Raft Reinforcement and Formwork | 9.5d | 2023-10-16 A | 2023-10-27 A | PG-30617 | 100% |  |
| PG-30619 |  | Bottom Raft concrete works | 1.67d | 2023-10-27 A | 2023-10-30 A | PG-30618 | 100% |  |
| PG-30620 |  | Side Retaining wall Reinforcement works | 4.67d | 2023-10-30 A | 2023-11-06 A | PG-30619 | 100% |  |
| PG-30621 |  | Side Wall Formwork | 17.67d | 2023-11-06 A | 2023-11-25 A | PG-30620 | 100% |  |
| PG-30622 |  | Side Wall Concreting works | 3.67d | 2023-11-25 A | 2023-11-30 A | PG-30621 | 100% |  |
| PG-30623 |  | Puddle Flange Fixing Works | 1.67d | 2023-11-30 A | 2023-12-02 A | PG-30622 | 100% |  |
| PG-30624 |  | Waterproofing works | 20.67d | 2023-12-02 A | 2023-12-26 A | PG-30623 | 100% |  |
| PG-30625 |  | Pond Testing works | 13.67d | 2023-12-26 A | 2024-01-11 A | PG-30624 | 100% |  |
| PG-30626 |  | Snag and DE snag works | 4.83d | 2024-01-11 A | 2024-01-17 A | PG-30625 | 100% |  |
| PG-30627 |  | Plant room Civil works | 30.67d | 2024-01-17 A | 2024-02-23 A | PG-30626 | 100% |  |
| PG-30628 |  | Protective Screed Concrete works | 2.5d | 2024-01-17 A | 2024-01-20 A | PG-30626 | 100% |  |
| PG-30629 |  | Screed Concrete above Plumbing Pipes | 2.33d | 2024-02-07 A | 2024-02-10 A | PG-30631 | 100% |  |
| PG-30630 |  | Tiling works for floor and walls including Grouting | 50.33d | 2024-02-15 A | 2024-04-15 A | PG-30629 FF+55d | 100% |  |
|  | 1.4.4.1.2 | **MEP Works** |  | 2024-01-20 | 2024-05-18 |  |  |  |
| PG-30631 |  | Plumbing Pipes installation in Floor | 14.67d | 2024-01-20 A | 2024-02-07 A | PG-30628 | 100% |  |
| PG-30632 |  | Pipe Network for Pump room works | 25.67d | 2024-02-23 A | 2024-03-23 A | PG-30627 | 100% |  |
| PG-30634 |  | Electrical cabling and fixture works | 8.5d | 2024-03-19 A | 2024-03-29 A | PG-30627 FF+30d | 100% |  |
| PG-30633 |  | Fixtures inside Pool | 8.67d | 2024-04-15 A | 2024-04-25 A | PG-30632, PG-30630 | 100% |  |
| PG-30635 |  | Testing and Snaging | 20.67d | 2024-04-25 A | 2024-05-18 A | PG-30634, PG-30633 | 100% |  |
|  | 1.4.6 | **Central Club House** |  | 2023-10-04 | 2025-12-23 |  |  |  |
| PG-30711 |  | Club House Interior works | 152.67d | 2025-06-24 | 2025-12-23 | PG-30700 SS+30d, PG-30710 |  | 305.98d |
|  | 1.4.6.1 | **Civil Structure works** |  | 2023-10-04 | 2024-07-13 |  |  |  |
| PG-30680 |  | Excavation Works | 20.67d | 2023-10-04 A | 2023-10-27 A |  | 100% |  |
| PG-30681 |  | Foundation and Shear wall Reinforcement | 17.67d | 2023-10-28 A | 2023-11-20 A | PG-30680 | 100% |  |
| PG-30682 |  | Foundation and Shear wall Formwork & Concrete | 24.67d | 2023-11-20 A | 2023-12-19 A | PG-30681 | 100% |  |
| PG-30683 |  | Basement Roof Formwork and Reinforcement | 15.67d | 2023-12-19 A | 2024-01-06 A | PG-30682 | 100% |  |
| PG-30684 |  | Basement Roof Works | 5d | 2024-01-06 A | 2024-01-12 A | PG-30683 | 100% |  |
| PG-30685 |  | Shear Wall Reinforcement works from GF to FF | 14d | 2024-01-12 A | 2024-01-29 A | PG-30684 | 100% |  |
| PG-30686 |  | Shear Wall Formwork and Concrete from GF to FF | 20d | 2024-01-29 A | 2024-02-21 A | PG-30685 | 100% |  |
| PG-30687 |  | Ground Floor Roof Slab Formwork and reinforcement | 14.5d | 2024-02-21 A | 2024-03-09 A | PG-30686 | 100% |  |

| ID | WBS | Task | Duration | Start | Finish | Predecessors | Complete | Total float |
| --- | --- | --- | --- | --- | --- | --- | --- | --- |
| PG-30688 |  | Ground Floor Roof Slab Concrete | 1.33d | 2024-03-09 A | 2024-03-09 A | PG-30687 | 100% |  |
| PG-30689 |  | Shear walls Reinforcement from FF to Terrace Level | 15.67d | 2024-03-09 A | 2024-03-28 A | PG-30688 | 100% |  |
| PG-30690 |  | Shear walls Formwork & Concrete from FF to Terrace Level | 19.5d | 2024-03-28 A | 2024-04-19 A | PG-30689 | 100% |  |
| PG-30691 |  | First Floor Roof Slab Formwork and reinforcement | 15.5d | 2024-04-19 A | 2024-05-08 A | PG-30690 | 100% |  |
| PG-30692 |  | First Floor Roof Slab Concrete | 0.83d | 2024-05-08 A | 2024-05-09 A | PG-30691 | 100% |  |
| PG-30693 |  | Terrace Parapet wall works | 10.67d | 2024-05-09 A | 2024-05-22 A | PG-30692 | 100% |  |
| PG-30694 |  | Terrace Lift head room works | 13.5d | 2024-05-22 A | 2024-06-07 A | PG-30693 | 100% |  |
| PG-30695 |  | Terrace Waterproofing and Screed works | 30.67d | 2024-06-07 A | 2024-07-13 A | PG-30694 | 100% |  |
|  | 1.4.6.2 | **MEP Works** |  | 2024-05-09 | 2025-06-17 |  |  |  |
| PG-30701 |  | Electrical Works | 60.5d | 2024-05-09 A | 2024-07-19 A | PG-30692 | 100% |  |
| PG-30702 |  | HVAC Works | 39.67d | 2024-05-09 A | 2024-06-25 A | PG-30692 | 100% |  |
| PG-30703 |  | Data and Communication works | 13.67d | 2024-05-09 A | 2024-05-25 A | PG-30692 | 100% |  |
| PG-30704 |  | Lift Installation Works | 153.5d | 2024-07-13 A | 2025-01-13 A | PG-30695 | 100% |  |
|  | 1.4.6.2.1 | **Plumbing Works** |  | 2024-07-01 | 2025-05-31 |  |  |  |
| PG-30696 |  | Piping works in toilets and Testing | 14.67d | 2024-07-01 A | 2024-07-18 A | PG-30692 FF+60d | 100% |  |
| PG-30698 |  | Terrace Ring main works | 15.67d | 2024-07-13 A | 2024-08-01 A | PG-30695 | 100% |  |
| PG-30697 |  | CP and Sanitary fixture works | 10.33d | 2025-05-20 | 2025-05-31 | PG-30705, PG-30709 |  | 545.81d |
|  | 1.4.6.2.2 | **FPS Works** |  | 2024-05-09 | 2025-06-17 |  |  |  |
| PG-30699 |  | Piping Works | 14.67d | 2024-05-09 A | 2024-05-27 A | PG-30692 | 100% |  |
| PG-30700 |  | Sprinkler fixing and Testing Works | 24.33d | 2025-05-20 | 2025-06-17 | PG-30699, PG-30709 |  | 305.98d |
|  | 1.4.6.3 | **Civil Finishing works** |  | 2024-07-18 | 2025-05-20 |  |  |  |
| PG-30706 |  | Toilet Tiling Works | 61.5d | 2024-07-18 A | 2024-09-30 A | PG-30696 | 100% |  |
| PG-30705 |  | Toilet waterproofing works | 31.5d | 2024-08-19 A | 2024-09-25 A | PG-30698 SS+30d, PG-30692 | 100% |  |
| PG-30707 |  | Granite and Marble works | 91.67d | 2024-09-30 A | 2025-01-18 A | PG-30703, PG-30702, PG-30701, PG-30706 | 100% |  |
| PG-30708 |  | UPVC Door Window Works | 29.67d | 2025-01-18 A | 2025-02-21 A | PG-30707 | 100% |  |
| PG-30710 |  | Glazing / Façade /Wall Cladding Works | 72.67d | 2025-01-18 A | 2025-04-17 A | PG-30707 | 100% |  |
| PG-30709 |  | Painting Works | 29.83d | 2025-04-17 A | 2025-05-20 | PG-30708, PG-30710 | 68% | 305.98d |
|  | 1.6 | **Testing And Commissioning Works** |  | 2024-05-18 | 2026-10-31 |  |  |  |
| PG-31528 |  | T&C - Roundabout and Water bodies | 15.67d | 2024-07-27 A | 2024-08-16 A | PG-32349 | 100% |  |
| PG-31533 |  | T&C - Clubhouse Lift | 29.33d | 2025-01-13 A | 2025-02-15 A | PG-30704 | 100% |  |
|  | 1.6.1 | **Building 1** |  | 2024-12-20 | 2026-08-18 |  |  |  |
|  | 1.6.1.1 | **Tower 1** |  | 2025-01-15 | 2026-04-20 |  |  |  |
|  | 1.6.1.1.1 | **Units** |  | 2025-01-15 | 2026-02-20 |  |  |  |
| PG-30731 |  | T&C - Ground Floor | 28.67d | 2025-01-15 A | 2025-02-17 A | PG-10207, PG-10210, PG-10213 | 100% |  |
| PG-30732 |  | T&C - Floor 1 | 30.67d | 2025-02-01 A | 2025-03-10 A | PG-10219, PG-10216, PG-10222 | 100% |  |
| PG-30733 |  | T&C - Floor 2 | 29.67d | 2025-02-14 A | 2025-03-21 A | PG-10228, PG-10225, PG-10231 | 100% |  |
| PG-30734 |  | T&C - Floor 3 | 29.67d | 2025-03-04 A | 2025-04-05 A | PG-10237, PG-10234, PG-10240 | 100% |  |
| PG-30735 |  | T&C - Floor 4 | 29.67d | 2025-03-17 A | 2025-04-18 A | PG-10243, PG-10246, PG-10249, PG-10256 | 100% |  |
| PG-30736 |  | T&C - Floor 5 | 29.67d | 2025-04-02 A | 2025-05-09 A | PG-10506, PG-10255, PG-10252, PG-10258 | 100% |  |
| PG-30737 |  | T&C - Floor 6 | 29.67d | 2025-04-17 A | 2025-05-21 | PG-10264, PG-10261, PG-10267 | 64% | 420.22d |
| PG-30738 |  | T&C - Floor 7 | 28.67d | 2025-05-03 A | 2025-06-06 | PG-10273, PG-10270, PG-10276 | 15% | 406.74d |
| PG-30739 |  | T&C - Floor 8 | 28.67d | 2025-05-16 | 2025-06-19 | PG-10282, PG-10279, PG-10285 |  | 393.67d |
| PG-30740 |  | T&C - Floor 9 | 28.67d | 2025-05-31 | 2025-07-04 | PG-10291, PG-10288, PG-10294 |  | 382.03d |
| PG-30741 |  | T&C - Floor 10 | 30.67d | 2025-06-14 | 2025-07-19 | PG-10300, PG-10297, PG-10303 |  | 369.25d |
| PG-30742 |  | T&C - Floor 11 | 30.67d | 2025-06-27 | 2025-08-02 | PG-10309, PG-10306, PG-10312 |  | 357.65d |
| PG-30743 |  | T&C - Floor 12 | 28.83d | 2025-07-10 | 2025-08-13 | PG-10318, PG-10315, PG-10321 |  | 348.49d |
| PG-30744 |  | T&C - Floor 13 | 28.67d | 2025-07-23 | 2025-08-27 | PG-10327, PG-10324, PG-10330 |  | 337.48d |
| PG-30745 |  | T&C - Floor 14 | 28.67d | 2025-08-06 | 2025-09-10 | PG-10336, PG-10333, PG-10339 |  | 325.79d |
| PG-30746 |  | T&C - Floor 15 | 28.67d | 2025-08-19 | 2025-09-22 | PG-10345, PG-10342, PG-10348 |  | 315.79d |
| PG-30747 |  | T&C - Floor 16 | 28.67d | 2025-09-01 | 2025-10-06 | PG-10354, PG-10351, PG-10357 |  | 304.79d |
| PG-30748 |  | T&C - Floor 17 | 28.67d | 2025-09-13 | 2025-10-18 | PG-10363, PG-10360, PG-10366 |  | 293.79d |
| PG-30749 |  | T&C - Floor 18 | 28.67d | 2025-09-26 | 2025-10-31 | PG-10372, PG-10369, PG-10375 |  | 282.79d |
| PG-30750 |  | T&C - Floor 19 | 28.67d | 2025-10-22 | 2025-11-26 | PG-10381, PG-10378, PG-10384 |  | 261.79d |
| PG-30751 |  | T&C - Floor 20 | 28.67d | 2025-11-13 | 2025-12-17 | PG-10390, PG-10387, PG-10393 |  | 242.62d |
| PG-30752 |  | T&C - Floor 21 | 28.67d | 2025-12-05 | 2026-01-08 | PG-10399, PG-10396, PG-10402 |  | 223.62d |
| PG-30753 |  | T&C - Floor 22 | 29.67d | 2025-12-27 | 2026-02-02 | PG-10408, PG-10405, PG-10411 |  | 203.62d |
| PG-30754 |  | T&C - Floor 23 | 28.83d | 2026-01-16 | 2026-02-20 | PG-10417, PG-10414, PG-10420 |  | 187.62d |
|  | 1.6.1.1.2 | **Common Areas** |  | 2025-10-06 | 2026-04-20 |  |  |  |
| PG-30755 |  | T&C - Internal Electrical Works | 12.67d | 2025-10-06 | 2025-10-20 | PG-10815 |  | 263.29d |
| PG-30756 |  | T&C - Internal FPS Works | 12.83d | 2025-10-06 | 2025-10-20 | PG-10817 |  | 262.95d |
| PG-30757 |  | T&C - Data & Communication Works | 12.83d | 2025-10-11 | 2025-10-25 | PG-10820 |  | 257.95d |
| PG-30758 |  | T&C - Internal PHE Works including OHT | 19.33d | 2025-11-15 | 2025-12-08 | PG-10824 |  | 219.62d |
| PG-30761 |  | T&C - Lightining Arrestor works | 6.67d | 2025-12-15 | 2025-12-23 | PG-10843 |  | 251.79d |
| PG-30760 |  | T&C - Electrical Panel Works | 20.5d | 2026-02-26 | 2026-03-21 | PG-10837 |  | 133.29d |
| PG-30759 |  | T&C - Lift Works | 19.33d | 2026-03-28 | 2026-04-20 | PG-10830 |  | 108.42d |
|  | 1.6.1.2 | **Tower 2** |  | 2025-01-11 | 2026-05-09 |  |  |  |
|  | 1.6.1.2.1 | **Units** |  | 2025-01-11 | 2026-04-01 |  |  |  |
| PG-30762 |  | T&C - Ground Floor | 28.67d | 2025-01-11 A | 2025-02-13 A | PG-11022, PG-11019, PG-11025 | 100% |  |
| PG-30763 |  | T&C - Floor 1 | 29.67d | 2025-01-29 A | 2025-03-04 A | PG-11031, PG-11028, PG-11034 | 100% |  |
| PG-30764 |  | T&C - Floor 2 | 30.67d | 2025-02-12 A | 2025-03-20 A | PG-11040, PG-11037, PG-11043 | 100% |  |

| ID | WBS | Task | Duration | Start | Finish | Predecessors | Complete | Total float |
| --- | --- | --- | --- | --- | --- | --- | --- | --- |
| PG-30765 |  | T&C - Floor 3 | 28.67d | 2025-03-01 A | 2025-04-04 A | PG-11049, PG-11046, PG-11052 | 100% |  |
| PG-30766 |  | T&C - Floor 4 | 29.67d | 2025-03-19 A | 2025-04-26 A | PG-11058, PG-11055, PG-11061 | 100% |  |
| PG-30767 |  | T&C - Floor 5 | 29.67d | 2025-03-31 A | 2025-05-07 A | PG-11067, PG-11064, PG-11070 | 100% |  |
| PG-30768 |  | T&C - Floor 6 | 29.67d | 2025-04-17 A | 2025-05-24 | PG-11076, PG-11073, PG-11079 | 56% | 417.82d |
| PG-30769 |  | T&C - Floor 7 | 29.67d | 2025-05-01 A | 2025-06-04 | PG-11085, PG-11082, PG-11088 | 25% | 408.58d |
| PG-30770 |  | T&C - Floor 8 | 28.67d | 2025-05-20 | 2025-06-23 | PG-11094, PG-11091, PG-11097 |  | 391.76d |
| PG-30771 |  | T&C - Floor 9 | 28.67d | 2025-05-30 | 2025-07-02 | PG-11103, PG-11100, PG-11106 |  | 383.21d |
| PG-30772 |  | T&C - Floor 10 | 29.67d | 2025-06-16 | 2025-07-21 | PG-11112, PG-11109, PG-11115 |  | 368.75d |
| PG-30773 |  | T&C - Floor 11 | 29.67d | 2025-06-27 | 2025-08-01 | PG-11121, PG-11118, PG-11124 |  | 358.72d |
| PG-30774 |  | T&C - Floor 12 | 29.67d | 2025-07-11 | 2025-08-16 | PG-11130, PG-11127, PG-11133 |  | 346.67d |
| PG-30775 |  | T&C - Floor 13 | 28.67d | 2025-07-25 | 2025-08-28 | PG-11139, PG-11136, PG-11142 |  | 336.42d |
| PG-30776 |  | T&C - Floor 14 | 28.67d | 2025-08-07 | 2025-09-11 | PG-11148, PG-11145, PG-11151 |  | 325.07d |
| PG-30777 |  | T&C - Floor 15 | 28.67d | 2025-08-20 | 2025-09-23 | PG-11157, PG-11154, PG-11160 |  | 315.07d |
| PG-30778 |  | T&C - Floor 16 | 28.83d | 2025-09-01 | 2025-10-06 | PG-11166, PG-11163, PG-11169 |  | 304.73d |
| PG-30779 |  | T&C - Floor 17 | 28.83d | 2025-09-13 | 2025-10-18 | PG-11175, PG-11172, PG-11178 |  | 293.73d |
| PG-30780 |  | T&C - Floor 18 | 29.83d | 2025-09-27 | 2025-11-04 | PG-11184, PG-11181, PG-11187 |  | 281.9d |
| PG-30781 |  | T&C - Floor 19 | 29.83d | 2025-10-11 | 2025-11-17 | PG-11193, PG-11190, PG-11196 |  | 270.9d |
| PG-30782 |  | T&C - Floor 20 | 29.83d | 2025-10-25 | 2025-12-01 | PG-11202, PG-11199, PG-11205 |  | 258.9d |
| PG-30783 |  | T&C - Floor 21 | 29.67d | 2025-11-07 | 2025-12-11 | PG-11211, PG-11208, PG-11214 |  | 249.23d |
| PG-30784 |  | T&C - Floor 22 | 28.67d | 2025-11-29 | 2026-01-01 | PG-11220, PG-11217, PG-11223 |  | 229.4d |
| PG-30785 |  | T&C - Floor 23 | 29.83d | 2025-12-19 | 2026-01-23 | PG-11229, PG-11226, PG-11232 |  | 211.4d |
| PG-30786 |  | T&C - Floor 24 | 30.67d | 2026-01-09 | 2026-02-14 | PG-11238, PG-11235, PG-11241 |  | 192.23d |
| PG-30787 |  | T&C - Floor 25 | 29.67d | 2026-02-03 | 2026-03-10 | PG-11247, PG-11244, PG-11250 |  | 172.73d |
| PG-30788 |  | T&C - Floor 26 | 30.67d | 2026-02-24 | 2026-04-01 | PG-11256, PG-11253, PG-11259 |  | 125.23d |
|  | 1.6.1.2.2 | **Common Areas** |  | 2025-11-13 | 2026-05-09 |  |  |  |
| PG-30790 |  | T&C - Internal FPS Works | 14.67d | 2025-11-13 | 2025-11-29 | PG-11698 |  | 228.4d |
| PG-30789 |  | T&C - Internal Electrical Works | 14.5d | 2025-11-13 | 2025-11-29 | PG-11696 |  | 228.57d |
| PG-30791 |  | T&C - Data & Communication Works | 14.67d | 2025-11-19 | 2025-12-06 | PG-11701 |  | 223.07d |
| PG-30792 |  | T&C - Internal PHE Works including OHT | 20.5d | 2025-12-23 | 2026-01-16 | PG-11705 |  | 187.23d |
| PG-30795 |  | T&C - Lightining Arrestor works | 6.67d | 2026-01-22 | 2026-01-31 | PG-11724 |  | 221.4d |
| PG-30794 |  | T&C - Electrical Panel Works | 20.5d | 2026-02-25 | 2026-03-21 | PG-11718 |  | 164.07d |
| PG-30793 |  | T&C - Lift Works | 19.5d | 2026-04-16 | 2026-05-09 | PG-11711 |  | 121.9d |
|  | 1.6.1.3 | **Tower 3** |  | 2025-03-17 | 2026-08-18 |  |  |  |
|  | 1.6.1.3.1 | **Units** |  | 2025-03-17 | 2026-07-15 |  |  |  |
| PG-30796 |  | T&C - Ground Floor | 29.67d | 2025-03-17 A | 2025-04-23 A | PG-11918, PG-11915, PG-11921 | 100% |  |
| PG-30797 |  | T&C - Floor 1 | 29.67d | 2025-04-03 A | 2025-05-08 A | PG-11927, PG-11924, PG-11930 | 100% |  |
| PG-30798 |  | T&C - Floor 2 | 28.83d | 2025-04-16 A | 2025-05-20 | PG-11936, PG-11933, PG-11939 | 66% | 419.36d |
| PG-30799 |  | T&C - Floor 3 | 29.67d | 2025-05-09 A | 2025-06-11 | PG-11945, PG-11942, PG-11948 | 3% | 401.3d |
| PG-30800 |  | T&C - Floor 4 | 30.67d | 2025-05-20 | 2025-06-25 | PG-11954, PG-11951, PG-11957 |  | 390.04d |
| PG-30802 |  | T&C - Floor 6 | 29.67d | 2025-06-19 | 2025-07-24 | PG-11972, PG-11969, PG-11975 |  | 365.92d |
| PG-30803 |  | T&C - Floor 7 | 28.67d | 2025-07-04 | 2025-08-07 | PG-11981, PG-11978, PG-11984 |  | 353.75d |
| PG-30804 |  | T&C - Floor 8 | 28.67d | 2025-07-23 | 2025-08-26 | PG-11990, PG-11987, PG-11993 |  | 337.17d |
| PG-30805 |  | T&C - Floor 9 | 28.83d | 2025-08-05 | 2025-09-09 | PG-11999, PG-11996, PG-12002 |  | 325.33d |
| PG-30801 |  | T&C - Floor 5 | 29.67d | 2025-08-12 | 2025-09-16 | PG-11963, PG-11960, PG-11966 |  | 320.25d |
| PG-30806 |  | T&C - Floor 10 | 29.67d | 2025-08-22 | 2025-09-26 | PG-12008, PG-12005, PG-12011 |  | 311.17d |
| PG-30807 |  | T&C - Floor 11 | 29.67d | 2025-09-04 | 2025-10-10 | PG-12017, PG-12014, PG-12020 |  | 300.5d |
| PG-30808 |  | T&C - Floor 12 | 28.83d | 2025-09-20 | 2025-10-25 | PG-12026, PG-12023, PG-12029 |  | 287.17d |
| PG-30809 |  | T&C - Floor 13 | 28.67d | 2025-10-04 | 2025-11-08 | PG-12035, PG-12032, PG-12038 |  | 276.5d |
| PG-30810 |  | T&C - Floor 14 | 28.67d | 2025-10-15 | 2025-11-19 | PG-12044, PG-12041, PG-12047 |  | 267.5d |
| PG-30812 |  | T&C - Floor 16 | 28.67d | 2025-11-12 | 2025-12-15 | PG-12062, PG-12059, PG-12065 |  | 245.33d |
| PG-30813 |  | T&C - Floor 17 | 29.67d | 2025-11-24 | 2025-12-27 | PG-12071, PG-12068, PG-12074 |  | 234.33d |
| PG-30814 |  | T&C - Floor 18 | 29.67d | 2025-12-06 | 2026-01-09 | PG-12080, PG-12077, PG-12083 |  | 223.33d |
| PG-30815 |  | T&C - Floor 19 | 29.67d | 2025-12-19 | 2026-01-22 | PG-12089, PG-12086, PG-12092 |  | 212.33d |
| PG-30816 |  | T&C - Floor 20 | 29.67d | 2026-01-01 | 2026-02-06 | PG-12098, PG-12095, PG-12101 |  | 200.67d |
| PG-30817 |  | T&C - Floor 21 | 29.67d | 2026-01-14 | 2026-02-19 | PG-12107, PG-12104, PG-12110 |  | 189.83d |
| PG-30811 |  | T&C - Floor 15 | 29.83d | 2026-01-14 | 2026-02-19 | PG-12053, PG-12050, PG-12056 |  | 189.25d |
| PG-30818 |  | T&C - Floor 22 | 29.67d | 2026-01-28 | 2026-03-04 | PG-12116, PG-12113, PG-12119 |  | 178.83d |
| PG-30819 |  | T&C - Floor 23 | 29.67d | 2026-02-10 | 2026-03-16 | PG-12125, PG-12122, PG-12128 |  | 168.17d |
| PG-30820 |  | T&C - Floor 24 | 29.67d | 2026-02-23 | 2026-03-30 | PG-12134, PG-12131, PG-12137 |  | 156.83d |
| PG-30821 |  | T&C - Floor 25 | 29.67d | 2026-03-16 | 2026-04-20 | PG-12143, PG-12140, PG-12146 |  | 137.67d |
| PG-30822 |  | T&C - Floor 26 | 31.67d | 2026-04-06 | 2026-05-13 | PG-12152, PG-12149, PG-12155 |  | 118.33d |
| PG-30823 |  | T&C - Floor 27 | 30.67d | 2026-04-28 | 2026-06-03 | PG-12158, PG-12161, PG-12164 |  | 100.5d |
| PG-30824 |  | T&C - Floor 28 | 29.67d | 2026-05-20 | 2026-06-24 | PG-12167, PG-12170, PG-12173 |  | 82.5d |
| PG-30825 |  | T&C - Floor 29 | 29.67d | 2026-06-11 | 2026-07-15 | PG-12176, PG-12179, PG-12182 |  | 64.17d |
|  | 1.6.1.3.2 | **Common Areas** |  | 2026-02-27 | 2026-08-18 |  |  |  |
| PG-30826 |  | T&C - Internal Electrical Works | 14.67d | 2026-02-27 | 2026-03-17 | PG-12661 |  | 182d |
| PG-30827 |  | T&C - Internal FPS Works | 14.83d | 2026-02-27 | 2026-03-17 | PG-12663 |  | 181.5d |
| PG-30828 |  | T&C - Data & Communication Works | 14.67d | 2026-03-05 | 2026-03-23 | PG-12666 |  | 177.67d |
| PG-30829 |  | T&C - Internal PHE Works including OHT | 20.33d | 2026-04-08 | 2026-05-01 | PG-12670 |  | 138.5d |
| PG-30832 |  | T&C - Lightining Arrestor works | 6.67d | 2026-05-08 | 2026-05-15 | PG-12689 |  | 139.17d |

| ID | WBS | Task | Duration | Start | Finish | Predecessors | Complete | Total float |
| --- | --- | --- | --- | --- | --- | --- | --- | --- |
| PG-30831 |  | T&C - Electrical Panel Works | 21.5d | 2026-07-22 | 2026-08-18 | PG-12683 |  | 47.58d |
| PG-30830 |  | T&C - Lift Works | 9.67d | 2026-07-30 | 2026-08-10 | PG-12676 |  | 51.67d |
|  | 1.6.1.4 | **Basements** |  | 2024-12-20 | 2025-01-14 |  |  |  |
| PG-30833 |  | T&C - LBF | 14d | 2024-12-20 A | 2025-01-07 A | PG-12711 | 100% |  |
| PG-30834 |  | T&C - UBF | 14d | 2024-12-27 A | 2025-01-14 A | PG-12714 | 100% |  |
|  | 1.6.9 | **Project InfraStructure Works ( Services & MEP )** |  | 2024-05-18 | 2026-10-31 |  |  |  |
| PG-31526 |  | T&C - FPS & FA works ( External & Plant Room ) | 29.67d | 2025-08-26 | 2025-09-30 | PG-32391 |  | 414.14d |
|  | 1.6.9.1 | **Transformer Works** |  | 2026-09-26 | 2026-10-31 |  |  |  |
| PG-31514 |  | T&C - Transformer 01 ( Building 01 & 02 ) | 28.83d | 2026-09-26 | 2026-10-31 | PG-32392, PG-30464 |  | 58.83d |
|  | 1.6.9.2 | **DG Works** |  | 2024-06-03 | 2024-07-02 |  |  |  |
| PG-31518 |  | T&C - DG 01 ( Tower 1,2,12,13,14 & CH ) | 24.67d | 2024-06-03 A | 2024-07-02 A | PG-30499 | 100% |  |
|  | 1.6.9.3 | **STP Works** |  | 2026-02-17 | 2026-03-24 |  |  |  |
| PG-31521 |  | T&C - Sewage Treatment Plant 01 ( 1000KLD ) | 30d | 2026-02-17 | 2026-03-24 | PG-30547 |  | 217.62d |
|  | 1.6.9.7 | **Swimming Pool** |  | 2024-05-18 | 2024-06-24 |  |  |  |
| PG-31527 |  | T&C - MEP Works | 30.67d | 2024-05-18 A | 2024-06-24 A | PG-30635 | 100% |  |
|  | 1.7 | **Snagging De Snagging** |  | 2024-06-24 | 2026-12-05 |  |  |  |
| PG-32377 |  | Project Signage & Carpark / Driveway marking works | 10.67d | 2026-02-11 | 2026-02-24 | PG-32370 |  | 314.98d |
|  | 1.7.1 | **Building 1** |  | 2025-02-13 | 2026-11-04 |  |  |  |
|  | 1.7.1.1 | **Tower 1** |  | 2025-02-17 | 2026-10-08 |  |  |  |
|  | 1.7.1.1.1 | **Units** |  | 2025-02-17 | 2026-03-28 |  |  |  |
| PG-31534 |  | Ground Floor | 30.67d | 2025-02-17 A | 2025-03-24 A | PG-10436, PG-30731 | 100% |  |
| PG-31535 |  | Floor 1 | 30.67d | 2025-03-10 A | 2025-04-12 A | PG-10450, PG-30732 | 100% |  |
| PG-31536 |  | Floor 2 | 30.67d | 2025-03-21 A | 2025-04-29 A | PG-10464, PG-30733 | 100% |  |
| PG-31537 |  | Floor 3 | 30.67d | 2025-04-05 A | 2025-05-09 A | PG-10478, PG-30734 | 100% |  |
| PG-31538 |  | Floor 4 | 30.67d | 2025-04-18 A | 2025-05-23 | PG-10492, PG-30735 | 59% | 448.17d |
| PG-31539 |  | Floor 5 | 29.83d | 2025-05-09 A | 2025-06-11 | PG-10091, PG-30736 | 3% | 431.81d |
| PG-31540 |  | Floor 6 | 29.83d | 2025-05-21 | 2025-06-25 | PG-10520, PG-30737 |  | 420.22d |
| PG-31541 |  | Floor 7 | 29.67d | 2025-06-06 | 2025-07-11 | PG-10534, PG-30738 |  | 406.74d |
| PG-31542 |  | Floor 8 | 31.67d | 2025-06-19 | 2025-07-26 | PG-10548, PG-30739 |  | 393.67d |
| PG-31543 |  | Floor 9 | 30.67d | 2025-07-04 | 2025-08-08 | PG-10562, PG-30740 |  | 382.03d |
| PG-31544 |  | Floor 10 | 29.67d | 2025-07-19 | 2025-08-25 | PG-10576, PG-30741 |  | 369.25d |
| PG-31545 |  | Floor 11 | 29.67d | 2025-08-02 | 2025-09-08 | PG-10590, PG-30742 |  | 357.65d |
| PG-31546 |  | Floor 12 | 29.83d | 2025-08-13 | 2025-09-18 | PG-10604, PG-30743 |  | 348.49d |
| PG-31547 |  | Floor 13 | 29.67d | 2025-08-27 | 2025-10-01 | PG-10618, PG-30744 |  | 337.48d |
| PG-31548 |  | Floor 14 | 29.67d | 2025-09-10 | 2025-10-15 | PG-10632, PG-30745 |  | 325.79d |
| PG-31549 |  | Floor 15 | 29.67d | 2025-09-22 | 2025-10-27 | PG-10646, PG-30746 |  | 315.79d |
| PG-31550 |  | Floor 16 | 29.67d | 2025-10-06 | 2025-11-10 | PG-10660, PG-30747 |  | 304.79d |
| PG-31551 |  | Floor 17 | 29.67d | 2025-10-18 | 2025-11-22 | PG-10674, PG-30748 |  | 293.79d |
| PG-31552 |  | Floor 18 | 29.67d | 2025-10-31 | 2025-12-05 | PG-10688, PG-30749 |  | 282.79d |
| PG-31553 |  | Floor 19 | 29.67d | 2025-11-26 | 2025-12-30 | PG-10702, PG-30750 |  | 261.79d |
| PG-31554 |  | Floor 20 | 30.67d | 2025-12-17 | 2026-01-22 | PG-10716, PG-30751 |  | 242.62d |
| PG-31555 |  | Floor 21 | 30.67d | 2026-01-08 | 2026-02-14 | PG-10730, PG-30752 |  | 223.62d |
| PG-31556 |  | Floor 22 | 30.83d | 2026-02-02 | 2026-03-10 | PG-10744, PG-30753 |  | 203.62d |
| PG-31557 |  | Floor 23 | 30.67d | 2026-02-20 | 2026-03-28 | PG-10758, PG-30754 |  | 187.62d |
|  | 1.7.1.1.2 | **Common Areas** |  | 2025-10-20 | 2026-10-08 |  |  |  |
| PG-31559 |  | Internal Electrical Works | 58.67d | 2025-10-20 | 2025-12-29 | PG-30755 |  | 263.29d |
| PG-31560 |  | Internal FPS Works | 58.83d | 2025-10-20 | 2025-12-29 | PG-30756 |  | 262.95d |
| PG-31561 |  | Data & Communication Works | 58.83d | 2025-10-25 | 2026-01-03 | PG-30757 |  | 257.95d |
| PG-31562 |  | Internal PHE Works including OHT | 61.33d | 2025-12-08 | 2026-02-19 | PG-30758 |  | 219.62d |
| PG-31565 |  | Lightining Arrestor works | 16.67d | 2025-12-23 | 2026-01-10 | PG-30761 |  | 251.79d |
| PG-31564 |  | Electrical Panel Works | 59.83d | 2026-03-21 | 2026-05-30 | PG-30760 |  | 133.29d |
| PG-31563 |  | Lift Works | 59.5d | 2026-04-20 | 2026-06-29 | PG-30759 |  | 108.42d |
| PG-31558 |  | Common Area Civil Works | 60.67d | 2026-07-27 | 2026-10-08 | PG-10842, PG-10779, PG-10775 |  | 23.42d |
|  | 1.7.1.2 | **Tower 2** |  | 2025-02-13 | 2026-10-16 |  |  |  |
|  | 1.7.1.2.1 | **Units** |  | 2025-02-13 | 2026-05-05 |  |  |  |
| PG-31566 |  | Ground Floor | 31.67d | 2025-02-13 A | 2025-03-26 A | PG-30762, PG-11275 | 100% |  |
| PG-31567 |  | Floor 1 | 29.67d | 2025-03-04 A | 2025-04-10 A | PG-30763, PG-11289 | 100% |  |
| PG-31568 |  | Floor 2 | 30.67d | 2025-03-20 A | 2025-04-24 A | PG-30764, PG-11303 | 100% |  |
| PG-31569 |  | Floor 3 | 30.67d | 2025-04-04 A | 2025-05-09 | PG-30765, PG-11317 | 97% | 459.75d |
| PG-31570 |  | Floor 4 | 30.67d | 2025-04-26 A | 2025-05-30 | PG-30766, PG-11331 | 38% | 441.75d |
| PG-31571 |  | Floor 5 | 30.67d | 2025-05-07 A | 2025-06-11 | PG-30767, PG-11345 | 7% | 432.34d |
| PG-31572 |  | Floor 6 | 29.83d | 2025-05-24 | 2025-06-27 | PG-30768, PG-11359 |  | 417.82d |
| PG-31573 |  | Floor 7 | 29.83d | 2025-06-04 | 2025-07-09 | PG-30769, PG-11373 |  | 408.58d |
| PG-31574 |  | Floor 8 | 30.67d | 2025-06-23 | 2025-07-28 | PG-30770, PG-11387 |  | 391.76d |
| PG-31575 |  | Floor 9 | 30.83d | 2025-07-02 | 2025-08-07 | PG-30771, PG-11401 |  | 383.21d |
| PG-31576 |  | Floor 10 | 29.83d | 2025-07-21 | 2025-08-25 | PG-30772, PG-11415 |  | 368.75d |
| PG-31577 |  | Floor 11 | 29.83d | 2025-08-01 | 2025-09-06 | PG-30773, PG-11429 |  | 358.72d |
| PG-31578 |  | Floor 12 | 29.67d | 2025-08-16 | 2025-09-20 | PG-30774, PG-11443 |  | 346.67d |
| PG-31579 |  | Floor 13 | 29.67d | 2025-08-28 | 2025-10-03 | PG-30775, PG-11457 |  | 336.42d |
| PG-31580 |  | Floor 14 | 29.67d | 2025-09-11 | 2025-10-16 | PG-30776, PG-11471 |  | 325.07d |

| ID | WBS | Task | Duration | Start | Finish | Predecessors | Complete | Total float |
| --- | --- | --- | --- | --- | --- | --- | --- | --- |
| PG-31581 |  | Floor 15 | 29.67d | 2025-09-23 | 2025-10-28 | PG-30777, PG-11485 |  | 315.07d |
| PG-31582 |  | Floor 16 | 29.83d | 2025-10-06 | 2025-11-11 | PG-30778, PG-11499 |  | 304.73d |
| PG-31583 |  | Floor 17 | 29.83d | 2025-10-18 | 2025-11-24 | PG-30779, PG-11513 |  | 293.73d |
| PG-31584 |  | Floor 18 | 28.83d | 2025-11-04 | 2025-12-06 | PG-30780, PG-11527 |  | 281.9d |
| PG-31585 |  | Floor 19 | 28.83d | 2025-11-17 | 2025-12-19 | PG-30781, PG-11541 |  | 270.9d |
| PG-31586 |  | Floor 20 | 28.83d | 2025-12-01 | 2026-01-02 | PG-30782, PG-11555 |  | 258.9d |
| PG-31587 |  | Floor 21 | 28.67d | 2025-12-11 | 2026-01-14 | PG-30783, PG-11569 |  | 249.23d |
| PG-31588 |  | Floor 22 | 30.67d | 2026-01-01 | 2026-02-07 | PG-30784, PG-11583 |  | 229.4d |
| PG-31589 |  | Floor 23 | 29.83d | 2026-01-23 | 2026-02-28 | PG-30785, PG-11597 |  | 211.4d |
| PG-31590 |  | Floor 24 | 30.67d | 2026-02-14 | 2026-03-23 | PG-30786, PG-11611 |  | 192.23d |
| PG-31591 |  | Floor 25 | 30.67d | 2026-03-10 | 2026-04-15 | PG-30787, PG-11625 |  | 172.73d |
| PG-31592 |  | Floor 26 | 29.83d | 2026-04-01 | 2026-05-05 | PG-30788, PG-11639 |  | 154.9d |
|  | 1.7.1.2.2 | **Comman Areas** |  | 2025-11-29 | 2026-10-16 |  |  |  |
| PG-31595 |  | Internal FPS Works | 59.67d | 2025-11-29 | 2026-02-09 | PG-30790 |  | 228.4d |
| PG-31596 |  | Data & Communication Works | 59.67d | 2025-12-06 | 2026-02-14 | PG-30791 |  | 223.07d |
| PG-31597 |  | Internal PHE Works including OHT | 60.5d | 2026-01-16 | 2026-03-28 | PG-30792 |  | 187.23d |
| PG-31600 |  | Lightining Arrestor works | 13.83d | 2026-01-31 | 2026-02-17 | PG-30795 |  | 221.4d |
| PG-31599 |  | Electrical Panel Works | 29.67d | 2026-03-21 | 2026-04-24 | PG-30794 |  | 164.07d |
| PG-31594 |  | Internal Electrical Works | 59.5d | 2026-04-01 | 2026-06-09 | PG-30789, PG-30788 |  | 125.23d |
| PG-31598 |  | Lift Works | 29.5d | 2026-05-09 | 2026-06-12 | PG-30793 |  | 121.9d |
| PG-31593 |  | Common Area Civil Works | 59.67d | 2026-08-05 | 2026-10-16 | PG-11723, PG-11660, PG-11656 |  | 16.4d |
|  | 1.7.1.3 | **Tower 3** |  | 2025-04-23 | 2026-11-04 |  |  |  |
|  | 1.7.1.3.1 | **Units** |  | 2025-04-23 | 2026-08-20 |  |  |  |
| PG-31601 |  | Ground Floor | 29.67d | 2025-04-23 A | 2025-05-30 | PG-30796, PG-12198 | 39% | 442.73d |
| PG-31602 |  | Floor 1 | 30.67d | 2025-05-08 A | 2025-06-12 | PG-30797, PG-12212 | 3% | 431d |
| PG-31603 |  | Floor 2 | 31.67d | 2025-05-20 | 2025-06-26 | PG-30798, PG-12226 |  | 419.36d |
| PG-31604 |  | Floor 3 | 30.67d | 2025-06-11 | 2025-07-17 | PG-30799, PG-12240 |  | 401.3d |
| PG-31605 |  | Floor 4 | 30.67d | 2025-06-25 | 2025-07-30 | PG-30800, PG-12254 |  | 390.04d |
| PG-31607 |  | Floor 6 | 29.67d | 2025-07-24 | 2025-08-28 | PG-30802, PG-12282 |  | 365.92d |
| PG-31608 |  | Floor 7 | 29.67d | 2025-08-07 | 2025-09-12 | PG-30803, PG-12296 |  | 353.75d |
| PG-31609 |  | Floor 8 | 30.67d | 2025-08-26 | 2025-10-01 | PG-30804, PG-12310 |  | 337.17d |
| PG-31610 |  | Floor 9 | 30.67d | 2025-09-09 | 2025-10-16 | PG-30805, PG-12324 |  | 325.33d |
| PG-31606 |  | Floor 5 | 29.67d | 2025-09-16 | 2025-10-22 | PG-30801, PG-12268 |  | 320.25d |
| PG-31611 |  | Floor 10 | 30d | 2025-09-26 | 2025-11-03 | PG-30833, PG-30806, PG-12338 |  | 311.17d |
| PG-31612 |  | Floor 11 | 29.67d | 2025-10-10 | 2025-11-15 | PG-30807, PG-12352 |  | 300.5d |
| PG-31613 |  | Floor 12 | 29.83d | 2025-10-25 | 2025-12-01 | PG-30808, PG-12366 |  | 287.17d |
| PG-31614 |  | Floor 13 | 29.67d | 2025-11-08 | 2025-12-13 | PG-30809, PG-12380 |  | 276.5d |
| PG-31615 |  | Floor 14 | 29.67d | 2025-11-19 | 2025-12-24 | PG-30810, PG-12394 |  | 267.5d |
| PG-31617 |  | Floor 16 | 29.67d | 2025-12-15 | 2026-01-19 | PG-30812, PG-12422 |  | 245.33d |
| PG-31618 |  | Floor 17 | 29.67d | 2025-12-27 | 2026-02-02 | PG-30813, PG-12436 |  | 234.33d |
| PG-31619 |  | Floor 18 | 29.67d | 2026-01-09 | 2026-02-14 | PG-30814, PG-12450 |  | 223.33d |
| PG-31620 |  | Floor 19 | 29.67d | 2026-01-22 | 2026-02-27 | PG-30815, PG-12464 |  | 212.33d |
| PG-31621 |  | Floor 20 | 29.67d | 2026-02-06 | 2026-03-13 | PG-30816, PG-12478 |  | 200.67d |
| PG-31622 |  | Floor 21 | 29.67d | 2026-02-19 | 2026-03-25 | PG-30817, PG-12492 |  | 189.83d |
| PG-31616 |  | Floor 15 | 29.83d | 2026-02-19 | 2026-03-26 | PG-30811, PG-12408 |  | 189.25d |
| PG-31623 |  | Floor 22 | 29.67d | 2026-03-04 | 2026-04-07 | PG-30818, PG-12506 |  | 178.83d |
| PG-31624 |  | Floor 23 | 29.67d | 2026-03-16 | 2026-04-20 | PG-30819, PG-12520 |  | 168.17d |
| PG-31625 |  | Floor 24 | 29.67d | 2026-03-30 | 2026-05-02 | PG-30820, PG-12534 |  | 156.83d |
| PG-31626 |  | Floor 25 | 30.67d | 2026-04-20 | 2026-05-26 | PG-30821, PG-12548 |  | 137.67d |
| PG-31627 |  | Floor 26 | 29.83d | 2026-05-13 | 2026-06-17 | PG-30822, PG-12562 |  | 118.33d |
| PG-31628 |  | Floor 27 | 29.67d | 2026-06-03 | 2026-07-08 | PG-30823, PG-12576 |  | 100.5d |
| PG-31629 |  | Floor 28 | 29.67d | 2026-06-24 | 2026-07-29 | PG-30824, PG-12590 |  | 82.5d |
| PG-31630 |  | Floor 29 | 29.67d | 2026-07-15 | 2026-08-20 | PG-30825, PG-12604 |  | 64.17d |
|  | 1.7.1.3.2 | **Common Areas** |  | 2026-03-17 | 2026-11-04 |  |  |  |
| PG-31632 |  | Internal Electrical Works | 15.5d | 2026-03-17 | 2026-04-03 | PG-30826 |  | 182d |
| PG-31633 |  | Internal FPS Works | 15.67d | 2026-03-17 | 2026-04-04 | PG-30827 |  | 181.5d |
| PG-31634 |  | Data & Communication Works | 14.67d | 2026-03-23 | 2026-04-09 | PG-30828 |  | 177.67d |
| PG-31635 |  | Internal PHE Works including OHT | 19.67d | 2026-05-01 | 2026-05-25 | PG-30829 |  | 138.5d |
| PG-31638 |  | Lightining Arrestor works | 6.67d | 2026-05-15 | 2026-05-23 | PG-30832 |  | 139.17d |
| PG-31636 |  | Lift Works | 19.5d | 2026-08-10 | 2026-09-04 | PG-30830 |  | 51.67d |
| PG-31637 |  | Electrical Panel Works | 18.83d | 2026-08-18 | 2026-09-09 | PG-30831 |  | 47.58d |
| PG-31631 |  | Common Area Civil Works | 14.83d | 2026-10-17 | 2026-11-04 | PG-12688, PG-12625, PG-12621 |  | 0d |
|  | 1.7.1.4 | **Basements** |  | 2025-04-03 | 2025-04-28 |  |  |  |
| PG-31639 |  | LBF | 14.67d | 2025-04-03 A | 2025-04-19 A | PG-12189, PG-11266, PG-12707, PG-10427 | 100% |  |
| PG-31640 |  | UBF | 14.67d | 2025-04-12 A | 2025-04-28 A | PG-30834, PG-12193, PG-11270, PG-12714, PG-12707, PG-10431 | 100% |  |
|  | 1.7.9 | **Project InfraStructure Works ( Services & MEP )** |  | 2024-06-24 | 2026-12-05 |  |  |  |
| PG-32348 |  | FPS & FA works ( External & Plant Room ) | 9.67d | 2025-09-30 | 2025-10-11 | PG-31526 |  | 414.14d |
|  | 1.7.9.1 | **Transformer Works** |  | 2026-10-31 | 2026-12-05 |  |  |  |
| PG-32336 |  | Transformer 01 ( Building 01 & 02 ) | 29.83d | 2026-10-31 | 2026-12-05 | PG-31514 |  | 58.83d |
|  | 1.7.9.2 | **DG Works** |  | 2024-07-02 | 2024-07-15 |  |  |  |

| ID | WBS | Task | Duration | Start | Finish | Predecessors | Complete | Total float |
| --- | --- | --- | --- | --- | --- | --- | --- | --- |
| PG-32340 |  | DG 01 ( Tower 1,2,12,13,14 & CH ) | 10.67d | 2024-07-02 A | 2024-07-15 A | PG-31518 | 100% |  |
|  | 1.7.9.3 | **STP Works** |  | 2026-03-24 | 2026-04-27 |  |  |  |
| PG-32343 |  | Sewage Treatment Plant 01 ( 1000KLD ) | 29d | 2026-03-24 | 2026-04-27 | PG-31521 |  | 217.62d |
|  | 1.7.9.7 | **Swimming Pool** |  | 2024-06-24 | 2024-07-27 |  |  |  |
| PG-32349 |  | MEP Works | 29.67d | 2024-06-24 A | 2024-07-27 A | PG-31527 | 100% |  |
|  | 1.7.10 | **External Development Works** |  | 2025-12-23 | 2026-02-11 |  |  |  |
| PG-32370 |  | Clubhouse | 42.83d | 2025-12-23 | 2026-02-11 | PG-30711 |  | 305.98d |
|  | 1.7.11 | **Pumps Installation Works** |  | 2024-06-24 | 2024-07-13 |  |  |  |
| PG-32373 |  | UG Sump Domestic Pumps | 13.67d | 2024-06-24 A | 2024-07-09 A | PG-31527 | 100% |  |
| PG-32374 |  | Water bodies and Swimming Pool Pumps | 16.67d | 2024-06-24 A | 2024-07-13 A | PG-31527 | 100% |  |
| PG-32375 |  | Roof & Rainwater disposal Pumps | 15.67d | 2024-06-24 A | 2024-07-12 A | PG-31527 | 100% |  |
| PG-32376 |  | Car wash water & Strom water pumps in Basement | 13.67d | 2024-06-24 A | 2024-07-09 A | PG-31527 | 100% |  |
|  | 1.8 | **Handing Over** |  | 2026-02-11 | 2027-02-12 |  |  |  |
| PG-32387 |  | External Development Works | 19.67d | 2026-02-11 | 2026-03-06 | PG-32370 |  | 305.98d |
| PG-32378 |  | Building 1 | 9.67d | 2026-11-04 | 2026-11-16 | PG-31640, PG-31639, PG-31638, PG-31637, PG-31636, PG-31635, PG-31634, PG-31633, PG-31632, PG-31631, PG-31630, PG-31629, PG-31628, PG-31627, PG-31626, PG-31625, PG-31624, PG-31623, PG-31622, PG-31621, PG-31620, PG-31619, PG-31618, PG-31617, PG-31616, PG-31615, PG-31614, PG-31613, PG-31612, PG-31611, PG-31610, PG-31609, PG-31608, PG-31607, PG-31606, PG-31605, PG-31604, PG-31603, PG-31602, PG-31601, PG-31600, PG-31599, PG-31598, PG-31597, PG-31596, PG-31595, PG-31594, PG-31593, PG-31592, PG-31591, PG-31590, PG-31589, PG-31588, PG-31587, PG-31586, PG-31585, PG-31584, PG-31583, PG-31582, PG-31581, PG-31580, PG-31579, PG-31578, PG-31577, PG-31576, PG-31575, PG-31574, PG-31573, PG-31572, PG-31571, PG-31570, PG-31569, PG-31568, PG-31567, PG-31566, PG-31565, PG-31564, PG-31563, PG-31562, PG-31561, PG-31560, PG-31559, PG-31558, PG-31557, PG-31556, PG-31555, PG-31554, PG-31553, PG-31552, PG-31551, PG-31550, PG-31549, PG-31548, PG-31547, PG-31546, PG-31545, PG-31544, PG-31543, PG-31542, PG-31541, PG-31540, PG-31539, PG-31538, PG-31537, PG-31536, PG-31535, PG-31534 |  | 0d |
| PG-32386 |  | Project InfraStructure Works ( Services & MEP ) | 14.67d | 2027-01-25 | 2027-02-12 | PG-32396, PG-32395, PG-32393, PG-32349, PG-32348, PG-32343, PG-32340, PG-32336 |  | 15.17d |
|  | 1.10 | **Post Construction Statutory Approvals** |  | 2023-10-04 | 2027-03-02 |  |  |  |
| PG-32392 |  | Bescom Electrical CEIG Approval | 30.5d | 2023-10-04 A | 2023-11-09 A |  | 100% |  |
| PG-32393 |  | CEIG Approval - DG | 29.83d | 2024-07-15 A | 2024-08-20 A | PG-32340 | 100% |  |
| PG-32391 |  | Fire NOC | 58.67d | 2025-06-17 | 2025-08-26 | PG-30700 |  | 414.14d |
| PG-32396 |  | Pollution Control board clearance for STP | 29.67d | 2026-04-27 | 2026-06-01 | PG-32343 |  | 217.62d |
| PG-32394 |  | CEIG Approval - Lift | 29.5d | 2026-11-16 | 2026-12-19 | PG-32378 |  | 0d |
| PG-32395 |  | Pollution Control board CFO | 30.83d | 2026-12-19 | 2027-01-25 | PG-32394 |  | 15.17d |
| PG-32397 |  | Occupation Certificate | 60.67d | 2026-12-19 | 2027-03-02 | PG-32394 |  | 0d |
|  | 2 | **Milestone** |  | 2023-10-04 | 2027-03-02 |  |  |  |
| MS-0000 |  | Project Start | 0d | 2023-10-04 A | 2023-10-04 A |  | 100% |  |
| MS-9006 |  | Roads Complete | 0d | 2024-01-02 A | 2024-01-02 A | PG-30614 | 100% |  |
| MS-0104 |  | DG Sets Delivered to Site | 0d | 2024-04-06 A | 2024-04-06 A | PG-10034 | 100% |  |
| MS-0106 |  | STP Equipment Delivered | 0d | 2024-05-08 A | 2024-05-08 A | PG-10038 | 100% |  |
| MS-9003 |  | DG Commissioned | 0d | 2024-07-03 A | 2024-07-03 A | PG-31518 | 100% |  |
| MS-9004 |  | Swimming Pool Complete | 0d | 2024-07-29 A | 2024-07-29 A | PG-32349 | 100% |  |
| MS-0101 |  | Aluminium Formwork Kit Delivered | 0d | 2024-08-09 A | 2024-08-09 A | PG-10003 | 100% |  |
| MS-0109 |  | CP & Sanitaryware Delivered | 0d | 2025-03-10 A | 2025-03-10 A | PG-10023 | 100% |  |
| MS-1001 |  | Tower 1 - Structure Complete | 0d | 2025-08-18 | 2025-08-18 | PG-10197 |  | 480.45d |
| MS-0105 |  | Electrical Panels Delivered | 0d | 2025-08-23 | 2025-08-23 | PG-10032 |  | 474.79d |
| MS-2001 |  | Tower 2 - Structure Complete | 0d | 2025-09-25 | 2025-09-25 | PG-11009 |  | 447.07d |
| MS-1002 |  | Tower 1 - MEP 1st Fix Complete | 0d | 2025-11-22 | 2025-11-22 | PG-10415 |  | 399.45d |
| MS-0102 |  | Lifts Delivered to Site | 0d | 2025-11-25 | 2025-11-25 | PG-10030 |  | 397.42d |
| MS-0107 |  | FRP Water Tanks Delivered | 0d | 2025-12-01 | 2025-12-01 | PG-10027 |  | 392.45d |
| MS-9005 |  | Club House Complete | 0d | 2025-12-23 | 2025-12-23 | PG-30711 |  | 373.48d |
| MS-1003 |  | Tower 1 - MEP 2nd Fix Complete | 0d | 2025-12-27 | 2025-12-27 | PG-10416 |  | 369.45d |
| MS-2002 |  | Tower 2 - MEP 1st Fix Complete | 0d | 2025-12-27 | 2025-12-27 | PG-11254 |  | 369.4d |
| MS-3001 |  | Tower 3 - Structure Complete | 0d | 2026-01-10 | 2026-01-10 | PG-11905 |  | 356.67d |
| MS-1005 |  | Tower 1 - MEP Final Fix Complete | 0d | 2026-01-16 | 2026-01-16 | PG-10417 |  | 351.95d |
| MS-2003 |  | Tower 2 - MEP 2nd Fix Complete | 0d | 2026-02-02 | 2026-02-02 | PG-11255 |  | 339.57d |
| MS-9008 |  | External Development Complete | 0d | 2026-02-11 | 2026-02-11 | PG-32370 |  | 330.64d |
| MS-2005 |  | Tower 2 - MEP Final Fix Complete | 0d | 2026-02-24 | 2026-02-24 | PG-11259 |  | 320.23d |
| MS-2004 |  | Tower 2 - Internal Finishes Complete | 0d | 2026-03-20 | 2026-03-20 | PG-11660 |  | 299.23d |
| MS-9001 |  | STP Commissioned | 0d | 2026-03-24 | 2026-03-24 | PG-31521 |  | 295.95d |
| MS-1006 |  | Tower 1 - Lifts Commissioned | 0d | 2026-03-28 | 2026-03-28 | PG-10830 |  | 292.08d |
| MS-3002 |  | Tower 3 - MEP 1st Fix Complete | 0d | 2026-04-14 | 2026-04-14 | PG-12177 |  | 278d |
| MS-2006 |  | Tower 2 - Lifts Commissioned | 0d | 2026-04-16 | 2026-04-16 | PG-11711 |  | 275.73d |
| MS-1007 |  | Tower 1 - T&C Complete | 0d | 2026-04-20 | 2026-04-20 | PG-30759 |  | 272.75d |
| MS-2007 |  | Tower 2 - T&C Complete | 0d | 2026-05-09 | 2026-05-09 | PG-30793 |  | 256.23d |
| MS-3003 |  | Tower 3 - MEP 2nd Fix Complete | 0d | 2026-05-19 | 2026-05-19 | PG-12178 |  | 248d |
| MS-3005 |  | Tower 3 - MEP Final Fix Complete | 0d | 2026-06-11 | 2026-06-11 | PG-12179 |  | 228.33d |
| MS-0108 |  | Tiles & Marble Delivered | 0d | 2026-07-03 | 2026-07-03 | PG-10013 |  | 209.25d |
| MS-3004 |  | Tower 3 - Internal Finishes Complete | 0d | 2026-07-03 | 2026-07-03 | PG-12625 |  | 208.83d |
| MS-1004 |  | Tower 1 - Internal Finishes Complete | 0d | 2026-07-27 | 2026-07-27 | PG-10779 |  | 188.92d |
| MS-0103 |  | Transformer Delivered to Site | 0d | 2026-07-29 | 2026-07-29 | PG-10036 |  | 187.33d |
| MS-3006 |  | Tower 3 - Lifts Commissioned | 0d | 2026-07-30 | 2026-07-30 | PG-12676 |  | 186.5d |
| MS-9007 |  | Landscape Complete | 0d | 2026-08-10 | 2026-08-10 | PG-12718 |  | 177.17d |
| MS-3007 |  | Tower 3 - T&C Complete | 0d | 2026-08-18 | 2026-08-18 | PG-30831 |  | 171.25d |
| MS-9002 |  | Transformer Charged | 0d | 2026-10-31 | 2026-10-31 | PG-31514 |  | 108.33d |
| MS-9990 |  | Snagging Complete | 0d | 2026-12-05 | 2026-12-05 | PG-32336 |  | 78.5d |
| MS-9999 |  | Project Finish / Handover | 0d | 2027-02-12 | 2027-02-12 | PG-32386 |  | 20.17d |
| MS-9991 |  | Statutory Approvals Obtained | 0d | 2027-03-02 | 2027-03-02 | PG-32397 |  | 5d |

## Version 10 (data date 2025-05-16, saved 2026-09-20, file APX_2025-05-16.xer)

Last finish 2027-03-08 → 2027-03-09 (+1d). Complete tasks 1188 → 1218.

Changed:

| ID | Task | Start | Finish | Complete | Total float |
| --- | --- | --- | --- | --- | --- |
| 1 | **Project Genisis** |  | 2027-03-08 → 2027-03-09 (+1d) |  |  |
| PG-32433 | Project Close Out | 2027-03-02 → 2027-03-03 (+1d) | 2027-03-08 → 2027-03-09 (+1d) |  |  |
| 1.2.4 | **FRP Tanks Supply** |  | 2025-12-01 → 2025-12-02 (+1d) |  |  |
| PG-10024 | Purchase Order works |  | 2025-05-13 → 2025-05-14 A (+1d) | 53% → 100% | 217.62d → none |
| PG-10025 | Materials Supply to site ( Tower - 1, 2, 3, 9, 14, 18 & 19 ) | 2025-06-30 → 2025-07-01 (+1d) | 2025-08-02 → 2025-08-04 (+2d) |  | 217.62d → 217.08d |
| PG-10026 | Materials Supply to site ( Tower - 4, 8, 10 & 13 ) | 2025-08-01 → 2025-08-02 (+1d) | 2025-09-08 → 2025-09-09 (+1d) |  | 217.62d → 217.08d |
| PG-10027 | Materials Supply to site ( Tower - 5, 6, 7, 11, 12, 15, 16 & 17 ) | 2025-10-27 → 2025-10-28 (+1d) | 2025-12-01 → 2025-12-02 (+1d) |  | 217.62d → 217.08d |
| 1.2.6 | **Electrical Panel Supply** |  | 2025-08-23 → 2025-08-25 (+2d) |  |  |
| PG-10032 | Materials Supply to site | 2025-07-21 → 2025-07-22 (+1d) | 2025-08-23 → 2025-08-25 (+2d) |  | 141.95d → 141.5d |
| 1.2.8 | **Transformer Supply** | 2026-02-27 → 2026-02-28 (+1d) |  |  |  |
| PG-10035 | Purchase Order works | 2026-02-27 → 2026-02-28 (+1d) |  |  |  |
| PG-10036 | Materials Supply to site | 2026-06-24 → 2026-06-25 (+1d) |  |  |  |
| 1.3 | **Construction** |  | 2026-10-17 → 2026-10-19 (+2d) |  |  |
| 1.3.1 | **Building 1** |  | 2026-10-17 → 2026-10-19 (+2d) |  |  |
| 1.3.1.1.2 | **Structure works** |  | 2025-08-18 → 2025-08-19 (+1d) |  |  |
| 1.3.1.1.2.22 | **Floor 19** |  | 2025-05-17 → 2025-05-19 (+2d) |  |  |
| 1.3.1.1.2.22.1 | **Columns / shear walls** |  | 2025-05-12 → 2025-05-13 (+1d) |  |  |
| PG-10166 | Reinforcement |  | 2025-05-09 → 2025-05-10 A (+1d) | 97% → 100% | 46.95d → none |
| PG-10167 | Formwork |  | 2025-05-12 → 2025-05-13 A (+1d) | 50% → 100% | 46.95d → none |
| 1.3.1.1.2.22.2 | **Slab, Beams & Staircase** | 2025-05-10 → 2025-05-12 (+2d) | 2025-05-17 → 2025-05-19 (+2d) |  |  |
| PG-10168 | Formwork | 2025-05-10 → 2025-05-12 A (+2d) | 2025-05-14 → 2025-05-15 A (+1d) | 0% → 100% | 46.95d → none |
| PG-10169 | Reinforcement | 2025-05-13 → 2025-05-14 A (+1d) | 2025-05-16 → 2025-05-17 (+1d) | 0% → 89% | 46.95d → 46.5d |
| PG-10170 | Concrete | 2025-05-16 → 2025-05-17 (+1d) | 2025-05-17 → 2025-05-19 (+2d) |  | 46.95d → 46.5d |
| 1.3.1.1.2.23 | **Floor 20** | 2025-05-17 → 2025-05-19 (+2d) | 2025-05-30 → 2025-05-31 (+1d) |  |  |
| 1.3.1.1.2.23.1 | **Columns / shear walls** | 2025-05-17 → 2025-05-19 (+2d) | 2025-05-24 → 2025-05-26 (+2d) |  |  |
| PG-10171 | Reinforcement | 2025-05-17 → 2025-05-19 (+2d) | 2025-05-22 → 2025-05-23 (+1d) |  | 46.95d → 46.5d |
| PG-10172 | Formwork | 2025-05-20 → 2025-05-21 (+1d) | 2025-05-24 → 2025-05-26 (+2d) |  | 46.95d → 46.5d |
| 1.3.1.1.2.23.2 | **Slab, Beams & Staircase** | 2025-05-23 → 2025-05-24 (+1d) | 2025-05-30 → 2025-05-31 (+1d) |  |  |
| PG-10173 | Formwork | 2025-05-23 → 2025-05-24 (+1d) | 2025-05-27 → 2025-05-28 (+1d) |  | 46.95d → 46.5d |
| PG-10174 | Reinforcement | 2025-05-26 → 2025-05-27 (+1d) | 2025-05-29 → 2025-05-30 (+1d) |  | 46.95d → 46.5d |
| PG-10175 | Concrete | 2025-05-29 → 2025-05-30 (+1d) | 2025-05-30 → 2025-05-31 (+1d) |  | 46.95d → 46.5d |
| 1.3.1.1.2.24 | **Floor 21** | 2025-05-30 → 2025-05-31 (+1d) | 2025-06-12 → 2025-06-13 (+1d) |  |  |
| 1.3.1.1.2.24.1 | **Columns / shear walls** | 2025-05-30 → 2025-05-31 (+1d) | 2025-06-06 → 2025-06-07 (+1d) |  |  |
| PG-10176 | Reinforcement | 2025-05-30 → 2025-05-31 (+1d) | 2025-06-04 → 2025-06-05 (+1d) |  | 46.95d → 46.5d |
| PG-10177 | Formwork | 2025-06-02 → 2025-06-03 (+1d) | 2025-06-06 → 2025-06-07 (+1d) |  | 46.95d → 46.5d |
| 1.3.1.1.2.24.2 | **Slab, Beams & Staircase** | 2025-06-05 → 2025-06-06 (+1d) | 2025-06-12 → 2025-06-13 (+1d) |  |  |
| PG-10178 | Formwork | 2025-06-05 → 2025-06-06 (+1d) | 2025-06-09 → 2025-06-10 (+1d) |  | 46.95d → 46.5d |
| PG-10179 | Reinforcement | 2025-06-07 → 2025-06-09 (+2d) | 2025-06-11 → 2025-06-12 (+1d) |  | 46.95d → 46.5d |
| PG-10180 | Concrete | 2025-06-11 → 2025-06-12 (+1d) | 2025-06-12 → 2025-06-13 (+1d) |  | 46.95d → 46.5d |
| 1.3.1.1.2.25 | **Floor 22** | 2025-06-12 → 2025-06-13 (+1d) | 2025-06-25 → 2025-06-26 (+1d) |  |  |
| 1.3.1.1.2.25.1 | **Columns / shear walls** | 2025-06-12 → 2025-06-13 (+1d) | 2025-06-19 → 2025-06-20 (+1d) |  |  |
| PG-10181 | Reinforcement | 2025-06-12 → 2025-06-13 (+1d) | 2025-06-17 → 2025-06-18 (+1d) |  | 46.95d → 46.5d |
| PG-10182 | Formwork | 2025-06-14 → 2025-06-16 (+2d) | 2025-06-19 → 2025-06-20 (+1d) |  | 46.95d → 46.5d |
| 1.3.1.1.2.25.2 | **Slab, Beams & Staircase** | 2025-06-18 → 2025-06-19 (+1d) | 2025-06-25 → 2025-06-26 (+1d) |  |  |
| PG-10183 | Formwork | 2025-06-18 → 2025-06-19 (+1d) | 2025-06-21 → 2025-06-23 (+2d) |  | 46.95d → 46.5d |
| PG-10184 | Reinforcement | 2025-06-20 → 2025-06-21 (+1d) | 2025-06-24 → 2025-06-25 (+1d) |  | 46.95d → 46.5d |
| PG-10185 | Concrete | 2025-06-24 → 2025-06-25 (+1d) | 2025-06-25 → 2025-06-26 (+1d) |  | 46.95d → 46.5d |
| 1.3.1.1.2.26 | **Floor 23** | 2025-06-25 → 2025-06-26 (+1d) | 2025-07-08 → 2025-07-09 (+1d) |  |  |
| 1.3.1.1.2.26.1 | **Columns / shear walls** | 2025-06-25 → 2025-06-26 (+1d) | 2025-07-02 → 2025-07-03 (+1d) |  |  |
| PG-10186 | Reinforcement | 2025-06-25 → 2025-06-26 (+1d) | 2025-06-30 → 2025-07-01 (+1d) |  | 46.95d → 46.5d |
| PG-10187 | Formwork | 2025-06-27 → 2025-06-28 (+1d) | 2025-07-02 → 2025-07-03 (+1d) |  | 46.95d → 46.5d |
| 1.3.1.1.2.26.2 | **Slab, Beams & Staircase** | 2025-07-01 → 2025-07-02 (+1d) | 2025-07-08 → 2025-07-09 (+1d) |  |  |
| PG-10188 | Formwork | 2025-07-01 → 2025-07-02 (+1d) | 2025-07-04 → 2025-07-05 (+1d) |  | 46.95d → 46.5d |
| PG-10189 | Reinforcement | 2025-07-03 → 2025-07-04 (+1d) | 2025-07-07 → 2025-07-08 (+1d) |  | 46.95d → 46.5d |
| PG-10190 | Concrete | 2025-07-07 → 2025-07-08 (+1d) | 2025-07-08 → 2025-07-09 (+1d) |  | 46.95d → 46.5d |
| 1.3.1.1.2.27 | **Above Terrace Floor** | 2025-07-08 → 2025-07-09 (+1d) | 2025-08-18 → 2025-08-19 (+1d) |  |  |
| 1.3.1.1.2.27.1 | **Columns / shear walls/Parapet Walls** | 2025-07-08 → 2025-07-09 (+1d) | 2025-07-22 → 2025-07-23 (+1d) |  |  |
| PG-10191 | Reinforcement | 2025-07-08 → 2025-07-09 (+1d) | 2025-07-12 → 2025-07-14 (+2d) |  | 124.45d → 124d |
| PG-10192 | Formwork | 2025-07-10 → 2025-07-11 (+1d) | 2025-07-16 → 2025-07-17 (+1d) |  | 124.45d → 124d |
| PG-10193 | Concrete | 2025-07-16 → 2025-07-17 (+1d) | 2025-07-22 → 2025-07-23 (+1d) |  | 124.45d → 124d |
| 1.3.1.1.2.27.2 | **Slab, Beams & Staircase Head rooms, Lift headroom** | 2025-07-12 → 2025-07-14 (+2d) | 2025-08-18 → 2025-08-19 (+1d) |  |  |
| PG-10197 | Terrace Waterproofing and Protective finishing. | 2025-07-12 → 2025-07-14 (+2d) | 2025-08-18 → 2025-08-19 (+1d) |  | 249.62d → 249.17d |
| PG-10194 | Formwork | 2025-07-22 → 2025-07-23 (+1d) | 2025-07-28 → 2025-07-29 (+1d) |  | 249.62d → 249.17d |
| PG-10195 | Reinforcement | 2025-07-28 → 2025-07-29 (+1d) | 2025-08-02 → 2025-08-04 (+2d) |  | 249.62d → 249.17d |
| PG-10196 | Concrete | 2025-08-02 → 2025-08-04 (+2d) | 2025-08-05 → 2025-08-06 (+1d) |  | 249.62d → 249.17d |
| 1.3.1.1.3 | **MEP Internal works** |  | 2026-01-16 → 2026-01-17 (+1d) |  |  |
| 1.3.1.1.3.11 | **Floor 8** |  | 2025-05-16 → 2025-05-17 (+1d) |  |  |
| 1.3.1.1.3.11.1 | **PHE Works** |  | 2025-05-16 → 2025-05-17 (+1d) |  |  |
| PG-10279 | Final Fix - CP & Sanitary fixtures |  | 2025-05-16 → 2025-05-17 (+1d) | 35% → 96% | 394d → 393.58d |
| 1.3.1.1.3.11.2 | **Fire Fighting Works** |  | 2025-05-16 → 2025-05-17 (+1d) |  |  |

| ID | Task | Start | Finish | Complete | Total float |
| --- | --- | --- | --- | --- | --- |
| PG-10282 | Final Fix - Smoke & heat detectors, FHC , FAS Etc. |  | 2025-05-16 → 2025-05-17 (+1d) | 31% → 92% | 393.67d → 393.58d |
| 1.3.1.1.3.11.3 | **Electrical Works** |  | 2025-05-16 → 2025-05-17 (+1d) |  |  |
| PG-10285 | Final Fix - Electrical Fixtures | 2025-05-09 → 2025-05-10 A (+1d) | 2025-05-16 → 2025-05-17 (+1d) | 0% → 87% | 394.06d → 393.58d |
| PG-10299 | 2nd Fix - Sprinkler fixing & Pressure testing | 2025-05-13 → 2025-05-14 A (+1d) | 2025-05-24 → 2025-05-26 (+2d) | 0% → 17% | 377.08d → 377.21d |
| PG-10302 | 2nd Fix - Wiring works |  |  | 13% → 53% | 381.81d → 382.31d |
| 1.3.1.1.3.14 | **Floor 11** |  | 2025-06-27 → 2025-06-28 (+1d) |  |  |
| 1.3.1.1.3.14.1 | **PHE Works** |  | 2025-06-27 → 2025-06-28 (+1d) |  |  |
| PG-10306 | Final Fix - CP & Sanitary fixtures | 2025-06-17 → 2025-06-18 (+1d) | 2025-06-27 → 2025-06-28 (+1d) |  | 357.65d → 357.17d |
| 1.3.1.1.3.14.2 | **Fire Fighting Works** |  | 2025-06-27 → 2025-06-28 (+1d) |  |  |
| PG-10308 | 2nd Fix - Sprinkler fixing & Pressure testing | 2025-05-27 → 2025-05-28 (+1d) | 2025-06-07 → 2025-06-09 (+2d) |  | 365.65d → 365.17d |
| PG-10309 | Final Fix - Smoke & heat detectors, FHC , FAS Etc. | 2025-06-17 → 2025-06-18 (+1d) | 2025-06-27 → 2025-06-28 (+1d) |  | 357.65d → 357.17d |
| 1.3.1.1.3.14.3 | **Electrical Works** |  | 2025-06-27 → 2025-06-28 (+1d) |  |  |
| PG-10311 | 2nd Fix - Wiring works | 2025-05-20 → 2025-05-21 (+1d) | 2025-06-06 → 2025-06-07 (+1d) |  | 370.48d → 370d |
| PG-10312 | Final Fix - Electrical Fixtures | 2025-06-21 → 2025-06-23 (+2d) | 2025-06-27 → 2025-06-28 (+1d) |  | 357.65d → 357.17d |
| PG-10314 | 2nd Fix - diverter fixing & Pressure testing |  | 2025-05-13 → 2025-05-14 A (+1d) | 61% → 100% | 348.49d → none |
| PG-10316 | 1st Fix - Piping and Shaft hydrant works |  | 2025-05-15 A | 60% → 100% | 396.08d → none |
| PG-10317 | 2nd Fix - Sprinkler fixing & Pressure testing | 2025-06-07 → 2025-06-09 (+2d) | 2025-06-19 → 2025-06-20 (+1d) |  | 356.15d → 356.32d |
| PG-10320 | 2nd Fix - Wiring works | 2025-05-31 → 2025-06-02 (+2d) | 2025-06-18 → 2025-06-19 (+1d) |  | 361.15d → 361.32d |
| PG-10322 | 1st Fix - Piping works |  |  | 38% → 88% | 337.48d → 337.98d |
| PG-10323 | 2nd Fix - diverter fixing & Pressure testing | 2025-05-13 → 2025-05-14 A (+1d) |  | 0% → 29% | 337.48d → 337.98d |
| 1.3.1.1.3.16.2 | **Fire Fighting Works** | 2025-05-13 → 2025-05-15 (+2d) |  |  |  |
| PG-10325 | 1st Fix - Piping and Shaft hydrant works | 2025-05-13 → 2025-05-15 A (+2d) | 2025-05-27 → 2025-05-28 (+1d) | 0% → 11% | 381.65d → 381.51d |
| PG-10328 | 1st Fix - GI wire pulling |  | 2025-05-13 → 2025-05-14 A (+1d) | 51% → 100% | 381.65d → none |
| 1.3.1.1.3.17 | **Floor 14** | 2025-05-17 → 2025-05-19 (+2d) | 2025-08-06 → 2025-08-07 (+1d) |  |  |
| 1.3.1.1.3.17.1 | **PHE Works** | 2025-05-17 → 2025-05-19 (+2d) | 2025-08-06 → 2025-08-07 (+1d) |  |  |
| PG-10331 | 1st Fix - Piping works | 2025-05-17 → 2025-05-19 (+2d) | 2025-05-31 → 2025-06-02 (+2d) |  | 325.79d → 325.33d |
| PG-10332 | 2nd Fix - diverter fixing & Pressure testing | 2025-05-27 → 2025-05-28 (+1d) | 2025-06-07 → 2025-06-09 (+2d) |  | 325.79d → 325.33d |
| PG-10333 | Final Fix - CP & Sanitary fixtures | 2025-07-26 → 2025-07-28 (+2d) | 2025-08-06 → 2025-08-07 (+1d) |  | 325.79d → 325.33d |
| 1.3.1.1.3.17.2 | **Fire Fighting Works** | 2025-05-27 → 2025-05-28 (+1d) | 2025-08-06 → 2025-08-07 (+1d) |  |  |
| PG-10334 | 1st Fix - Piping and Shaft hydrant works | 2025-05-27 → 2025-05-28 (+1d) | 2025-06-10 → 2025-06-11 (+1d) |  | 372.45d → 372d |
| PG-10335 | 2nd Fix - Sprinkler fixing & Pressure testing | 2025-07-03 → 2025-07-04 (+1d) | 2025-07-15 → 2025-07-16 (+1d) |  | 335.79d → 335.33d |
| PG-10336 | Final Fix - Smoke & heat detectors, FHC , FAS Etc. | 2025-07-26 → 2025-07-28 (+2d) | 2025-08-06 → 2025-08-07 (+1d) |  | 325.79d → 325.33d |
| 1.3.1.1.3.17.3 | **Electrical Works** | 2025-05-17 → 2025-05-19 (+2d) | 2025-08-06 → 2025-08-07 (+1d) |  |  |
| PG-10337 | 1st Fix - GI wire pulling | 2025-05-17 → 2025-05-19 (+2d) | 2025-05-27 → 2025-05-28 (+1d) |  | 372.45d → 372d |
| PG-10338 | 2nd Fix - Wiring works | 2025-06-26 → 2025-06-27 (+1d) | 2025-07-14 → 2025-07-15 (+1d) |  | 340.79d → 340.33d |
| PG-10339 | Final Fix - Electrical Fixtures | 2025-07-31 → 2025-08-01 (+1d) | 2025-08-06 → 2025-08-07 (+1d) |  | 325.79d → 325.33d |
| 1.3.1.1.3.18 | **Floor 15** | 2025-05-30 → 2025-05-31 (+1d) | 2025-08-19 → 2025-08-20 (+1d) |  |  |
| 1.3.1.1.3.18.1 | **PHE Works** | 2025-05-30 → 2025-05-31 (+1d) | 2025-08-19 → 2025-08-20 (+1d) |  |  |
| PG-10340 | 1st Fix - Piping works | 2025-05-30 → 2025-05-31 (+1d) | 2025-06-13 → 2025-06-14 (+1d) |  | 133.29d → 132.83d |
| PG-10341 | 2nd Fix - diverter fixing & Pressure testing | 2025-06-09 → 2025-06-10 (+1d) | 2025-06-20 → 2025-06-21 (+1d) |  | 133.29d → 132.83d |
| PG-10342 | Final Fix - CP & Sanitary fixtures | 2025-08-07 → 2025-08-08 (+1d) | 2025-08-19 → 2025-08-20 (+1d) |  | 315.79d → 315.33d |
| 1.3.1.1.3.18.2 | **Fire Fighting Works** | 2025-06-09 → 2025-06-10 (+1d) | 2025-08-19 → 2025-08-20 (+1d) |  |  |
| PG-10343 | 1st Fix - Piping and Shaft hydrant works | 2025-06-09 → 2025-06-10 (+1d) | 2025-06-23 → 2025-06-24 (+1d) |  | 362.45d → 362d |
| PG-10344 | 2nd Fix - Sprinkler fixing & Pressure testing | 2025-07-16 → 2025-07-17 (+1d) | 2025-07-28 → 2025-07-29 (+1d) |  | 324.79d → 324.33d |
| PG-10345 | Final Fix - Smoke & heat detectors, FHC , FAS Etc. | 2025-08-07 → 2025-08-08 (+1d) | 2025-08-19 → 2025-08-20 (+1d) |  | 315.79d → 315.33d |
| 1.3.1.1.3.18.3 | **Electrical Works** | 2025-05-30 → 2025-05-31 (+1d) | 2025-08-19 → 2025-08-20 (+1d) |  |  |
| PG-10346 | 1st Fix - GI wire pulling | 2025-05-30 → 2025-05-31 (+1d) | 2025-06-09 → 2025-06-10 (+1d) |  | 362.45d → 362d |
| PG-10347 | 2nd Fix - Wiring works | 2025-07-09 → 2025-07-10 (+1d) | 2025-07-26 → 2025-07-28 (+2d) |  | 329.79d → 329.33d |
| PG-10348 | Final Fix - Electrical Fixtures | 2025-08-12 → 2025-08-13 (+1d) | 2025-08-19 → 2025-08-20 (+1d) |  | 315.79d → 315.33d |
| 1.3.1.1.3.19 | **Floor 16** | 2025-06-12 → 2025-06-13 (+1d) | 2025-09-01 → 2025-09-02 (+1d) |  |  |
| 1.3.1.1.3.19.1 | **PHE Works** | 2025-06-12 → 2025-06-13 (+1d) | 2025-09-01 → 2025-09-02 (+1d) |  |  |
| PG-10349 | 1st Fix - Piping works | 2025-06-12 → 2025-06-13 (+1d) | 2025-06-26 → 2025-06-27 (+1d) |  | 304.79d → 304.33d |
| PG-10350 | 2nd Fix - diverter fixing & Pressure testing | 2025-06-21 → 2025-06-23 (+2d) | 2025-07-03 → 2025-07-04 (+1d) |  | 304.79d → 304.33d |
| PG-10351 | Final Fix - CP & Sanitary fixtures | 2025-08-21 → 2025-08-22 (+1d) | 2025-09-01 → 2025-09-02 (+1d) |  | 304.79d → 304.33d |
| 1.3.1.1.3.19.2 | **Fire Fighting Works** | 2025-06-21 → 2025-06-23 (+2d) | 2025-09-01 → 2025-09-02 (+1d) |  |  |
| PG-10352 | 1st Fix - Piping and Shaft hydrant works | 2025-06-21 → 2025-06-23 (+2d) | 2025-07-05 → 2025-07-07 (+2d) |  | 351.45d → 351d |
| PG-10353 | 2nd Fix - Sprinkler fixing & Pressure testing | 2025-07-29 → 2025-07-30 (+1d) | 2025-08-09 → 2025-08-11 (+2d) |  | 313.79d → 313.33d |
| PG-10354 | Final Fix - Smoke & heat detectors, FHC , FAS Etc. | 2025-08-21 → 2025-08-22 (+1d) | 2025-09-01 → 2025-09-02 (+1d) |  | 304.79d → 304.33d |
| 1.3.1.1.3.19.3 | **Electrical Works** | 2025-06-12 → 2025-06-13 (+1d) | 2025-09-01 → 2025-09-02 (+1d) |  |  |
| PG-10355 | 1st Fix - GI wire pulling | 2025-06-12 → 2025-06-13 (+1d) | 2025-06-21 → 2025-06-23 (+2d) |  | 351.45d → 351d |
| PG-10356 | 2nd Fix - Wiring works | 2025-07-22 → 2025-07-23 (+1d) | 2025-08-08 → 2025-08-09 (+1d) |  | 318.79d → 318.33d |
| PG-10357 | Final Fix - Electrical Fixtures | 2025-08-26 → 2025-08-27 (+1d) | 2025-09-01 → 2025-09-02 (+1d) |  | 304.79d → 304.33d |
| 1.3.1.1.3.20 | **Floor 17** | 2025-06-25 → 2025-06-26 (+1d) | 2025-09-13 → 2025-09-15 (+2d) |  |  |
| 1.3.1.1.3.20.1 | **PHE Works** | 2025-06-25 → 2025-06-26 (+1d) | 2025-09-13 → 2025-09-15 (+2d) |  |  |
| PG-10358 | 1st Fix - Piping works | 2025-06-25 → 2025-06-26 (+1d) | 2025-07-09 → 2025-07-10 (+1d) |  | 293.79d → 293.33d |
| PG-10359 | 2nd Fix - diverter fixing & Pressure testing | 2025-07-04 → 2025-07-05 (+1d) | 2025-07-16 → 2025-07-17 (+1d) |  | 293.79d → 293.33d |
| PG-10360 | Final Fix - CP & Sanitary fixtures | 2025-09-03 → 2025-09-04 (+1d) | 2025-09-13 → 2025-09-15 (+2d) |  | 293.79d → 293.33d |
| 1.3.1.1.3.20.2 | **Fire Fighting Works** | 2025-07-04 → 2025-07-05 (+1d) | 2025-09-13 → 2025-09-15 (+2d) |  |  |
| PG-10361 | 1st Fix - Piping and Shaft hydrant works | 2025-07-04 → 2025-07-05 (+1d) | 2025-07-18 → 2025-07-19 (+1d) |  | 340.45d → 340d |
| PG-10362 | 2nd Fix - Sprinkler fixing & Pressure testing | 2025-08-11 → 2025-08-12 (+1d) | 2025-08-23 → 2025-08-25 (+2d) |  | 302.79d → 302.33d |

| ID | Task | Start | Finish | Total float |
| --- | --- | --- | --- | --- |
| PG-10363 | Final Fix - Smoke & heat detectors, FHC , FAS Etc. | 2025-09-03 → 2025-09-04 (+1d) | 2025-09-13 → 2025-09-15 (+2d) | 293.79d → 293.33d |
| 1.3.1.1.3.20.3 | **Electrical Works** | 2025-06-25 → 2025-06-26 (+1d) | 2025-09-13 → 2025-09-15 (+2d) |  |
| PG-10364 | 1st Fix - GI wire pulling | 2025-06-25 → 2025-06-26 (+1d) | 2025-07-04 → 2025-07-05 (+1d) | 340.45d → 340d |
| PG-10365 | 2nd Fix - Wiring works | 2025-08-04 → 2025-08-05 (+1d) | 2025-08-22 → 2025-08-23 (+1d) | 307.79d → 307.33d |
| PG-10366 | Final Fix - Electrical Fixtures | 2025-09-08 → 2025-09-09 (+1d) | 2025-09-13 → 2025-09-15 (+2d) | 293.79d → 293.33d |
| 1.3.1.1.3.21 | **Floor 18** | 2025-07-08 → 2025-07-09 (+1d) | 2025-09-26 → 2025-09-27 (+1d) |  |
| 1.3.1.1.3.21.1 | **PHE Works** | 2025-07-08 → 2025-07-09 (+1d) | 2025-09-26 → 2025-09-27 (+1d) |  |
| PG-10367 | 1st Fix - Piping works | 2025-07-08 → 2025-07-09 (+1d) | 2025-07-22 → 2025-07-23 (+1d) | 46.95d → 46.5d |
| PG-10368 | 2nd Fix - diverter fixing & Pressure testing | 2025-07-17 → 2025-07-18 (+1d) | 2025-07-29 → 2025-07-30 (+1d) | 282.79d → 282.33d |
| PG-10369 | Final Fix - CP & Sanitary fixtures | 2025-09-16 → 2025-09-17 (+1d) | 2025-09-26 → 2025-09-27 (+1d) | 282.79d → 282.33d |
| 1.3.1.1.3.21.2 | **Fire Fighting Works** | 2025-07-17 → 2025-07-18 (+1d) | 2025-09-26 → 2025-09-27 (+1d) |  |
| PG-10370 | 1st Fix - Piping and Shaft hydrant works | 2025-07-17 → 2025-07-18 (+1d) | 2025-07-31 → 2025-08-01 (+1d) | 329.45d → 329d |
| PG-10371 | 2nd Fix - Sprinkler fixing & Pressure testing | 2025-08-25 → 2025-08-26 (+1d) | 2025-09-05 → 2025-09-06 (+1d) | 291.79d → 291.33d |
| PG-10372 | Final Fix - Smoke & heat detectors, FHC , FAS Etc. | 2025-09-16 → 2025-09-17 (+1d) | 2025-09-26 → 2025-09-27 (+1d) | 282.79d → 282.33d |
| 1.3.1.1.3.21.3 | **Electrical Works** | 2025-07-08 → 2025-07-09 (+1d) | 2025-09-26 → 2025-09-27 (+1d) |  |
| PG-10373 | 1st Fix - GI wire pulling | 2025-07-08 → 2025-07-09 (+1d) | 2025-07-17 → 2025-07-18 (+1d) | 329.45d → 329d |
| PG-10374 | 2nd Fix - Wiring works | 2025-08-18 → 2025-08-19 (+1d) | 2025-09-04 → 2025-09-05 (+1d) | 296.79d → 296.33d |
| PG-10375 | Final Fix - Electrical Fixtures | 2025-09-20 → 2025-09-22 (+2d) | 2025-09-26 → 2025-09-27 (+1d) | 282.79d → 282.33d |
| 1.3.1.1.3.22 | **Floor 19** | 2025-07-30 → 2025-07-31 (+1d) | 2025-10-22 → 2025-10-23 (+1d) |  |
| 1.3.1.1.3.22.1 | **PHE Works** | 2025-07-30 → 2025-07-31 (+1d) | 2025-10-22 → 2025-10-23 (+1d) |  |
| PG-10376 | 1st Fix - Piping works | 2025-07-30 → 2025-07-31 (+1d) | 2025-08-13 → 2025-08-14 (+1d) | 165.95d → 165.5d |
| PG-10377 | 2nd Fix - diverter fixing & Pressure testing | 2025-08-08 → 2025-08-09 (+1d) | 2025-08-21 → 2025-08-22 (+1d) | 165.95d → 165.5d |
| PG-10378 | Final Fix - CP & Sanitary fixtures | 2025-10-11 → 2025-10-13 (+2d) | 2025-10-22 → 2025-10-23 (+1d) | 261.79d → 261.33d |
| 1.3.1.1.3.22.2 | **Fire Fighting Works** | 2025-08-08 → 2025-08-09 (+1d) | 2025-10-22 → 2025-10-23 (+1d) |  |
| PG-10379 | 1st Fix - Piping and Shaft hydrant works | 2025-08-08 → 2025-08-09 (+1d) | 2025-08-23 → 2025-08-25 (+2d) | 177.95d → 177.5d |
| PG-10380 | 2nd Fix - Sprinkler fixing & Pressure testing | 2025-09-16 → 2025-09-17 (+1d) | 2025-09-27 → 2025-09-29 (+2d) | 272.79d → 272.33d |
| PG-10381 | Final Fix - Smoke & heat detectors, FHC , FAS Etc. | 2025-10-11 → 2025-10-13 (+2d) | 2025-10-22 → 2025-10-23 (+1d) | 261.79d → 261.33d |
| 1.3.1.1.3.22.3 | **Electrical Works** | 2025-07-30 → 2025-07-31 (+1d) | 2025-10-22 → 2025-10-23 (+1d) |  |
| PG-10382 | 1st Fix - GI wire pulling | 2025-07-30 → 2025-07-31 (+1d) | 2025-08-08 → 2025-08-09 (+1d) | 46.95d → 46.5d |
| PG-10383 | 2nd Fix - Wiring works | 2025-09-09 → 2025-09-10 (+1d) | 2025-09-26 → 2025-09-27 (+1d) | 277.79d → 277.33d |
| PG-10384 | Final Fix - Electrical Fixtures | 2025-10-16 → 2025-10-17 (+1d) | 2025-10-22 → 2025-10-23 (+1d) | 261.79d → 261.33d |
| 1.3.1.1.3.23 | **Floor 20** | 2025-08-22 → 2025-08-23 (+1d) | 2025-11-13 → 2025-11-14 (+1d) |  |
| 1.3.1.1.3.23.1 | **PHE Works** | 2025-08-22 → 2025-08-23 (+1d) | 2025-11-13 → 2025-11-14 (+1d) |  |
| PG-10385 | 1st Fix - Piping works | 2025-08-22 → 2025-08-23 (+1d) | 2025-09-05 → 2025-09-06 (+1d) | 187.62d → 187.17d |
| PG-10386 | 2nd Fix - diverter fixing & Pressure testing | 2025-09-01 → 2025-09-02 (+1d) | 2025-09-12 → 2025-09-13 (+1d) | 242.62d → 242.17d |
| PG-10387 | Final Fix - CP & Sanitary fixtures | 2025-10-31 → 2025-11-03 (+3d) | 2025-11-13 → 2025-11-14 (+1d) | 242.62d → 242.17d |
| 1.3.1.1.3.23.2 | **Fire Fighting Works** | 2025-09-01 → 2025-09-02 (+1d) | 2025-11-13 → 2025-11-14 (+1d) |  |
| PG-10388 | 1st Fix - Piping and Shaft hydrant works | 2025-09-01 → 2025-09-02 (+1d) | 2025-09-15 → 2025-09-16 (+1d) | 289.29d → 288.83d |
| PG-10389 | 2nd Fix - Sprinkler fixing & Pressure testing | 2025-10-09 → 2025-10-10 (+1d) | 2025-10-21 → 2025-10-22 (+1d) | 252.29d → 251.83d |
| PG-10390 | Final Fix - Smoke & heat detectors, FHC , FAS Etc. | 2025-10-31 → 2025-11-03 (+3d) | 2025-11-13 → 2025-11-14 (+1d) | 242.62d → 242.17d |
| 1.3.1.1.3.23.3 | **Electrical Works** | 2025-08-22 → 2025-08-23 (+1d) | 2025-11-13 → 2025-11-14 (+1d) |  |
| PG-10391 | 1st Fix - GI wire pulling | 2025-08-22 → 2025-08-23 (+1d) | 2025-09-01 → 2025-09-02 (+1d) | 289.29d → 288.83d |
| PG-10392 | 2nd Fix - Wiring works | 2025-10-01 → 2025-10-03 (+2d) | 2025-10-20 → 2025-10-21 (+1d) | 257.62d → 257.17d |
| PG-10393 | Final Fix - Electrical Fixtures | 2025-11-07 → 2025-11-08 (+1d) | 2025-11-13 → 2025-11-14 (+1d) | 242.62d → 242.17d |
| 1.3.1.1.3.24 | **Floor 21** | 2025-09-13 → 2025-09-15 (+2d) | 2025-12-05 → 2025-12-06 (+1d) |  |
| 1.3.1.1.3.24.1 | **PHE Works** | 2025-09-13 → 2025-09-15 (+2d) | 2025-12-05 → 2025-12-06 (+1d) |  |
| PG-10394 | 1st Fix - Piping works | 2025-09-13 → 2025-09-15 (+2d) | 2025-09-27 → 2025-09-29 (+2d) | 187.62d → 187.17d |
| PG-10395 | 2nd Fix - diverter fixing & Pressure testing | 2025-09-23 → 2025-09-24 (+1d) | 2025-10-06 → 2025-10-07 (+1d) | 223.62d → 223.17d |
| PG-10396 | Final Fix - CP & Sanitary fixtures | 2025-11-25 → 2025-11-26 (+1d) | 2025-12-05 → 2025-12-06 (+1d) | 223.62d → 223.17d |
| 1.3.1.1.3.24.2 | **Fire Fighting Works** | 2025-09-23 → 2025-09-24 (+1d) | 2025-12-05 → 2025-12-06 (+1d) |  |
| PG-10397 | 1st Fix - Piping and Shaft hydrant works | 2025-09-23 → 2025-09-24 (+1d) | 2025-10-08 → 2025-10-09 (+1d) | 270.29d → 269.83d |
| PG-10398 | 2nd Fix - Sprinkler fixing & Pressure testing | 2025-10-31 → 2025-11-03 (+3d) | 2025-11-13 → 2025-11-14 (+1d) | 233.62d → 233.17d |
| PG-10399 | Final Fix - Smoke & heat detectors, FHC , FAS Etc. | 2025-11-25 → 2025-11-26 (+1d) | 2025-12-05 → 2025-12-06 (+1d) | 223.62d → 223.17d |
| 1.3.1.1.3.24.3 | **Electrical Works** | 2025-09-13 → 2025-09-15 (+2d) | 2025-12-05 → 2025-12-06 (+1d) |  |
| PG-10400 | 1st Fix - GI wire pulling | 2025-09-13 → 2025-09-15 (+2d) | 2025-09-23 → 2025-09-24 (+1d) | 270.29d → 269.83d |
| PG-10401 | 2nd Fix - Wiring works | 2025-10-24 → 2025-10-25 (+1d) | 2025-11-12 → 2025-11-13 (+1d) | 238.62d → 238.17d |
| PG-10402 | Final Fix - Electrical Fixtures | 2025-11-29 → 2025-12-01 (+2d) | 2025-12-05 → 2025-12-06 (+1d) | 223.62d → 223.17d |
| 1.3.1.1.3.25 | **Floor 22** | 2025-10-07 → 2025-10-08 (+1d) | 2025-12-27 → 2025-12-29 (+2d) |  |
| 1.3.1.1.3.25.1 | **PHE Works** | 2025-10-07 → 2025-10-08 (+1d) | 2025-12-27 → 2025-12-29 (+2d) |  |
| PG-10403 | 1st Fix - Piping works | 2025-10-07 → 2025-10-08 (+1d) | 2025-10-21 → 2025-10-22 (+1d) | 187.62d → 187.17d |
| PG-10404 | 2nd Fix - diverter fixing & Pressure testing | 2025-10-16 → 2025-10-17 (+1d) | 2025-10-28 → 2025-10-29 (+1d) | 203.62d → 203.17d |
| PG-10405 | Final Fix - CP & Sanitary fixtures | 2025-12-17 → 2025-12-18 (+1d) | 2025-12-27 → 2025-12-29 (+2d) | 203.62d → 203.17d |
| 1.3.1.1.3.25.2 | **Fire Fighting Works** | 2025-10-16 → 2025-10-17 (+1d) | 2025-12-27 → 2025-12-29 (+2d) |  |
| PG-10406 | 1st Fix - Piping and Shaft hydrant works | 2025-10-16 → 2025-10-17 (+1d) | 2025-10-30 → 2025-10-31 (+1d) | 251.29d → 250.83d |
| PG-10407 | 2nd Fix - Sprinkler fixing & Pressure testing | 2025-11-24 → 2025-11-25 (+1d) | 2025-12-05 → 2025-12-06 (+1d) | 213.62d → 213.17d |
| PG-10408 | Final Fix - Smoke & heat detectors, FHC , FAS Etc. | 2025-12-17 → 2025-12-18 (+1d) | 2025-12-27 → 2025-12-29 (+2d) | 203.62d → 203.17d |
| 1.3.1.1.3.25.3 | **Electrical Works** | 2025-10-07 → 2025-10-08 (+1d) | 2025-12-27 → 2025-12-29 (+2d) |  |
| PG-10409 | 1st Fix - GI wire pulling | 2025-10-07 → 2025-10-08 (+1d) | 2025-10-16 → 2025-10-17 (+1d) | 251.29d → 250.83d |
| PG-10410 | 2nd Fix - Wiring works | 2025-11-17 → 2025-11-18 (+1d) | 2025-12-04 → 2025-12-05 (+1d) | 218.62d → 218.17d |
| PG-10411 | Final Fix - Electrical Fixtures | 2025-12-22 → 2025-12-23 (+1d) | 2025-12-27 → 2025-12-29 (+2d) | 203.62d → 203.17d |

| ID | Task | Start | Finish | Complete | Total float |
| --- | --- | --- | --- | --- | --- |
| 1.3.1.1.3.26 | **Floor 23** | 2025-10-29 → 2025-10-30 (+1d) | 2026-01-16 → 2026-01-17 (+1d) |  |  |
| 1.3.1.1.3.26.1 | **PHE Works** | 2025-10-29 → 2025-10-30 (+1d) | 2026-01-16 → 2026-01-17 (+1d) |  |  |
| PG-10412 | 1st Fix - Piping works | 2025-10-29 → 2025-10-30 (+1d) | 2025-11-13 → 2025-11-14 (+1d) |  | 187.62d → 187.17d |
| PG-10413 | 2nd Fix - diverter fixing & Pressure testing | 2025-11-08 → 2025-11-10 (+2d) | 2025-11-20 → 2025-11-21 (+1d) |  | 187.62d → 187.17d |
| PG-10414 | Final Fix - CP & Sanitary fixtures | 2026-01-05 → 2026-01-06 (+1d) | 2026-01-16 → 2026-01-17 (+1d) |  | 187.62d → 187.17d |
| 1.3.1.1.3.26.2 | **Fire Fighting Works** | 2025-11-08 → 2025-11-10 (+2d) | 2026-01-16 → 2026-01-17 (+1d) |  |  |
| PG-10415 | 1st Fix - Piping and Shaft hydrant works | 2025-11-08 → 2025-11-10 (+2d) | 2025-11-22 → 2025-11-24 (+2d) |  | 232.45d → 232d |
| PG-10416 | 2nd Fix - Sprinkler fixing & Pressure testing | 2025-12-16 → 2025-12-17 (+1d) | 2025-12-27 → 2025-12-29 (+2d) |  | 195.12d → 194.67d |
| PG-10417 | Final Fix - Smoke & heat detectors, FHC , FAS Etc. | 2026-01-05 → 2026-01-06 (+1d) | 2026-01-16 → 2026-01-17 (+1d) |  | 187.62d → 187.17d |
| 1.3.1.1.3.26.3 | **Electrical Works** | 2025-10-29 → 2025-10-30 (+1d) | 2026-01-16 → 2026-01-17 (+1d) |  |  |
| PG-10418 | 1st Fix - GI wire pulling | 2025-10-29 → 2025-10-30 (+1d) | 2025-11-08 → 2025-11-10 (+2d) |  | 232.45d → 232d |
| PG-10419 | 2nd Fix - Wiring works | 2025-12-09 → 2025-12-10 (+1d) | 2025-12-26 → 2025-12-27 (+1d) |  | 200.12d → 199.67d |
| PG-10420 | Final Fix - Electrical Fixtures | 2026-01-09 → 2026-01-10 (+1d) | 2026-01-16 → 2026-01-17 (+1d) |  | 187.62d → 187.17d |
| 1.3.1.1.4 | **Civil Finishes - Units** |  | 2026-01-12 → 2026-01-13 (+1d) |  |  |
| 1.3.1.1.4.11 | **Floor 8** |  | 2025-05-09 → 2025-05-10 (+1d) |  |  |
| 1.3.1.1.4.11.2 | **Wall Finishing works - Civil** |  | 2025-05-09 → 2025-05-10 (+1d) |  |  |
| PG-10553 | Final Coat Painting |  | 2025-05-09 → 2025-05-10 A (+1d) | 98% → 100% | 394.06d → none |
| PG-10562 | Final Coat Painting |  |  | 32% → 64% | 417.56d → 418.06d |
| PG-10567 | Final Coat Painting |  |  | 27% → 60% | 382.03d → 382.53d |
| PG-10574 | Painting Works - Putty, Primer and 1st | 2025-05-10 → 2025-05-12 A (+2d) |  | 0% → 80% | 405.92d → 407.05d |
| PG-10578 | UPVC Windows & Sliding doors |  | 2025-05-10 → 2025-05-12 A (+2d) | 78% → 100% | 369.25d → none |
| PG-10580 | Painting Works - Putty, Primer and 1st | 2025-05-10 → 2025-05-12 A (+2d) |  | 0% → 71% | 369.25d → 369.82d |
| PG-10585 | Wooden doors | 2025-05-12 → 2025-05-13 A (+1d) |  | 0% → 67% | 369.25d → 369.82d |
| 1.3.1.1.4.14 | **Floor 11** |  | 2025-06-20 → 2025-06-21 (+1d) |  |  |
| 1.3.1.1.4.14.1 | **Ceiling Finishing works - Civil** |  | 2025-06-20 → 2025-06-21 (+1d) |  |  |
| PG-10589 | Toilet False ceiling | 2025-05-14 → 2025-05-15 A (+1d) | 2025-05-19 → 2025-05-20 (+1d) | 0% → 47% | 382.65d → 382.17d |
| PG-10588 | Painting Works - Putty, Primer and 1st | 2025-05-24 → 2025-05-26 (+2d) | 2025-05-31 → 2025-06-02 (+2d) |  | 394.31d → 393.83d |
| PG-10590 | Final Coat Painting | 2025-05-31 → 2025-06-02 (+2d) | 2025-06-20 → 2025-06-21 (+1d) |  | 394.31d → 393.83d |
| 1.3.1.1.4.14.2 | **Wall Finishing works - Civil** |  | 2025-06-20 → 2025-06-21 (+1d) |  |  |
| PG-10592 | UPVC Windows & Sliding doors | 2025-05-19 → 2025-05-20 (+1d) | 2025-05-24 → 2025-05-26 (+2d) |  | 357.65d → 357.17d |
| PG-10594 | Painting Works - Putty, Primer and 1st | 2025-05-24 → 2025-05-26 (+2d) | 2025-05-31 → 2025-06-02 (+2d) |  | 357.65d → 357.17d |
| PG-10595 | Final Coat Painting | 2025-05-31 → 2025-06-02 (+2d) | 2025-06-20 → 2025-06-21 (+1d) |  | 357.65d → 357.17d |
| 1.3.1.1.4.14.3 | **Floor Finishing Works - Civil** |  | 2025-05-31 → 2025-06-02 (+2d) |  |  |
| PG-10597 | Floor Tiling - Wet area |  | 2025-05-13 → 2025-05-14 A (+1d) | 35% → 100% | 357.65d → none |
| PG-10598 | Floor Tiling - Dry area | 2025-05-13 → 2025-05-14 A (+1d) | 2025-05-19 → 2025-05-20 (+1d) | 0% → 56% | 357.65d → 357.17d |
| PG-10599 | Wooden doors | 2025-05-26 → 2025-05-27 (+1d) | 2025-05-31 → 2025-06-02 (+2d) |  | 357.65d → 357.17d |
| PG-10603 | Toilet False ceiling | 2025-05-26 → 2025-05-27 (+1d) | 2025-05-30 → 2025-05-31 (+1d) |  | 373.15d → 373.32d |
| PG-10602 | Painting Works - Putty, Primer and 1st | 2025-06-05 → 2025-06-06 (+1d) | 2025-06-12 → 2025-06-13 (+1d) |  | 383.32d → 383.49d |
| PG-10604 | Final Coat Painting | 2025-06-12 → 2025-06-13 (+1d) |  |  | 383.32d → 383.49d |
| PG-10607 | Dadoing - Wet area | 2025-05-13 → 2025-05-14 A (+1d) | 2025-05-19 → 2025-05-20 (+1d) | 0% → 35% | 348.49d → 348.66d |
| PG-10606 | UPVC Windows & Sliding doors | 2025-05-30 → 2025-05-31 (+1d) | 2025-06-05 → 2025-06-06 (+1d) |  | 348.49d → 348.66d |
| PG-10608 | Painting Works - Putty, Primer and 1st | 2025-06-05 → 2025-06-06 (+1d) | 2025-06-12 → 2025-06-13 (+1d) |  | 348.49d → 348.66d |
| PG-10609 | Final Coat Painting | 2025-06-12 → 2025-06-13 (+1d) |  |  | 348.49d → 348.66d |
| 1.3.1.1.4.15.3 | **Floor Finishing Works - Civil** |  | 2025-06-12 → 2025-06-13 (+1d) |  |  |
| PG-10611 | Floor Tiling - Wet area | 2025-05-19 → 2025-05-20 (+1d) | 2025-05-24 → 2025-05-26 (+2d) |  | 348.49d → 348.66d |
| PG-10612 | Floor Tiling - Dry area | 2025-05-24 → 2025-05-26 (+2d) | 2025-05-30 → 2025-05-31 (+1d) |  | 348.49d → 348.66d |
| PG-10613 | Wooden doors | 2025-06-06 → 2025-06-07 (+1d) | 2025-06-12 → 2025-06-13 (+1d) |  | 348.49d → 348.66d |
| 1.3.1.1.4.16.1 | **Ceiling Finishing works - Civil** | 2025-05-13 → 2025-05-14 (+1d) |  |  |  |
| PG-10614 | Gypsum Plastering | 2025-05-13 → 2025-05-14 A (+1d) | 2025-05-20 → 2025-05-21 (+1d) | 0% → 27% | 381.65d → 381.69d |
| PG-10615 | Cornice fixing | 2025-05-29 → 2025-05-30 (+1d) | 2025-06-03 → 2025-06-04 (+1d) |  | 381.65d → 381.51d |
| 1.3.1.1.4.17 | **Floor 14** | 2025-05-17 → 2025-05-19 (+2d) | 2025-07-30 → 2025-07-31 (+1d) |  |  |
| 1.3.1.1.4.17.1 | **Ceiling Finishing works - Civil** | 2025-05-27 → 2025-05-28 (+1d) | 2025-07-30 → 2025-07-31 (+1d) |  |  |
| PG-10628 | Gypsum Plastering | 2025-05-27 → 2025-05-28 (+1d) | 2025-06-03 → 2025-06-04 (+1d) |  | 372.45d → 372d |
| PG-10629 | Cornice fixing | 2025-06-12 → 2025-06-13 (+1d) | 2025-06-17 → 2025-06-18 (+1d) |  | 372.45d → 372d |
| PG-10631 | Toilet False ceiling | 2025-06-20 → 2025-06-21 (+1d) | 2025-06-25 → 2025-06-26 (+1d) |  | 352.79d → 352.33d |
| PG-10630 | Painting Works - Putty, Primer and 1st | 2025-07-01 → 2025-07-02 (+1d) | 2025-07-08 → 2025-07-09 (+1d) |  | 360.45d → 360d |
| PG-10632 | Final Coat Painting | 2025-07-08 → 2025-07-09 (+1d) | 2025-07-30 → 2025-07-31 (+1d) |  | 360.45d → 360d |
| 1.3.1.1.4.17.2 | **Wall Finishing works - Civil** | 2025-05-17 → 2025-05-19 (+2d) | 2025-07-30 → 2025-07-31 (+1d) |  |  |
| PG-10633 | Balcony Railing Fixing works | 2025-05-17 → 2025-05-19 (+2d) | 2025-05-22 → 2025-05-23 (+1d) |  | 354.79d → 354.33d |
| PG-10635 | Dadoing - Wet area | 2025-06-07 → 2025-06-09 (+2d) | 2025-06-13 → 2025-06-14 (+1d) |  | 325.79d → 325.33d |
| PG-10634 | UPVC Windows & Sliding doors | 2025-06-25 → 2025-06-26 (+1d) | 2025-07-01 → 2025-07-02 (+1d) |  | 325.79d → 325.33d |
| PG-10636 | Painting Works - Putty, Primer and 1st | 2025-07-01 → 2025-07-02 (+1d) | 2025-07-08 → 2025-07-09 (+1d) |  | 325.79d → 325.33d |
| PG-10637 | Final Coat Painting | 2025-07-08 → 2025-07-09 (+1d) | 2025-07-30 → 2025-07-31 (+1d) |  | 325.79d → 325.33d |
| 1.3.1.1.4.17.3 | **Floor Finishing Works - Civil** | 2025-05-17 → 2025-05-19 (+2d) | 2025-07-08 → 2025-07-09 (+1d) |  |  |
| PG-10638 | Waterproofing for sunken areas | 2025-05-17 → 2025-05-19 (+2d) | 2025-05-21 → 2025-05-22 (+1d) |  | 345.79d → 345.33d |
| PG-10639 | Floor Tiling - Wet area | 2025-06-13 → 2025-06-14 (+1d) | 2025-06-19 → 2025-06-20 (+1d) |  | 325.79d → 325.33d |
| PG-10640 | Floor Tiling - Dry area | 2025-06-19 → 2025-06-20 (+1d) | 2025-06-25 → 2025-06-26 (+1d) |  | 325.79d → 325.33d |
| PG-10641 | Wooden doors | 2025-07-02 → 2025-07-03 (+1d) | 2025-07-08 → 2025-07-09 (+1d) |  | 325.79d → 325.33d |
| 1.3.1.1.4.18 | **Floor 15** | 2025-05-30 → 2025-05-31 (+1d) | 2025-08-11 → 2025-08-12 (+1d) |  |  |
| 1.3.1.1.4.18.1 | **Ceiling Finishing works - Civil** | 2025-06-09 → 2025-06-10 (+1d) | 2025-08-11 → 2025-08-12 (+1d) |  |  |

| ID | Task | Start | Finish | Total float |
| --- | --- | --- | --- | --- |
| PG-10642 | Gypsum Plastering | 2025-06-09 → 2025-06-10 (+1d) | 2025-06-16 → 2025-06-17 (+1d) | 362.45d → 362d |
| PG-10643 | Cornice fixing | 2025-06-25 → 2025-06-26 (+1d) | 2025-06-30 → 2025-07-01 (+1d) | 362.45d → 362d |
| PG-10645 | Toilet False ceiling | 2025-07-03 → 2025-07-04 (+1d) | 2025-07-08 → 2025-07-09 (+1d) | 341.79d → 341.33d |
| PG-10644 | Painting Works - Putty, Primer and 1st | 2025-07-14 → 2025-07-15 (+1d) | 2025-07-21 → 2025-07-22 (+1d) | 350.45d → 350d |
| PG-10646 | Final Coat Painting | 2025-07-21 → 2025-07-22 (+1d) | 2025-08-11 → 2025-08-12 (+1d) | 350.45d → 350d |
| 1.3.1.1.4.18.2 | **Wall Finishing works - Civil** | 2025-05-30 → 2025-05-31 (+1d) | 2025-08-11 → 2025-08-12 (+1d) |  |
| PG-10647 | Balcony Railing Fixing works | 2025-05-30 → 2025-05-31 (+1d) | 2025-06-04 → 2025-06-05 (+1d) | 162.29d → 161.83d |
| PG-10649 | Dadoing - Wet area | 2025-06-20 → 2025-06-21 (+1d) | 2025-06-26 → 2025-06-27 (+1d) | 133.29d → 132.83d |
| PG-10648 | UPVC Windows & Sliding doors | 2025-07-08 → 2025-07-09 (+1d) | 2025-07-14 → 2025-07-15 (+1d) | 133.29d → 132.83d |
| PG-10650 | Painting Works - Putty, Primer and 1st | 2025-07-14 → 2025-07-15 (+1d) | 2025-07-21 → 2025-07-22 (+1d) | 133.29d → 132.83d |
| PG-10651 | Final Coat Painting | 2025-07-21 → 2025-07-22 (+1d) | 2025-08-11 → 2025-08-12 (+1d) | 315.79d → 315.33d |
| 1.3.1.1.4.18.3 | **Floor Finishing Works - Civil** | 2025-05-30 → 2025-05-31 (+1d) | 2025-07-21 → 2025-07-22 (+1d) |  |
| PG-10652 | Waterproofing for sunken areas | 2025-05-30 → 2025-05-31 (+1d) | 2025-06-03 → 2025-06-04 (+1d) | 153.29d → 152.83d |
| PG-10653 | Floor Tiling - Wet area | 2025-06-26 → 2025-06-27 (+1d) | 2025-07-02 → 2025-07-03 (+1d) | 133.29d → 132.83d |
| PG-10654 | Floor Tiling - Dry area | 2025-07-02 → 2025-07-03 (+1d) | 2025-07-08 → 2025-07-09 (+1d) | 133.29d → 132.83d |
| PG-10655 | Wooden doors | 2025-07-15 → 2025-07-16 (+1d) | 2025-07-21 → 2025-07-22 (+1d) | 133.29d → 132.83d |
| 1.3.1.1.4.19 | **Floor 16** | 2025-06-12 → 2025-06-13 (+1d) | 2025-08-25 → 2025-08-26 (+1d) |  |
| 1.3.1.1.4.19.1 | **Ceiling Finishing works - Civil** | 2025-06-21 → 2025-06-23 (+2d) | 2025-08-25 → 2025-08-26 (+1d) |  |
| PG-10656 | Gypsum Plastering | 2025-06-21 → 2025-06-23 (+2d) | 2025-06-28 → 2025-06-30 (+2d) | 351.45d → 351d |
| PG-10657 | Cornice fixing | 2025-07-08 → 2025-07-09 (+1d) | 2025-07-12 → 2025-07-14 (+2d) | 351.45d → 351d |
| PG-10659 | Toilet False ceiling | 2025-07-16 → 2025-07-17 (+1d) | 2025-07-21 → 2025-07-22 (+1d) | 330.79d → 330.33d |
| PG-10658 | Painting Works - Putty, Primer and 1st | 2025-07-26 → 2025-07-28 (+2d) | 2025-08-02 → 2025-08-04 (+2d) | 339.45d → 339d |
| PG-10660 | Final Coat Painting | 2025-08-02 → 2025-08-04 (+2d) | 2025-08-25 → 2025-08-26 (+1d) | 339.45d → 339d |
| 1.3.1.1.4.19.2 | **Wall Finishing works - Civil** | 2025-06-12 → 2025-06-13 (+1d) | 2025-08-25 → 2025-08-26 (+1d) |  |
| PG-10661 | Balcony Railing Fixing works | 2025-06-12 → 2025-06-13 (+1d) | 2025-06-17 → 2025-06-18 (+1d) | 333.79d → 333.33d |
| PG-10663 | Dadoing - Wet area | 2025-07-03 → 2025-07-04 (+1d) | 2025-07-09 → 2025-07-10 (+1d) | 304.79d → 304.33d |
| PG-10662 | UPVC Windows & Sliding doors | 2025-07-21 → 2025-07-22 (+1d) | 2025-07-26 → 2025-07-28 (+2d) | 304.79d → 304.33d |
| PG-10664 | Painting Works - Putty, Primer and 1st | 2025-07-26 → 2025-07-28 (+2d) | 2025-08-02 → 2025-08-04 (+2d) | 304.79d → 304.33d |
| PG-10665 | Final Coat Painting | 2025-08-02 → 2025-08-04 (+2d) | 2025-08-25 → 2025-08-26 (+1d) | 304.79d → 304.33d |
| 1.3.1.1.4.19.3 | **Floor Finishing Works - Civil** | 2025-06-12 → 2025-06-13 (+1d) | 2025-08-02 → 2025-08-04 (+2d) |  |
| PG-10666 | Waterproofing for sunken areas | 2025-06-12 → 2025-06-13 (+1d) | 2025-06-16 → 2025-06-17 (+1d) | 324.79d → 324.33d |
| PG-10667 | Floor Tiling - Wet area | 2025-07-09 → 2025-07-10 (+1d) | 2025-07-15 → 2025-07-16 (+1d) | 304.79d → 304.33d |
| PG-10668 | Floor Tiling - Dry area | 2025-07-15 → 2025-07-16 (+1d) | 2025-07-21 → 2025-07-22 (+1d) | 304.79d → 304.33d |
| PG-10669 | Wooden doors | 2025-07-28 → 2025-07-29 (+1d) | 2025-08-02 → 2025-08-04 (+2d) | 304.79d → 304.33d |
| 1.3.1.1.4.20 | **Floor 17** | 2025-06-25 → 2025-06-26 (+1d) | 2025-09-06 → 2025-09-08 (+2d) |  |
| 1.3.1.1.4.20.1 | **Ceiling Finishing works - Civil** | 2025-07-04 → 2025-07-05 (+1d) | 2025-09-06 → 2025-09-08 (+2d) |  |
| PG-10670 | Gypsum Plastering | 2025-07-04 → 2025-07-05 (+1d) | 2025-07-11 → 2025-07-12 (+1d) | 340.45d → 340d |
| PG-10671 | Cornice fixing | 2025-07-21 → 2025-07-22 (+1d) | 2025-07-25 → 2025-07-26 (+1d) | 340.45d → 340d |
| PG-10673 | Toilet False ceiling | 2025-07-29 → 2025-07-30 (+1d) | 2025-08-02 → 2025-08-04 (+2d) | 319.79d → 319.33d |
| PG-10672 | Painting Works - Putty, Primer and 1st | 2025-08-08 → 2025-08-09 (+1d) | 2025-08-16 → 2025-08-18 (+2d) | 328.45d → 328d |
| PG-10674 | Final Coat Painting | 2025-08-16 → 2025-08-18 (+2d) | 2025-09-06 → 2025-09-08 (+2d) | 328.45d → 328d |
| 1.3.1.1.4.20.2 | **Wall Finishing works - Civil** | 2025-06-25 → 2025-06-26 (+1d) | 2025-09-06 → 2025-09-08 (+2d) |  |
| PG-10675 | Balcony Railing Fixing works | 2025-06-25 → 2025-06-26 (+1d) | 2025-06-30 → 2025-07-01 (+1d) | 322.79d → 322.33d |
| PG-10677 | Dadoing - Wet area | 2025-07-16 → 2025-07-17 (+1d) | 2025-07-22 → 2025-07-23 (+1d) | 293.79d → 293.33d |
| PG-10676 | UPVC Windows & Sliding doors | 2025-08-02 → 2025-08-04 (+2d) | 2025-08-08 → 2025-08-09 (+1d) | 293.79d → 293.33d |
| PG-10678 | Painting Works - Putty, Primer and 1st | 2025-08-08 → 2025-08-09 (+1d) | 2025-08-16 → 2025-08-18 (+2d) | 293.79d → 293.33d |
| PG-10679 | Final Coat Painting | 2025-08-16 → 2025-08-18 (+2d) | 2025-09-06 → 2025-09-08 (+2d) | 293.79d → 293.33d |
| 1.3.1.1.4.20.3 | **Floor Finishing Works - Civil** | 2025-06-25 → 2025-06-26 (+1d) | 2025-08-16 → 2025-08-18 (+2d) |  |
| PG-10680 | Waterproofing for sunken areas | 2025-06-25 → 2025-06-26 (+1d) | 2025-06-28 → 2025-06-30 (+2d) | 313.79d → 313.33d |
| PG-10681 | Floor Tiling - Wet area | 2025-07-22 → 2025-07-23 (+1d) | 2025-07-28 → 2025-07-29 (+1d) | 293.79d → 293.33d |
| PG-10682 | Floor Tiling - Dry area | 2025-07-28 → 2025-07-29 (+1d) | 2025-08-02 → 2025-08-04 (+2d) | 293.79d → 293.33d |
| PG-10683 | Wooden doors | 2025-08-09 → 2025-08-11 (+2d) | 2025-08-16 → 2025-08-18 (+2d) | 293.79d → 293.33d |
| 1.3.1.1.4.21 | **Floor 18** | 2025-07-08 → 2025-07-09 (+1d) | 2025-09-19 → 2025-09-20 (+1d) |  |
| 1.3.1.1.4.21.1 | **Ceiling Finishing works - Civil** | 2025-07-17 → 2025-07-18 (+1d) | 2025-09-19 → 2025-09-20 (+1d) |  |
| PG-10684 | Gypsum Plastering | 2025-07-17 → 2025-07-18 (+1d) | 2025-07-24 → 2025-07-25 (+1d) | 329.45d → 329d |
| PG-10685 | Cornice fixing | 2025-08-02 → 2025-08-04 (+2d) | 2025-08-07 → 2025-08-08 (+1d) | 329.45d → 329d |
| PG-10687 | Toilet False ceiling | 2025-08-11 → 2025-08-12 (+1d) | 2025-08-16 → 2025-08-18 (+2d) | 308.79d → 308.33d |
| PG-10686 | Painting Works - Putty, Primer and 1st | 2025-08-22 → 2025-08-23 (+1d) | 2025-08-29 → 2025-08-30 (+1d) | 317.45d → 317d |
| PG-10688 | Final Coat Painting | 2025-08-29 → 2025-08-30 (+1d) | 2025-09-19 → 2025-09-20 (+1d) | 317.45d → 317d |
| 1.3.1.1.4.21.2 | **Wall Finishing works - Civil** | 2025-07-08 → 2025-07-09 (+1d) | 2025-09-19 → 2025-09-20 (+1d) |  |
| PG-10689 | Balcony Railing Fixing works | 2025-07-08 → 2025-07-09 (+1d) | 2025-07-12 → 2025-07-14 (+2d) | 311.79d → 311.33d |
| PG-10691 | Dadoing - Wet area | 2025-07-29 → 2025-07-30 (+1d) | 2025-08-04 → 2025-08-05 (+1d) | 282.79d → 282.33d |
| PG-10690 | UPVC Windows & Sliding doors | 2025-08-16 → 2025-08-18 (+2d) | 2025-08-22 → 2025-08-23 (+1d) | 282.79d → 282.33d |
| PG-10692 | Painting Works - Putty, Primer and 1st | 2025-08-22 → 2025-08-23 (+1d) | 2025-08-29 → 2025-08-30 (+1d) | 282.79d → 282.33d |
| PG-10693 | Final Coat Painting | 2025-08-29 → 2025-08-30 (+1d) | 2025-09-19 → 2025-09-20 (+1d) | 282.79d → 282.33d |
| 1.3.1.1.4.21.3 | **Floor Finishing Works - Civil** | 2025-07-08 → 2025-07-09 (+1d) | 2025-08-29 → 2025-08-30 (+1d) |  |
| PG-10694 | Waterproofing for sunken areas | 2025-07-08 → 2025-07-09 (+1d) | 2025-07-11 → 2025-07-12 (+1d) | 302.79d → 302.33d |
| PG-10695 | Floor Tiling - Wet area | 2025-08-04 → 2025-08-05 (+1d) | 2025-08-09 → 2025-08-11 (+2d) | 282.79d → 282.33d |
| PG-10696 | Floor Tiling - Dry area | 2025-08-09 → 2025-08-11 (+2d) | 2025-08-16 → 2025-08-18 (+2d) | 282.79d → 282.33d |
| PG-10697 | Wooden doors | 2025-08-23 → 2025-08-25 (+2d) | 2025-08-29 → 2025-08-30 (+1d) | 282.79d → 282.33d |

| ID | Task | Start | Finish | Total float |
| --- | --- | --- | --- | --- |
| 1.3.1.1.4.22 | **Floor 19** | 2025-07-30 → 2025-07-31 (+1d) | 2025-10-15 → 2025-10-16 (+1d) |  |
| 1.3.1.1.4.22.1 | **Ceiling Finishing works - Civil** | 2025-08-08 → 2025-08-09 (+1d) | 2025-10-15 → 2025-10-16 (+1d) |  |
| PG-10698 | Gypsum Plastering | 2025-08-08 → 2025-08-09 (+1d) | 2025-08-16 → 2025-08-18 (+2d) | 177.95d → 177.5d |
| PG-10699 | Cornice fixing | 2025-08-26 → 2025-08-27 (+1d) | 2025-08-30 → 2025-09-01 (+2d) | 177.95d → 177.5d |
| PG-10701 | Toilet False ceiling | 2025-09-03 → 2025-09-04 (+1d) | 2025-09-08 → 2025-09-09 (+1d) | 289.79d → 289.33d |
| PG-10700 | Painting Works - Putty, Primer and 1st | 2025-09-13 → 2025-09-15 (+2d) | 2025-09-20 → 2025-09-22 (+2d) | 165.95d → 165.5d |
| PG-10702 | Final Coat Painting | 2025-09-20 → 2025-09-22 (+2d) | 2025-10-15 → 2025-10-16 (+1d) | 296.45d → 296d |
| 1.3.1.1.4.22.2 | **Wall Finishing works - Civil** | 2025-07-30 → 2025-07-31 (+1d) | 2025-10-15 → 2025-10-16 (+1d) |  |
| PG-10703 | Balcony Railing Fixing works | 2025-07-30 → 2025-07-31 (+1d) | 2025-08-04 → 2025-08-05 (+1d) | 194.95d → 194.5d |
| PG-10705 | Dadoing - Wet area | 2025-08-21 → 2025-08-22 (+1d) | 2025-08-27 → 2025-08-28 (+1d) | 165.95d → 165.5d |
| PG-10704 | UPVC Windows & Sliding doors | 2025-09-08 → 2025-09-09 (+1d) | 2025-09-13 → 2025-09-15 (+2d) | 165.95d → 165.5d |
| PG-10706 | Painting Works - Putty, Primer and 1st | 2025-09-13 → 2025-09-15 (+2d) | 2025-09-20 → 2025-09-22 (+2d) | 261.79d → 261.33d |
| PG-10707 | Final Coat Painting | 2025-09-20 → 2025-09-22 (+2d) | 2025-10-15 → 2025-10-16 (+1d) | 261.79d → 261.33d |
| 1.3.1.1.4.22.3 | **Floor Finishing Works - Civil** | 2025-07-30 → 2025-07-31 (+1d) | 2025-09-20 → 2025-09-22 (+2d) |  |
| PG-10708 | Waterproofing for sunken areas | 2025-07-30 → 2025-07-31 (+1d) | 2025-08-02 → 2025-08-04 (+2d) | 185.95d → 185.5d |
| PG-10709 | Floor Tiling - Wet area | 2025-08-27 → 2025-08-28 (+1d) | 2025-09-02 → 2025-09-03 (+1d) | 165.95d → 165.5d |
| PG-10710 | Floor Tiling - Dry area | 2025-09-02 → 2025-09-03 (+1d) | 2025-09-08 → 2025-09-09 (+1d) | 165.95d → 165.5d |
| PG-10711 | Wooden doors | 2025-09-15 → 2025-09-16 (+1d) | 2025-09-20 → 2025-09-22 (+2d) | 261.79d → 261.33d |
| 1.3.1.1.4.23 | **Floor 20** | 2025-08-22 → 2025-08-23 (+1d) | 2025-11-06 → 2025-11-07 (+1d) |  |
| 1.3.1.1.4.23.1 | **Ceiling Finishing works - Civil** | 2025-09-01 → 2025-09-02 (+1d) | 2025-11-06 → 2025-11-07 (+1d) |  |
| PG-10712 | Gypsum Plastering | 2025-09-01 → 2025-09-02 (+1d) | 2025-09-08 → 2025-09-09 (+1d) | 289.29d → 288.83d |
| PG-10713 | Cornice fixing | 2025-09-17 → 2025-09-18 (+1d) | 2025-09-22 → 2025-09-23 (+1d) | 289.29d → 288.83d |
| PG-10715 | Toilet False ceiling | 2025-09-25 → 2025-09-26 (+1d) | 2025-09-30 → 2025-10-01 (+1d) | 269.29d → 268.83d |
| PG-10714 | Painting Works - Putty, Primer and 1st | 2025-10-07 → 2025-10-08 (+1d) | 2025-10-14 → 2025-10-15 (+1d) | 277.29d → 276.83d |
| PG-10716 | Final Coat Painting | 2025-10-14 → 2025-10-15 (+1d) | 2025-11-06 → 2025-11-07 (+1d) | 277.29d → 276.83d |
| 1.3.1.1.4.23.2 | **Wall Finishing works - Civil** | 2025-08-22 → 2025-08-23 (+1d) | 2025-11-06 → 2025-11-07 (+1d) |  |
| PG-10717 | Balcony Railing Fixing works | 2025-08-22 → 2025-08-23 (+1d) | 2025-08-27 → 2025-08-28 (+1d) | 271.62d → 271.17d |
| PG-10719 | Dadoing - Wet area | 2025-09-12 → 2025-09-13 (+1d) | 2025-09-18 → 2025-09-19 (+1d) | 242.62d → 242.17d |
| PG-10718 | UPVC Windows & Sliding doors | 2025-09-30 → 2025-10-01 (+1d) | 2025-10-07 → 2025-10-08 (+1d) | 242.62d → 242.17d |
| PG-10720 | Painting Works - Putty, Primer and 1st | 2025-10-07 → 2025-10-08 (+1d) | 2025-10-14 → 2025-10-15 (+1d) | 242.62d → 242.17d |
| PG-10721 | Final Coat Painting | 2025-10-14 → 2025-10-15 (+1d) | 2025-11-06 → 2025-11-07 (+1d) | 242.62d → 242.17d |
| 1.3.1.1.4.23.3 | **Floor Finishing Works - Civil** | 2025-08-22 → 2025-08-23 (+1d) | 2025-10-14 → 2025-10-15 (+1d) |  |
| PG-10722 | Waterproofing for sunken areas | 2025-08-22 → 2025-08-23 (+1d) | 2025-08-26 → 2025-08-27 (+1d) | 262.62d → 262.17d |
| PG-10723 | Floor Tiling - Wet area | 2025-09-18 → 2025-09-19 (+1d) | 2025-09-24 → 2025-09-25 (+1d) | 242.62d → 242.17d |
| PG-10724 | Floor Tiling - Dry area | 2025-09-24 → 2025-09-25 (+1d) | 2025-09-30 → 2025-10-01 (+1d) | 242.62d → 242.17d |
| PG-10725 | Wooden doors | 2025-10-08 → 2025-10-09 (+1d) | 2025-10-14 → 2025-10-15 (+1d) | 242.62d → 242.17d |
| 1.3.1.1.4.24 | **Floor 21** | 2025-09-13 → 2025-09-15 (+2d) | 2025-11-28 → 2025-11-29 (+1d) |  |
| 1.3.1.1.4.24.1 | **Ceiling Finishing works - Civil** | 2025-09-23 → 2025-09-24 (+1d) | 2025-11-28 → 2025-11-29 (+1d) |  |
| PG-10726 | Gypsum Plastering | 2025-09-23 → 2025-09-24 (+1d) | 2025-09-30 → 2025-10-01 (+1d) | 270.29d → 269.83d |
| PG-10727 | Cornice fixing | 2025-10-10 → 2025-10-11 (+1d) | 2025-10-15 → 2025-10-16 (+1d) | 270.29d → 269.83d |
| PG-10729 | Toilet False ceiling | 2025-10-18 → 2025-10-20 (+2d) | 2025-10-23 → 2025-10-24 (+1d) | 250.62d → 250.17d |
| PG-10728 | Painting Works - Putty, Primer and 1st | 2025-10-29 → 2025-10-30 (+1d) | 2025-11-06 → 2025-11-07 (+1d) | 258.29d → 257.83d |
| PG-10730 | Final Coat Painting | 2025-11-06 → 2025-11-07 (+1d) | 2025-11-28 → 2025-11-29 (+1d) | 258.29d → 257.83d |
| 1.3.1.1.4.24.2 | **Wall Finishing works - Civil** | 2025-09-13 → 2025-09-15 (+2d) | 2025-11-28 → 2025-11-29 (+1d) |  |
| PG-10731 | Balcony Railing Fixing works | 2025-09-13 → 2025-09-15 (+2d) | 2025-09-18 → 2025-09-19 (+1d) | 252.62d → 252.17d |
| PG-10733 | Dadoing - Wet area | 2025-10-06 → 2025-10-07 (+1d) | 2025-10-11 → 2025-10-13 (+2d) | 223.62d → 223.17d |
| PG-10732 | UPVC Windows & Sliding doors | 2025-10-23 → 2025-10-24 (+1d) | 2025-10-29 → 2025-10-30 (+1d) | 223.62d → 223.17d |
| PG-10734 | Painting Works - Putty, Primer and 1st | 2025-10-29 → 2025-10-30 (+1d) | 2025-11-06 → 2025-11-07 (+1d) | 223.62d → 223.17d |
| PG-10735 | Final Coat Painting | 2025-11-06 → 2025-11-07 (+1d) | 2025-11-28 → 2025-11-29 (+1d) | 223.62d → 223.17d |
| 1.3.1.1.4.24.3 | **Floor Finishing Works - Civil** | 2025-09-13 → 2025-09-15 (+2d) | 2025-11-06 → 2025-11-07 (+1d) |  |
| PG-10736 | Waterproofing for sunken areas | 2025-09-13 → 2025-09-15 (+2d) | 2025-09-17 → 2025-09-18 (+1d) | 243.62d → 243.17d |
| PG-10737 | Floor Tiling - Wet area | 2025-10-11 → 2025-10-13 (+2d) | 2025-10-17 → 2025-10-18 (+1d) | 223.62d → 223.17d |
| PG-10738 | Floor Tiling - Dry area | 2025-10-17 → 2025-10-18 (+1d) | 2025-10-23 → 2025-10-24 (+1d) | 223.62d → 223.17d |
| PG-10739 | Wooden doors | 2025-10-30 → 2025-10-31 (+1d) | 2025-11-06 → 2025-11-07 (+1d) | 223.62d → 223.17d |
| 1.3.1.1.4.25 | **Floor 22** | 2025-10-07 → 2025-10-08 (+1d) | 2025-12-20 → 2025-12-22 (+2d) |  |
| 1.3.1.1.4.25.1 | **Ceiling Finishing works - Civil** | 2025-10-16 → 2025-10-17 (+1d) | 2025-12-20 → 2025-12-22 (+2d) |  |
| PG-10740 | Gypsum Plastering | 2025-10-16 → 2025-10-17 (+1d) | 2025-10-23 → 2025-10-24 (+1d) | 251.29d → 250.83d |
| PG-10741 | Cornice fixing | 2025-11-03 → 2025-11-04 (+1d) | 2025-11-07 → 2025-11-08 (+1d) | 251.29d → 250.83d |
| PG-10743 | Toilet False ceiling | 2025-11-11 → 2025-11-12 (+1d) | 2025-11-15 → 2025-11-17 (+2d) | 230.62d → 230.17d |
| PG-10742 | Painting Works - Putty, Primer and 1st | 2025-11-21 → 2025-11-22 (+1d) | 2025-11-28 → 2025-11-29 (+1d) | 239.29d → 238.83d |
| PG-10744 | Final Coat Painting | 2025-11-28 → 2025-11-29 (+1d) | 2025-12-20 → 2025-12-22 (+2d) | 239.29d → 238.83d |
| 1.3.1.1.4.25.2 | **Wall Finishing works - Civil** | 2025-10-07 → 2025-10-08 (+1d) | 2025-12-20 → 2025-12-22 (+2d) |  |
| PG-10745 | Balcony Railing Fixing works | 2025-10-07 → 2025-10-08 (+1d) | 2025-10-11 → 2025-10-13 (+2d) | 232.62d → 232.17d |
| PG-10747 | Dadoing - Wet area | 2025-10-28 → 2025-10-29 (+1d) | 2025-11-04 → 2025-11-05 (+1d) | 203.62d → 203.17d |
| PG-10746 | UPVC Windows & Sliding doors | 2025-11-15 → 2025-11-17 (+2d) | 2025-11-21 → 2025-11-22 (+1d) | 203.62d → 203.17d |
| PG-10748 | Painting Works - Putty, Primer and 1st | 2025-11-21 → 2025-11-22 (+1d) | 2025-11-28 → 2025-11-29 (+1d) | 203.62d → 203.17d |
| PG-10749 | Final Coat Painting | 2025-11-28 → 2025-11-29 (+1d) | 2025-12-20 → 2025-12-22 (+2d) | 203.62d → 203.17d |
| 1.3.1.1.4.25.3 | **Floor Finishing Works - Civil** | 2025-10-07 → 2025-10-08 (+1d) | 2025-11-28 → 2025-11-29 (+1d) |  |
| PG-10750 | Waterproofing for sunken areas | 2025-10-07 → 2025-10-08 (+1d) | 2025-10-10 → 2025-10-11 (+1d) | 223.62d → 223.17d |
| PG-10751 | Floor Tiling - Wet area | 2025-11-04 → 2025-11-05 (+1d) | 2025-11-10 → 2025-11-11 (+1d) | 203.62d → 203.17d |

| ID | Task | Start | Finish | Total float |
| --- | --- | --- | --- | --- |
| PG-10752 | Floor Tiling - Dry area | 2025-11-10 → 2025-11-11 (+1d) | 2025-11-15 → 2025-11-17 (+2d) | 203.62d → 203.17d |
| PG-10753 | Wooden doors | 2025-11-22 → 2025-11-24 (+2d) | 2025-11-28 → 2025-11-29 (+1d) | 203.62d → 203.17d |
| 1.3.1.1.4.26 | **Floor 23** | 2025-10-29 → 2025-10-30 (+1d) | 2026-01-12 → 2026-01-13 (+1d) |  |
| 1.3.1.1.4.26.1 | **Ceiling Finishing works - Civil** | 2025-11-08 → 2025-11-10 (+2d) | 2026-01-12 → 2026-01-13 (+1d) |  |
| PG-10754 | Gypsum Plastering | 2025-11-08 → 2025-11-10 (+2d) | 2025-11-15 → 2025-11-17 (+2d) | 232.45d → 232d |
| PG-10755 | Cornice fixing | 2025-11-25 → 2025-11-26 (+1d) | 2025-11-29 → 2025-12-01 (+2d) | 232.45d → 232d |
| PG-10757 | Toilet False ceiling | 2025-12-03 → 2025-12-04 (+1d) | 2025-12-08 → 2025-12-09 (+1d) | 212.12d → 211.67d |
| PG-10756 | Painting Works - Putty, Primer and 1st | 2025-12-13 → 2025-12-15 (+2d) | 2025-12-20 → 2025-12-22 (+2d) | 220.45d → 220d |
| PG-10758 | Final Coat Painting | 2025-12-20 → 2025-12-22 (+2d) | 2026-01-12 → 2026-01-13 (+1d) | 220.45d → 220d |
| 1.3.1.1.4.26.2 | **Wall Finishing works - Civil** | 2025-10-29 → 2025-10-30 (+1d) | 2026-01-09 → 2026-01-10 (+1d) |  |
| PG-10759 | Balcony Railing Fixing works | 2025-10-29 → 2025-10-30 (+1d) | 2025-11-04 → 2025-11-05 (+1d) | 216.62d → 216.17d |
| PG-10761 | Dadoing - Wet area | 2025-11-20 → 2025-11-21 (+1d) | 2025-11-26 → 2025-11-27 (+1d) | 187.62d → 187.17d |
| PG-10760 | UPVC Windows & Sliding doors | 2025-12-08 → 2025-12-09 (+1d) | 2025-12-13 → 2025-12-15 (+2d) | 187.62d → 187.17d |
| PG-10762 | Painting Works - Putty, Primer and 1st | 2025-12-13 → 2025-12-15 (+2d) | 2025-12-20 → 2025-12-22 (+2d) | 187.62d → 187.17d |
| PG-10763 | Final Coat Painting | 2025-12-20 → 2025-12-22 (+2d) | 2026-01-09 → 2026-01-10 (+1d) | 187.62d → 187.17d |
| 1.3.1.1.4.26.3 | **Floor Finishing Works - Civil** | 2025-10-29 → 2025-10-30 (+1d) | 2025-12-20 → 2025-12-22 (+2d) |  |
| PG-10764 | Waterproofing for sunken areas | 2025-10-29 → 2025-10-30 (+1d) | 2025-11-03 → 2025-11-04 (+1d) | 207.62d → 207.17d |
| PG-10765 | Floor Tiling - Wet area | 2025-11-26 → 2025-11-27 (+1d) | 2025-12-02 → 2025-12-03 (+1d) | 187.62d → 187.17d |
| PG-10766 | Floor Tiling - Dry area | 2025-12-02 → 2025-12-03 (+1d) | 2025-12-08 → 2025-12-09 (+1d) | 187.62d → 187.17d |
| PG-10767 | Wooden doors | 2025-12-15 → 2025-12-16 (+1d) | 2025-12-20 → 2025-12-22 (+2d) | 187.62d → 187.17d |
| 1.3.1.1.4.27 | **External Finishing works** | 2025-08-05 → 2025-08-06 (+1d) | 2025-12-03 → 2025-12-04 (+1d) |  |
| PG-10768 | External walls tie rod hole plugging with GP2 | 2025-08-05 → 2025-08-06 (+1d) | 2025-09-10 → 2025-09-11 (+1d) | 251.79d → 251.33d |
| PG-10769 | External walls grinding works | 2025-08-29 → 2025-08-30 (+1d) | 2025-10-16 → 2025-10-17 (+1d) | 251.79d → 251.33d |
| PG-10770 | Texture and painting works | 2025-10-10 → 2025-10-11 (+1d) | 2025-12-03 → 2025-12-04 (+1d) | 251.79d → 251.33d |
| 1.3.1.1.5 | **Corridor & Fire Staircase Finishing works** | 2025-10-13 → 2025-10-14 (+1d) |  |  |
| 1.3.1.1.5.1 | **Ceiling Finishing works - Civil** | 2025-10-13 → 2025-10-14 (+1d) | 2026-01-23 → 2026-01-24 (+1d) |  |
| PG-10771 | Gypsum Plastering | 2025-10-13 → 2025-10-14 (+1d) | 2025-10-20 → 2025-10-21 (+1d) | 46.95d → 46.5d |
| PG-10772 | Cornice fixing | 2025-10-18 → 2025-10-20 (+2d) | 2025-10-23 → 2025-10-24 (+1d) | 177.95d → 177.5d |
| PG-10773 | Painting Works - Putty, Primer and 1st | 2025-11-07 → 2025-11-08 (+1d) | 2025-11-14 → 2025-11-15 (+1d) | 165.95d → 165.5d |
| PG-10774 | False ceiling | 2025-11-14 → 2025-11-15 (+1d) | 2025-12-19 → 2025-12-20 (+1d) | 165.95d → 165.5d |
| PG-10775 | Final Coat Painting | 2025-12-19 → 2025-12-20 (+1d) | 2026-01-23 → 2026-01-24 (+1d) | 180.95d → 180.5d |
| 1.3.1.1.5.2 | **Wall Finishing works - Civil** | 2025-11-19 → 2025-11-20 (+1d) |  |  |
| PG-10776 | UPVC Windows & Sliding doors | 2025-11-19 → 2025-11-20 (+1d) | 2025-11-25 → 2025-11-26 (+1d) | 171.95d → 171.5d |
| PG-10777 | Wall Cladding Upto 1.2 Mts | 2025-12-06 → 2025-12-08 (+2d) | 2025-12-30 → 2025-12-31 (+1d) | 171.95d → 171.5d |
| PG-10778 | Painting Works - Texture & one coat Painting works | 2026-01-06 → 2026-01-07 (+1d) | 2026-01-23 → 2026-01-24 (+1d) | 165.95d → 165.5d |
| 1.3.1.1.5.3 | **Floor Finishing Works - Civil** | 2025-10-20 → 2025-10-21 (+1d) | 2025-11-19 → 2025-11-20 (+1d) |  |
| PG-10780 | Fire Doors installation | 2025-10-20 → 2025-10-21 (+1d) | 2025-10-31 → 2025-11-03 (+3d) | 216.62d → 216.17d |
| PG-10781 | Verified tile flooring works | 2025-10-31 → 2025-11-03 (+3d) | 2025-11-19 → 2025-11-20 (+1d) | 216.62d → 216.17d |
| 1.3.1.1.5.4 | **Fire Staircase Finishing Works - Civil** | 2025-10-20 → 2025-10-21 (+1d) | 2026-02-10 → 2026-02-11 (+1d) |  |
| PG-10782 | Staircase Railing Fixing works | 2025-10-20 → 2025-10-21 (+1d) | 2025-11-13 → 2025-11-14 (+1d) | 46.95d → 46.5d |
| PG-10783 | Wall and ceiling Gypsum plastering | 2025-10-31 → 2025-11-03 (+3d) | 2025-12-06 → 2025-12-08 (+2d) | 46.95d → 46.5d |
| PG-10784 | Staircase Flooring and Skirting Works | 2025-11-19 → 2025-11-20 (+1d) | 2026-01-05 → 2026-01-06 (+1d) | 46.95d → 46.5d |
| PG-10785 | UPVC Window fixing works | 2026-01-05 → 2026-01-06 (+1d) | 2026-01-22 → 2026-01-23 (+1d) | 46.95d → 46.5d |
| PG-10786 | Staircase Painting works | 2026-01-16 → 2026-01-17 (+1d) | 2026-02-10 → 2026-02-11 (+1d) | 46.95d → 46.5d |
| 1.3.1.1.6 | **MEP Civil Works (Shaft, Lift Shaft & OHT )** | 2025-07-22 → 2025-07-23 (+1d) |  |  |
| 1.3.1.1.6.1 | **Lift Shaft Works** | 2025-07-22 → 2025-07-23 (+1d) |  |  |
| PG-10787 | Tie rod hole packing | 2025-07-22 → 2025-07-23 (+1d) | 2025-07-31 → 2025-08-01 (+1d) | 124.45d → 124d |
| PG-10788 | Grinding works | 2025-07-31 → 2025-08-01 (+1d) | 2025-08-06 → 2025-08-07 (+1d) | 124.45d → 124d |
| PG-10789 | Lift pit waterproofing works | 2025-08-06 → 2025-08-07 (+1d) | 2025-09-01 → 2025-09-02 (+1d) | 124.45d → 124d |
| PG-10790 | Shaft door opening finishing | 2025-09-01 → 2025-09-02 (+1d) | 2025-09-09 → 2025-09-10 (+1d) | 124.45d → 124d |
| PG-10791 | Painting works | 2025-09-09 → 2025-09-10 (+1d) | 2025-09-18 → 2025-09-19 (+1d) | 124.45d → 124d |
| 1.3.1.1.6.2 | **Electrical Shaft works** | 2025-07-22 → 2025-07-23 (+1d) | 2025-08-25 → 2025-08-26 (+1d) |  |
| PG-10793 | Tie rod hole packing | 2025-07-22 → 2025-07-23 (+1d) | 2025-07-31 → 2025-08-01 (+1d) | 263.29d → 262.83d |
| PG-10794 | Grinding works | 2025-07-31 → 2025-08-01 (+1d) | 2025-08-06 → 2025-08-07 (+1d) | 263.29d → 262.83d |
| PG-10795 | Shaft door opening finishing | 2025-08-06 → 2025-08-07 (+1d) | 2025-08-14 → 2025-08-16 (+2d) | 263.29d → 262.83d |
| PG-10796 | Painting works | 2025-08-14 → 2025-08-16 (+2d) | 2025-08-25 → 2025-08-26 (+1d) | 263.29d → 262.83d |
| 1.3.1.1.6.3 | **FPS Shaft works** | 2025-07-22 → 2025-07-23 (+1d) | 2025-08-25 → 2025-08-26 (+1d) |  |
| PG-10797 | Tie rod hole packing | 2025-07-22 → 2025-07-23 (+1d) | 2025-07-31 → 2025-08-01 (+1d) | 262.95d → 262.5d |
| PG-10798 | Grinding works | 2025-07-31 → 2025-08-01 (+1d) | 2025-08-06 → 2025-08-07 (+1d) | 262.95d → 262.5d |
| PG-10799 | Shaft door opening finishing | 2025-08-06 → 2025-08-07 (+1d) | 2025-08-14 → 2025-08-16 (+2d) | 262.95d → 262.5d |
| PG-10800 | Painting works | 2025-08-14 → 2025-08-16 (+2d) | 2025-08-25 → 2025-08-26 (+1d) | 262.95d → 262.5d |
| 1.3.1.1.6.4 | **PHE Shaft works** | 2025-07-22 → 2025-07-23 (+1d) | 2025-08-25 → 2025-08-26 (+1d) |  |
| PG-10801 | Tie rod hole packing | 2025-07-22 → 2025-07-23 (+1d) | 2025-07-31 → 2025-08-01 (+1d) | 221.62d → 221.17d |
| PG-10802 | Grinding works | 2025-07-31 → 2025-08-01 (+1d) | 2025-08-06 → 2025-08-07 (+1d) | 221.62d → 221.17d |
| PG-10803 | Shaft door opening finishing | 2025-08-06 → 2025-08-07 (+1d) | 2025-08-14 → 2025-08-16 (+2d) | 221.62d → 221.17d |
| PG-10804 | Painting works | 2025-08-14 → 2025-08-16 (+2d) | 2025-08-25 → 2025-08-26 (+1d) | 221.62d → 221.17d |
| 1.3.1.1.6.5 | **Data & Communication Shaft** | 2025-07-22 → 2025-07-23 (+1d) | 2025-08-22 → 2025-08-23 (+1d) |  |
| PG-10805 | Tie rod hole packing | 2025-07-22 → 2025-07-23 (+1d) | 2025-07-31 → 2025-08-01 (+1d) | 257.95d → 257.5d |
| PG-10806 | Grinding works | 2025-07-31 → 2025-08-01 (+1d) | 2025-08-06 → 2025-08-07 (+1d) | 257.95d → 257.5d |
| PG-10807 | Shaft door opening finishing | 2025-08-06 → 2025-08-07 (+1d) | 2025-08-12 → 2025-08-13 (+1d) | 257.95d → 257.5d |

| ID | Task | Start | Finish | Complete | Total float |
| --- | --- | --- | --- | --- | --- |
| PG-10808 | Painting works | 2025-08-12 → 2025-08-13 (+1d) | 2025-08-22 → 2025-08-23 (+1d) |  | 257.95d → 257.5d |
| 1.3.1.1.6.6 | **OHT Works** | 2025-08-02 → 2025-08-04 (+2d) | 2025-09-22 → 2025-09-23 (+1d) |  |  |
| PG-10809 | Tank materials Supply & Shifting | 2025-08-02 → 2025-08-04 (+2d) | 2025-08-14 → 2025-08-16 (+2d) |  | 219.62d → 219.08d |
| PG-10810 | Assembling OHT FRP Tank | 2025-08-14 → 2025-08-16 (+2d) | 2025-08-27 → 2025-08-28 (+1d) |  | 219.62d → 219.08d |
| PG-10811 | Installation of OHT Tank | 2025-08-27 → 2025-08-28 (+1d) | 2025-09-13 → 2025-09-15 (+2d) |  | 219.62d → 219.08d |
| PG-10812 | Water tightness works and checking | 2025-09-13 → 2025-09-15 (+2d) | 2025-09-22 → 2025-09-23 (+1d) |  | 219.62d → 219.08d |
| 1.3.1.1.7 | **MEP Shaft works** | 2025-08-22 → 2025-08-23 (+1d) | 2025-11-15 → 2025-11-17 (+2d) |  |  |
| 1.3.1.1.7.1 | **Electrical** | 2025-08-25 → 2025-08-26 (+1d) | 2025-10-06 → 2025-10-07 (+1d) |  |  |
| PG-10813 | Tray Works | 2025-08-25 → 2025-08-26 (+1d) | 2025-09-05 → 2025-09-06 (+1d) |  | 263.29d → 262.83d |
| PG-10814 | Cable & Conducting works | 2025-09-05 → 2025-09-06 (+1d) | 2025-09-17 → 2025-09-18 (+1d) |  | 263.29d → 262.83d |
| PG-10815 | Wiring/DB/connector box installation and termination works | 2025-09-17 → 2025-09-18 (+1d) | 2025-10-06 → 2025-10-07 (+1d) |  | 263.29d → 262.83d |
| 1.3.1.1.7.2 | **FPS** | 2025-08-25 → 2025-08-26 (+1d) | 2025-10-06 → 2025-10-07 (+1d) |  |  |
| PG-10816 | Shaft MS Piping & fixtures installation | 2025-08-25 → 2025-08-26 (+1d) | 2025-09-17 → 2025-09-18 (+1d) |  | 262.95d → 262.5d |
| PG-10817 | Tray / cabling / conducting & wiring works | 2025-09-17 → 2025-09-18 (+1d) | 2025-10-06 → 2025-10-07 (+1d) |  | 262.95d → 262.5d |
| 1.3.1.1.7.3 | **Data & Communication** | 2025-08-22 → 2025-08-23 (+1d) | 2025-10-11 → 2025-10-13 (+2d) |  |  |
| PG-10818 | Tray Works | 2025-08-22 → 2025-08-23 (+1d) | 2025-09-05 → 2025-09-06 (+1d) |  | 257.95d → 257.5d |
| PG-10819 | Tray / cabling / conducting & wiring works | 2025-09-05 → 2025-09-06 (+1d) | 2025-09-23 → 2025-09-24 (+1d) |  | 257.95d → 257.5d |
| PG-10820 | Wiring/DB/connector box installation and termination works | 2025-09-23 → 2025-09-24 (+1d) | 2025-10-11 → 2025-10-13 (+2d) |  | 257.95d → 257.5d |
| 1.3.1.1.7.4 | **PHE** | 2025-08-25 → 2025-08-26 (+1d) | 2025-11-15 → 2025-11-17 (+2d) |  |  |
| PG-10821 | Bracket fixing works | 2025-08-25 → 2025-08-26 (+1d) | 2025-09-02 → 2025-09-03 (+1d) |  | 221.62d → 221.17d |
| PG-10822 | Piping Works | 2025-09-02 → 2025-09-03 (+1d) | 2025-09-19 → 2025-09-20 (+1d) |  | 221.62d → 221.17d |
| PG-10823 | Terrace Ring main & OHT Connection works | 2025-09-22 → 2025-09-23 (+1d) | 2025-11-08 → 2025-11-10 (+2d) |  | 219.62d → 219.08d |
| PG-10824 | Commissioning | 2025-11-08 → 2025-11-10 (+2d) | 2025-11-15 → 2025-11-17 (+2d) |  | 219.62d → 219.08d |
| 1.3.1.1.8 | **Lift Installation and Testing works** | 2025-08-06 → 2025-08-07 (+1d) |  |  |  |
| PG-10825 | Lift Shaft Survey works | 2025-08-06 → 2025-08-07 (+1d) | 2025-08-18 → 2025-08-19 (+1d) |  | 150.95d → 150.5d |
| PG-10826 | Guide Rails fixing works | 2025-09-18 → 2025-09-19 (+1d) | 2025-11-06 → 2025-11-07 (+1d) |  | 124.45d → 124d |
| 1.3.1.1.9 | **Electrical Panel Works** | 2025-07-21 → 2025-07-22 (+1d) | 2026-02-26 → 2026-02-27 (+1d) |  |  |
| 1.3.1.1.9.1 | **Civil Finishing Works** | 2025-07-21 → 2025-07-22 (+1d) | 2025-09-03 → 2025-09-04 (+1d) |  |  |
| PG-10831 | Wall Tie rod hole packing & Grinding works. | 2025-07-21 → 2025-07-22 (+1d) | 2025-08-07 → 2025-08-08 (+1d) |  | 133.29d → 132.83d |
| PG-10832 | Window, Louver and Door fixing works | 2025-08-07 → 2025-08-08 (+1d) | 2025-08-14 → 2025-08-16 (+2d) |  | 133.29d → 132.83d |
| PG-10833 | Pedestal works | 2025-08-14 → 2025-08-16 (+2d) | 2025-08-27 → 2025-08-28 (+1d) |  | 133.29d → 132.83d |
| PG-10834 | Painting works | 2025-08-27 → 2025-08-28 (+1d) | 2025-09-03 → 2025-09-04 (+1d) |  | 133.29d → 132.83d |
| 1.3.1.1.9.2 | **Electrical Panel works** | 2025-09-03 → 2025-09-04 (+1d) | 2026-02-26 → 2026-02-27 (+1d) |  |  |
| PG-10835 | Electrical Panel assembly works | 2025-09-03 → 2025-09-04 (+1d) | 2025-11-12 → 2025-11-13 (+1d) |  | 133.29d → 132.83d |
| PG-10836 | Electrical Panel installation and cable termination. | 2025-11-12 → 2025-11-13 (+1d) | 2026-01-21 → 2026-01-22 (+1d) |  | 133.29d → 132.83d |
| PG-10837 | Electrical Panel Testing and commissioning works | 2026-01-21 → 2026-01-22 (+1d) | 2026-02-26 → 2026-02-27 (+1d) |  | 133.29d → 132.83d |
| 1.3.1.1.10 | **Entrance Lobby works** | 2026-02-10 → 2026-02-11 (+1d) | 2026-06-30 → 2026-07-01 (+1d) |  |  |
| PG-10838 | Flooring Works | 2026-02-10 → 2026-02-11 (+1d) | 2026-03-17 → 2026-03-18 (+1d) |  | 46.95d → 46.5d |
| PG-10839 | Glass Door and False ceiling Works | 2026-03-17 → 2026-03-18 (+1d) | 2026-04-21 → 2026-04-22 (+1d) |  | 46.95d → 46.5d |
| PG-10841 | Canopy Works | 2026-03-17 → 2026-03-18 (+1d) | 2026-04-16 → 2026-04-17 (+1d) |  | 65.79d → 65.33d |
| PG-10840 | Painting Works | 2026-04-21 → 2026-04-22 (+1d) | 2026-05-08 → 2026-05-09 (+1d) |  | 46.95d → 46.5d |
| PG-10842 | Interior Works | 2026-05-08 → 2026-05-09 (+1d) | 2026-06-30 → 2026-07-01 (+1d) |  | 46.95d → 46.5d |
| 1.3.1.1.11 | **Lightening Arrester works** | 2025-12-03 → 2025-12-04 (+1d) | 2025-12-15 → 2025-12-16 (+1d) |  |  |
| PG-10843 | Conductor will be lifted with RCC Works, But Terrace works will be done once Parapet Painting done | 2025-12-03 → 2025-12-04 (+1d) | 2025-12-15 → 2025-12-16 (+1d) |  | 251.79d → 251.33d |
| 1.3.1.2 | **Tower 2 ( 2B+G+26 ) TYP 4 Units - 106 Units** |  | 2026-08-05 → 2026-08-06 (+1d) |  |  |
| 1.3.1.2.2 | **Structure works** |  | 2025-09-25 → 2025-09-26 (+1d) |  |  |
| 1.3.1.2.2.22 | **Floor 19** |  | 2025-05-17 → 2025-05-19 (+2d) |  |  |
| 1.3.1.2.2.22.1 | **Columns / shear walls** |  | 2025-05-12 → 2025-05-13 (+1d) |  |  |
| PG-10963 | Reinforcement |  | 2025-05-09 → 2025-05-10 A (+1d) | 81% → 100% | 16.49d → none |
| PG-10964 | Formwork |  | 2025-05-12 → 2025-05-13 A (+1d) | 29% → 100% | 16.4d → none |
| 1.3.1.2.2.22.2 | **Slab, Beams & Staircase** | 2025-05-10 → 2025-05-12 (+2d) | 2025-05-17 → 2025-05-19 (+2d) |  |  |
| PG-10965 | Formwork | 2025-05-10 → 2025-05-12 A (+2d) | 2025-05-14 → 2025-05-15 A (+1d) | 0% → 100% | 16.4d → none |
| PG-10966 | Reinforcement | 2025-05-13 → 2025-05-14 A (+1d) | 2025-05-16 → 2025-05-17 (+1d) | 0% → 64% | 16.4d → 16d |
| PG-10967 | Concrete | 2025-05-16 → 2025-05-17 (+1d) | 2025-05-17 → 2025-05-19 (+2d) |  | 16.4d → 16d |
| 1.3.1.2.2.23 | **Floor 20** | 2025-05-17 → 2025-05-19 (+2d) | 2025-05-30 → 2025-05-31 (+1d) |  |  |
| 1.3.1.2.2.23.1 | **Columns / shear walls** | 2025-05-17 → 2025-05-19 (+2d) | 2025-05-24 → 2025-05-26 (+2d) |  |  |
| PG-10968 | Reinforcement | 2025-05-17 → 2025-05-19 (+2d) | 2025-05-22 → 2025-05-23 (+1d) |  | 16.4d → 16d |
| PG-10969 | Formwork | 2025-05-20 → 2025-05-21 (+1d) | 2025-05-24 → 2025-05-26 (+2d) |  | 16.4d → 16d |
| 1.3.1.2.2.23.2 | **Slab, Beams & Staircase** | 2025-05-23 → 2025-05-24 (+1d) | 2025-05-30 → 2025-05-31 (+1d) |  |  |
| PG-10970 | Formwork | 2025-05-23 → 2025-05-24 (+1d) | 2025-05-27 → 2025-05-28 (+1d) |  | 16.4d → 16d |
| PG-10971 | Reinforcement | 2025-05-26 → 2025-05-27 (+1d) | 2025-05-29 → 2025-05-30 (+1d) |  | 16.4d → 16d |
| PG-10972 | Concrete | 2025-05-29 → 2025-05-30 (+1d) | 2025-05-30 → 2025-05-31 (+1d) |  | 16.4d → 16d |
| 1.3.1.2.2.24 | **Floor 21** | 2025-05-30 → 2025-05-31 (+1d) | 2025-06-12 → 2025-06-13 (+1d) |  |  |
| 1.3.1.2.2.24.1 | **Columns / shear walls** | 2025-05-30 → 2025-05-31 (+1d) | 2025-06-06 → 2025-06-07 (+1d) |  |  |
| PG-10973 | Reinforcement | 2025-05-30 → 2025-05-31 (+1d) | 2025-06-04 → 2025-06-05 (+1d) |  | 16.4d → 16d |
| PG-10974 | Formwork | 2025-06-02 → 2025-06-03 (+1d) | 2025-06-06 → 2025-06-07 (+1d) |  | 16.4d → 16d |
| 1.3.1.2.2.24.2 | **Slab, Beams & Staircase** | 2025-06-05 → 2025-06-06 (+1d) | 2025-06-12 → 2025-06-13 (+1d) |  |  |
| PG-10975 | Formwork | 2025-06-05 → 2025-06-06 (+1d) | 2025-06-09 → 2025-06-10 (+1d) |  | 16.4d → 16d |
| PG-10976 | Reinforcement | 2025-06-07 → 2025-06-09 (+2d) | 2025-06-11 → 2025-06-12 (+1d) |  | 16.4d → 16d |
| PG-10977 | Concrete | 2025-06-11 → 2025-06-12 (+1d) | 2025-06-12 → 2025-06-13 (+1d) |  | 16.4d → 16d |

| ID | Task | Start | Finish | Complete | Total float |
| --- | --- | --- | --- | --- | --- |
| 1.3.1.2.2.25 | **Floor 22** | 2025-06-12 → 2025-06-13 (+1d) | 2025-06-25 → 2025-06-26 (+1d) |  |  |
| 1.3.1.2.2.25.1 | **Columns / shear walls** | 2025-06-12 → 2025-06-13 (+1d) | 2025-06-19 → 2025-06-20 (+1d) |  |  |
| PG-10978 | Reinforcement | 2025-06-12 → 2025-06-13 (+1d) | 2025-06-17 → 2025-06-18 (+1d) |  | 16.4d → 16d |
| PG-10979 | Formwork | 2025-06-14 → 2025-06-16 (+2d) | 2025-06-19 → 2025-06-20 (+1d) |  | 16.4d → 16d |
| 1.3.1.2.2.25.2 | **Slab, Beams & Staircase** | 2025-06-18 → 2025-06-19 (+1d) | 2025-06-25 → 2025-06-26 (+1d) |  |  |
| PG-10980 | Formwork | 2025-06-18 → 2025-06-19 (+1d) | 2025-06-21 → 2025-06-23 (+2d) |  | 16.4d → 16d |
| PG-10981 | Reinforcement | 2025-06-20 → 2025-06-21 (+1d) | 2025-06-24 → 2025-06-25 (+1d) |  | 16.4d → 16d |
| PG-10982 | Concrete | 2025-06-24 → 2025-06-25 (+1d) | 2025-06-25 → 2025-06-26 (+1d) |  | 16.4d → 16d |
| 1.3.1.2.2.26 | **Floor 23** | 2025-06-25 → 2025-06-26 (+1d) | 2025-07-08 → 2025-07-09 (+1d) |  |  |
| 1.3.1.2.2.26.1 | **Columns / shear walls** | 2025-06-25 → 2025-06-26 (+1d) | 2025-07-02 → 2025-07-03 (+1d) |  |  |
| PG-10983 | Reinforcement | 2025-06-25 → 2025-06-26 (+1d) | 2025-06-30 → 2025-07-01 (+1d) |  | 16.4d → 16d |
| PG-10984 | Formwork | 2025-06-27 → 2025-06-28 (+1d) | 2025-07-02 → 2025-07-03 (+1d) |  | 16.4d → 16d |
| 1.3.1.2.2.26.2 | **Slab, Beams & Staircase** | 2025-07-01 → 2025-07-02 (+1d) | 2025-07-08 → 2025-07-09 (+1d) |  |  |
| PG-10985 | Formwork | 2025-07-01 → 2025-07-02 (+1d) | 2025-07-04 → 2025-07-05 (+1d) |  | 16.4d → 16d |
| PG-10986 | Reinforcement | 2025-07-03 → 2025-07-04 (+1d) | 2025-07-07 → 2025-07-08 (+1d) |  | 16.4d → 16d |
| PG-10987 | Concrete | 2025-07-07 → 2025-07-08 (+1d) | 2025-07-08 → 2025-07-09 (+1d) |  | 16.4d → 16d |
| 1.3.1.2.2.27 | **Floor 24** | 2025-07-08 → 2025-07-09 (+1d) | 2025-07-21 → 2025-07-22 (+1d) |  |  |
| 1.3.1.2.2.27.1 | **Columns / shear walls** | 2025-07-08 → 2025-07-09 (+1d) | 2025-07-15 → 2025-07-16 (+1d) |  |  |
| PG-10988 | Reinforcement | 2025-07-08 → 2025-07-09 (+1d) | 2025-07-12 → 2025-07-14 (+2d) |  | 16.4d → 16d |
| PG-10989 | Formwork | 2025-07-10 → 2025-07-11 (+1d) | 2025-07-15 → 2025-07-16 (+1d) |  | 16.4d → 16d |
| 1.3.1.2.2.27.2 | **Slab, Beams & Staircase** | 2025-07-14 → 2025-07-15 (+1d) | 2025-07-21 → 2025-07-22 (+1d) |  |  |
| PG-10990 | Formwork | 2025-07-14 → 2025-07-15 (+1d) | 2025-07-17 → 2025-07-18 (+1d) |  | 16.4d → 16d |
| PG-10991 | Reinforcement | 2025-07-16 → 2025-07-17 (+1d) | 2025-07-19 → 2025-07-21 (+2d) |  | 16.4d → 16d |
| PG-10992 | Concrete | 2025-07-19 → 2025-07-21 (+2d) | 2025-07-21 → 2025-07-22 (+1d) |  | 16.4d → 16d |
| 1.3.1.2.2.28 | **Floor 25** | 2025-07-21 → 2025-07-22 (+1d) | 2025-08-02 → 2025-08-04 (+2d) |  |  |
| 1.3.1.2.2.28.1 | **Columns / shear walls** | 2025-07-21 → 2025-07-22 (+1d) | 2025-07-28 → 2025-07-29 (+1d) |  |  |
| PG-10993 | Reinforcement | 2025-07-21 → 2025-07-22 (+1d) | 2025-07-25 → 2025-07-26 (+1d) |  | 16.4d → 16d |
| PG-10994 | Formwork | 2025-07-23 → 2025-07-24 (+1d) | 2025-07-28 → 2025-07-29 (+1d) |  | 16.4d → 16d |
| 1.3.1.2.2.28.2 | **Slab, Beams & Staircase** | 2025-07-26 → 2025-07-28 (+2d) | 2025-08-02 → 2025-08-04 (+2d) |  |  |
| PG-10995 | Formwork | 2025-07-26 → 2025-07-28 (+2d) | 2025-07-30 → 2025-07-31 (+1d) |  | 16.4d → 16d |
| PG-10996 | Reinforcement | 2025-07-29 → 2025-07-30 (+1d) | 2025-08-01 → 2025-08-02 (+1d) |  | 16.4d → 16d |
| PG-10997 | Concrete | 2025-08-01 → 2025-08-02 (+1d) | 2025-08-02 → 2025-08-04 (+2d) |  | 16.4d → 16d |
| 1.3.1.2.2.29 | **Floor 26** | 2025-08-02 → 2025-08-04 (+2d) | 2025-08-16 → 2025-08-18 (+2d) |  |  |
| 1.3.1.2.2.29.1 | **Columns / shear walls** | 2025-08-02 → 2025-08-04 (+2d) | 2025-08-09 → 2025-08-11 (+2d) |  |  |
| PG-10998 | Reinforcement | 2025-08-02 → 2025-08-04 (+2d) | 2025-08-07 → 2025-08-08 (+1d) |  | 16.4d → 16d |
| PG-10999 | Formwork | 2025-08-05 → 2025-08-06 (+1d) | 2025-08-09 → 2025-08-11 (+2d) |  | 16.4d → 16d |
| 1.3.1.2.2.29.2 | **Slab, Beams & Staircase** | 2025-08-08 → 2025-08-09 (+1d) | 2025-08-16 → 2025-08-18 (+2d) |  |  |
| PG-11000 | Formwork | 2025-08-08 → 2025-08-09 (+1d) | 2025-08-12 → 2025-08-13 (+1d) |  | 16.4d → 16d |
| PG-11001 | Reinforcement | 2025-08-11 → 2025-08-12 (+1d) | 2025-08-14 → 2025-08-16 (+2d) |  | 16.4d → 16d |
| PG-11002 | Concrete | 2025-08-14 → 2025-08-16 (+2d) | 2025-08-16 → 2025-08-18 (+2d) |  | 16.4d → 16d |
| 1.3.1.2.2.30 | **Above Terrace Floor** | 2025-08-16 → 2025-08-18 (+2d) | 2025-09-25 → 2025-09-26 (+1d) |  |  |
| 1.3.1.2.2.30.1 | **Columns / shear walls/Parapet Walls** | 2025-08-16 → 2025-08-18 (+2d) | 2025-08-30 → 2025-09-01 (+2d) |  |  |
| PG-11003 | Reinforcement | 2025-08-16 → 2025-08-18 (+2d) | 2025-08-21 → 2025-08-22 (+1d) |  | 121.9d → 121.5d |
| PG-11004 | Formwork | 2025-08-19 → 2025-08-20 (+1d) | 2025-08-25 → 2025-08-26 (+1d) |  | 121.9d → 121.5d |
| PG-11005 | Concrete | 2025-08-25 → 2025-08-26 (+1d) | 2025-08-30 → 2025-09-01 (+2d) |  | 121.9d → 121.5d |
| 1.3.1.2.2.30.2 | **Slab, Beams & Staircase Head rooms, Lift headroom** | 2025-08-22 → 2025-08-23 (+1d) | 2025-09-25 → 2025-09-26 (+1d) |  |  |
| PG-11009 | Terrace Waterproofing and Protective finishing. | 2025-08-22 → 2025-08-23 (+1d) | 2025-09-25 → 2025-09-26 (+1d) |  | 214.57d → 214.17d |
| PG-11006 | Formwork | 2025-08-30 → 2025-09-01 (+2d) | 2025-09-05 → 2025-09-06 (+1d) |  | 214.57d → 214.17d |
| PG-11007 | Reinforcement | 2025-09-05 → 2025-09-06 (+1d) | 2025-09-11 → 2025-09-12 (+1d) |  | 214.57d → 214.17d |
| PG-11008 | Concrete | 2025-09-11 → 2025-09-12 (+1d) | 2025-09-13 → 2025-09-15 (+2d) |  | 214.57d → 214.17d |
| 1.3.1.2.3 | **MEP Internal works** |  | 2026-02-24 → 2026-02-25 (+1d) |  |  |
| 1.3.1.2.3.11 | **Floor 8** |  | 2025-05-20 → 2025-05-21 (+1d) |  |  |
| 1.3.1.2.3.11.1 | **PHE Works** |  | 2025-05-20 → 2025-05-21 (+1d) |  |  |
| PG-11091 | Final Fix - CP & Sanitary fixtures |  | 2025-05-20 → 2025-05-21 (+1d) | 8% → 65% | 391.76d → 391.25d |
| 1.3.1.2.3.11.2 | **Fire Fighting Works** |  | 2025-05-20 → 2025-05-21 (+1d) |  |  |
| PG-11094 | Final Fix - Smoke & heat detectors, FHC , FAS Etc. | 2025-05-09 → 2025-05-10 A (+1d) | 2025-05-20 → 2025-05-21 (+1d) | 0% → 64% | 391.76d → 391.25d |
| 1.3.1.2.3.11.3 | **Electrical Works** |  | 2025-05-20 → 2025-05-21 (+1d) |  |  |
| PG-11097 | Final Fix - Electrical Fixtures | 2025-05-14 → 2025-05-15 A (+1d) | 2025-05-20 → 2025-05-21 (+1d) | 0% → 38% | 391.76d → 391.25d |
| 1.3.1.2.3.13 | **Floor 10** |  | 2025-06-16 → 2025-06-14 (-2d) |  |  |
| 1.3.1.2.3.13.1 | **PHE Works** |  | 2025-06-16 → 2025-06-14 (-2d) |  |  |
| PG-11109 | Final Fix - CP & Sanitary fixtures | 2025-06-04 → 2025-06-03 (-1d) | 2025-06-16 → 2025-06-14 (-2d) |  | 368.75d → 370.04d |
| 1.3.1.2.3.13.2 | **Fire Fighting Works** |  | 2025-06-16 → 2025-06-14 (-2d) |  |  |
| PG-11111 | 2nd Fix - Sprinkler fixing & Pressure testing | 2025-05-14 A | 2025-05-26 → 2025-05-24 (-2d) | 0% → 29% | 376.58d → 377.87d |
| PG-11112 | Final Fix - Smoke & heat detectors, FHC , FAS Etc. | 2025-06-04 → 2025-06-03 (-1d) | 2025-06-16 → 2025-06-14 (-2d) |  | 368.75d → 370.04d |
| 1.3.1.2.3.13.3 | **Electrical Works** |  | 2025-06-16 → 2025-06-14 (-2d) |  |  |
| PG-11114 | 2nd Fix - Wiring works |  |  | 3% → 43% | 382.42d → 382.85d |
| PG-11115 | Final Fix - Electrical Fixtures |  | 2025-06-16 → 2025-06-14 (-2d) |  | 368.75d → 370.04d |
| 1.3.1.2.3.14 | **Floor 11** |  | 2025-06-27 → 2025-06-28 (+1d) |  |  |
| 1.3.1.2.3.14.1 | **PHE Works** |  | 2025-06-27 → 2025-06-28 (+1d) |  |  |
| PG-11118 | Final Fix - CP & Sanitary fixtures | 2025-06-16 → 2025-06-17 (+1d) | 2025-06-27 → 2025-06-28 (+1d) |  | 358.72d → 358.25d |

| ID | Task | Start | Finish | Complete | Total float |
| --- | --- | --- | --- | --- | --- |
| 1.3.1.2.3.14.2 | **Fire Fighting Works** |  | 2025-06-27 → 2025-06-28 (+1d) |  |  |
| PG-11120 | 2nd Fix - Sprinkler fixing & Pressure testing | 2025-05-26 → 2025-05-27 (+1d) | 2025-06-06 → 2025-06-07 (+1d) |  | 366.55d → 366.08d |
| PG-11121 | Final Fix - Smoke & heat detectors, FHC , FAS Etc. | 2025-06-16 → 2025-06-17 (+1d) | 2025-06-27 → 2025-06-28 (+1d) |  | 358.72d → 358.25d |
| 1.3.1.2.3.14.3 | **Electrical Works** |  | 2025-06-27 → 2025-06-28 (+1d) |  |  |
| PG-11123 | 2nd Fix - Wiring works | 2025-05-21 → 2025-05-22 (+1d) | 2025-06-05 → 2025-06-06 (+1d) |  | 372.38d → 371.92d |
| PG-11124 | Final Fix - Electrical Fixtures | 2025-06-20 → 2025-06-21 (+1d) | 2025-06-27 → 2025-06-28 (+1d) |  | 358.72d → 358.25d |
| PG-11126 | 2nd Fix - diverter fixing & Pressure testing |  | 2025-05-14 A | 64% → 100% | 346.67d → none |
| PG-11127 | Final Fix - CP & Sanitary fixtures | 2025-07-01 → 2025-06-30 (-1d) |  |  | 346.67d → 347.75d |
| PG-11128 | 1st Fix - Piping and Shaft hydrant works |  | 2025-05-15 A | 60% → 100% | 394.42d → none |
| PG-11129 | 2nd Fix - Sprinkler fixing & Pressure testing | 2025-06-09 → 2025-06-07 (-2d) | 2025-06-20 → 2025-06-19 (-1d) |  | 355.67d → 356.75d |
| PG-11130 | Final Fix - Smoke & heat detectors, FHC , FAS Etc. | 2025-07-01 → 2025-06-30 (-1d) |  |  | 346.67d → 347.75d |
| PG-11132 | 2nd Fix - Wiring works | 2025-06-04 → 2025-06-03 (-1d) | 2025-06-19 → 2025-06-18 (-1d) |  | 360.67d → 361.75d |
| PG-11133 | Final Fix - Electrical Fixtures | 2025-07-05 → 2025-07-04 (-1d) |  |  | 346.67d → 347.75d |
| 1.3.1.2.3.16 | **Floor 13** |  | 2025-07-24 → 2025-07-25 (+1d) |  |  |
| 1.3.1.2.3.16.1 | **PHE Works** |  | 2025-07-24 → 2025-07-25 (+1d) |  |  |
| PG-11134 | 1st Fix - Piping works |  |  | 29% → 79% | 336.42d → 336.92d |
| PG-11135 | 2nd Fix - diverter fixing & Pressure testing | 2025-05-14 → 2025-05-15 A (+1d) |  | 0% → 12% | 336.42d → 336.59d |
| PG-11136 | Final Fix - CP & Sanitary fixtures |  | 2025-07-24 → 2025-07-25 (+1d) |  | 336.42d → 336.59d |
| 1.3.1.2.3.16.2 | **Fire Fighting Works** | 2025-05-14 → 2025-05-16 (+2d) | 2025-07-24 → 2025-07-25 (+1d) |  |  |
| PG-11137 | 1st Fix - Piping and Shaft hydrant works | 2025-05-14 → 2025-05-16 A (+2d) | 2025-05-28 → 2025-05-29 (+1d) | 0% → 4% | 383.15d → 382.9d |
| PG-11139 | Final Fix - Smoke & heat detectors, FHC , FAS Etc. |  | 2025-07-24 → 2025-07-25 (+1d) |  | 336.42d → 336.59d |
| 1.3.1.2.3.16.3 | **Electrical Works** |  | 2025-07-24 → 2025-07-25 (+1d) |  |  |
| PG-11140 | 1st Fix - GI wire pulling |  | 2025-05-14 → 2025-05-15 A (+1d) | 42% → 100% | 383.15d → none |
| PG-11142 | Final Fix - Electrical Fixtures |  | 2025-07-24 → 2025-07-25 (+1d) |  | 336.42d → 336.59d |
| 1.3.1.2.3.17 | **Floor 14** | 2025-05-17 → 2025-05-19 (+2d) | 2025-08-07 → 2025-08-08 (+1d) |  |  |
| 1.3.1.2.3.17.1 | **PHE Works** | 2025-05-17 → 2025-05-19 (+2d) | 2025-08-07 → 2025-08-08 (+1d) |  |  |
| PG-11143 | 1st Fix - Piping works | 2025-05-17 → 2025-05-19 (+2d) | 2025-05-31 → 2025-06-02 (+2d) |  | 325.07d → 324.67d |
| PG-11144 | 2nd Fix - diverter fixing & Pressure testing | 2025-05-27 → 2025-05-28 (+1d) | 2025-06-07 → 2025-06-09 (+2d) |  | 325.07d → 324.67d |
| PG-11145 | Final Fix - CP & Sanitary fixtures | 2025-07-26 → 2025-07-28 (+2d) | 2025-08-07 → 2025-08-08 (+1d) |  | 325.07d → 324.67d |
| 1.3.1.2.3.17.2 | **Fire Fighting Works** | 2025-05-28 → 2025-05-29 (+1d) | 2025-08-07 → 2025-08-08 (+1d) |  |  |
| PG-11146 | 1st Fix - Piping and Shaft hydrant works | 2025-05-28 → 2025-05-29 (+1d) | 2025-06-11 → 2025-06-12 (+1d) |  | 371.07d → 370.67d |
| PG-11147 | 2nd Fix - Sprinkler fixing & Pressure testing | 2025-07-03 → 2025-07-04 (+1d) | 2025-07-15 → 2025-07-16 (+1d) |  | 335.07d → 334.67d |
| PG-11148 | Final Fix - Smoke & heat detectors, FHC , FAS Etc. | 2025-07-26 → 2025-07-28 (+2d) | 2025-08-07 → 2025-08-08 (+1d) |  | 325.07d → 324.67d |
| 1.3.1.2.3.17.3 | **Electrical Works** | 2025-05-17 → 2025-05-19 (+2d) | 2025-08-07 → 2025-08-08 (+1d) |  |  |
| PG-11149 | 1st Fix - GI wire pulling | 2025-05-17 → 2025-05-19 (+2d) | 2025-05-28 → 2025-05-29 (+1d) |  | 371.07d → 370.67d |
| PG-11150 | 2nd Fix - Wiring works |  | 2025-07-14 → 2025-07-15 (+1d) |  | 340.07d → 339.67d |
| PG-11151 | Final Fix - Electrical Fixtures | 2025-07-31 → 2025-08-01 (+1d) | 2025-08-07 → 2025-08-08 (+1d) |  | 325.07d → 324.67d |
| 1.3.1.2.3.18 | **Floor 15** | 2025-05-30 → 2025-05-31 (+1d) | 2025-08-20 → 2025-08-21 (+1d) |  |  |
| 1.3.1.2.3.18.1 | **PHE Works** | 2025-05-30 → 2025-05-31 (+1d) | 2025-08-20 → 2025-08-21 (+1d) |  |  |
| PG-11152 | 1st Fix - Piping works | 2025-05-30 → 2025-05-31 (+1d) | 2025-06-13 → 2025-06-14 (+1d) |  | 164.07d → 163.67d |
| PG-11153 | 2nd Fix - diverter fixing & Pressure testing | 2025-06-09 → 2025-06-10 (+1d) | 2025-06-20 → 2025-06-21 (+1d) |  | 164.07d → 163.67d |
| PG-11154 | Final Fix - CP & Sanitary fixtures | 2025-08-07 → 2025-08-08 (+1d) | 2025-08-20 → 2025-08-21 (+1d) |  | 315.07d → 314.67d |
| 1.3.1.2.3.18.2 | **Fire Fighting Works** | 2025-06-09 → 2025-06-10 (+1d) | 2025-08-20 → 2025-08-21 (+1d) |  |  |
| PG-11155 | 1st Fix - Piping and Shaft hydrant works | 2025-06-09 → 2025-06-10 (+1d) | 2025-06-23 → 2025-06-24 (+1d) |  | 361.73d → 361.33d |
| PG-11156 | 2nd Fix - Sprinkler fixing & Pressure testing | 2025-07-16 → 2025-07-17 (+1d) | 2025-07-28 → 2025-07-29 (+1d) |  | 324.07d → 323.67d |
| PG-11157 | Final Fix - Smoke & heat detectors, FHC , FAS Etc. | 2025-08-07 → 2025-08-08 (+1d) | 2025-08-20 → 2025-08-21 (+1d) |  | 315.07d → 314.67d |
| 1.3.1.2.3.18.3 | **Electrical Works** | 2025-05-30 → 2025-05-31 (+1d) | 2025-08-20 → 2025-08-21 (+1d) |  |  |
| PG-11158 | 1st Fix - GI wire pulling | 2025-05-30 → 2025-05-31 (+1d) | 2025-06-09 → 2025-06-10 (+1d) |  | 361.73d → 361.33d |
| PG-11159 | 2nd Fix - Wiring works | 2025-07-10 → 2025-07-11 (+1d) | 2025-07-26 → 2025-07-28 (+2d) |  | 329.07d → 328.67d |
| PG-11160 | Final Fix - Electrical Fixtures | 2025-08-12 → 2025-08-13 (+1d) | 2025-08-20 → 2025-08-21 (+1d) |  | 315.07d → 314.67d |
| 1.3.1.2.3.19 | **Floor 16** | 2025-06-12 → 2025-06-13 (+1d) | 2025-09-01 → 2025-09-02 (+1d) |  |  |
| 1.3.1.2.3.19.1 | **PHE Works** | 2025-06-12 → 2025-06-13 (+1d) | 2025-09-01 → 2025-09-02 (+1d) |  |  |
| PG-11161 | 1st Fix - Piping works | 2025-06-12 → 2025-06-13 (+1d) | 2025-06-26 → 2025-06-27 (+1d) |  | 304.73d → 304.33d |
| PG-11162 | 2nd Fix - diverter fixing & Pressure testing | 2025-06-21 → 2025-06-23 (+2d) | 2025-07-03 → 2025-07-04 (+1d) |  | 304.73d → 304.33d |
| PG-11163 | Final Fix - CP & Sanitary fixtures |  | 2025-09-01 → 2025-09-02 (+1d) |  | 304.73d → 304.33d |
| 1.3.1.2.3.19.2 | **Fire Fighting Works** | 2025-06-21 → 2025-06-23 (+2d) | 2025-09-01 → 2025-09-02 (+1d) |  |  |
| PG-11164 | 1st Fix - Piping and Shaft hydrant works | 2025-06-21 → 2025-06-23 (+2d) | 2025-07-05 → 2025-07-07 (+2d) |  | 350.57d → 350.17d |
| PG-11165 | 2nd Fix - Sprinkler fixing & Pressure testing | 2025-07-29 → 2025-07-30 (+1d) | 2025-08-09 → 2025-08-11 (+2d) |  | 311.9d → 311.5d |
| PG-11166 | Final Fix - Smoke & heat detectors, FHC , FAS Etc. |  | 2025-09-01 → 2025-09-02 (+1d) |  | 304.73d → 304.33d |
| 1.3.1.2.3.19.3 | **Electrical Works** | 2025-06-12 → 2025-06-13 (+1d) | 2025-09-01 → 2025-09-02 (+1d) |  |  |
| PG-11167 | 1st Fix - GI wire pulling | 2025-06-12 → 2025-06-13 (+1d) | 2025-06-21 → 2025-06-23 (+2d) |  | 350.57d → 350.17d |
| PG-11168 | 2nd Fix - Wiring works | 2025-07-24 → 2025-07-25 (+1d) | 2025-08-08 → 2025-08-09 (+1d) |  | 317.73d → 317.33d |
| PG-11169 | Final Fix - Electrical Fixtures | 2025-08-25 → 2025-08-26 (+1d) | 2025-09-01 → 2025-09-02 (+1d) |  | 304.73d → 304.33d |
| 1.3.1.2.3.20 | **Floor 17** | 2025-06-25 → 2025-06-26 (+1d) | 2025-09-13 → 2025-09-15 (+2d) |  |  |
| 1.3.1.2.3.20.1 | **PHE Works** | 2025-06-25 → 2025-06-26 (+1d) | 2025-09-13 → 2025-09-15 (+2d) |  |  |
| PG-11170 | 1st Fix - Piping works | 2025-06-25 → 2025-06-26 (+1d) | 2025-07-09 → 2025-07-10 (+1d) |  | 293.73d → 293.33d |
| PG-11171 | 2nd Fix - diverter fixing & Pressure testing | 2025-07-04 → 2025-07-05 (+1d) | 2025-07-16 → 2025-07-17 (+1d) |  | 293.73d → 293.33d |
| PG-11172 | Final Fix - CP & Sanitary fixtures |  | 2025-09-13 → 2025-09-15 (+2d) |  | 293.73d → 293.33d |
| 1.3.1.2.3.20.2 | **Fire Fighting Works** | 2025-07-04 → 2025-07-05 (+1d) | 2025-09-13 → 2025-09-15 (+2d) |  |  |
| PG-11173 | 1st Fix - Piping and Shaft hydrant works | 2025-07-04 → 2025-07-05 (+1d) | 2025-07-18 → 2025-07-19 (+1d) |  | 339.57d → 339.17d |

| ID | Task | Start | Finish | Total float |
| --- | --- | --- | --- | --- |
| PG-11174 | 2nd Fix - Sprinkler fixing & Pressure testing | 2025-08-11 → 2025-08-12 (+1d) | 2025-08-23 → 2025-08-25 (+2d) | 300.9d → 300.5d |
| PG-11175 | Final Fix - Smoke & heat detectors, FHC , FAS Etc. |  | 2025-09-13 → 2025-09-15 (+2d) | 293.73d → 293.33d |
| 1.3.1.2.3.20.3 | **Electrical Works** | 2025-06-25 → 2025-06-26 (+1d) | 2025-09-13 → 2025-09-15 (+2d) |  |
| PG-11176 | 1st Fix - GI wire pulling | 2025-06-25 → 2025-06-26 (+1d) | 2025-07-04 → 2025-07-05 (+1d) | 339.57d → 339.17d |
| PG-11177 | 2nd Fix - Wiring works | 2025-08-06 → 2025-08-07 (+1d) | 2025-08-22 → 2025-08-23 (+1d) | 306.73d → 306.33d |
| PG-11178 | Final Fix - Electrical Fixtures | 2025-09-06 → 2025-09-08 (+2d) | 2025-09-13 → 2025-09-15 (+2d) | 293.73d → 293.33d |
| 1.3.1.2.3.21 | **Floor 18** | 2025-07-08 → 2025-07-09 (+1d) | 2025-09-27 → 2025-09-29 (+2d) |  |
| 1.3.1.2.3.21.1 | **PHE Works** | 2025-07-08 → 2025-07-09 (+1d) | 2025-09-27 → 2025-09-29 (+2d) |  |
| PG-11179 | 1st Fix - Piping works | 2025-07-08 → 2025-07-09 (+1d) | 2025-07-22 → 2025-07-23 (+1d) | 281.9d → 281.5d |
| PG-11180 | 2nd Fix - diverter fixing & Pressure testing | 2025-07-18 → 2025-07-19 (+1d) | 2025-07-29 → 2025-07-30 (+1d) | 281.9d → 281.5d |
| PG-11181 | Final Fix - CP & Sanitary fixtures | 2025-09-15 → 2025-09-16 (+1d) | 2025-09-27 → 2025-09-29 (+2d) | 281.9d → 281.5d |
| 1.3.1.2.3.21.2 | **Fire Fighting Works** |  | 2025-09-27 → 2025-09-29 (+2d) |  |
| PG-11182 | 1st Fix - Piping and Shaft hydrant works |  | 2025-07-31 → 2025-08-01 (+1d) | 329.57d → 329.17d |
| PG-11183 | 2nd Fix - Sprinkler fixing & Pressure testing |  | 2025-09-05 → 2025-09-06 (+1d) | 289.9d → 289.5d |
| PG-11184 | Final Fix - Smoke & heat detectors, FHC , FAS Etc. | 2025-09-15 → 2025-09-16 (+1d) | 2025-09-27 → 2025-09-29 (+2d) | 281.9d → 281.5d |
| 1.3.1.2.3.21.3 | **Electrical Works** | 2025-07-08 → 2025-07-09 (+1d) | 2025-09-27 → 2025-09-29 (+2d) |  |
| PG-11185 | 1st Fix - GI wire pulling | 2025-07-08 → 2025-07-09 (+1d) | 2025-07-17 → 2025-07-18 (+1d) | 329.57d → 329.17d |
| PG-11186 | 2nd Fix - Wiring works |  | 2025-09-04 → 2025-09-05 (+1d) | 295.9d → 295.5d |
| PG-11187 | Final Fix - Electrical Fixtures | 2025-09-20 → 2025-09-22 (+2d) | 2025-09-27 → 2025-09-29 (+2d) | 281.9d → 281.5d |
| 1.3.1.2.3.22 | **Floor 19** | 2025-07-21 → 2025-07-22 (+1d) | 2025-10-11 → 2025-10-13 (+2d) |  |
| 1.3.1.2.3.22.1 | **PHE Works** | 2025-07-21 → 2025-07-22 (+1d) | 2025-10-11 → 2025-10-13 (+2d) |  |
| PG-11188 | 1st Fix - Piping works | 2025-07-21 → 2025-07-22 (+1d) | 2025-08-04 → 2025-08-05 (+1d) | 270.9d → 270.5d |
| PG-11189 | 2nd Fix - diverter fixing & Pressure testing | 2025-07-31 → 2025-08-01 (+1d) | 2025-08-11 → 2025-08-12 (+1d) | 270.9d → 270.5d |
| PG-11190 | Final Fix - CP & Sanitary fixtures | 2025-09-27 → 2025-09-29 (+2d) | 2025-10-11 → 2025-10-13 (+2d) | 270.9d → 270.5d |
| 1.3.1.2.3.22.2 | **Fire Fighting Works** |  | 2025-10-11 → 2025-10-13 (+2d) |  |
| PG-11191 | 1st Fix - Piping and Shaft hydrant works |  | 2025-08-13 → 2025-08-14 (+1d) | 318.57d → 318.17d |
| PG-11192 | 2nd Fix - Sprinkler fixing & Pressure testing |  | 2025-09-18 → 2025-09-19 (+1d) | 278.9d → 278.5d |
| PG-11193 | Final Fix - Smoke & heat detectors, FHC , FAS Etc. | 2025-09-27 → 2025-09-29 (+2d) | 2025-10-11 → 2025-10-13 (+2d) | 270.9d → 270.5d |
| 1.3.1.2.3.22.3 | **Electrical Works** | 2025-07-21 → 2025-07-22 (+1d) | 2025-10-11 → 2025-10-13 (+2d) |  |
| PG-11194 | 1st Fix - GI wire pulling | 2025-07-21 → 2025-07-22 (+1d) | 2025-07-30 → 2025-07-31 (+1d) | 318.57d → 318.17d |
| PG-11195 | 2nd Fix - Wiring works |  | 2025-09-17 → 2025-09-18 (+1d) | 284.9d → 284.5d |
| PG-11196 | Final Fix - Electrical Fixtures | 2025-10-04 → 2025-10-06 (+2d) | 2025-10-11 → 2025-10-13 (+2d) | 270.9d → 270.5d |
| 1.3.1.2.3.23 | **Floor 20** | 2025-08-02 → 2025-08-04 (+2d) | 2025-10-25 → 2025-10-27 (+2d) |  |
| 1.3.1.2.3.23.1 | **PHE Works** | 2025-08-02 → 2025-08-04 (+2d) | 2025-10-25 → 2025-10-27 (+2d) |  |
| PG-11197 | 1st Fix - Piping works | 2025-08-02 → 2025-08-04 (+2d) | 2025-08-19 → 2025-08-20 (+1d) | 258.9d → 258.5d |
| PG-11198 | 2nd Fix - diverter fixing & Pressure testing | 2025-08-14 → 2025-08-16 (+2d) | 2025-08-26 → 2025-08-27 (+1d) | 258.9d → 258.5d |
| PG-11199 | Final Fix - CP & Sanitary fixtures | 2025-10-13 → 2025-10-14 (+1d) | 2025-10-25 → 2025-10-27 (+2d) | 258.9d → 258.5d |
| 1.3.1.2.3.23.2 | **Fire Fighting Works** |  | 2025-10-25 → 2025-10-27 (+2d) |  |
| PG-11200 | 1st Fix - Piping and Shaft hydrant works |  | 2025-08-28 → 2025-08-29 (+1d) | 306.73d → 306.33d |
| PG-11201 | 2nd Fix - Sprinkler fixing & Pressure testing |  | 2025-10-03 → 2025-10-04 (+1d) | 266.9d → 266.5d |
| PG-11202 | Final Fix - Smoke & heat detectors, FHC , FAS Etc. | 2025-10-13 → 2025-10-14 (+1d) | 2025-10-25 → 2025-10-27 (+2d) | 258.9d → 258.5d |
| 1.3.1.2.3.23.3 | **Electrical Works** | 2025-08-02 → 2025-08-04 (+2d) | 2025-10-25 → 2025-10-27 (+2d) |  |
| PG-11203 | 1st Fix - GI wire pulling | 2025-08-02 → 2025-08-04 (+2d) | 2025-08-13 → 2025-08-14 (+1d) | 306.73d → 306.33d |
| PG-11204 | 2nd Fix - Wiring works |  | 2025-10-01 → 2025-10-03 (+2d) | 272.9d → 272.5d |
| PG-11205 | Final Fix - Electrical Fixtures | 2025-10-18 → 2025-10-20 (+2d) | 2025-10-25 → 2025-10-27 (+2d) | 258.9d → 258.5d |
| 1.3.1.2.3.24 | **Floor 21** | 2025-08-16 → 2025-08-18 (+2d) | 2025-11-07 → 2025-11-08 (+1d) |  |
| 1.3.1.2.3.24.1 | **PHE Works** | 2025-08-16 → 2025-08-18 (+2d) | 2025-11-07 → 2025-11-08 (+1d) |  |
| PG-11206 | 1st Fix - Piping works | 2025-08-16 → 2025-08-18 (+2d) | 2025-08-29 → 2025-08-30 (+1d) | 16.4d → 16d |
| PG-11207 | 2nd Fix - diverter fixing & Pressure testing | 2025-08-25 → 2025-08-26 (+1d) | 2025-09-05 → 2025-09-06 (+1d) | 249.23d → 248.83d |
| PG-11208 | Final Fix - CP & Sanitary fixtures | 2025-10-24 → 2025-10-25 (+1d) | 2025-11-07 → 2025-11-08 (+1d) | 249.23d → 248.83d |
| 1.3.1.2.3.24.2 | **Fire Fighting Works** | 2025-08-25 → 2025-08-26 (+1d) | 2025-11-07 → 2025-11-08 (+1d) |  |
| PG-11209 | 1st Fix - Piping and Shaft hydrant works | 2025-08-25 → 2025-08-26 (+1d) | 2025-09-08 → 2025-09-09 (+1d) | 296.9d → 296.5d |
| PG-11210 | 2nd Fix - Sprinkler fixing & Pressure testing |  | 2025-10-14 → 2025-10-15 (+1d) | 258.23d → 257.83d |
| PG-11211 | Final Fix - Smoke & heat detectors, FHC , FAS Etc. | 2025-10-24 → 2025-10-25 (+1d) | 2025-11-07 → 2025-11-08 (+1d) | 249.23d → 248.83d |
| 1.3.1.2.3.24.3 | **Electrical Works** | 2025-08-16 → 2025-08-18 (+2d) | 2025-10-25 → 2025-10-27 (+2d) |  |
| PG-11212 | 1st Fix - GI wire pulling | 2025-08-16 → 2025-08-18 (+2d) | 2025-08-25 → 2025-08-26 (+1d) | 296.9d → 296.5d |
| PG-11213 | 2nd Fix - Wiring works |  | 2025-10-01 → 2025-10-03 (+2d) | 273.23d → 272.83d |
| PG-11214 | Final Fix - Electrical Fixtures | 2025-10-18 → 2025-10-20 (+2d) | 2025-10-25 → 2025-10-27 (+2d) | 259.23d → 258.83d |
| 1.3.1.2.3.25 | **Floor 22** | 2025-09-06 → 2025-09-08 (+2d) |  |  |
| 1.3.1.2.3.25.1 | **PHE Works** | 2025-09-06 → 2025-09-08 (+2d) |  |  |
| PG-11215 | 1st Fix - Piping works | 2025-09-06 → 2025-09-08 (+2d) | 2025-09-20 → 2025-09-22 (+2d) | 125.23d → 124.83d |
| PG-11216 | 2nd Fix - diverter fixing & Pressure testing | 2025-09-15 → 2025-09-16 (+1d) | 2025-09-27 → 2025-09-29 (+2d) | 134.73d → 134.33d |
| PG-11217 | Final Fix - CP & Sanitary fixtures | 2025-11-18 → 2025-11-19 (+1d) |  | 229.4d → 229d |
| 1.3.1.2.3.25.2 | **Fire Fighting Works** | 2025-09-16 → 2025-09-17 (+1d) |  |  |
| PG-11218 | 1st Fix - Piping and Shaft hydrant works | 2025-09-16 → 2025-09-17 (+1d) | 2025-09-30 → 2025-10-01 (+1d) | 146.9d → 146.5d |
| PG-11219 | 2nd Fix - Sprinkler fixing & Pressure testing | 2025-10-23 → 2025-10-24 (+1d) | 2025-11-06 → 2025-11-07 (+1d) | 239.4d → 239d |
| PG-11220 | Final Fix - Smoke & heat detectors, FHC , FAS Etc. | 2025-11-18 → 2025-11-19 (+1d) |  | 229.4d → 229d |
| 1.3.1.2.3.25.3 | **Electrical Works** | 2025-09-06 → 2025-09-08 (+2d) |  |  |
| PG-11221 | 1st Fix - GI wire pulling | 2025-09-06 → 2025-09-08 (+2d) | 2025-09-16 → 2025-09-17 (+1d) | 16.4d → 16d |
| PG-11222 | 2nd Fix - Wiring works | 2025-10-16 → 2025-10-17 (+1d) | 2025-11-05 → 2025-11-06 (+1d) | 244.4d → 244d |

| ID | Task | Start | Finish | Complete | Total float |
| --- | --- | --- | --- | --- | --- |
| PG-11223 | Final Fix - Electrical Fixtures | 2025-11-22 → 2025-11-24 (+2d) |  |  | 229.4d → 229d |
| 1.3.1.2.3.26 | **Floor 23** | 2025-09-29 → 2025-09-30 (+1d) | 2025-12-19 → 2025-12-20 (+1d) |  |  |
| 1.3.1.2.3.26.1 | **PHE Works** | 2025-09-29 → 2025-09-30 (+1d) | 2025-12-19 → 2025-12-20 (+1d) |  |  |
| PG-11224 | 1st Fix - Piping works | 2025-09-29 → 2025-09-30 (+1d) |  |  | 125.23d → 124.83d |
| PG-11225 | 2nd Fix - diverter fixing & Pressure testing | 2025-10-09 → 2025-10-10 (+1d) |  |  | 211.4d → 211d |
| PG-11226 | Final Fix - CP & Sanitary fixtures |  | 2025-12-19 → 2025-12-20 (+1d) |  | 211.4d → 211d |
| 1.3.1.2.3.26.2 | **Fire Fighting Works** | 2025-10-09 → 2025-10-10 (+1d) | 2025-12-19 → 2025-12-20 (+1d) |  |  |
| PG-11227 | 1st Fix - Piping and Shaft hydrant works | 2025-10-09 → 2025-10-10 (+1d) |  |  | 258.23d → 257.83d |
| PG-11228 | 2nd Fix - Sprinkler fixing & Pressure testing | 2025-11-15 → 2025-11-17 (+2d) |  |  | 221.4d → 221d |
| PG-11229 | Final Fix - Smoke & heat detectors, FHC , FAS Etc. |  | 2025-12-19 → 2025-12-20 (+1d) |  | 211.4d → 211d |
| 1.3.1.2.3.26.3 | **Electrical Works** | 2025-09-29 → 2025-09-30 (+1d) | 2025-12-19 → 2025-12-20 (+1d) |  |  |
| PG-11230 | 1st Fix - GI wire pulling | 2025-09-29 → 2025-09-30 (+1d) |  |  | 258.23d → 257.83d |
| PG-11231 | 2nd Fix - Wiring works | 2025-11-08 → 2025-11-10 (+2d) |  |  | 226.4d → 226d |
| PG-11232 | Final Fix - Electrical Fixtures |  | 2025-12-19 → 2025-12-20 (+1d) |  | 211.4d → 211d |
| 1.3.1.2.3.27 | **Floor 24** |  | 2026-01-09 → 2026-01-10 (+1d) |  |  |
| 1.3.1.2.3.27.1 | **PHE Works** |  | 2026-01-09 → 2026-01-10 (+1d) |  |  |
| PG-11233 | 1st Fix - Piping works |  | 2025-11-04 → 2025-11-05 (+1d) |  | 125.23d → 124.83d |
| PG-11234 | 2nd Fix - diverter fixing & Pressure testing |  | 2025-11-11 → 2025-11-12 (+1d) |  | 192.23d → 191.83d |
| PG-11235 | Final Fix - CP & Sanitary fixtures | 2025-12-29 → 2025-12-30 (+1d) | 2026-01-09 → 2026-01-10 (+1d) |  | 192.23d → 191.83d |
| 1.3.1.2.3.27.2 | **Fire Fighting Works** | 2025-10-30 → 2025-10-31 (+1d) | 2026-01-09 → 2026-01-10 (+1d) |  |  |
| PG-11236 | 1st Fix - Piping and Shaft hydrant works | 2025-10-30 → 2025-10-31 (+1d) | 2025-11-13 → 2025-11-14 (+1d) |  | 240.9d → 240.5d |
| PG-11237 | 2nd Fix - Sprinkler fixing & Pressure testing |  | 2025-12-18 → 2025-12-19 (+1d) |  | 200.73d → 200.33d |
| PG-11238 | Final Fix - Smoke & heat detectors, FHC , FAS Etc. | 2025-12-29 → 2025-12-30 (+1d) | 2026-01-09 → 2026-01-10 (+1d) |  | 192.23d → 191.83d |
| 1.3.1.2.3.27.3 | **Electrical Works** |  | 2026-01-09 → 2026-01-10 (+1d) |  |  |
| PG-11239 | 1st Fix - GI wire pulling |  | 2025-10-29 → 2025-10-30 (+1d) |  | 240.9d → 240.5d |
| PG-11240 | 2nd Fix - Wiring works |  | 2025-12-17 → 2025-12-18 (+1d) |  | 206.23d → 205.83d |
| PG-11241 | Final Fix - Electrical Fixtures | 2026-01-02 → 2026-01-03 (+1d) | 2026-01-09 → 2026-01-10 (+1d) |  | 192.23d → 191.83d |
| 1.3.1.2.3.28 | **Floor 25** | 2025-11-12 → 2025-11-13 (+1d) | 2026-02-03 → 2026-02-04 (+1d) |  |  |
| 1.3.1.2.3.28.1 | **PHE Works** | 2025-11-12 → 2025-11-13 (+1d) | 2026-02-03 → 2026-02-04 (+1d) |  |  |
| PG-11242 | 1st Fix - Piping works | 2025-11-12 → 2025-11-13 (+1d) | 2025-11-26 → 2025-11-27 (+1d) |  | 125.23d → 124.83d |
| PG-11243 | 2nd Fix - diverter fixing & Pressure testing | 2025-11-21 → 2025-11-22 (+1d) | 2025-12-03 → 2025-12-04 (+1d) |  | 172.73d → 172.33d |
| PG-11244 | Final Fix - CP & Sanitary fixtures | 2026-01-21 → 2026-01-22 (+1d) | 2026-02-03 → 2026-02-04 (+1d) |  | 172.73d → 172.33d |
| 1.3.1.2.3.28.2 | **Fire Fighting Works** |  | 2026-02-03 → 2026-02-04 (+1d) |  |  |
| PG-11245 | 1st Fix - Piping and Shaft hydrant works |  | 2025-12-05 → 2025-12-06 (+1d) |  | 220.4d → 220d |
| PG-11246 | 2nd Fix - Sprinkler fixing & Pressure testing |  | 2026-01-09 → 2026-01-10 (+1d) |  | 182.73d → 182.33d |
| PG-11247 | Final Fix - Smoke & heat detectors, FHC , FAS Etc. | 2026-01-21 → 2026-01-22 (+1d) | 2026-02-03 → 2026-02-04 (+1d) |  | 172.73d → 172.33d |
| 1.3.1.2.3.28.3 | **Electrical Works** | 2025-11-12 → 2025-11-13 (+1d) | 2026-02-03 → 2026-02-04 (+1d) |  |  |
| PG-11248 | 1st Fix - GI wire pulling | 2025-11-12 → 2025-11-13 (+1d) | 2025-11-21 → 2025-11-22 (+1d) |  | 220.4d → 220d |
| PG-11249 | 2nd Fix - Wiring works |  | 2026-01-08 → 2026-01-09 (+1d) |  | 188.73d → 188.33d |
| PG-11250 | Final Fix - Electrical Fixtures | 2026-01-28 → 2026-01-29 (+1d) | 2026-02-03 → 2026-02-04 (+1d) |  | 172.73d → 172.33d |
| 1.3.1.2.3.29 | **Floor 26** | 2025-12-04 → 2025-12-05 (+1d) | 2026-02-24 → 2026-02-25 (+1d) |  |  |
| 1.3.1.2.3.29.1 | **PHE Works** | 2025-12-04 → 2025-12-05 (+1d) | 2026-02-24 → 2026-02-25 (+1d) |  |  |
| PG-11251 | 1st Fix - Piping works | 2025-12-04 → 2025-12-05 (+1d) |  |  | 125.23d → 124.83d |
| PG-11252 | 2nd Fix - diverter fixing & Pressure testing | 2025-12-13 → 2025-12-15 (+2d) |  |  | 125.23d → 124.83d |
| PG-11253 | Final Fix - CP & Sanitary fixtures |  | 2026-02-24 → 2026-02-25 (+1d) |  | 125.23d → 124.83d |
| 1.3.1.2.3.29.2 | **Fire Fighting Works** | 2025-12-13 → 2025-12-15 (+2d) | 2026-02-24 → 2026-02-25 (+1d) |  |  |
| PG-11254 | 1st Fix - Piping and Shaft hydrant works | 2025-12-13 → 2025-12-15 (+2d) | 2025-12-27 → 2025-12-29 (+2d) |  | 203.4d → 203d |
| PG-11255 | 2nd Fix - Sprinkler fixing & Pressure testing | 2026-01-19 → 2026-01-20 (+1d) |  |  | 134.23d → 133.83d |
| PG-11256 | Final Fix - Smoke & heat detectors, FHC , FAS Etc. |  | 2026-02-24 → 2026-02-25 (+1d) |  | 125.23d → 124.83d |
| 1.3.1.2.3.29.3 | **Electrical Works** | 2025-12-04 → 2025-12-05 (+1d) | 2026-02-24 → 2026-02-25 (+1d) |  |  |
| PG-11257 | 1st Fix - GI wire pulling | 2025-12-04 → 2025-12-05 (+1d) | 2025-12-13 → 2025-12-15 (+2d) |  | 203.4d → 203d |
| PG-11258 | 2nd Fix - Wiring works | 2026-01-12 → 2026-01-13 (+1d) |  |  | 140.23d → 139.83d |
| PG-11259 | Final Fix - Electrical Fixtures |  | 2026-02-24 → 2026-02-25 (+1d) |  | 125.23d → 124.83d |
| 1.3.1.2.4 | **Civil Finishes - Units** |  | 2026-02-17 → 2026-02-18 (+1d) |  |  |
| 1.3.1.2.4.11 | **Floor 8** |  | 2025-05-15 → 2025-05-16 (+1d) |  |  |
| 1.3.1.2.4.11.1 | **Ceiling Finishing works - Civil** |  | 2025-05-15 → 2025-05-16 (+1d) |  |  |
| PG-11387 | Final Coat Painting |  | 2025-05-15 → 2025-05-16 A (+1d) | 75% → 100% | 424.94d → none |
| 1.3.1.2.4.11.2 | **Wall Finishing works - Civil** |  | 2025-05-13 → 2025-05-14 (+1d) |  |  |
| PG-11392 | Final Coat Painting |  | 2025-05-13 → 2025-05-14 A (+1d) | 81% → 100% | 391.76d → none |
| PG-11401 | Final Coat Painting |  |  | 36% → 68% | 417.89d → 418.39d |
| PG-11406 | Final Coat Painting |  |  | 35% → 67% | 383.21d → 383.71d |
| PG-11413 | Painting Works - Putty, Primer and 1st | 2025-05-12 A |  | 0% → 65% | 404.08d → 404.64d |
| 1.3.1.2.4.13.2 | **Wall Finishing works - Civil** |  | 2025-06-09 → 2025-06-07 (-2d) |  |  |
| PG-11417 | UPVC Windows & Sliding doors |  | 2025-05-12 A | 71% → 100% | 368.75d → none |
| PG-11419 | Painting Works - Putty, Primer and 1st | 2025-05-12 A | 2025-05-19 → 2025-05-17 (-2d) | 0% → 77% | 368.75d → 370.04d |
| PG-11420 | Final Coat Painting | 2025-05-19 → 2025-05-17 (-2d) | 2025-06-09 → 2025-06-07 (-2d) |  | 368.75d → 370.04d |
| 1.3.1.2.4.13.3 | **Floor Finishing Works - Civil** |  | 2025-05-19 → 2025-05-17 (-2d) |  |  |
| PG-11424 | Wooden doors | 2025-05-13 A | 2025-05-19 → 2025-05-17 (-2d) | 0% → 75% | 368.75d → 370.04d |
| 1.3.1.2.4.14 | **Floor 11** |  | 2025-06-20 → 2025-06-21 (+1d) |  |  |
| 1.3.1.2.4.14.1 | **Ceiling Finishing works - Civil** |  | 2025-06-20 → 2025-06-21 (+1d) |  |  |

| ID | Task | Start | Finish | Complete | Total float |
| --- | --- | --- | --- | --- | --- |
| PG-11428 | Toilet False ceiling | 2025-05-13 → 2025-05-14 A (+1d) | 2025-05-17 → 2025-05-19 (+2d) | 0% → 58% | 383.55d → 383.08d |
| PG-11427 | Painting Works - Putty, Primer and 1st | 2025-05-23 → 2025-05-24 (+1d) | 2025-05-30 → 2025-05-31 (+1d) |  | 394.05d → 393.58d |
| PG-11429 | Final Coat Painting | 2025-05-30 → 2025-05-31 (+1d) | 2025-06-20 → 2025-06-21 (+1d) |  | 394.05d → 393.58d |
| 1.3.1.2.4.14.2 | **Wall Finishing works - Civil** |  | 2025-06-20 → 2025-06-21 (+1d) |  |  |
| PG-11431 | UPVC Windows & Sliding doors | 2025-05-17 → 2025-05-19 (+2d) | 2025-05-23 → 2025-05-24 (+1d) |  | 358.72d → 358.25d |
| PG-11433 | Painting Works - Putty, Primer and 1st | 2025-05-23 → 2025-05-24 (+1d) | 2025-05-30 → 2025-05-31 (+1d) |  | 358.72d → 358.25d |
| PG-11434 | Final Coat Painting | 2025-05-30 → 2025-05-31 (+1d) | 2025-06-20 → 2025-06-21 (+1d) |  | 358.72d → 358.25d |
| 1.3.1.2.4.14.3 | **Floor Finishing Works - Civil** |  | 2025-05-30 → 2025-05-31 (+1d) |  |  |
| PG-11436 | Floor Tiling - Wet area |  | 2025-05-12 → 2025-05-13 A (+1d) | 56% → 100% | 358.72d → none |
| PG-11437 | Floor Tiling - Dry area | 2025-05-12 → 2025-05-13 A (+1d) | 2025-05-17 → 2025-05-19 (+2d) | 0% → 74% | 358.72d → 358.25d |
| PG-11438 | Wooden doors | 2025-05-24 → 2025-05-26 (+2d) | 2025-05-30 → 2025-05-31 (+1d) |  | 358.72d → 358.25d |
| PG-11440 | Cornice fixing | 2025-05-19 → 2025-05-17 (-2d) |  |  | 394.42d → 395.33d |
| PG-11442 | Toilet False ceiling | 2025-05-27 → 2025-05-26 (-1d) | 2025-05-31 → 2025-05-30 (-1d) |  | 372.67d → 373.75d |
| PG-11441 | Painting Works - Putty, Primer and 1st | 2025-06-06 → 2025-06-05 (-1d) | 2025-06-13 → 2025-06-12 (-1d) |  | 382.17d → 383.25d |
| PG-11443 | Final Coat Painting | 2025-06-13 → 2025-06-12 (-1d) |  |  | 382.17d → 383.25d |
| PG-11446 | Dadoing - Wet area | 2025-05-14 A | 2025-05-20 → 2025-05-19 (-1d) | 0% → 47% | 346.67d → 347.75d |
| PG-11445 | UPVC Windows & Sliding doors | 2025-05-31 → 2025-05-30 (-1d) | 2025-06-06 → 2025-06-05 (-1d) |  | 346.67d → 347.75d |
| PG-11447 | Painting Works - Putty, Primer and 1st | 2025-06-06 → 2025-06-05 (-1d) | 2025-06-13 → 2025-06-12 (-1d) |  | 346.67d → 347.75d |
| PG-11448 | Final Coat Painting | 2025-06-13 → 2025-06-12 (-1d) |  |  | 346.67d → 347.75d |
| 1.3.1.2.4.15.3 | **Floor Finishing Works - Civil** |  | 2025-06-13 → 2025-06-12 (-1d) |  |  |
| PG-11450 | Floor Tiling - Wet area | 2025-05-20 → 2025-05-19 (-1d) | 2025-05-26 → 2025-05-24 (-2d) |  | 346.67d → 347.75d |
| PG-11451 | Floor Tiling - Dry area | 2025-05-26 → 2025-05-24 (-2d) | 2025-05-31 → 2025-05-30 (-1d) |  | 346.67d → 347.75d |
| PG-11452 | Wooden doors | 2025-06-07 → 2025-06-06 (-1d) | 2025-06-13 → 2025-06-12 (-1d) |  | 346.67d → 347.75d |
| 1.3.1.2.4.16 | **Floor 13** |  | 2025-07-17 → 2025-07-18 (+1d) |  |  |
| 1.3.1.2.4.16.1 | **Ceiling Finishing works - Civil** | 2025-05-14 → 2025-05-15 (+1d) | 2025-07-17 → 2025-07-18 (+1d) |  |  |
| PG-11453 | Gypsum Plastering | 2025-05-14 → 2025-05-15 A (+1d) | 2025-05-21 → 2025-05-22 (+1d) | 0% → 17% | 383.15d → 383.07d |
| PG-11454 | Cornice fixing | 2025-05-30 → 2025-05-31 (+1d) | 2025-06-04 → 2025-06-05 (+1d) |  | 383.15d → 382.9d |
| PG-11457 | Final Coat Painting |  | 2025-07-17 → 2025-07-18 (+1d) |  | 371.08d → 371.25d |
| 1.3.1.2.4.16.2 | **Wall Finishing works - Civil** |  | 2025-07-17 → 2025-07-18 (+1d) |  |  |
| PG-11458 | Balcony Railing Fixing works |  | 2025-05-09 → 2025-05-10 A (+1d) | 84% → 100% | 365.26d → none |
| PG-11462 | Final Coat Painting |  | 2025-07-17 → 2025-07-18 (+1d) |  | 336.42d → 336.59d |
| 1.3.1.2.4.17 | **Floor 14** | 2025-05-17 → 2025-05-19 (+2d) | 2025-07-31 → 2025-08-01 (+1d) |  |  |
| 1.3.1.2.4.17.1 | **Ceiling Finishing works - Civil** | 2025-05-28 → 2025-05-29 (+1d) | 2025-07-31 → 2025-08-01 (+1d) |  |  |
| PG-11467 | Gypsum Plastering | 2025-05-28 → 2025-05-29 (+1d) | 2025-06-04 → 2025-06-05 (+1d) |  | 371.07d → 370.67d |
| PG-11468 | Cornice fixing | 2025-06-13 → 2025-06-14 (+1d) | 2025-06-18 → 2025-06-19 (+1d) |  | 371.07d → 370.67d |
| PG-11470 | Toilet False ceiling | 2025-06-20 → 2025-06-21 (+1d) | 2025-06-25 → 2025-06-26 (+1d) |  | 352.07d → 351.67d |
| PG-11469 | Painting Works - Putty, Primer and 1st | 2025-07-01 → 2025-07-02 (+1d) | 2025-07-08 → 2025-07-09 (+1d) |  | 359.73d → 359.33d |
| PG-11471 | Final Coat Painting | 2025-07-08 → 2025-07-09 (+1d) | 2025-07-31 → 2025-08-01 (+1d) |  | 359.73d → 359.33d |
| 1.3.1.2.4.17.2 | **Wall Finishing works - Civil** | 2025-05-17 → 2025-05-19 (+2d) | 2025-07-31 → 2025-08-01 (+1d) |  |  |
| PG-11472 | Balcony Railing Fixing works | 2025-05-17 → 2025-05-19 (+2d) | 2025-05-22 → 2025-05-23 (+1d) |  | 354.07d → 353.67d |
| PG-11474 | Dadoing - Wet area | 2025-06-07 → 2025-06-09 (+2d) | 2025-06-13 → 2025-06-14 (+1d) |  | 325.07d → 324.67d |
| PG-11473 | UPVC Windows & Sliding doors | 2025-06-25 → 2025-06-26 (+1d) | 2025-07-01 → 2025-07-02 (+1d) |  | 325.07d → 324.67d |
| PG-11475 | Painting Works - Putty, Primer and 1st | 2025-07-01 → 2025-07-02 (+1d) | 2025-07-08 → 2025-07-09 (+1d) |  | 325.07d → 324.67d |
| PG-11476 | Final Coat Painting | 2025-07-08 → 2025-07-09 (+1d) | 2025-07-31 → 2025-08-01 (+1d) |  | 325.07d → 324.67d |
| 1.3.1.2.4.17.3 | **Floor Finishing Works - Civil** | 2025-05-17 → 2025-05-19 (+2d) | 2025-07-08 → 2025-07-09 (+1d) |  |  |
| PG-11477 | Waterproofing for sunken areas | 2025-05-17 → 2025-05-19 (+2d) | 2025-05-21 → 2025-05-22 (+1d) |  | 345.07d → 344.67d |
| PG-11478 | Floor Tiling - Wet area | 2025-06-13 → 2025-06-14 (+1d) | 2025-06-19 → 2025-06-20 (+1d) |  | 325.07d → 324.67d |
| PG-11479 | Floor Tiling - Dry area | 2025-06-19 → 2025-06-20 (+1d) | 2025-06-25 → 2025-06-26 (+1d) |  | 325.07d → 324.67d |
| PG-11480 | Wooden doors | 2025-07-02 → 2025-07-03 (+1d) | 2025-07-08 → 2025-07-09 (+1d) |  | 325.07d → 324.67d |
| 1.3.1.2.4.18 | **Floor 15** | 2025-05-30 → 2025-05-31 (+1d) | 2025-08-12 → 2025-08-13 (+1d) |  |  |
| 1.3.1.2.4.18.1 | **Ceiling Finishing works - Civil** | 2025-06-09 → 2025-06-10 (+1d) | 2025-08-12 → 2025-08-13 (+1d) |  |  |
| PG-11481 | Gypsum Plastering | 2025-06-09 → 2025-06-10 (+1d) | 2025-06-16 → 2025-06-17 (+1d) |  | 361.73d → 361.33d |
| PG-11482 | Cornice fixing | 2025-06-25 → 2025-06-26 (+1d) | 2025-06-30 → 2025-07-01 (+1d) |  | 361.73d → 361.33d |
| PG-11484 | Toilet False ceiling | 2025-07-03 → 2025-07-04 (+1d) | 2025-07-08 → 2025-07-09 (+1d) |  | 341.07d → 340.67d |
| PG-11483 | Painting Works - Putty, Primer and 1st | 2025-07-14 → 2025-07-15 (+1d) | 2025-07-21 → 2025-07-22 (+1d) |  | 349.57d → 349.17d |
| PG-11485 | Final Coat Painting | 2025-07-21 → 2025-07-22 (+1d) | 2025-08-12 → 2025-08-13 (+1d) |  | 349.57d → 349.17d |
| 1.3.1.2.4.18.2 | **Wall Finishing works - Civil** | 2025-05-30 → 2025-05-31 (+1d) | 2025-08-12 → 2025-08-13 (+1d) |  |  |
| PG-11486 | Balcony Railing Fixing works | 2025-05-30 → 2025-05-31 (+1d) | 2025-06-04 → 2025-06-05 (+1d) |  | 193.07d → 192.67d |
| PG-11488 | Dadoing - Wet area | 2025-06-20 → 2025-06-21 (+1d) | 2025-06-26 → 2025-06-27 (+1d) |  | 164.07d → 163.67d |
| PG-11487 | UPVC Windows & Sliding doors | 2025-07-08 → 2025-07-09 (+1d) | 2025-07-14 → 2025-07-15 (+1d) |  | 164.07d → 163.67d |
| PG-11489 | Painting Works - Putty, Primer and 1st | 2025-07-14 → 2025-07-15 (+1d) | 2025-07-21 → 2025-07-22 (+1d) |  | 164.07d → 163.67d |
| PG-11490 | Final Coat Painting | 2025-07-21 → 2025-07-22 (+1d) | 2025-08-12 → 2025-08-13 (+1d) |  | 315.07d → 314.67d |
| 1.3.1.2.4.18.3 | **Floor Finishing Works - Civil** | 2025-05-30 → 2025-05-31 (+1d) | 2025-07-21 → 2025-07-22 (+1d) |  |  |
| PG-11491 | Waterproofing for sunken areas | 2025-05-30 → 2025-05-31 (+1d) | 2025-06-03 → 2025-06-04 (+1d) |  | 184.07d → 183.67d |
| PG-11492 | Floor Tiling - Wet area | 2025-06-26 → 2025-06-27 (+1d) | 2025-07-02 → 2025-07-03 (+1d) |  | 164.07d → 163.67d |
| PG-11493 | Floor Tiling - Dry area | 2025-07-02 → 2025-07-03 (+1d) | 2025-07-08 → 2025-07-09 (+1d) |  | 164.07d → 163.67d |
| PG-11494 | Wooden doors | 2025-07-15 → 2025-07-16 (+1d) | 2025-07-21 → 2025-07-22 (+1d) |  | 164.07d → 163.67d |
| 1.3.1.2.4.19 | **Floor 16** | 2025-06-12 → 2025-06-13 (+1d) | 2025-08-26 → 2025-08-27 (+1d) |  |  |
| 1.3.1.2.4.19.1 | **Ceiling Finishing works - Civil** | 2025-06-21 → 2025-06-23 (+2d) | 2025-08-26 → 2025-08-27 (+1d) |  |  |
| PG-11495 | Gypsum Plastering | 2025-06-21 → 2025-06-23 (+2d) | 2025-06-28 → 2025-06-30 (+2d) |  | 350.57d → 350.17d |

| ID | Task | Start | Finish | Total float |
| --- | --- | --- | --- | --- |
| PG-11496 | Cornice fixing | 2025-07-08 → 2025-07-09 (+1d) | 2025-07-12 → 2025-07-14 (+2d) | 350.57d → 350.17d |
| PG-11498 | Toilet False ceiling | 2025-07-16 → 2025-07-17 (+1d) | 2025-07-21 → 2025-07-22 (+1d) | 328.9d → 328.5d |
| PG-11497 | Painting Works - Putty, Primer and 1st | 2025-07-26 → 2025-07-28 (+2d) | 2025-08-02 → 2025-08-04 (+2d) | 338.4d → 338d |
| PG-11499 | Final Coat Painting | 2025-08-02 → 2025-08-04 (+2d) | 2025-08-26 → 2025-08-27 (+1d) | 338.4d → 338d |
| 1.3.1.2.4.19.2 | **Wall Finishing works - Civil** | 2025-06-12 → 2025-06-13 (+1d) | 2025-08-25 → 2025-08-26 (+1d) |  |
| PG-11500 | Balcony Railing Fixing works | 2025-06-12 → 2025-06-13 (+1d) | 2025-06-17 → 2025-06-18 (+1d) | 333.73d → 333.33d |
| PG-11502 | Dadoing - Wet area | 2025-07-03 → 2025-07-04 (+1d) | 2025-07-09 → 2025-07-10 (+1d) | 304.73d → 304.33d |
| PG-11501 | UPVC Windows & Sliding doors | 2025-07-21 → 2025-07-22 (+1d) | 2025-07-26 → 2025-07-28 (+2d) | 304.73d → 304.33d |
| PG-11503 | Painting Works - Putty, Primer and 1st | 2025-07-26 → 2025-07-28 (+2d) | 2025-08-02 → 2025-08-04 (+2d) | 304.73d → 304.33d |
| PG-11504 | Final Coat Painting | 2025-08-02 → 2025-08-04 (+2d) | 2025-08-25 → 2025-08-26 (+1d) | 304.73d → 304.33d |
| 1.3.1.2.4.19.3 | **Floor Finishing Works - Civil** | 2025-06-12 → 2025-06-13 (+1d) | 2025-08-02 → 2025-08-04 (+2d) |  |
| PG-11505 | Waterproofing for sunken areas | 2025-06-12 → 2025-06-13 (+1d) | 2025-06-16 → 2025-06-17 (+1d) | 324.73d → 324.33d |
| PG-11506 | Floor Tiling - Wet area | 2025-07-09 → 2025-07-10 (+1d) | 2025-07-15 → 2025-07-16 (+1d) | 304.73d → 304.33d |
| PG-11507 | Floor Tiling - Dry area | 2025-07-15 → 2025-07-16 (+1d) | 2025-07-21 → 2025-07-22 (+1d) | 304.73d → 304.33d |
| PG-11508 | Wooden doors | 2025-07-28 → 2025-07-29 (+1d) | 2025-08-02 → 2025-08-04 (+2d) | 304.73d → 304.33d |
| 1.3.1.2.4.20 | **Floor 17** | 2025-06-25 → 2025-06-26 (+1d) | 2025-09-08 → 2025-09-09 (+1d) |  |
| 1.3.1.2.4.20.1 | **Ceiling Finishing works - Civil** | 2025-07-04 → 2025-07-05 (+1d) | 2025-09-08 → 2025-09-09 (+1d) |  |
| PG-11509 | Gypsum Plastering | 2025-07-04 → 2025-07-05 (+1d) | 2025-07-11 → 2025-07-12 (+1d) | 339.57d → 339.17d |
| PG-11510 | Cornice fixing | 2025-07-21 → 2025-07-22 (+1d) | 2025-07-25 → 2025-07-26 (+1d) | 339.57d → 339.17d |
| PG-11512 | Toilet False ceiling | 2025-07-29 → 2025-07-30 (+1d) | 2025-08-02 → 2025-08-04 (+2d) | 317.9d → 317.5d |
| PG-11511 | Painting Works - Putty, Primer and 1st | 2025-08-08 → 2025-08-09 (+1d) | 2025-08-16 → 2025-08-18 (+2d) | 327.4d → 327d |
| PG-11513 | Final Coat Painting | 2025-08-16 → 2025-08-18 (+2d) | 2025-09-08 → 2025-09-09 (+1d) | 327.4d → 327d |
| 1.3.1.2.4.20.2 | **Wall Finishing works - Civil** | 2025-06-25 → 2025-06-26 (+1d) | 2025-09-06 → 2025-09-08 (+2d) |  |
| PG-11514 | Balcony Railing Fixing works | 2025-06-25 → 2025-06-26 (+1d) | 2025-06-30 → 2025-07-01 (+1d) | 322.73d → 322.33d |
| PG-11516 | Dadoing - Wet area | 2025-07-16 → 2025-07-17 (+1d) | 2025-07-22 → 2025-07-23 (+1d) | 293.73d → 293.33d |
| PG-11515 | UPVC Windows & Sliding doors | 2025-08-02 → 2025-08-04 (+2d) | 2025-08-08 → 2025-08-09 (+1d) | 293.73d → 293.33d |
| PG-11517 | Painting Works - Putty, Primer and 1st | 2025-08-08 → 2025-08-09 (+1d) | 2025-08-16 → 2025-08-18 (+2d) | 293.73d → 293.33d |
| PG-11518 | Final Coat Painting | 2025-08-16 → 2025-08-18 (+2d) | 2025-09-06 → 2025-09-08 (+2d) | 293.73d → 293.33d |
| 1.3.1.2.4.20.3 | **Floor Finishing Works - Civil** | 2025-06-25 → 2025-06-26 (+1d) | 2025-08-16 → 2025-08-18 (+2d) |  |
| PG-11519 | Waterproofing for sunken areas | 2025-06-25 → 2025-06-26 (+1d) | 2025-06-28 → 2025-06-30 (+2d) | 313.73d → 313.33d |
| PG-11520 | Floor Tiling - Wet area | 2025-07-22 → 2025-07-23 (+1d) | 2025-07-28 → 2025-07-29 (+1d) | 293.73d → 293.33d |
| PG-11521 | Floor Tiling - Dry area | 2025-07-28 → 2025-07-29 (+1d) | 2025-08-02 → 2025-08-04 (+2d) | 293.73d → 293.33d |
| PG-11522 | Wooden doors | 2025-08-09 → 2025-08-11 (+2d) | 2025-08-16 → 2025-08-18 (+2d) | 293.73d → 293.33d |
| 1.3.1.2.4.21 | **Floor 18** | 2025-07-08 → 2025-07-09 (+1d) | 2025-09-20 → 2025-09-22 (+2d) |  |
| 1.3.1.2.4.21.1 | **Ceiling Finishing works - Civil** | 2025-07-17 → 2025-07-18 (+1d) | 2025-09-20 → 2025-09-22 (+2d) |  |
| PG-11523 | Gypsum Plastering | 2025-07-17 → 2025-07-18 (+1d) | 2025-07-24 → 2025-07-25 (+1d) | 329.57d → 329.17d |
| PG-11524 | Cornice fixing | 2025-08-02 → 2025-08-04 (+2d) | 2025-08-07 → 2025-08-08 (+1d) | 329.57d → 329.17d |
| PG-11526 | Toilet False ceiling | 2025-08-11 → 2025-08-12 (+1d) | 2025-08-16 → 2025-08-18 (+2d) | 306.9d → 306.5d |
| PG-11525 | Painting Works - Putty, Primer and 1st | 2025-08-22 → 2025-08-23 (+1d) | 2025-08-29 → 2025-08-30 (+1d) | 317.73d → 317.33d |
| PG-11527 | Final Coat Painting | 2025-08-29 → 2025-08-30 (+1d) | 2025-09-20 → 2025-09-22 (+2d) | 317.73d → 317.33d |
| 1.3.1.2.4.21.2 | **Wall Finishing works - Civil** | 2025-07-08 → 2025-07-09 (+1d) | 2025-09-20 → 2025-09-22 (+2d) |  |
| PG-11528 | Balcony Railing Fixing works | 2025-07-08 → 2025-07-09 (+1d) | 2025-07-12 → 2025-07-14 (+2d) | 310.57d → 310.17d |
| PG-11530 | Dadoing - Wet area | 2025-07-29 → 2025-07-30 (+1d) | 2025-08-04 → 2025-08-05 (+1d) | 281.9d → 281.5d |
| PG-11529 | UPVC Windows & Sliding doors | 2025-08-16 → 2025-08-18 (+2d) | 2025-08-22 → 2025-08-23 (+1d) | 281.9d → 281.5d |
| PG-11531 | Painting Works - Putty, Primer and 1st | 2025-08-22 → 2025-08-23 (+1d) | 2025-08-29 → 2025-08-30 (+1d) | 281.9d → 281.5d |
| PG-11532 | Final Coat Painting | 2025-08-29 → 2025-08-30 (+1d) | 2025-09-20 → 2025-09-22 (+2d) | 281.9d → 281.5d |
| 1.3.1.2.4.21.3 | **Floor Finishing Works - Civil** | 2025-07-08 → 2025-07-09 (+1d) | 2025-08-29 → 2025-08-30 (+1d) |  |
| PG-11533 | Waterproofing for sunken areas | 2025-07-08 → 2025-07-09 (+1d) | 2025-07-11 → 2025-07-12 (+1d) | 301.57d → 301.17d |
| PG-11534 | Floor Tiling - Wet area | 2025-08-04 → 2025-08-05 (+1d) | 2025-08-09 → 2025-08-11 (+2d) | 281.9d → 281.5d |
| PG-11535 | Floor Tiling - Dry area | 2025-08-09 → 2025-08-11 (+2d) | 2025-08-16 → 2025-08-18 (+2d) | 281.9d → 281.5d |
| PG-11536 | Wooden doors | 2025-08-23 → 2025-08-25 (+2d) | 2025-08-29 → 2025-08-30 (+1d) | 281.9d → 281.5d |
| 1.3.1.2.4.22 | **Floor 19** | 2025-07-21 → 2025-07-22 (+1d) | 2025-10-04 → 2025-10-06 (+2d) |  |
| 1.3.1.2.4.22.1 | **Ceiling Finishing works - Civil** | 2025-07-30 → 2025-07-31 (+1d) | 2025-10-04 → 2025-10-06 (+2d) |  |
| PG-11537 | Gypsum Plastering | 2025-07-30 → 2025-07-31 (+1d) | 2025-08-06 → 2025-08-07 (+1d) | 318.57d → 318.17d |
| PG-11538 | Cornice fixing |  | 2025-08-21 → 2025-08-22 (+1d) | 318.57d → 318.17d |
| PG-11540 | Toilet False ceiling | 2025-08-25 → 2025-08-26 (+1d) | 2025-08-29 → 2025-08-30 (+1d) | 295.9d → 295.5d |
| PG-11539 | Painting Works - Putty, Primer and 1st | 2025-09-04 → 2025-09-05 (+1d) | 2025-09-11 → 2025-09-12 (+1d) | 306.73d → 306.33d |
| PG-11541 | Final Coat Painting | 2025-09-11 → 2025-09-12 (+1d) | 2025-10-04 → 2025-10-06 (+2d) | 306.73d → 306.33d |
| 1.3.1.2.4.22.2 | **Wall Finishing works - Civil** | 2025-07-21 → 2025-07-22 (+1d) | 2025-10-04 → 2025-10-06 (+2d) |  |
| PG-11542 | Balcony Railing Fixing works | 2025-07-21 → 2025-07-22 (+1d) | 2025-07-25 → 2025-07-26 (+1d) | 299.57d → 299.17d |
| PG-11544 | Dadoing - Wet area | 2025-08-11 → 2025-08-12 (+1d) | 2025-08-18 → 2025-08-19 (+1d) | 270.9d → 270.5d |
| PG-11543 | UPVC Windows & Sliding doors | 2025-08-29 → 2025-08-30 (+1d) | 2025-09-04 → 2025-09-05 (+1d) | 270.9d → 270.5d |
| PG-11545 | Painting Works - Putty, Primer and 1st | 2025-09-04 → 2025-09-05 (+1d) | 2025-09-11 → 2025-09-12 (+1d) | 270.9d → 270.5d |
| PG-11546 | Final Coat Painting | 2025-09-11 → 2025-09-12 (+1d) | 2025-10-04 → 2025-10-06 (+2d) | 270.9d → 270.5d |
| 1.3.1.2.4.22.3 | **Floor Finishing Works - Civil** | 2025-07-21 → 2025-07-22 (+1d) | 2025-09-11 → 2025-09-12 (+1d) |  |
| PG-11547 | Waterproofing for sunken areas | 2025-07-21 → 2025-07-22 (+1d) | 2025-07-24 → 2025-07-25 (+1d) | 290.57d → 290.17d |
| PG-11548 | Floor Tiling - Wet area | 2025-08-18 → 2025-08-19 (+1d) | 2025-08-23 → 2025-08-25 (+2d) | 270.9d → 270.5d |
| PG-11549 | Floor Tiling - Dry area | 2025-08-23 → 2025-08-25 (+2d) | 2025-08-29 → 2025-08-30 (+1d) | 270.9d → 270.5d |
| PG-11550 | Wooden doors | 2025-09-05 → 2025-09-06 (+1d) | 2025-09-11 → 2025-09-12 (+1d) | 270.9d → 270.5d |
| 1.3.1.2.4.23 | **Floor 20** | 2025-08-02 → 2025-08-04 (+2d) | 2025-10-18 → 2025-10-20 (+2d) |  |

| ID | Task | Start | Finish | Total float |
| --- | --- | --- | --- | --- |
| 1.3.1.2.4.23.1 | **Ceiling Finishing works - Civil** | 2025-08-13 → 2025-08-14 (+1d) | 2025-10-18 → 2025-10-20 (+2d) |  |
| PG-11551 | Gypsum Plastering | 2025-08-13 → 2025-08-14 (+1d) | 2025-08-21 → 2025-08-22 (+1d) | 306.73d → 306.33d |
| PG-11552 | Cornice fixing | 2025-08-30 → 2025-09-01 (+2d) | 2025-09-04 → 2025-09-05 (+1d) | 306.73d → 306.33d |
| PG-11554 | Toilet False ceiling | 2025-09-08 → 2025-09-09 (+1d) | 2025-09-12 → 2025-09-13 (+1d) | 283.9d → 283.5d |
| PG-11553 | Painting Works - Putty, Primer and 1st | 2025-09-18 → 2025-09-19 (+1d) | 2025-09-25 → 2025-09-26 (+1d) | 294.73d → 294.33d |
| PG-11555 | Final Coat Painting | 2025-09-25 → 2025-09-26 (+1d) | 2025-10-18 → 2025-10-20 (+2d) | 294.73d → 294.33d |
| 1.3.1.2.4.23.2 | **Wall Finishing works - Civil** | 2025-08-02 → 2025-08-04 (+2d) | 2025-10-18 → 2025-10-20 (+2d) |  |
| PG-11556 | Balcony Railing Fixing works | 2025-08-02 → 2025-08-04 (+2d) | 2025-08-07 → 2025-08-08 (+1d) | 288.57d → 288.17d |
| PG-11558 | Dadoing - Wet area | 2025-08-26 → 2025-08-27 (+1d) | 2025-09-01 → 2025-09-02 (+1d) | 258.9d → 258.5d |
| PG-11557 | UPVC Windows & Sliding doors | 2025-09-12 → 2025-09-13 (+1d) | 2025-09-18 → 2025-09-19 (+1d) | 258.9d → 258.5d |
| PG-11559 | Painting Works - Putty, Primer and 1st | 2025-09-18 → 2025-09-19 (+1d) | 2025-09-25 → 2025-09-26 (+1d) | 258.9d → 258.5d |
| PG-11560 | Final Coat Painting | 2025-09-25 → 2025-09-26 (+1d) | 2025-10-18 → 2025-10-20 (+2d) | 258.9d → 258.5d |
| 1.3.1.2.4.23.3 | **Floor Finishing Works - Civil** | 2025-08-02 → 2025-08-04 (+2d) | 2025-09-25 → 2025-09-26 (+1d) |  |
| PG-11561 | Waterproofing for sunken areas | 2025-08-02 → 2025-08-04 (+2d) | 2025-08-06 → 2025-08-07 (+1d) | 279.57d → 279.17d |
| PG-11562 | Floor Tiling - Wet area | 2025-09-01 → 2025-09-02 (+1d) | 2025-09-06 → 2025-09-08 (+2d) | 258.9d → 258.5d |
| PG-11563 | Floor Tiling - Dry area | 2025-09-06 → 2025-09-08 (+2d) | 2025-09-12 → 2025-09-13 (+1d) | 258.9d → 258.5d |
| PG-11564 | Wooden doors | 2025-09-19 → 2025-09-20 (+1d) | 2025-09-25 → 2025-09-26 (+1d) | 258.9d → 258.5d |
| 1.3.1.2.4.24 | **Floor 21** | 2025-08-16 → 2025-08-18 (+2d) | 2025-10-30 → 2025-10-31 (+1d) |  |
| 1.3.1.2.4.24.1 | **Ceiling Finishing works - Civil** | 2025-08-25 → 2025-08-26 (+1d) | 2025-10-30 → 2025-10-31 (+1d) |  |
| PG-11565 | Gypsum Plastering | 2025-08-25 → 2025-08-26 (+1d) | 2025-09-01 → 2025-09-02 (+1d) | 296.9d → 296.5d |
| PG-11566 | Cornice fixing | 2025-09-10 → 2025-09-11 (+1d) | 2025-09-15 → 2025-09-16 (+1d) | 296.9d → 296.5d |
| PG-11568 | Toilet False ceiling | 2025-09-18 → 2025-09-19 (+1d) | 2025-09-23 → 2025-09-24 (+1d) | 275.23d → 274.83d |
| PG-11567 | Painting Works - Putty, Primer and 1st | 2025-09-29 → 2025-09-30 (+1d) | 2025-10-07 → 2025-10-08 (+1d) | 284.9d → 284.5d |
| PG-11569 | Final Coat Painting | 2025-10-07 → 2025-10-08 (+1d) | 2025-10-30 → 2025-10-31 (+1d) | 284.9d → 284.5d |
| 1.3.1.2.4.24.2 | **Wall Finishing works - Civil** | 2025-08-16 → 2025-08-18 (+2d) | 2025-10-30 → 2025-10-31 (+1d) |  |
| PG-11570 | Balcony Railing Fixing works | 2025-08-16 → 2025-08-18 (+2d) | 2025-08-21 → 2025-08-22 (+1d) | 276.9d → 276.5d |
| PG-11572 | Dadoing - Wet area | 2025-09-05 → 2025-09-06 (+1d) | 2025-09-11 → 2025-09-12 (+1d) | 249.23d → 248.83d |
| PG-11571 | UPVC Windows & Sliding doors | 2025-09-23 → 2025-09-24 (+1d) | 2025-09-29 → 2025-09-30 (+1d) | 249.23d → 248.83d |
| PG-11573 | Painting Works - Putty, Primer and 1st | 2025-09-29 → 2025-09-30 (+1d) | 2025-10-07 → 2025-10-08 (+1d) | 249.23d → 248.83d |
| PG-11574 | Final Coat Painting | 2025-10-07 → 2025-10-08 (+1d) | 2025-10-30 → 2025-10-31 (+1d) | 249.23d → 248.83d |
| 1.3.1.2.4.24.3 | **Floor Finishing Works - Civil** | 2025-08-16 → 2025-08-18 (+2d) | 2025-10-07 → 2025-10-08 (+1d) |  |
| PG-11575 | Waterproofing for sunken areas | 2025-08-16 → 2025-08-18 (+2d) | 2025-08-20 → 2025-08-21 (+1d) | 267.9d → 267.5d |
| PG-11576 | Floor Tiling - Wet area | 2025-09-11 → 2025-09-12 (+1d) | 2025-09-17 → 2025-09-18 (+1d) | 249.23d → 248.83d |
| PG-11577 | Floor Tiling - Dry area | 2025-09-17 → 2025-09-18 (+1d) | 2025-09-23 → 2025-09-24 (+1d) | 249.23d → 248.83d |
| PG-11578 | Wooden doors | 2025-09-30 → 2025-10-01 (+1d) | 2025-10-07 → 2025-10-08 (+1d) | 249.23d → 248.83d |
| 1.3.1.2.4.25 | **Floor 22** | 2025-09-06 → 2025-09-08 (+2d) |  |  |
| 1.3.1.2.4.25.1 | **Ceiling Finishing works - Civil** | 2025-09-16 → 2025-09-17 (+1d) |  |  |
| PG-11579 | Gypsum Plastering | 2025-09-16 → 2025-09-17 (+1d) | 2025-09-23 → 2025-09-24 (+1d) | 146.9d → 146.5d |
| PG-11580 | Cornice fixing | 2025-10-03 → 2025-10-04 (+1d) | 2025-10-08 → 2025-10-09 (+1d) | 146.9d → 146.5d |
| PG-11582 | Toilet False ceiling | 2025-10-11 → 2025-10-13 (+2d) | 2025-10-16 → 2025-10-17 (+1d) | 256.4d → 256d |
| PG-11581 | Painting Works - Putty, Primer and 1st | 2025-10-22 → 2025-10-23 (+1d) | 2025-10-29 → 2025-10-30 (+1d) | 134.73d → 134.33d |
| PG-11583 | Final Coat Painting | 2025-10-29 → 2025-10-30 (+1d) |  | 264.07d → 263.67d |
| 1.3.1.2.4.25.2 | **Wall Finishing works - Civil** | 2025-09-06 → 2025-09-08 (+2d) |  |  |
| PG-11584 | Balcony Railing Fixing works | 2025-09-06 → 2025-09-08 (+2d) | 2025-09-11 → 2025-09-12 (+1d) | 163.57d → 163.17d |
| PG-11586 | Dadoing - Wet area | 2025-09-27 → 2025-09-29 (+2d) | 2025-10-04 → 2025-10-06 (+2d) | 134.73d → 134.33d |
| PG-11585 | UPVC Windows & Sliding doors | 2025-10-16 → 2025-10-17 (+1d) | 2025-10-22 → 2025-10-23 (+1d) | 134.73d → 134.33d |
| PG-11587 | Painting Works - Putty, Primer and 1st | 2025-10-22 → 2025-10-23 (+1d) | 2025-10-29 → 2025-10-30 (+1d) | 229.4d → 229d |
| PG-11588 | Final Coat Painting | 2025-10-29 → 2025-10-30 (+1d) |  | 229.4d → 229d |
| 1.3.1.2.4.25.3 | **Floor Finishing Works - Civil** | 2025-09-06 → 2025-09-08 (+2d) | 2025-10-29 → 2025-10-30 (+1d) |  |
| PG-11589 | Waterproofing for sunken areas | 2025-09-06 → 2025-09-08 (+2d) | 2025-09-10 → 2025-09-11 (+1d) | 154.57d → 154.17d |
| PG-11590 | Floor Tiling - Wet area | 2025-10-04 → 2025-10-06 (+2d) | 2025-10-10 → 2025-10-11 (+1d) | 134.73d → 134.33d |
| PG-11591 | Floor Tiling - Dry area | 2025-10-10 → 2025-10-11 (+1d) | 2025-10-16 → 2025-10-17 (+1d) | 134.73d → 134.33d |
| PG-11592 | Wooden doors | 2025-10-23 → 2025-10-24 (+1d) | 2025-10-29 → 2025-10-30 (+1d) | 229.4d → 229d |
| 1.3.1.2.4.26 | **Floor 23** | 2025-09-29 → 2025-09-30 (+1d) | 2025-12-12 → 2025-12-13 (+1d) |  |
| 1.3.1.2.4.26.1 | **Ceiling Finishing works - Civil** |  | 2025-12-12 → 2025-12-13 (+1d) |  |
| PG-11597 | Final Coat Painting |  | 2025-12-12 → 2025-12-13 (+1d) | 247.23d → 246.83d |
| 1.3.1.2.4.26.2 | **Wall Finishing works - Civil** | 2025-09-29 → 2025-09-30 (+1d) | 2025-12-12 → 2025-12-13 (+1d) |  |
| PG-11598 | Balcony Railing Fixing works | 2025-09-29 → 2025-09-30 (+1d) | 2025-10-04 → 2025-10-06 (+2d) | 239.07d → 238.67d |
| PG-11602 | Final Coat Painting |  | 2025-12-12 → 2025-12-13 (+1d) | 211.4d → 211d |
| 1.3.1.2.4.26.3 | **Floor Finishing Works - Civil** | 2025-09-29 → 2025-09-30 (+1d) |  |  |
| PG-11603 | Waterproofing for sunken areas | 2025-09-29 → 2025-09-30 (+1d) | 2025-10-03 → 2025-10-04 (+1d) | 230.07d → 229.67d |
| 1.3.1.2.4.27 | **Floor 24** |  | 2026-01-02 → 2026-01-03 (+1d) |  |
| 1.3.1.2.4.27.1 | **Ceiling Finishing works - Civil** | 2025-10-29 → 2025-10-30 (+1d) | 2026-01-02 → 2026-01-03 (+1d) |  |
| PG-11607 | Gypsum Plastering | 2025-10-29 → 2025-10-30 (+1d) | 2025-11-06 → 2025-11-07 (+1d) | 240.9d → 240.5d |
| PG-11608 | Cornice fixing |  | 2025-11-20 → 2025-11-21 (+1d) | 240.9d → 240.5d |
| PG-11610 | Toilet False ceiling | 2025-11-24 → 2025-11-25 (+1d) | 2025-11-28 → 2025-11-29 (+1d) | 217.73d → 217.33d |
| PG-11609 | Painting Works - Putty, Primer and 1st | 2025-12-04 → 2025-12-05 (+1d) | 2025-12-11 → 2025-12-12 (+1d) | 228.9d → 228.5d |
| PG-11611 | Final Coat Painting | 2025-12-11 → 2025-12-12 (+1d) | 2026-01-02 → 2026-01-03 (+1d) | 228.9d → 228.5d |
| 1.3.1.2.4.27.2 | **Wall Finishing works - Civil** |  | 2026-01-02 → 2026-01-03 (+1d) |  |
| PG-11614 | Dadoing - Wet area | 2025-11-11 → 2025-11-12 (+1d) | 2025-11-17 → 2025-11-18 (+1d) | 192.23d → 191.83d |

| ID | Task | Start | Finish | Total float |
| --- | --- | --- | --- | --- |
| PG-11613 | UPVC Windows & Sliding doors | 2025-11-28 → 2025-11-29 (+1d) | 2025-12-04 → 2025-12-05 (+1d) | 192.23d → 191.83d |
| PG-11615 | Painting Works - Putty, Primer and 1st | 2025-12-04 → 2025-12-05 (+1d) | 2025-12-11 → 2025-12-12 (+1d) | 192.23d → 191.83d |
| PG-11616 | Final Coat Painting | 2025-12-11 → 2025-12-12 (+1d) | 2026-01-02 → 2026-01-03 (+1d) | 192.23d → 191.83d |
| 1.3.1.2.4.27.3 | **Floor Finishing Works - Civil** |  | 2025-12-11 → 2025-12-12 (+1d) |  |
| PG-11618 | Floor Tiling - Wet area | 2025-11-17 → 2025-11-18 (+1d) | 2025-11-22 → 2025-11-24 (+2d) | 192.23d → 191.83d |
| PG-11619 | Floor Tiling - Dry area | 2025-11-22 → 2025-11-24 (+2d) | 2025-11-28 → 2025-11-29 (+1d) | 192.23d → 191.83d |
| PG-11620 | Wooden doors | 2025-12-05 → 2025-12-06 (+1d) | 2025-12-11 → 2025-12-12 (+1d) | 192.23d → 191.83d |
| 1.3.1.2.4.28 | **Floor 25** | 2025-11-12 → 2025-11-13 (+1d) | 2026-01-27 → 2026-01-28 (+1d) |  |
| 1.3.1.2.4.28.1 | **Ceiling Finishing works - Civil** | 2025-11-21 → 2025-11-22 (+1d) | 2026-01-27 → 2026-01-28 (+1d) |  |
| PG-11621 | Gypsum Plastering | 2025-11-21 → 2025-11-22 (+1d) | 2025-11-28 → 2025-11-29 (+1d) | 220.4d → 220d |
| PG-11622 | Cornice fixing | 2025-12-08 → 2025-12-09 (+1d) | 2025-12-12 → 2025-12-13 (+1d) | 220.4d → 220d |
| PG-11624 | Toilet False ceiling | 2025-12-16 → 2025-12-17 (+1d) | 2025-12-20 → 2025-12-22 (+2d) | 199.73d → 199.33d |
| PG-11623 | Painting Works - Putty, Primer and 1st | 2025-12-26 → 2025-12-27 (+1d) | 2026-01-02 → 2026-01-03 (+1d) | 208.4d → 208d |
| PG-11625 | Final Coat Painting | 2026-01-02 → 2026-01-03 (+1d) | 2026-01-27 → 2026-01-28 (+1d) | 208.4d → 208d |
| 1.3.1.2.4.28.2 | **Wall Finishing works - Civil** | 2025-11-12 → 2025-11-13 (+1d) | 2026-01-27 → 2026-01-28 (+1d) |  |
| PG-11626 | Balcony Railing Fixing works | 2025-11-12 → 2025-11-13 (+1d) | 2025-11-17 → 2025-11-18 (+1d) | 201.4d → 201d |
| PG-11628 | Dadoing - Wet area | 2025-12-03 → 2025-12-04 (+1d) | 2025-12-09 → 2025-12-10 (+1d) | 172.73d → 172.33d |
| PG-11627 | UPVC Windows & Sliding doors | 2025-12-20 → 2025-12-22 (+2d) | 2025-12-26 → 2025-12-27 (+1d) | 172.73d → 172.33d |
| PG-11629 | Painting Works - Putty, Primer and 1st | 2025-12-26 → 2025-12-27 (+1d) | 2026-01-02 → 2026-01-03 (+1d) | 172.73d → 172.33d |
| PG-11630 | Final Coat Painting | 2026-01-02 → 2026-01-03 (+1d) | 2026-01-27 → 2026-01-28 (+1d) | 172.73d → 172.33d |
| 1.3.1.2.4.28.3 | **Floor Finishing Works - Civil** | 2025-11-12 → 2025-11-13 (+1d) | 2026-01-02 → 2026-01-03 (+1d) |  |
| PG-11631 | Waterproofing for sunken areas | 2025-11-12 → 2025-11-13 (+1d) | 2025-11-15 → 2025-11-17 (+2d) | 192.4d → 192d |
| PG-11632 | Floor Tiling - Wet area | 2025-12-09 → 2025-12-10 (+1d) | 2025-12-15 → 2025-12-16 (+1d) | 172.73d → 172.33d |
| PG-11633 | Floor Tiling - Dry area | 2025-12-15 → 2025-12-16 (+1d) | 2025-12-20 → 2025-12-22 (+2d) | 172.73d → 172.33d |
| PG-11634 | Wooden doors | 2025-12-27 → 2025-12-29 (+2d) | 2026-01-02 → 2026-01-03 (+1d) | 172.73d → 172.33d |
| 1.3.1.2.4.29 | **Floor 26** | 2025-12-04 → 2025-12-05 (+1d) | 2026-02-17 → 2026-02-18 (+1d) |  |
| 1.3.1.2.4.29.1 | **Ceiling Finishing works - Civil** | 2025-12-13 → 2025-12-15 (+2d) | 2026-02-17 → 2026-02-18 (+1d) |  |
| PG-11635 | Gypsum Plastering | 2025-12-13 → 2025-12-15 (+2d) | 2025-12-20 → 2025-12-22 (+2d) | 203.4d → 203d |
| PG-11636 | Cornice fixing | 2025-12-30 → 2025-12-31 (+1d) | 2026-01-03 → 2026-01-05 (+2d) | 203.4d → 203d |
| PG-11639 | Final Coat Painting |  | 2026-02-17 → 2026-02-18 (+1d) | 191.57d → 191.17d |
| 1.3.1.2.4.29.2 | **Wall Finishing works - Civil** | 2025-12-04 → 2025-12-05 (+1d) | 2026-02-17 → 2026-02-18 (+1d) |  |
| PG-11640 | Balcony Railing Fixing works | 2025-12-04 → 2025-12-05 (+1d) | 2025-12-09 → 2025-12-10 (+1d) | 153.9d → 153.5d |
| PG-11644 | Final Coat Painting |  | 2026-02-17 → 2026-02-18 (+1d) | 125.23d → 124.83d |
| 1.3.1.2.4.29.3 | **Floor Finishing Works - Civil** | 2025-12-04 → 2025-12-05 (+1d) |  |  |
| PG-11645 | Waterproofing for sunken areas | 2025-12-04 → 2025-12-05 (+1d) | 2025-12-08 → 2025-12-09 (+1d) | 144.9d → 144.5d |
| 1.3.1.2.4.30 | **External Finishing works** | 2025-09-13 → 2025-09-15 (+2d) | 2026-01-10 → 2026-01-12 (+2d) |  |
| PG-11649 | External walls tie rod hole plugging with GP2 | 2025-09-13 → 2025-09-15 (+2d) | 2025-10-20 → 2025-10-21 (+1d) | 221.4d → 221d |
| PG-11650 | External walls grinding works | 2025-10-08 → 2025-10-09 (+1d) | 2025-11-25 → 2025-11-26 (+1d) | 221.4d → 221d |
| PG-11651 | Texture and painting works | 2025-11-19 → 2025-11-20 (+1d) | 2026-01-10 → 2026-01-12 (+2d) | 221.4d → 221d |
| 1.3.1.2.5 | **Corridor & Fire Staircase Finishing works** | 2025-11-20 → 2025-11-21 (+1d) | 2026-03-20 → 2026-03-21 (+1d) |  |
| 1.3.1.2.5.1 | **Ceiling Finishing works - Civil** | 2025-11-20 → 2025-11-21 (+1d) | 2026-02-13 → 2026-02-14 (+1d) |  |
| PG-11652 | Gypsum Plastering | 2025-11-20 → 2025-11-21 (+1d) | 2025-11-27 → 2025-11-28 (+1d) | 16.4d → 16d |
| PG-11653 | Cornice fixing | 2025-11-26 → 2025-11-27 (+1d) | 2025-12-01 → 2025-12-02 (+1d) | 146.9d → 146.5d |
| PG-11654 | Painting Works - Putty, Primer and 1st | 2025-12-15 → 2025-12-16 (+1d) | 2025-12-22 → 2025-12-23 (+1d) | 134.73d → 134.33d |
| PG-11655 | False ceiling | 2025-12-22 → 2025-12-23 (+1d) | 2026-01-27 → 2026-01-28 (+1d) | 134.73d → 134.33d |
| PG-11656 | Final Coat Painting | 2026-01-07 → 2026-01-08 (+1d) | 2026-02-13 → 2026-02-14 (+1d) | 164.73d → 164.33d |
| 1.3.1.2.5.2 | **Wall Finishing works - Civil** | 2025-12-26 → 2025-12-27 (+1d) | 2026-03-20 → 2026-03-21 (+1d) |  |
| PG-11657 | UPVC Windows & Sliding doors | 2025-12-26 → 2025-12-27 (+1d) | 2026-01-01 → 2026-01-02 (+1d) | 140.73d → 140.33d |
| PG-11658 | Wall Cladding Upto 1.2 Mts | 2026-01-13 → 2026-01-14 (+1d) | 2026-02-06 → 2026-02-07 (+1d) | 140.73d → 140.33d |
| PG-11659 | Painting Works - Texture & one coat Painting works | 2026-02-13 → 2026-02-14 (+1d) | 2026-03-03 → 2026-03-04 (+1d) | 134.73d → 134.33d |
| PG-11660 | Final Coat Painting | 2026-02-24 → 2026-02-25 (+1d) | 2026-03-20 → 2026-03-21 (+1d) | 134.73d → 134.33d |
| 1.3.1.2.5.3 | **Floor Finishing Works - Civil** | 2025-11-27 → 2025-11-28 (+1d) | 2025-12-26 → 2025-12-27 (+1d) |  |
| PG-11661 | Fire Doors installation | 2025-11-27 → 2025-11-28 (+1d) | 2025-12-09 → 2025-12-10 (+1d) | 185.23d → 184.83d |
| PG-11662 | Vitrified tile flooring works | 2025-12-09 → 2025-12-10 (+1d) | 2025-12-26 → 2025-12-27 (+1d) | 185.23d → 184.83d |
| 1.3.1.2.5.4 | **Fire Staircase Finishing Works - Civil** | 2025-11-27 → 2025-11-28 (+1d) | 2026-03-19 → 2026-03-20 (+1d) |  |
| PG-11663 | Staircase Railing Fixing works | 2025-11-27 → 2025-11-28 (+1d) | 2025-12-20 → 2025-12-22 (+2d) | 16.4d → 16d |
| PG-11664 | Wall and ceiling Gypsum plastering | 2025-12-09 → 2025-12-10 (+1d) | 2026-01-13 → 2026-01-14 (+1d) | 16.4d → 16d |
| PG-11665 | Staircase Flooring and Skirting Works | 2025-12-26 → 2025-12-27 (+1d) | 2026-02-12 → 2026-02-13 (+1d) | 16.4d → 16d |
| PG-11666 | UPVC Window fixing works | 2026-02-13 → 2026-02-14 (+1d) | 2026-03-02 → 2026-03-03 (+1d) | 16.4d → 16d |
| PG-11667 | Staircase Painting works | 2026-02-24 → 2026-02-25 (+1d) | 2026-03-19 → 2026-03-20 (+1d) | 16.4d → 16d |
| 1.3.1.2.6 | **MEP Civil Works (Shaft, Lift Shaft & OHT )** | 2025-08-30 → 2025-09-01 (+2d) | 2026-01-29 → 2026-01-30 (+1d) |  |
| 1.3.1.2.6.1 | **Lift Shaft Works** | 2025-08-30 → 2025-09-01 (+2d) | 2026-01-29 → 2026-01-30 (+1d) |  |
| PG-11668 | Tie rod hole packing | 2025-08-30 → 2025-09-01 (+2d) | 2025-09-09 → 2025-09-10 (+1d) | 121.9d → 121.5d |
| PG-11669 | Grinding works | 2025-09-09 → 2025-09-10 (+1d) | 2025-09-15 → 2025-09-16 (+1d) | 121.9d → 121.5d |
| PG-11670 | Lift pit water proofing works | 2025-09-15 → 2025-09-16 (+1d) | 2025-10-09 → 2025-10-10 (+1d) | 121.9d → 121.5d |
| PG-11671 | Shaft door opening finishing | 2025-10-09 → 2025-10-10 (+1d) | 2025-10-17 → 2025-10-18 (+1d) | 121.9d → 121.5d |
| PG-11672 | Painting works | 2025-10-17 → 2025-10-18 (+1d) | 2025-10-27 → 2025-10-28 (+1d) | 121.9d → 121.5d |
| PG-11673 | Lift Wall Cladding Works |  | 2026-01-29 → 2026-01-30 (+1d) | 157.57d → 157.17d |
| 1.3.1.2.6.2 | **Electrical Shaft works** | 2025-08-30 → 2025-09-01 (+2d) | 2025-10-03 → 2025-10-04 (+1d) |  |
| PG-11674 | Tie rod hole packing | 2025-08-30 → 2025-09-01 (+2d) | 2025-09-09 → 2025-09-10 (+1d) | 228.57d → 228.17d |

| ID | Task | Start | Finish | Complete | Total float |
| --- | --- | --- | --- | --- | --- |
| PG-11675 | Grinding works | 2025-09-09 → 2025-09-10 (+1d) | 2025-09-15 → 2025-09-16 (+1d) |  | 228.57d → 228.17d |
| PG-11676 | Shaft door opening finishing | 2025-09-15 → 2025-09-16 (+1d) | 2025-09-23 → 2025-09-24 (+1d) |  | 228.57d → 228.17d |
| PG-11677 | Painting works | 2025-09-23 → 2025-09-24 (+1d) | 2025-10-03 → 2025-10-04 (+1d) |  | 228.57d → 228.17d |
| 1.3.1.2.6.3 | **FPS Shaft works** | 2025-08-30 → 2025-09-01 (+2d) | 2025-10-03 → 2025-10-04 (+1d) |  |  |
| PG-11678 | Tie rod hole packing | 2025-08-30 → 2025-09-01 (+2d) | 2025-09-09 → 2025-09-10 (+1d) |  | 228.4d → 228d |
| PG-11679 | Grinding works | 2025-09-09 → 2025-09-10 (+1d) | 2025-09-15 → 2025-09-16 (+1d) |  | 228.4d → 228d |
| PG-11680 | Shaft door opening finishing | 2025-09-15 → 2025-09-16 (+1d) | 2025-09-23 → 2025-09-24 (+1d) |  | 228.4d → 228d |
| PG-11681 | Painting works | 2025-09-23 → 2025-09-24 (+1d) | 2025-10-03 → 2025-10-04 (+1d) |  | 228.4d → 228d |
| 1.3.1.2.6.4 | **PHE Shaft works** | 2025-08-30 → 2025-09-01 (+2d) | 2025-10-03 → 2025-10-04 (+1d) |  |  |
| PG-11682 | Tie rod hole packing | 2025-08-30 → 2025-09-01 (+2d) | 2025-09-09 → 2025-09-10 (+1d) |  | 187.23d → 186.83d |
| PG-11683 | Grinding works | 2025-09-09 → 2025-09-10 (+1d) | 2025-09-15 → 2025-09-16 (+1d) |  | 187.23d → 186.83d |
| PG-11684 | Shaft door opening finishing | 2025-09-15 → 2025-09-16 (+1d) | 2025-09-23 → 2025-09-24 (+1d) |  | 187.23d → 186.83d |
| PG-11685 | Painting works | 2025-09-23 → 2025-09-24 (+1d) | 2025-10-03 → 2025-10-04 (+1d) |  | 187.23d → 186.83d |
| 1.3.1.2.6.5 | **Data & Communication Shaft** | 2025-08-30 → 2025-09-01 (+2d) | 2025-09-30 → 2025-10-01 (+1d) |  |  |
| PG-11686 | Tie rod hole packing | 2025-08-30 → 2025-09-01 (+2d) | 2025-09-09 → 2025-09-10 (+1d) |  | 223.07d → 222.67d |
| PG-11687 | Grinding works | 2025-09-09 → 2025-09-10 (+1d) | 2025-09-15 → 2025-09-16 (+1d) |  | 223.07d → 222.67d |
| PG-11688 | Shaft door opening finishing | 2025-09-15 → 2025-09-16 (+1d) | 2025-09-20 → 2025-09-22 (+2d) |  | 223.07d → 222.67d |
| PG-11689 | Painting works | 2025-09-20 → 2025-09-22 (+2d) | 2025-09-30 → 2025-10-01 (+1d) |  | 223.07d → 222.67d |
| 1.3.1.2.6.6 | **OHT Works** | 2025-08-30 → 2025-09-01 (+2d) | 2025-10-20 → 2025-10-21 (+1d) |  |  |
| PG-11690 | Tank materials Supply & Shifting | 2025-08-30 → 2025-09-01 (+2d) | 2025-09-11 → 2025-09-12 (+1d) |  | 194.57d → 194.17d |
| PG-11691 | Assembling OHT FRP Tank | 2025-09-11 → 2025-09-12 (+1d) | 2025-09-23 → 2025-09-24 (+1d) |  | 194.57d → 194.17d |
| PG-11692 | Installation of OHT Tank | 2025-09-23 → 2025-09-24 (+1d) | 2025-10-11 → 2025-10-13 (+2d) |  | 194.57d → 194.17d |
| PG-11693 | Water tightness works and checking | 2025-10-11 → 2025-10-13 (+2d) | 2025-10-20 → 2025-10-21 (+1d) |  | 194.57d → 194.17d |
| 1.3.1.2.7 | **MEP Shaft works** | 2025-09-30 → 2025-10-01 (+1d) | 2025-12-23 → 2025-12-24 (+1d) |  |  |
| 1.3.1.2.7.1 | **Electrical** | 2025-10-03 → 2025-10-04 (+1d) | 2025-11-13 → 2025-11-14 (+1d) |  |  |
| PG-11694 | Tray Works | 2025-10-03 → 2025-10-04 (+1d) |  |  | 228.57d → 228.17d |
| PG-11695 | Cable & Conducting works |  | 2025-10-25 → 2025-10-27 (+2d) |  | 228.57d → 228.17d |
| PG-11696 | Wiring/DB/connector box installation and termination works | 2025-10-25 → 2025-10-27 (+2d) | 2025-11-13 → 2025-11-14 (+1d) |  | 228.57d → 228.17d |
| 1.3.1.2.7.2 | **FPS** | 2025-10-03 → 2025-10-04 (+1d) |  |  |  |
| PG-11697 | Shaft MS Piping & fixtures installation | 2025-10-03 → 2025-10-04 (+1d) |  |  | 228.4d → 228d |
| 1.3.1.2.7.3 | **Data & Communication** | 2025-09-30 → 2025-10-01 (+1d) | 2025-11-19 → 2025-11-20 (+1d) |  |  |
| PG-11699 | Tray Works | 2025-09-30 → 2025-10-01 (+1d) | 2025-10-15 → 2025-10-16 (+1d) |  | 223.07d → 222.67d |
| PG-11700 | Tray / cabling / conducting & wiring works | 2025-10-15 → 2025-10-16 (+1d) | 2025-10-31 → 2025-11-03 (+3d) |  | 223.07d → 222.67d |
| PG-11701 | Wiring/DB/connector box installation and termination works | 2025-10-31 → 2025-11-03 (+3d) | 2025-11-19 → 2025-11-20 (+1d) |  | 223.07d → 222.67d |
| 1.3.1.2.7.4 | **PHE** | 2025-10-03 → 2025-10-04 (+1d) | 2025-12-23 → 2025-12-24 (+1d) |  |  |
| PG-11702 | Bracket fixing works | 2025-10-03 → 2025-10-04 (+1d) | 2025-10-11 → 2025-10-13 (+2d) |  | 187.23d → 186.83d |
| PG-11703 | Piping Works | 2025-10-11 → 2025-10-13 (+2d) | 2025-10-28 → 2025-10-29 (+1d) |  | 187.23d → 186.83d |
| PG-11704 | Terrace Ring main & OHT Connection works | 2025-10-28 → 2025-10-29 (+1d) | 2025-12-15 → 2025-12-16 (+1d) |  | 187.23d → 186.83d |
| PG-11705 | Commissioning | 2025-12-15 → 2025-12-16 (+1d) | 2025-12-23 → 2025-12-24 (+1d) |  | 187.23d → 186.83d |
| 1.3.1.2.8 | **Lift Installation and Testing works** | 2025-09-15 → 2025-09-16 (+1d) | 2026-04-16 → 2026-04-17 (+1d) |  |  |
| PG-11706 | Lift Shaft Survey works | 2025-09-15 → 2025-09-16 (+1d) | 2025-09-25 → 2025-09-26 (+1d) |  | 147.57d → 147.17d |
| PG-11707 | Guide Rails fixing works | 2025-10-27 → 2025-10-28 (+1d) | 2025-12-13 → 2025-12-15 (+2d) |  | 121.9d → 121.5d |
| PG-11708 | Lift Frame fixing works | 2025-12-13 → 2025-12-15 (+2d) |  |  | 121.9d → 121.5d |
| PG-11709 | CAR Assembly works |  | 2026-02-04 → 2026-02-05 (+1d) |  | 121.9d → 121.5d |
| PG-11710 | Lift Machine Room Works | 2026-02-04 → 2026-02-05 (+1d) | 2026-03-12 → 2026-03-13 (+1d) |  | 121.9d → 121.5d |
| PG-11711 | Slow Speed & High Speed Testing works | 2026-03-12 → 2026-03-13 (+1d) | 2026-04-16 → 2026-04-17 (+1d) |  | 121.9d → 121.5d |
| 1.3.1.2.9 | **Electrical Panel Works** | 2025-07-21 → 2025-07-22 (+1d) | 2026-02-25 → 2026-02-26 (+1d) |  |  |
| 1.3.1.2.9.1 | **Civil Finishing Works** | 2025-07-21 → 2025-07-22 (+1d) | 2025-09-03 → 2025-09-04 (+1d) |  |  |
| PG-11712 | Wall Tie rod hole packing & Grinding works. | 2025-07-21 → 2025-07-22 (+1d) | 2025-08-06 → 2025-08-07 (+1d) |  | 164.07d → 163.67d |
| PG-11713 | Window, Louver and Door fixing works | 2025-08-06 → 2025-08-07 (+1d) | 2025-08-14 → 2025-08-16 (+2d) |  | 164.07d → 163.67d |
| PG-11714 | Pedestal works | 2025-08-14 → 2025-08-16 (+2d) | 2025-08-26 → 2025-08-27 (+1d) |  | 164.07d → 163.67d |
| PG-11715 | Painting works | 2025-08-26 → 2025-08-27 (+1d) | 2025-09-03 → 2025-09-04 (+1d) |  | 164.07d → 163.67d |
| 1.3.1.2.9.2 | **Electrical Panel works** | 2025-09-03 → 2025-09-04 (+1d) | 2026-02-25 → 2026-02-26 (+1d) |  |  |
| PG-11716 | Electrical Panel assembly works | 2025-09-03 → 2025-09-04 (+1d) | 2025-11-12 → 2025-11-13 (+1d) |  | 164.07d → 163.67d |
| PG-11717 | Electrical Panel installation and cable termination. | 2025-11-12 → 2025-11-13 (+1d) | 2026-01-20 → 2026-01-21 (+1d) |  | 164.07d → 163.67d |
| PG-11718 | Electrical Panel Testing and commissioning works | 2026-01-20 → 2026-01-21 (+1d) | 2026-02-25 → 2026-02-26 (+1d) |  | 164.07d → 163.67d |
| 1.3.1.2.10 | **Entrance Lobby works** | 2026-03-19 → 2026-03-20 (+1d) | 2026-08-05 → 2026-08-06 (+1d) |  |  |
| PG-11719 | Flooring Works | 2026-03-19 → 2026-03-20 (+1d) | 2026-04-23 → 2026-04-24 (+1d) |  | 16.4d → 16d |
| PG-11720 | Glass Door and installation Works | 2026-04-23 → 2026-04-24 (+1d) | 2026-05-28 → 2026-05-29 (+1d) |  | 16.4d → 16d |
| PG-11722 | Canopy Works | 2026-04-23 → 2026-04-24 (+1d) | 2026-05-22 → 2026-05-23 (+1d) |  | 36.07d → 35.67d |
| PG-11721 | Painting Works | 2026-05-28 → 2026-05-29 (+1d) |  |  | 16.4d → 16d |
| PG-11723 | Interior Works |  | 2026-08-05 → 2026-08-06 (+1d) |  | 16.4d → 16d |
| 1.3.1.2.11 | **Lightening Arrester works** | 2026-01-10 → 2026-01-12 (+2d) | 2026-01-22 → 2026-01-23 (+1d) |  |  |
| PG-11724 | Conductor will be lifted with RCC Works, But Terrace works will be done once Parapet Painting done | 2026-01-10 → 2026-01-12 (+2d) | 2026-01-22 → 2026-01-23 (+1d) |  | 221.4d → 221d |
| 1.3.1.3 | **Tower 3 ( 2B+G+29 ) TYP 4 Units - 118 Units** |  | 2026-10-17 → 2026-10-19 (+2d) |  |  |
| 1.3.1.3.2 | **Structure works** |  | 2026-01-10 → 2026-01-12 (+2d) |  |  |
| PG-11820 | Formwork |  | 2025-05-13 A | 33% → 100% | 0d → none |
| PG-11821 | Formwork | 2025-05-12 A | 2025-05-15 A | 0% → 100% | 0d → none |
| PG-11822 | Reinforcement | 2025-05-14 A |  | 0% → 61% |  |
| 1.3.1.3.2.33 | **Above Terrace Floor** |  | 2026-01-10 → 2026-01-12 (+2d) |  |  |

| ID | Task | Start | Finish | Complete | Total float |
| --- | --- | --- | --- | --- | --- |
| 1.3.1.3.2.33.1 | **Columns / shear walls/Parapet Walls** |  | 2025-12-16 → 2025-12-17 (+1d) |  |  |
| PG-11901 | Concrete |  | 2025-12-16 → 2025-12-17 (+1d) |  |  |
| 1.3.1.3.2.33.2 | **Slab, Beams & Staircase Head rooms, Lift headroom** |  | 2026-01-10 → 2026-01-12 (+2d) |  |  |
| PG-11905 | Terrace Waterproofing and Protective finishing. |  | 2026-01-10 → 2026-01-12 (+2d) |  |  |
| PG-11902 | Formwork | 2025-12-16 → 2025-12-17 (+1d) | 2025-12-22 → 2025-12-23 (+1d) |  |  |
| PG-11903 | Reinforcement | 2025-12-22 → 2025-12-23 (+1d) | 2025-12-27 → 2025-12-29 (+2d) |  |  |
| PG-11904 | Concrete | 2025-12-27 → 2025-12-29 (+2d) | 2025-12-30 → 2025-12-31 (+1d) |  |  |
| 1.3.1.3.3.7 | **Floor 4** |  | 2025-05-20 → 2025-05-21 (+1d) |  |  |
| 1.3.1.3.3.7.1 | **PHE Works** |  | 2025-05-20 → 2025-05-21 (+1d) |  |  |
| PG-11951 | Final Fix - CP & Sanitary fixtures | 2025-05-09 → 2025-05-10 A (+1d) | 2025-05-20 → 2025-05-21 (+1d) | 0% → 51% | 390.04d → 389.5d |
| 1.3.1.3.3.7.2 | **Fire Fighting Works** |  | 2025-05-20 → 2025-05-21 (+1d) |  |  |
| PG-11954 | Final Fix - Smoke & heat detectors, FHC , FAS Etc. | 2025-05-09 → 2025-05-10 A (+1d) | 2025-05-20 → 2025-05-21 (+1d) | 0% → 57% | 390.04d → 389.5d |
| 1.3.1.3.3.7.3 | **Electrical Works** |  | 2025-05-20 → 2025-05-21 (+1d) |  |  |
| PG-11957 | Final Fix - Electrical Fixtures | 2025-05-13 → 2025-05-14 A (+1d) | 2025-05-20 → 2025-05-21 (+1d) | 0% → 38% | 390.04d → 389.5d |
| 1.3.1.3.3.9 | **Floor 6** |  | 2025-06-19 → 2025-06-20 (+1d) |  |  |
| 1.3.1.3.3.9.1 | **PHE Works** |  | 2025-06-19 → 2025-06-20 (+1d) |  |  |
| PG-11969 | Final Fix - CP & Sanitary fixtures |  | 2025-06-19 → 2025-06-20 (+1d) |  | 365.92d → 365.82d |
| 1.3.1.3.3.9.2 | **Fire Fighting Works** |  | 2025-06-19 → 2025-06-20 (+1d) |  |  |
| PG-11971 | 2nd Fix - Sprinkler fixing & Pressure testing |  | 2025-05-27 → 2025-05-28 (+1d) |  | 375.92d → 376.14d |
| PG-11972 | Final Fix - Smoke & heat detectors, FHC , FAS Etc. |  | 2025-06-19 → 2025-06-20 (+1d) |  | 365.92d → 365.82d |
| 1.3.1.3.3.9.3 | **Electrical Works** |  | 2025-06-19 → 2025-06-20 (+1d) |  |  |
| PG-11974 | 2nd Fix - Wiring works | 2025-05-10 → 2025-05-12 A (+2d) | 2025-05-26 → 2025-05-27 (+1d) | 0% → 29% | 380.92d → 380.76d |
| PG-11975 | Final Fix - Electrical Fixtures |  | 2025-06-19 → 2025-06-20 (+1d) |  | 365.92d → 365.82d |
| PG-11985 | 1st Fix - Piping works |  |  | 44% → 94% | 337.17d → 337.67d |
| PG-11986 | 2nd Fix - diverter fixing & Pressure testing | 2025-05-12 → 2025-05-13 A (+1d) |  | 0% → 32% | 337.17d → 337.64d |
| 1.3.1.3.3.11.2 | **Fire Fighting Works** | 2025-05-10 → 2025-05-13 (+3d) |  |  |  |
| PG-11988 | 1st Fix - Piping and Shaft hydrant works | 2025-05-10 → 2025-05-13 A (+3d) | 2025-05-24 → 2025-05-26 (+2d) | 0% → 25% | 383.61d → 383.33d |
| PG-11991 | 1st Fix - GI wire pulling |  | 2025-05-10 → 2025-05-12 A (+2d) | 74% → 100% | 383.61d → none |
| 1.3.1.3.3.12 | **Floor 9** |  | 2025-08-05 → 2025-08-06 (+1d) |  |  |
| 1.3.1.3.3.12.1 | **PHE Works** |  | 2025-08-05 → 2025-08-06 (+1d) |  |  |
| PG-11996 | Final Fix - CP & Sanitary fixtures | 2025-07-25 → 2025-07-26 (+1d) | 2025-08-05 → 2025-08-06 (+1d) |  |  |
| 1.3.1.3.3.12.2 | **Fire Fighting Works** |  | 2025-08-05 → 2025-08-06 (+1d) |  |  |
| PG-11999 | Final Fix - Smoke & heat detectors, FHC , FAS Etc. | 2025-07-25 → 2025-07-26 (+1d) | 2025-08-05 → 2025-08-06 (+1d) |  |  |
| 1.3.1.3.3.12.3 | **Electrical Works** |  | 2025-08-05 → 2025-08-06 (+1d) |  |  |
| PG-12001 | 2nd Fix - Wiring works | 2025-06-28 → 2025-06-30 (+2d) |  |  |  |
| PG-12002 | Final Fix - Electrical Fixtures |  | 2025-08-05 → 2025-08-06 (+1d) |  |  |
| 1.3.1.3.3.13 | **Floor 10** |  | 2025-08-22 → 2025-08-23 (+1d) |  |  |
| 1.3.1.3.3.13.1 | **PHE Works** |  | 2025-08-22 → 2025-08-23 (+1d) |  |  |
| PG-12005 | Final Fix - CP & Sanitary fixtures |  | 2025-08-22 → 2025-08-23 (+1d) |  |  |
| 1.3.1.3.3.13.2 | **Fire Fighting Works** |  | 2025-08-22 → 2025-08-23 (+1d) |  |  |
| PG-12008 | Final Fix - Smoke & heat detectors, FHC , FAS Etc. |  | 2025-08-22 → 2025-08-23 (+1d) |  |  |
| 1.3.1.3.3.13.3 | **Electrical Works** |  | 2025-08-22 → 2025-08-23 (+1d) |  |  |
| PG-12010 | 2nd Fix - Wiring works | 2025-07-15 → 2025-07-16 (+1d) |  |  |  |
| PG-12011 | Final Fix - Electrical Fixtures |  | 2025-08-22 → 2025-08-23 (+1d) |  |  |
| 1.3.1.3.3.14 | **Floor 11** |  | 2025-09-04 → 2025-09-05 (+1d) |  |  |
| 1.3.1.3.3.14.1 | **PHE Works** |  | 2025-09-04 → 2025-09-05 (+1d) |  |  |
| PG-12014 | Final Fix - CP & Sanitary fixtures |  | 2025-09-04 → 2025-09-05 (+1d) |  |  |
| 1.3.1.3.3.14.2 | **Fire Fighting Works** |  | 2025-09-04 → 2025-09-05 (+1d) |  |  |
| PG-12017 | Final Fix - Smoke & heat detectors, FHC , FAS Etc. |  | 2025-09-04 → 2025-09-05 (+1d) |  |  |
| 1.3.1.3.3.14.3 | **Electrical Works** |  | 2025-09-04 → 2025-09-05 (+1d) |  |  |
| PG-12019 | 2nd Fix - Wiring works | 2025-07-28 → 2025-07-29 (+1d) |  |  |  |
| PG-12020 | Final Fix - Electrical Fixtures |  | 2025-09-04 → 2025-09-05 (+1d) |  |  |
| 1.3.1.3.3.15 | **Floor 12** |  | 2025-09-20 → 2025-09-22 (+2d) |  |  |
| 1.3.1.3.3.15.1 | **PHE Works** |  | 2025-09-20 → 2025-09-22 (+2d) |  |  |
| PG-12023 | Final Fix - CP & Sanitary fixtures |  | 2025-09-20 → 2025-09-22 (+2d) |  |  |
| 1.3.1.3.3.15.2 | **Fire Fighting Works** |  | 2025-09-20 → 2025-09-22 (+2d) |  |  |
| PG-12026 | Final Fix - Smoke & heat detectors, FHC , FAS Etc. |  | 2025-09-20 → 2025-09-22 (+2d) |  |  |
| 1.3.1.3.3.15.3 | **Electrical Works** |  | 2025-09-20 → 2025-09-22 (+2d) |  |  |
| PG-12028 | 2nd Fix - Wiring works | 2025-08-08 → 2025-08-09 (+1d) |  |  |  |
| PG-12029 | Final Fix - Electrical Fixtures |  | 2025-09-20 → 2025-09-22 (+2d) |  |  |
| 1.3.1.3.3.16 | **Floor 13** |  | 2025-10-04 → 2025-10-06 (+2d) |  |  |
| 1.3.1.3.3.16.1 | **PHE Works** |  | 2025-10-04 → 2025-10-06 (+2d) |  |  |
| PG-12032 | Final Fix - CP & Sanitary fixtures |  | 2025-10-04 → 2025-10-06 (+2d) |  |  |
| 1.3.1.3.3.16.2 | **Fire Fighting Works** |  | 2025-10-04 → 2025-10-06 (+2d) |  |  |
| PG-12035 | Final Fix - Smoke & heat detectors, FHC , FAS Etc. |  | 2025-10-04 → 2025-10-06 (+2d) |  |  |
| 1.3.1.3.3.16.3 | **Electrical Works** |  | 2025-10-04 → 2025-10-06 (+2d) |  |  |
| PG-12037 | 2nd Fix - Wiring works | 2025-08-22 → 2025-08-23 (+1d) |  |  |  |
| PG-12038 | Final Fix - Electrical Fixtures |  | 2025-10-04 → 2025-10-06 (+2d) |  |  |
| 1.3.1.3.3.17 | **Floor 14** |  | 2025-10-15 → 2025-10-16 (+1d) |  |  |
| 1.3.1.3.3.17.1 | **PHE Works** |  | 2025-10-15 → 2025-10-16 (+1d) |  |  |

| ID | Task | Start | Finish |
| --- | --- | --- | --- |
| PG-12041 | Final Fix - CP & Sanitary fixtures |  | 2025-10-15 → 2025-10-16 (+1d) |
| 1.3.1.3.3.17.2 | **Fire Fighting Works** |  | 2025-10-15 → 2025-10-16 (+1d) |
| PG-12044 | Final Fix - Smoke & heat detectors, FHC , FAS Etc. |  | 2025-10-15 → 2025-10-16 (+1d) |
| 1.3.1.3.3.17.3 | **Electrical Works** |  | 2025-10-15 → 2025-10-16 (+1d) |
| PG-12046 | 2nd Fix - Wiring works | 2025-09-03 → 2025-09-04 (+1d) |  |
| PG-12047 | Final Fix - Electrical Fixtures |  | 2025-10-15 → 2025-10-16 (+1d) |
| PG-12064 | 2nd Fix - Wiring works | 2025-10-01 → 2025-10-03 (+2d) |  |
| PG-12073 | 2nd Fix - Wiring works | 2025-10-14 → 2025-10-15 (+1d) |  |
| PG-12082 | 2nd Fix - Wiring works | 2025-10-27 → 2025-10-28 (+1d) |  |
| PG-12091 | 2nd Fix - Wiring works | 2025-11-10 → 2025-11-11 (+1d) |  |
| 1.3.1.3.3.23 | **Floor 20** |  | 2026-01-01 → 2026-01-02 (+1d) |
| 1.3.1.3.3.23.1 | **PHE Works** |  | 2026-01-01 → 2026-01-02 (+1d) |
| PG-12095 | Final Fix - CP & Sanitary fixtures |  | 2026-01-01 → 2026-01-02 (+1d) |
| 1.3.1.3.3.23.2 | **Fire Fighting Works** |  | 2026-01-01 → 2026-01-02 (+1d) |
| PG-12098 | Final Fix - Smoke & heat detectors, FHC , FAS Etc. |  | 2026-01-01 → 2026-01-02 (+1d) |
| 1.3.1.3.3.23.3 | **Electrical Works** |  | 2026-01-01 → 2026-01-02 (+1d) |
| PG-12100 | 2nd Fix - Wiring works | 2025-11-22 → 2025-11-24 (+2d) |  |
| PG-12101 | Final Fix - Electrical Fixtures |  | 2026-01-01 → 2026-01-02 (+1d) |
| 1.3.1.3.3.24 | **Floor 21** |  | 2026-01-14 → 2026-01-15 (+1d) |
| 1.3.1.3.3.24.1 | **PHE Works** |  | 2026-01-14 → 2026-01-15 (+1d) |
| PG-12104 | Final Fix - CP & Sanitary fixtures |  | 2026-01-14 → 2026-01-15 (+1d) |
| 1.3.1.3.3.24.2 | **Fire Fighting Works** |  | 2026-01-14 → 2026-01-15 (+1d) |
| PG-12106 | 2nd Fix - Sprinkler fixing & Pressure testing | 2025-12-11 → 2025-12-12 (+1d) |  |
| PG-12107 | Final Fix - Smoke & heat detectors, FHC , FAS Etc. |  | 2026-01-14 → 2026-01-15 (+1d) |
| 1.3.1.3.3.24.3 | **Electrical Works** |  | 2026-01-01 → 2026-01-02 (+1d) |
| PG-12109 | 2nd Fix - Wiring works | 2025-11-22 → 2025-11-24 (+2d) |  |
| PG-12110 | Final Fix - Electrical Fixtures |  | 2026-01-01 → 2026-01-02 (+1d) |
| 1.3.1.3.3.25 | **Floor 22** |  | 2026-01-28 → 2026-01-29 (+1d) |
| 1.3.1.3.3.25.1 | **PHE Works** |  | 2026-01-28 → 2026-01-29 (+1d) |
| PG-12113 | Final Fix - CP & Sanitary fixtures |  | 2026-01-28 → 2026-01-29 (+1d) |
| 1.3.1.3.3.25.2 | **Fire Fighting Works** |  | 2026-01-28 → 2026-01-29 (+1d) |
| PG-12115 | 2nd Fix - Sprinkler fixing & Pressure testing | 2025-12-24 → 2025-12-25 (+1d) |  |
| PG-12116 | Final Fix - Smoke & heat detectors, FHC , FAS Etc. |  | 2026-01-28 → 2026-01-29 (+1d) |
| 1.3.1.3.3.25.3 | **Electrical Works** |  | 2026-01-28 → 2026-01-29 (+1d) |
| PG-12118 | 2nd Fix - Wiring works | 2025-12-18 → 2025-12-19 (+1d) |  |
| PG-12119 | Final Fix - Electrical Fixtures |  | 2026-01-28 → 2026-01-29 (+1d) |
| PG-12120 | 1st Fix - Piping works |  | 2025-12-02 → 2025-12-03 (+1d) |
| PG-12121 | 2nd Fix - diverter fixing & Pressure testing |  | 2025-12-09 → 2025-12-10 (+1d) |
| PG-12122 | Final Fix - CP & Sanitary fixtures | 2026-01-29 → 2026-01-30 (+1d) |  |
| PG-12124 | 2nd Fix - Sprinkler fixing & Pressure testing |  | 2026-01-15 → 2026-01-16 (+1d) |
| PG-12125 | Final Fix - Smoke & heat detectors, FHC , FAS Etc. | 2026-01-29 → 2026-01-30 (+1d) |  |
| PG-12127 | 2nd Fix - Wiring works |  | 2026-01-14 → 2026-01-15 (+1d) |
| PG-12128 | Final Fix - Electrical Fixtures | 2026-02-03 → 2026-02-04 (+1d) |  |
| 1.3.1.3.3.27 | **Floor 24** |  | 2026-02-23 → 2026-02-24 (+1d) |
| 1.3.1.3.3.27.1 | **PHE Works** |  | 2026-02-23 → 2026-02-24 (+1d) |
| PG-12129 | 1st Fix - Piping works |  | 2025-12-16 → 2025-12-17 (+1d) |
| PG-12130 | 2nd Fix - diverter fixing & Pressure testing |  | 2025-12-23 → 2025-12-24 (+1d) |
| PG-12131 | Final Fix - CP & Sanitary fixtures | 2026-02-11 → 2026-02-12 (+1d) | 2026-02-23 → 2026-02-24 (+1d) |
| 1.3.1.3.3.27.2 | **Fire Fighting Works** | 2025-12-12 → 2025-12-13 (+1d) | 2026-02-23 → 2026-02-24 (+1d) |
| PG-12132 | 1st Fix - Piping and Shaft hydrant works | 2025-12-12 → 2025-12-13 (+1d) |  |
| PG-12133 | 2nd Fix - Sprinkler fixing & Pressure testing | 2026-01-17 → 2026-01-19 (+2d) | 2026-01-30 → 2026-01-31 (+1d) |
| PG-12134 | Final Fix - Smoke & heat detectors, FHC , FAS Etc. | 2026-02-11 → 2026-02-12 (+1d) | 2026-02-23 → 2026-02-24 (+1d) |
| 1.3.1.3.3.27.3 | **Electrical Works** |  | 2026-02-23 → 2026-02-24 (+1d) |
| PG-12136 | 2nd Fix - Wiring works | 2026-01-12 → 2026-01-13 (+1d) | 2026-01-29 → 2026-01-30 (+1d) |
| PG-12137 | Final Fix - Electrical Fixtures | 2026-02-16 → 2026-02-17 (+1d) | 2026-02-23 → 2026-02-24 (+1d) |
| 1.3.1.3.3.28 | **Floor 25** | 2025-12-24 → 2025-12-25 (+1d) | 2026-03-16 → 2026-03-17 (+1d) |
| 1.3.1.3.3.28.1 | **PHE Works** | 2025-12-24 → 2025-12-25 (+1d) | 2026-03-16 → 2026-03-17 (+1d) |
| PG-12138 | 1st Fix - Piping works | 2025-12-24 → 2025-12-25 (+1d) | 2026-01-06 → 2026-01-07 (+1d) |
| PG-12139 | 2nd Fix - diverter fixing & Pressure testing |  | 2026-01-13 → 2026-01-14 (+1d) |
| PG-12140 | Final Fix - CP & Sanitary fixtures |  | 2026-03-16 → 2026-03-17 (+1d) |
| 1.3.1.3.3.28.2 | **Fire Fighting Works** |  | 2026-03-16 → 2026-03-17 (+1d) |
| PG-12141 | 1st Fix - Piping and Shaft hydrant works |  | 2026-01-16 → 2026-01-17 (+1d) |
| PG-12142 | 2nd Fix - Sprinkler fixing & Pressure testing |  | 2026-02-20 → 2026-02-21 (+1d) |
| PG-12143 | Final Fix - Smoke & heat detectors, FHC , FAS Etc. |  | 2026-03-16 → 2026-03-17 (+1d) |
| 1.3.1.3.3.28.3 | **Electrical Works** | 2025-12-24 → 2025-12-25 (+1d) | 2026-03-16 → 2026-03-17 (+1d) |
| PG-12144 | 1st Fix - GI wire pulling | 2025-12-24 → 2025-12-25 (+1d) | 2026-01-02 → 2026-01-03 (+1d) |
| PG-12145 | 2nd Fix - Wiring works |  | 2026-02-19 → 2026-02-20 (+1d) |
| PG-12146 | Final Fix - Electrical Fixtures |  | 2026-03-16 → 2026-03-17 (+1d) |
| 1.3.1.3.3.29 | **Floor 26** | 2026-01-14 → 2026-01-15 (+1d) | 2026-04-06 → 2026-04-07 (+1d) |
| 1.3.1.3.3.29.1 | **PHE Works** | 2026-01-14 → 2026-01-15 (+1d) | 2026-04-06 → 2026-04-07 (+1d) |

| ID | Task | Start | Finish | Complete | Total float |
| --- | --- | --- | --- | --- | --- |
| PG-12147 | 1st Fix - Piping works | 2026-01-14 → 2026-01-15 (+1d) | 2026-01-29 → 2026-01-30 (+1d) |  |  |
| PG-12148 | 2nd Fix - diverter fixing & Pressure testing | 2026-01-22 → 2026-01-23 (+1d) | 2026-02-05 → 2026-02-06 (+1d) |  |  |
| PG-12149 | Final Fix - CP & Sanitary fixtures | 2026-03-27 → 2026-03-28 (+1d) | 2026-04-06 → 2026-04-07 (+1d) |  |  |
| 1.3.1.3.3.29.2 | **Fire Fighting Works** | 2026-01-23 → 2026-01-24 (+1d) | 2026-04-06 → 2026-04-07 (+1d) |  |  |
| PG-12150 | 1st Fix - Piping and Shaft hydrant works | 2026-01-23 → 2026-01-24 (+1d) |  |  |  |
| PG-12151 | 2nd Fix - Sprinkler fixing & Pressure testing |  | 2026-03-14 → 2026-03-16 (+2d) |  |  |
| PG-12152 | Final Fix - Smoke & heat detectors, FHC , FAS Etc. | 2026-03-27 → 2026-03-28 (+1d) | 2026-04-06 → 2026-04-07 (+1d) |  |  |
| 1.3.1.3.3.29.3 | **Electrical Works** | 2026-01-14 → 2026-01-15 (+1d) | 2026-04-06 → 2026-04-07 (+1d) |  |  |
| PG-12153 | 1st Fix - GI wire pulling | 2026-01-14 → 2026-01-15 (+1d) |  |  |  |
| PG-12154 | 2nd Fix - Wiring works |  | 2026-03-13 → 2026-03-14 (+1d) |  |  |
| PG-12155 | Final Fix - Electrical Fixtures | 2026-03-31 → 2026-04-01 (+1d) | 2026-04-06 → 2026-04-07 (+1d) |  |  |
| 1.3.1.3.3.30 | **Floor 27** | 2026-02-06 → 2026-02-07 (+1d) | 2026-04-28 → 2026-04-29 (+1d) |  |  |
| 1.3.1.3.3.30.1 | **PHE Works** | 2026-02-06 → 2026-02-07 (+1d) | 2026-04-28 → 2026-04-29 (+1d) |  |  |
| PG-12156 | 1st Fix - Piping works | 2026-02-06 → 2026-02-07 (+1d) |  |  |  |
| PG-12157 | 2nd Fix - diverter fixing & Pressure testing | 2026-02-16 → 2026-02-17 (+1d) |  |  |  |
| PG-12158 | Final Fix - CP & Sanitary fixtures |  | 2026-04-28 → 2026-04-29 (+1d) |  |  |
| 1.3.1.3.3.30.2 | **Fire Fighting Works** | 2026-02-16 → 2026-02-17 (+1d) | 2026-04-28 → 2026-04-29 (+1d) |  |  |
| PG-12159 | 1st Fix - Piping and Shaft hydrant works | 2026-02-16 → 2026-02-17 (+1d) |  |  |  |
| PG-12160 | 2nd Fix - Sprinkler fixing & Pressure testing | 2026-03-26 → 2026-03-27 (+1d) |  |  |  |
| PG-12161 | Final Fix - Smoke & heat detectors, FHC , FAS Etc. |  | 2026-04-28 → 2026-04-29 (+1d) |  |  |
| 1.3.1.3.3.30.3 | **Electrical Works** | 2026-02-06 → 2026-02-07 (+1d) | 2026-04-28 → 2026-04-29 (+1d) |  |  |
| PG-12162 | 1st Fix - GI wire pulling | 2026-02-06 → 2026-02-07 (+1d) |  |  |  |
| PG-12163 | 2nd Fix - Wiring works | 2026-03-19 → 2026-03-20 (+1d) |  |  |  |
| PG-12164 | Final Fix - Electrical Fixtures |  | 2026-04-28 → 2026-04-29 (+1d) |  |  |
| 1.3.1.3.3.31 | **Floor 28** |  | 2026-05-20 → 2026-05-21 (+1d) |  |  |
| 1.3.1.3.3.31.1 | **PHE Works** |  | 2026-05-20 → 2026-05-21 (+1d) |  |  |
| PG-12165 | 1st Fix - Piping works |  | 2026-03-13 → 2026-03-14 (+1d) |  |  |
| PG-12166 | 2nd Fix - diverter fixing & Pressure testing |  | 2026-03-20 → 2026-03-21 (+1d) |  |  |
| PG-12167 | Final Fix - CP & Sanitary fixtures |  | 2026-05-20 → 2026-05-21 (+1d) |  |  |
| 1.3.1.3.3.31.2 | **Fire Fighting Works** |  | 2026-05-20 → 2026-05-21 (+1d) |  |  |
| PG-12168 | 1st Fix - Piping and Shaft hydrant works |  | 2026-03-23 → 2026-03-24 (+1d) |  |  |
| PG-12169 | 2nd Fix - Sprinkler fixing & Pressure testing |  | 2026-04-27 → 2026-04-28 (+1d) |  |  |
| PG-12170 | Final Fix - Smoke & heat detectors, FHC , FAS Etc. |  | 2026-05-20 → 2026-05-21 (+1d) |  |  |
| 1.3.1.3.3.31.3 | **Electrical Works** |  | 2026-05-20 → 2026-05-21 (+1d) |  |  |
| PG-12171 | 1st Fix - GI wire pulling |  | 2026-03-09 → 2026-03-10 (+1d) |  |  |
| PG-12172 | 2nd Fix - Wiring works |  | 2026-04-25 → 2026-04-27 (+2d) |  |  |
| PG-12173 | Final Fix - Electrical Fixtures |  | 2026-05-20 → 2026-05-21 (+1d) |  |  |
| 1.3.1.3.3.32 | **Floor 29** | 2026-03-21 → 2026-03-23 (+2d) |  |  |  |
| 1.3.1.3.3.32.1 | **PHE Works** | 2026-03-21 → 2026-03-23 (+2d) |  |  |  |
| PG-12174 | 1st Fix - Piping works | 2026-03-21 → 2026-03-23 (+2d) | 2026-04-04 → 2026-04-06 (+2d) |  |  |
| PG-12175 | 2nd Fix - diverter fixing & Pressure testing | 2026-03-31 → 2026-04-01 (+1d) | 2026-04-11 → 2026-04-13 (+2d) |  |  |
| PG-12176 | Final Fix - CP & Sanitary fixtures | 2026-05-30 → 2026-06-01 (+2d) |  |  |  |
| PG-12177 | 1st Fix - Piping and Shaft hydrant works |  | 2026-04-14 → 2026-04-15 (+1d) |  |  |
| PG-12178 | 2nd Fix - Sprinkler fixing & Pressure testing |  | 2026-05-19 → 2026-05-20 (+1d) |  |  |
| PG-12179 | Final Fix - Smoke & heat detectors, FHC , FAS Etc. | 2026-05-30 → 2026-06-01 (+2d) |  |  |  |
| 1.3.1.3.3.32.3 | **Electrical Works** | 2026-03-21 → 2026-03-23 (+2d) |  |  |  |
| PG-12180 | 1st Fix - GI wire pulling | 2026-03-21 → 2026-03-23 (+2d) | 2026-03-31 → 2026-04-01 (+1d) |  |  |
| PG-12181 | 2nd Fix - Wiring works |  | 2026-05-18 → 2026-05-19 (+1d) |  |  |
| PG-12182 | Final Fix - Electrical Fixtures | 2026-06-04 → 2026-06-05 (+1d) |  |  |  |
| 1.3.1.3.4.7 | **Floor 4** |  | 2025-05-13 → 2025-05-14 (+1d) |  |  |
| 1.3.1.3.4.7.1 | **Ceiling Finishing works - Civil** |  | 2025-05-13 → 2025-05-14 (+1d) |  |  |
| PG-12254 | Final Coat Painting |  | 2025-05-13 → 2025-05-14 A (+1d) | 83% → 100% | 426.92d → none |
| 1.3.1.3.4.7.2 | **Wall Finishing works - Civil** |  | 2025-05-13 → 2025-05-14 (+1d) |  |  |
| PG-12259 | Final Coat Painting |  | 2025-05-13 → 2025-05-14 A (+1d) | 82% → 100% | 390.04d → none |
| 1.3.1.3.4.9 | **Floor 6** |  | 2025-06-13 → 2025-06-14 (+1d) |  |  |
| 1.3.1.3.4.9.1 | **Ceiling Finishing works - Civil** |  | 2025-06-13 → 2025-06-14 (+1d) |  |  |
| PG-12280 | Painting Works - Putty, Primer and 1st | 2025-05-14 A |  | 0% → 41% | 400.58d → 401.55d |
| PG-12282 | Final Coat Painting |  | 2025-06-13 → 2025-06-14 (+1d) |  | 400.58d → 400.48d |
| 1.3.1.3.4.9.2 | **Wall Finishing works - Civil** |  | 2025-06-12 → 2025-06-13 (+1d) |  |  |
| PG-12284 | UPVC Windows & Sliding doors |  | 2025-05-13 → 2025-05-14 A (+1d) | 33% → 100% | 365.92d → none |
| PG-12286 | Painting Works - Putty, Primer and 1st | 2025-05-14 A | 2025-05-20 → 2025-05-21 (+1d) | 0% → 29% | 365.92d → 366.14d |
| PG-12287 | Final Coat Painting |  | 2025-06-12 → 2025-06-13 (+1d) |  | 365.92d → 365.82d |
| 1.3.1.3.4.9.3 | **Floor Finishing Works - Civil** |  | 2025-05-20 → 2025-05-21 (+1d) |  |  |
| PG-12291 | Wooden doors | 2025-05-15 → 2025-05-16 A (+1d) | 2025-05-20 → 2025-05-21 (+1d) | 0% → 8% | 365.92d → 365.82d |
| PG-12293 | Cornice fixing | 2025-05-12 A | 2025-05-15 → 2025-05-16 A (+1d) | 0% → 100% | 399.58d → none |
| PG-12299 | Dadoing - Wet area |  | 2025-05-13 → 2025-05-14 A (+1d) | 37% → 100% | 353.75d → none |
| PG-12303 | Floor Tiling - Wet area | 2025-05-13 → 2025-05-14 A (+1d) |  | 0% → 57% | 353.75d → 354.28d |
| 1.3.1.3.4.11.1 | **Ceiling Finishing works - Civil** | 2025-05-10 → 2025-05-12 (+2d) |  |  |  |
| PG-12306 | Gypsum Plastering | 2025-05-10 → 2025-05-12 A (+2d) | 2025-05-17 → 2025-05-19 (+2d) | 0% → 58% | 383.61d → 383.58d |
| PG-12307 | Cornice fixing | 2025-05-27 → 2025-05-28 (+1d) | 2025-05-31 → 2025-06-02 (+2d) |  | 383.61d → 383.33d |

| ID | Task | Start | Finish |
| --- | --- | --- | --- |
| 1.3.1.3.4.12.2 | **Wall Finishing works - Civil** |  | 2025-07-29 → 2025-07-30 (+1d) |
| PG-12329 | Final Coat Painting |  | 2025-07-29 → 2025-07-30 (+1d) |
| 1.3.1.3.4.13 | **Floor 10** |  | 2025-08-16 → 2025-08-18 (+2d) |
| 1.3.1.3.4.13.1 | **Ceiling Finishing works - Civil** |  | 2025-08-16 → 2025-08-18 (+2d) |
| PG-12338 | Final Coat Painting |  | 2025-08-16 → 2025-08-18 (+2d) |
| 1.3.1.3.4.13.2 | **Wall Finishing works - Civil** |  | 2025-08-14 → 2025-08-16 (+2d) |
| PG-12343 | Final Coat Painting |  | 2025-08-14 → 2025-08-16 (+2d) |
| 1.3.1.3.4.14.2 | **Wall Finishing works - Civil** |  | 2025-08-28 → 2025-08-29 (+1d) |
| PG-12357 | Final Coat Painting |  | 2025-08-28 → 2025-08-29 (+1d) |
| 1.3.1.3.4.15 | **Floor 12** |  | 2025-09-13 → 2025-09-15 (+2d) |
| 1.3.1.3.4.15.1 | **Ceiling Finishing works - Civil** |  | 2025-09-13 → 2025-09-15 (+2d) |
| PG-12366 | Final Coat Painting |  | 2025-09-13 → 2025-09-15 (+2d) |
| 1.3.1.3.4.15.2 | **Wall Finishing works - Civil** |  | 2025-09-13 → 2025-09-15 (+2d) |
| PG-12371 | Final Coat Painting |  | 2025-09-13 → 2025-09-15 (+2d) |
| 1.3.1.3.4.16 | **Floor 13** |  | 2025-09-26 → 2025-09-27 (+1d) |
| 1.3.1.3.4.16.1 | **Ceiling Finishing works - Civil** |  | 2025-09-26 → 2025-09-27 (+1d) |
| PG-12380 | Final Coat Painting |  | 2025-09-26 → 2025-09-27 (+1d) |
| 1.3.1.3.4.16.2 | **Wall Finishing works - Civil** |  | 2025-09-26 → 2025-09-27 (+1d) |
| PG-12385 | Final Coat Painting |  | 2025-09-26 → 2025-09-27 (+1d) |
| 1.3.1.3.4.17 | **Floor 14** |  | 2025-10-08 → 2025-10-09 (+1d) |
| 1.3.1.3.4.17.1 | **Ceiling Finishing works - Civil** |  | 2025-10-08 → 2025-10-09 (+1d) |
| PG-12394 | Final Coat Painting |  | 2025-10-08 → 2025-10-09 (+1d) |
| 1.3.1.3.4.17.2 | **Wall Finishing works - Civil** |  | 2025-10-08 → 2025-10-09 (+1d) |
| PG-12399 | Final Coat Painting |  | 2025-10-08 → 2025-10-09 (+1d) |
| 1.3.1.3.4.19.1 | **Ceiling Finishing works - Civil** |  | 2025-11-04 → 2025-11-05 (+1d) |
| PG-12422 | Final Coat Painting |  | 2025-11-04 → 2025-11-05 (+1d) |
| 1.3.1.3.4.23 | **Floor 20** |  | 2025-12-25 → 2025-12-26 (+1d) |
| 1.3.1.3.4.23.1 | **Ceiling Finishing works - Civil** |  | 2025-12-25 → 2025-12-26 (+1d) |
| PG-12478 | Final Coat Painting |  | 2025-12-25 → 2025-12-26 (+1d) |
| 1.3.1.3.4.23.2 | **Wall Finishing works - Civil** |  | 2025-12-25 → 2025-12-26 (+1d) |
| PG-12483 | Final Coat Painting |  | 2025-12-25 → 2025-12-26 (+1d) |
| 1.3.1.3.4.24 | **Floor 21** |  | 2026-01-07 → 2026-01-08 (+1d) |
| 1.3.1.3.4.24.1 | **Ceiling Finishing works - Civil** |  | 2026-01-07 → 2026-01-08 (+1d) |
| PG-12492 | Final Coat Painting |  | 2026-01-07 → 2026-01-08 (+1d) |
| 1.3.1.3.4.24.2 | **Wall Finishing works - Civil** |  | 2026-01-07 → 2026-01-08 (+1d) |
| PG-12497 | Final Coat Painting |  | 2026-01-07 → 2026-01-08 (+1d) |
| 1.3.1.3.4.25 | **Floor 22** |  | 2026-01-20 → 2026-01-21 (+1d) |
| 1.3.1.3.4.25.1 | **Ceiling Finishing works - Civil** |  | 2026-01-20 → 2026-01-21 (+1d) |
| PG-12506 | Final Coat Painting |  | 2026-01-20 → 2026-01-21 (+1d) |
| 1.3.1.3.4.25.2 | **Wall Finishing works - Civil** |  | 2026-01-20 → 2026-01-21 (+1d) |
| PG-12511 | Final Coat Painting |  | 2026-01-20 → 2026-01-21 (+1d) |
| PG-12519 | Toilet False ceiling | 2025-12-22 → 2025-12-23 (+1d) | 2025-12-26 → 2025-12-27 (+1d) |
| PG-12518 | Painting Works - Putty, Primer and 1st | 2026-01-01 → 2026-01-02 (+1d) | 2026-01-08 → 2026-01-09 (+1d) |
| PG-12520 | Final Coat Painting | 2026-01-08 → 2026-01-09 (+1d) |  |
| PG-12523 | Dadoing - Wet area | 2025-12-09 → 2025-12-10 (+1d) | 2025-12-15 → 2025-12-16 (+1d) |
| PG-12522 | UPVC Windows & Sliding doors | 2025-12-26 → 2025-12-27 (+1d) | 2026-01-01 → 2026-01-02 (+1d) |
| PG-12524 | Painting Works - Putty, Primer and 1st | 2026-01-01 → 2026-01-02 (+1d) | 2026-01-08 → 2026-01-09 (+1d) |
| PG-12525 | Final Coat Painting | 2026-01-08 → 2026-01-09 (+1d) |  |
| 1.3.1.3.4.26.3 | **Floor Finishing Works - Civil** |  | 2026-01-08 → 2026-01-09 (+1d) |
| PG-12527 | Floor Tiling - Wet area | 2025-12-15 → 2025-12-16 (+1d) | 2025-12-20 → 2025-12-22 (+2d) |
| PG-12528 | Floor Tiling - Dry area | 2025-12-20 → 2025-12-22 (+2d) | 2025-12-26 → 2025-12-27 (+1d) |
| PG-12529 | Wooden doors | 2026-01-02 → 2026-01-03 (+1d) | 2026-01-08 → 2026-01-09 (+1d) |
| 1.3.1.3.4.27 | **Floor 24** |  | 2026-02-16 → 2026-02-17 (+1d) |
| 1.3.1.3.4.27.1 | **Ceiling Finishing works - Civil** |  | 2026-02-16 → 2026-02-17 (+1d) |
| PG-12533 | Toilet False ceiling | 2026-01-05 → 2026-01-06 (+1d) | 2026-01-09 → 2026-01-10 (+1d) |
| PG-12532 | Painting Works - Putty, Primer and 1st | 2026-01-15 → 2026-01-16 (+1d) | 2026-01-22 → 2026-01-23 (+1d) |
| PG-12534 | Final Coat Painting | 2026-01-22 → 2026-01-23 (+1d) | 2026-02-16 → 2026-02-17 (+1d) |
| 1.3.1.3.4.27.2 | **Wall Finishing works - Civil** |  | 2026-02-16 → 2026-02-17 (+1d) |
| PG-12537 | Dadoing - Wet area | 2025-12-23 → 2025-12-24 (+1d) | 2025-12-29 → 2025-12-30 (+1d) |
| PG-12536 | UPVC Windows & Sliding doors | 2026-01-09 → 2026-01-10 (+1d) | 2026-01-15 → 2026-01-16 (+1d) |
| PG-12538 | Painting Works - Putty, Primer and 1st | 2026-01-15 → 2026-01-16 (+1d) | 2026-01-22 → 2026-01-23 (+1d) |
| PG-12539 | Final Coat Painting | 2026-01-22 → 2026-01-23 (+1d) | 2026-02-16 → 2026-02-17 (+1d) |
| 1.3.1.3.4.27.3 | **Floor Finishing Works - Civil** |  | 2026-01-22 → 2026-01-23 (+1d) |
| PG-12541 | Floor Tiling - Wet area | 2025-12-29 → 2025-12-30 (+1d) | 2026-01-03 → 2026-01-05 (+2d) |
| PG-12542 | Floor Tiling - Dry area | 2026-01-03 → 2026-01-05 (+2d) | 2026-01-09 → 2026-01-10 (+1d) |
| PG-12543 | Wooden doors | 2026-01-16 → 2026-01-17 (+1d) | 2026-01-22 → 2026-01-23 (+1d) |
| 1.3.1.3.4.28 | **Floor 25** | 2025-12-24 → 2025-12-25 (+1d) | 2026-03-09 → 2026-03-10 (+1d) |
| 1.3.1.3.4.28.1 | **Ceiling Finishing works - Civil** | 2026-01-02 → 2026-01-03 (+1d) | 2026-03-09 → 2026-03-10 (+1d) |
| PG-12544 | Gypsum Plastering | 2026-01-02 → 2026-01-03 (+1d) | 2026-01-09 → 2026-01-10 (+1d) |
| PG-12545 | Cornice fixing | 2026-01-19 → 2026-01-20 (+1d) | 2026-01-23 → 2026-01-24 (+1d) |

| ID | Task | Start | Finish |
| --- | --- | --- | --- |
| PG-12547 | Toilet False ceiling | 2026-01-27 → 2026-01-28 (+1d) | 2026-01-31 → 2026-02-02 (+2d) |
| PG-12546 | Painting Works - Putty, Primer and 1st | 2026-02-06 → 2026-02-07 (+1d) | 2026-02-13 → 2026-02-14 (+1d) |
| PG-12548 | Final Coat Painting | 2026-02-13 → 2026-02-14 (+1d) | 2026-03-09 → 2026-03-10 (+1d) |
| 1.3.1.3.4.28.2 | **Wall Finishing works - Civil** | 2025-12-24 → 2025-12-25 (+1d) | 2026-03-09 → 2026-03-10 (+1d) |
| PG-12549 | Balcony Railing Fixing works | 2025-12-24 → 2025-12-25 (+1d) | 2025-12-29 → 2025-12-30 (+1d) |
| PG-12551 | Dadoing - Wet area | 2026-01-13 → 2026-01-14 (+1d) | 2026-01-19 → 2026-01-20 (+1d) |
| PG-12550 | UPVC Windows & Sliding doors | 2026-01-31 → 2026-02-02 (+2d) | 2026-02-06 → 2026-02-07 (+1d) |
| PG-12552 | Painting Works - Putty, Primer and 1st | 2026-02-06 → 2026-02-07 (+1d) | 2026-02-13 → 2026-02-14 (+1d) |
| PG-12553 | Final Coat Painting | 2026-02-13 → 2026-02-14 (+1d) | 2026-03-09 → 2026-03-10 (+1d) |
| 1.3.1.3.4.28.3 | **Floor Finishing Works - Civil** | 2025-12-24 → 2025-12-25 (+1d) | 2026-02-13 → 2026-02-14 (+1d) |
| PG-12554 | Waterproofing for sunken areas | 2025-12-24 → 2025-12-25 (+1d) | 2025-12-27 → 2025-12-29 (+2d) |
| PG-12555 | Floor Tiling - Wet area | 2026-01-19 → 2026-01-20 (+1d) | 2026-01-24 → 2026-01-27 (+3d) |
| PG-12556 | Floor Tiling - Dry area | 2026-01-24 → 2026-01-27 (+3d) | 2026-01-31 → 2026-02-02 (+2d) |
| PG-12557 | Wooden doors | 2026-02-07 → 2026-02-09 (+2d) | 2026-02-13 → 2026-02-14 (+1d) |
| 1.3.1.3.4.29 | **Floor 26** | 2026-01-14 → 2026-01-15 (+1d) | 2026-03-31 → 2026-04-01 (+1d) |
| 1.3.1.3.4.29.1 | **Ceiling Finishing works - Civil** |  | 2026-03-31 → 2026-04-01 (+1d) |
| PG-12559 | Cornice fixing | 2026-02-10 → 2026-02-11 (+1d) |  |
| PG-12561 | Toilet False ceiling | 2026-02-18 → 2026-02-19 (+1d) | 2026-02-23 → 2026-02-24 (+1d) |
| PG-12560 | Painting Works - Putty, Primer and 1st | 2026-02-28 → 2026-03-02 (+2d) | 2026-03-07 → 2026-03-09 (+2d) |
| PG-12562 | Final Coat Painting | 2026-03-07 → 2026-03-09 (+2d) | 2026-03-31 → 2026-04-01 (+1d) |
| 1.3.1.3.4.29.2 | **Wall Finishing works - Civil** | 2026-01-14 → 2026-01-15 (+1d) | 2026-03-30 → 2026-03-31 (+1d) |
| PG-12563 | Balcony Railing Fixing works | 2026-01-14 → 2026-01-15 (+1d) | 2026-01-19 → 2026-01-20 (+1d) |
| PG-12565 | Dadoing - Wet area | 2026-02-05 → 2026-02-06 (+1d) | 2026-02-11 → 2026-02-12 (+1d) |
| PG-12564 | UPVC Windows & Sliding doors | 2026-02-23 → 2026-02-24 (+1d) | 2026-02-28 → 2026-03-02 (+2d) |
| PG-12566 | Painting Works - Putty, Primer and 1st | 2026-02-28 → 2026-03-02 (+2d) | 2026-03-07 → 2026-03-09 (+2d) |
| PG-12567 | Final Coat Painting | 2026-03-07 → 2026-03-09 (+2d) | 2026-03-30 → 2026-03-31 (+1d) |
| 1.3.1.3.4.29.3 | **Floor Finishing Works - Civil** | 2026-01-14 → 2026-01-15 (+1d) | 2026-03-07 → 2026-03-09 (+2d) |
| PG-12568 | Waterproofing for sunken areas | 2026-01-14 → 2026-01-15 (+1d) | 2026-01-17 → 2026-01-19 (+2d) |
| PG-12569 | Floor Tiling - Wet area | 2026-02-11 → 2026-02-12 (+1d) | 2026-02-17 → 2026-02-18 (+1d) |
| PG-12570 | Floor Tiling - Dry area | 2026-02-17 → 2026-02-18 (+1d) | 2026-02-23 → 2026-02-24 (+1d) |
| PG-12571 | Wooden doors | 2026-03-02 → 2026-03-03 (+1d) | 2026-03-07 → 2026-03-09 (+2d) |
| 1.3.1.3.4.30 | **Floor 27** | 2026-02-06 → 2026-02-07 (+1d) | 2026-04-21 → 2026-04-22 (+1d) |
| 1.3.1.3.4.30.1 | **Ceiling Finishing works - Civil** |  | 2026-04-21 → 2026-04-22 (+1d) |
| PG-12576 | Final Coat Painting |  | 2026-04-21 → 2026-04-22 (+1d) |
| 1.3.1.3.4.30.2 | **Wall Finishing works - Civil** | 2026-02-06 → 2026-02-07 (+1d) | 2026-04-21 → 2026-04-22 (+1d) |
| PG-12577 | Balcony Railing Fixing works | 2026-02-06 → 2026-02-07 (+1d) | 2026-02-11 → 2026-02-12 (+1d) |
| PG-12581 | Final Coat Painting |  | 2026-04-21 → 2026-04-22 (+1d) |
| 1.3.1.3.4.30.3 | **Floor Finishing Works - Civil** | 2026-02-06 → 2026-02-07 (+1d) |  |
| PG-12582 | Waterproofing for sunken areas | 2026-02-06 → 2026-02-07 (+1d) | 2026-02-10 → 2026-02-11 (+1d) |
| 1.3.1.3.4.31 | **Floor 28** |  | 2026-05-13 → 2026-05-14 (+1d) |
| 1.3.1.3.4.31.1 | **Ceiling Finishing works - Civil** | 2026-03-09 → 2026-03-10 (+1d) | 2026-05-13 → 2026-05-14 (+1d) |
| PG-12586 | Gypsum Plastering | 2026-03-09 → 2026-03-10 (+1d) | 2026-03-16 → 2026-03-17 (+1d) |
| PG-12587 | Cornice fixing |  | 2026-03-30 → 2026-03-31 (+1d) |
| PG-12589 | Toilet False ceiling | 2026-04-02 → 2026-04-03 (+1d) | 2026-04-07 → 2026-04-08 (+1d) |
| PG-12588 | Painting Works - Putty, Primer and 1st | 2026-04-13 → 2026-04-14 (+1d) | 2026-04-20 → 2026-04-21 (+1d) |
| PG-12590 | Final Coat Painting | 2026-04-20 → 2026-04-21 (+1d) | 2026-05-13 → 2026-05-14 (+1d) |
| 1.3.1.3.4.31.2 | **Wall Finishing works - Civil** |  | 2026-05-13 → 2026-05-14 (+1d) |
| PG-12593 | Dadoing - Wet area | 2026-03-20 → 2026-03-21 (+1d) | 2026-03-26 → 2026-03-27 (+1d) |
| PG-12592 | UPVC Windows & Sliding doors | 2026-04-07 → 2026-04-08 (+1d) | 2026-04-13 → 2026-04-14 (+1d) |
| PG-12594 | Painting Works - Putty, Primer and 1st | 2026-04-13 → 2026-04-14 (+1d) | 2026-04-20 → 2026-04-21 (+1d) |
| PG-12595 | Final Coat Painting | 2026-04-20 → 2026-04-21 (+1d) | 2026-05-13 → 2026-05-14 (+1d) |
| 1.3.1.3.4.31.3 | **Floor Finishing Works - Civil** |  | 2026-04-20 → 2026-04-21 (+1d) |
| PG-12597 | Floor Tiling - Wet area | 2026-03-26 → 2026-03-27 (+1d) | 2026-04-01 → 2026-04-02 (+1d) |
| PG-12598 | Floor Tiling - Dry area | 2026-04-01 → 2026-04-02 (+1d) | 2026-04-07 → 2026-04-08 (+1d) |
| PG-12599 | Wooden doors | 2026-04-14 → 2026-04-15 (+1d) | 2026-04-20 → 2026-04-21 (+1d) |
| 1.3.1.3.4.32 | **Floor 29** | 2026-03-21 → 2026-03-23 (+2d) |  |
| 1.3.1.3.4.32.1 | **Ceiling Finishing works - Civil** | 2026-03-31 → 2026-04-01 (+1d) |  |
| PG-12600 | Gypsum Plastering | 2026-03-31 → 2026-04-01 (+1d) | 2026-04-07 → 2026-04-08 (+1d) |
| PG-12601 | Cornice fixing | 2026-04-23 → 2026-04-24 (+1d) | 2026-04-28 → 2026-04-29 (+1d) |
| PG-12603 | Toilet False ceiling | 2026-04-24 → 2026-04-25 (+1d) | 2026-04-29 → 2026-04-30 (+1d) |
| PG-12602 | Painting Works - Putty, Primer and 1st | 2026-05-05 → 2026-05-06 (+1d) | 2026-05-12 → 2026-05-13 (+1d) |
| PG-12604 | Final Coat Painting | 2026-05-12 → 2026-05-13 (+1d) |  |
| 1.3.1.3.4.32.2 | **Wall Finishing works - Civil** | 2026-03-21 → 2026-03-23 (+2d) |  |
| PG-12605 | Balcony Railing Fixing works | 2026-03-21 → 2026-03-23 (+2d) | 2026-03-26 → 2026-03-27 (+1d) |
| PG-12607 | Dadoing - Wet area | 2026-04-11 → 2026-04-13 (+2d) | 2026-04-17 → 2026-04-18 (+1d) |
| PG-12606 | UPVC Windows & Sliding doors | 2026-04-29 → 2026-04-30 (+1d) | 2026-05-05 → 2026-05-06 (+1d) |
| PG-12608 | Painting Works - Putty, Primer and 1st | 2026-05-05 → 2026-05-06 (+1d) | 2026-05-12 → 2026-05-13 (+1d) |
| PG-12609 | Final Coat Painting | 2026-05-12 → 2026-05-13 (+1d) |  |
| 1.3.1.3.4.32.3 | **Floor Finishing Works - Civil** | 2026-03-21 → 2026-03-23 (+2d) | 2026-05-12 → 2026-05-13 (+1d) |
| PG-12610 | Waterproofing for sunken areas | 2026-03-21 → 2026-03-23 (+2d) | 2026-03-25 → 2026-03-26 (+1d) |

| ID | Task | Start | Finish |
| --- | --- | --- | --- |
| PG-12611 | Floor Tiling - Wet area | 2026-04-17 → 2026-04-18 (+1d) | 2026-04-23 → 2026-04-24 (+1d) |
| PG-12612 | Floor Tiling - Dry area | 2026-04-23 → 2026-04-24 (+1d) | 2026-04-29 → 2026-04-30 (+1d) |
| PG-12613 | Wooden doors | 2026-05-06 → 2026-05-07 (+1d) | 2026-05-12 → 2026-05-13 (+1d) |
| 1.3.1.3.4.33 | **External Finishing works** | 2025-12-30 → 2025-12-31 (+1d) | 2026-04-27 → 2026-04-28 (+1d) |
| PG-12614 | External walls tie rod hole plugging with GP2 | 2025-12-30 → 2025-12-31 (+1d) | 2026-02-04 → 2026-02-05 (+1d) |
| PG-12615 | External walls grinding works | 2026-01-22 → 2026-01-23 (+1d) | 2026-03-11 → 2026-03-12 (+1d) |
| PG-12616 | Texture and painting works | 2026-03-05 → 2026-03-06 (+1d) | 2026-04-27 → 2026-04-28 (+1d) |
| 1.3.1.3.5 | **Corridor & Fire Staircase Finishing works** | 2026-03-07 → 2026-03-09 (+2d) | 2026-07-03 → 2026-07-04 (+1d) |
| 1.3.1.3.5.1 | **Ceiling Finishing works - Civil** | 2026-03-07 → 2026-03-09 (+2d) | 2026-05-29 → 2026-05-30 (+1d) |
| PG-12617 | Gypsum Plastering | 2026-03-07 → 2026-03-09 (+2d) | 2026-03-14 → 2026-03-16 (+2d) |
| PG-12618 | Cornice fixing | 2026-03-13 → 2026-03-14 (+1d) | 2026-03-18 → 2026-03-19 (+1d) |
| PG-12619 | Painting Works - Putty, Primer and 1st | 2026-03-31 → 2026-04-01 (+1d) | 2026-04-07 → 2026-04-08 (+1d) |
| PG-12620 | False ceiling | 2026-04-07 → 2026-04-08 (+1d) | 2026-05-12 → 2026-05-13 (+1d) |
| PG-12621 | Final Coat Painting |  | 2026-05-29 → 2026-05-30 (+1d) |
| 1.3.1.3.5.2 | **Wall Finishing works - Civil** | 2026-04-11 → 2026-04-13 (+2d) | 2026-07-03 → 2026-07-04 (+1d) |
| PG-12622 | UPVC Windows & Sliding doors | 2026-04-11 → 2026-04-13 (+2d) | 2026-04-17 → 2026-04-18 (+1d) |
| PG-12623 | Wall Cladding Upto 1.2 Mts | 2026-04-29 → 2026-04-30 (+1d) | 2026-05-22 → 2026-05-23 (+1d) |
| PG-12624 | Painting Works - Texture & one coat Painting works | 2026-05-29 → 2026-05-30 (+1d) | 2026-06-16 → 2026-06-17 (+1d) |
| PG-12625 | Final Coat Painting |  | 2026-07-03 → 2026-07-04 (+1d) |
| 1.3.1.3.5.3 | **Floor Finishing Works - Civil** | 2026-03-14 → 2026-03-16 (+2d) | 2026-04-13 → 2026-04-14 (+1d) |
| PG-12626 | Fire Doors installation | 2026-03-14 → 2026-03-16 (+2d) | 2026-03-26 → 2026-03-27 (+1d) |
| PG-12627 | Vitrified tile flooring works | 2026-03-26 → 2026-03-27 (+1d) | 2026-04-13 → 2026-04-14 (+1d) |
| 1.3.1.3.5.4 | **Fire Staircase Finishing Works - Civil** | 2026-03-14 → 2026-03-16 (+2d) | 2026-07-03 → 2026-07-04 (+1d) |
| PG-12628 | Staircase Railing Fixing works | 2026-03-14 → 2026-03-16 (+2d) | 2026-04-07 → 2026-04-08 (+1d) |
| PG-12629 | Wall and ceiling Gypsum plastering |  | 2026-04-30 → 2026-05-01 (+1d) |
| PG-12630 | Staircase Flooring and Skirting Works |  | 2026-05-29 → 2026-05-30 (+1d) |
| PG-12631 | UPVC Window fixing works |  | 2026-06-16 → 2026-06-17 (+1d) |
| PG-12632 | Staircase Painting works | 2026-06-10 → 2026-06-11 (+1d) | 2026-07-03 → 2026-07-04 (+1d) |
| 1.3.1.3.6 | **MEP Civil Works (Shaft, Lift Shaft & OHT )** | 2025-12-16 → 2025-12-17 (+1d) |  |
| 1.3.1.3.6.1 | **Lift Shaft Works** | 2025-12-16 → 2025-12-17 (+1d) |  |
| PG-12633 | Tie rod hole packing | 2025-12-16 → 2025-12-17 (+1d) | 2025-12-25 → 2025-12-26 (+1d) |
| PG-12634 | Grinding works | 2025-12-25 → 2025-12-26 (+1d) | 2025-12-31 → 2026-01-01 (+1d) |
| PG-12635 | Lift pit water proofing works | 2025-12-31 → 2026-01-01 (+1d) | 2026-01-24 → 2026-01-27 (+3d) |
| PG-12636 | Shaft door opening finishing | 2026-01-24 → 2026-01-27 (+3d) |  |
| 1.3.1.3.6.2 | **Electrical Shaft works** | 2025-12-16 → 2025-12-17 (+1d) | 2026-01-17 → 2026-01-19 (+2d) |
| PG-12639 | Tie rod hole packing | 2025-12-16 → 2025-12-17 (+1d) | 2025-12-25 → 2025-12-26 (+1d) |
| PG-12640 | Grinding works | 2025-12-25 → 2025-12-26 (+1d) | 2025-12-31 → 2026-01-01 (+1d) |
| PG-12641 | Shaft door opening finishing | 2025-12-31 → 2026-01-01 (+1d) | 2026-01-08 → 2026-01-09 (+1d) |
| PG-12642 | Painting works | 2026-01-08 → 2026-01-09 (+1d) | 2026-01-17 → 2026-01-19 (+2d) |
| 1.3.1.3.6.3 | **FPS Shaft works** | 2025-12-16 → 2025-12-17 (+1d) | 2026-01-17 → 2026-01-19 (+2d) |
| PG-12643 | Tie rod hole packing | 2025-12-16 → 2025-12-17 (+1d) | 2025-12-25 → 2025-12-26 (+1d) |
| PG-12644 | Grinding works | 2025-12-25 → 2025-12-26 (+1d) | 2025-12-31 → 2026-01-01 (+1d) |
| PG-12645 | Shaft door opening finishing | 2025-12-31 → 2026-01-01 (+1d) | 2026-01-08 → 2026-01-09 (+1d) |
| PG-12646 | Painting works | 2026-01-08 → 2026-01-09 (+1d) | 2026-01-17 → 2026-01-19 (+2d) |
| 1.3.1.3.6.4 | **PHE Shaft works** | 2025-12-16 → 2025-12-17 (+1d) | 2026-01-17 → 2026-01-19 (+2d) |
| PG-12647 | Tie rod hole packing | 2025-12-16 → 2025-12-17 (+1d) | 2025-12-25 → 2025-12-26 (+1d) |
| PG-12648 | Grinding works | 2025-12-25 → 2025-12-26 (+1d) | 2025-12-31 → 2026-01-01 (+1d) |
| PG-12649 | Shaft door opening finishing | 2025-12-31 → 2026-01-01 (+1d) | 2026-01-08 → 2026-01-09 (+1d) |
| PG-12650 | Painting works | 2026-01-08 → 2026-01-09 (+1d) | 2026-01-17 → 2026-01-19 (+2d) |
| 1.3.1.3.6.5 | **Data & Communication Shaft** | 2025-12-16 → 2025-12-17 (+1d) | 2026-01-15 → 2026-01-16 (+1d) |
| PG-12651 | Tie rod hole packing | 2025-12-16 → 2025-12-17 (+1d) | 2025-12-25 → 2025-12-26 (+1d) |
| PG-12652 | Grinding works | 2025-12-25 → 2025-12-26 (+1d) | 2025-12-31 → 2026-01-01 (+1d) |
| PG-12653 | Shaft door opening finishing | 2025-12-31 → 2026-01-01 (+1d) | 2026-01-06 → 2026-01-07 (+1d) |
| PG-12654 | Painting works | 2026-01-06 → 2026-01-07 (+1d) | 2026-01-15 → 2026-01-16 (+1d) |
| 1.3.1.3.6.6 | **OHT Works** | 2025-12-16 → 2025-12-17 (+1d) | 2026-02-04 → 2026-02-05 (+1d) |
| PG-12655 | Tank materials Supply & Shifting | 2025-12-16 → 2025-12-17 (+1d) | 2025-12-27 → 2025-12-29 (+2d) |
| PG-12656 | Assembling OHT FRP Tank | 2025-12-27 → 2025-12-29 (+2d) | 2026-01-08 → 2026-01-09 (+1d) |
| PG-12657 | Installation of OHT Tank | 2026-01-08 → 2026-01-09 (+1d) | 2026-01-27 → 2026-01-28 (+1d) |
| PG-12658 | Water tightness works and checking | 2026-01-27 → 2026-01-28 (+1d) | 2026-02-04 → 2026-02-05 (+1d) |
| 1.3.1.3.7 | **MEP Shaft works** | 2026-01-15 → 2026-01-16 (+1d) |  |
| 1.3.1.3.7.1 | **Electrical** | 2026-01-17 → 2026-01-19 (+2d) | 2026-02-27 → 2026-02-28 (+1d) |
| PG-12659 | Tray Works | 2026-01-17 → 2026-01-19 (+2d) |  |
| PG-12661 | Wiring/DB/connector box installation and termination works |  | 2026-02-27 → 2026-02-28 (+1d) |
| 1.3.1.3.7.2 | **FPS** | 2026-01-17 → 2026-01-19 (+2d) | 2026-02-27 → 2026-02-28 (+1d) |
| PG-12662 | Shaft MS Piping & fixtures installation | 2026-01-17 → 2026-01-19 (+2d) |  |
| PG-12663 | Tray / cabling / conducting & wiring works |  | 2026-02-27 → 2026-02-28 (+1d) |
| 1.3.1.3.7.3 | **Data & Communication** | 2026-01-15 → 2026-01-16 (+1d) | 2026-03-05 → 2026-03-06 (+1d) |
| PG-12664 | Tray Works | 2026-01-15 → 2026-01-16 (+1d) | 2026-01-30 → 2026-01-31 (+1d) |
| PG-12665 | Tray / cabling / conducting & wiring works | 2026-01-30 → 2026-01-31 (+1d) |  |
| PG-12666 | Wiring/DB/connector box installation and termination works |  | 2026-03-05 → 2026-03-06 (+1d) |

| ID | Task | Start | Finish | Complete | Total float |
| --- | --- | --- | --- | --- | --- |
| 1.3.1.3.7.4 | **PHE** | 2026-01-17 → 2026-01-19 (+2d) |  |  |  |
| PG-12667 | Bracket fixing works | 2026-01-17 → 2026-01-19 (+2d) |  |  |  |
| PG-12668 | Piping Works |  | 2026-02-12 → 2026-02-13 (+1d) |  |  |
| PG-12669 | Terrace Ring main & OHT Connection works | 2026-02-12 → 2026-02-13 (+1d) | 2026-03-31 → 2026-04-01 (+1d) |  |  |
| PG-12670 | Commissioning | 2026-03-31 → 2026-04-01 (+1d) |  |  |  |
| 1.3.1.3.8 | **Lift Installation and Testing works** | 2025-12-31 → 2026-01-01 (+1d) |  |  |  |
| PG-12671 | Lift Shaft Survey works | 2025-12-31 → 2026-01-01 (+1d) | 2026-01-12 → 2026-01-13 (+1d) |  |  |
| 1.3.1.3.10 | **Entrance Lobby works** | 2026-07-03 → 2026-07-04 (+1d) | 2026-10-17 → 2026-10-19 (+2d) |  |  |
| PG-12684 | Flooring Works | 2026-07-03 → 2026-07-04 (+1d) |  |  |  |
| PG-12685 | Glass Door and installation Works |  | 2026-08-12 → 2026-08-13 (+1d) |  |  |
| PG-12687 | Canopy Works |  | 2026-08-19 → 2026-08-20 (+1d) |  |  |
| PG-12686 | Painting Works | 2026-08-12 → 2026-08-13 (+1d) |  |  |  |
| PG-12688 | Interior Works |  | 2026-10-17 → 2026-10-19 (+2d) |  |  |
| 1.3.1.3.11 | **Lightening Arrester works** | 2026-04-27 → 2026-04-28 (+1d) |  |  |  |
| PG-12689 | Conductor will be lifted with RCC Works, But Terrace works will be done once Parapet Painting done | 2026-04-27 → 2026-04-28 (+1d) |  |  |  |
| 1.3.1.5 | **Landscape and Hardscape works** | 2026-04-27 → 2026-04-28 (+1d) |  |  |  |
| PG-12715 | Hardscape ( Granite, Planter, Walkways Etc..) | 2026-04-27 → 2026-04-28 (+1d) | 2026-06-18 → 2026-06-19 (+1d) |  |  |
| PG-12716 | Filter media and soil filling works |  | 2026-07-06 → 2026-07-07 (+1d) |  |  |
| PG-12717 | Irrigation piping works |  | 2026-07-17 → 2026-07-18 (+1d) |  |  |
| PG-12718 | Planting works | 2026-07-17 → 2026-07-18 (+1d) |  |  |  |
| PG-30428 | Footing and Pedestal Excavation Works |  | 2026-04-03 → 2026-04-04 (+1d) |  |  |
| PG-30429 | Footing and Pedestal Reinforcement works |  | 2026-04-09 → 2026-04-10 (+1d) |  |  |
| PG-30430 | Footing and Pedestal Concrete works | 2026-04-09 → 2026-04-10 (+1d) |  |  |  |
| PG-30431 | Fencing Retaining wall footing reinforcement works |  | 2026-04-28 → 2026-04-29 (+1d) |  |  |
| PG-30432 | Fencing Retaining wall footing formwork and concrete works | 2026-04-28 → 2026-04-29 (+1d) | 2026-05-05 → 2026-05-06 (+1d) |  |  |
| PG-30434 | Fencing works MS/GRC | 2026-05-02 → 2026-05-04 (+2d) | 2026-05-27 → 2026-05-28 (+1d) |  |  |
| PG-30433 | Retaining wall upto low level concrete works | 2026-05-05 → 2026-05-06 (+1d) | 2026-05-09 → 2026-05-11 (+2d) |  |  |
| PG-30435 | Floor Aggregates spreading works | 2026-05-27 → 2026-05-28 (+1d) |  |  |  |
| PG-30460 | Cable Trench works |  | 2026-08-21 → 2026-08-22 (+1d) |  |  |
| PG-30461 | LTQS Installation Works | 2026-08-21 → 2026-08-22 (+1d) | 2026-08-31 → 2026-09-01 (+1d) |  |  |
| PG-30462 | Cable laying works | 2026-08-31 → 2026-09-01 (+1d) |  |  |  |
| PG-30463 | Cable Termination works |  | 2026-09-19 → 2026-09-21 (+2d) |  |  |
| PG-30464 | Testing and commissioning works | 2026-09-19 → 2026-09-21 (+2d) |  |  |  |
| 1.3.9.1.5 | **STP MEP Works** |  | 2026-02-17 → 2026-02-18 (+1d) |  |  |
| 1.3.9.1.5.1 | **Sewage Treatment Plant 01 ( 1000KLD )** |  | 2026-02-17 → 2026-02-18 (+1d) |  |  |
| PG-30542 | piping for Excess Treated water discharge | 2025-12-01 → 2025-12-02 (+1d) | 2025-12-06 → 2025-12-08 (+2d) |  | 217.62d → 217.08d |
| PG-30543 | Equipment installation and Pump Fixing Works | 2025-12-06 → 2025-12-08 (+2d) | 2025-12-25 → 2025-12-26 (+1d) |  | 217.62d → 217.08d |
| PG-30544 | Electrical Cabling works for Pumps | 2025-12-25 → 2025-12-26 (+1d) | 2026-01-05 → 2026-01-06 (+1d) |  | 217.62d → 217.08d |
| PG-30545 | Electrical Conducting/Wiring and fixture installation | 2026-01-05 → 2026-01-07 (+2d) | 2026-01-22 → 2026-01-23 (+1d) |  | 217.62d → 217.08d |
| PG-30547 | Testing and internal Snag | 2026-01-22 → 2026-01-23 (+1d) | 2026-02-17 → 2026-02-18 (+1d) |  | 217.62d → 217.08d |
| PG-30709 | Painting Works |  |  | 68% → 88% | 305.98d → 306.48d |
| 1.6.1.1.1 | **Units** |  | 2026-02-20 → 2026-02-21 (+1d) |  |  |
| PG-30737 | T&C - Floor 6 |  |  | 64% → 84% | 420.22d → 420.72d |
| PG-30738 | T&C - Floor 7 |  |  | 15% → 36% | 406.74d → 407.24d |
| PG-30739 | T&C - Floor 8 | 2025-05-16 → 2025-05-17 (+1d) |  |  | 393.67d → 393.58d |
| PG-30742 | T&C - Floor 11 | 2025-06-27 → 2025-06-28 (+1d) | 2025-08-02 → 2025-08-04 (+2d) |  | 357.65d → 357.17d |
| PG-30745 | T&C - Floor 14 | 2025-08-06 → 2025-08-07 (+1d) | 2025-09-10 → 2025-09-11 (+1d) |  | 325.79d → 325.33d |
| PG-30746 | T&C - Floor 15 | 2025-08-19 → 2025-08-20 (+1d) | 2025-09-22 → 2025-09-23 (+1d) |  | 315.79d → 315.33d |
| PG-30747 | T&C - Floor 16 | 2025-09-01 → 2025-09-02 (+1d) | 2025-10-06 → 2025-10-07 (+1d) |  | 304.79d → 304.33d |
| PG-30748 | T&C - Floor 17 | 2025-09-13 → 2025-09-15 (+2d) | 2025-10-18 → 2025-10-20 (+2d) |  | 293.79d → 293.33d |
| PG-30749 | T&C - Floor 18 | 2025-09-26 → 2025-09-27 (+1d) | 2025-10-31 → 2025-11-03 (+3d) |  | 282.79d → 282.33d |
| PG-30750 | T&C - Floor 19 | 2025-10-22 → 2025-10-23 (+1d) | 2025-11-26 → 2025-11-27 (+1d) |  | 261.79d → 261.33d |
| PG-30751 | T&C - Floor 20 | 2025-11-13 → 2025-11-14 (+1d) | 2025-12-17 → 2025-12-18 (+1d) |  | 242.62d → 242.17d |
| PG-30752 | T&C - Floor 21 | 2025-12-05 → 2025-12-06 (+1d) | 2026-01-08 → 2026-01-09 (+1d) |  | 223.62d → 223.17d |
| PG-30753 | T&C - Floor 22 | 2025-12-27 → 2025-12-29 (+2d) | 2026-02-02 → 2026-02-03 (+1d) |  | 203.62d → 203.17d |
| PG-30754 | T&C - Floor 23 | 2026-01-16 → 2026-01-17 (+1d) | 2026-02-20 → 2026-02-21 (+1d) |  | 187.62d → 187.17d |
| 1.6.1.1.2 | **Common Areas** | 2025-10-06 → 2025-10-07 (+1d) |  |  |  |
| PG-30755 | T&C - Internal Electrical Works | 2025-10-06 → 2025-10-07 (+1d) | 2025-10-20 → 2025-10-21 (+1d) |  | 263.29d → 262.83d |
| PG-30756 | T&C - Internal FPS Works | 2025-10-06 → 2025-10-07 (+1d) | 2025-10-20 → 2025-10-21 (+1d) |  | 262.95d → 262.5d |
| PG-30757 | T&C - Data & Communication Works | 2025-10-11 → 2025-10-13 (+2d) | 2025-10-25 → 2025-10-27 (+2d) |  | 257.95d → 257.5d |
| PG-30758 | T&C - Internal PHE Works including OHT | 2025-11-15 → 2025-11-17 (+2d) | 2025-12-08 → 2025-12-09 (+1d) |  | 219.62d → 219.08d |
| PG-30761 | T&C - Lightining Arrestor works | 2025-12-15 → 2025-12-16 (+1d) | 2025-12-23 → 2025-12-24 (+1d) |  | 251.79d → 251.33d |
| PG-30760 | T&C - Electrical Panel Works | 2026-02-26 → 2026-02-27 (+1d) | 2026-03-21 → 2026-03-23 (+2d) |  | 133.29d → 132.83d |
| 1.6.1.2 | **Tower 2** |  | 2026-05-09 → 2026-05-11 (+2d) |  |  |
| PG-30768 | T&C - Floor 6 |  |  | 56% → 76% | 417.82d → 418.32d |
| PG-30769 | T&C - Floor 7 |  |  | 25% → 45% | 408.58d → 409.08d |
| PG-30770 | T&C - Floor 8 | 2025-05-20 → 2025-05-21 (+1d) | 2025-06-23 → 2025-06-24 (+1d) |  | 391.76d → 391.25d |
| PG-30772 | T&C - Floor 10 | 2025-06-16 → 2025-06-14 (-2d) | 2025-07-21 → 2025-07-19 (-2d) |  | 368.75d → 370.04d |
| PG-30773 | T&C - Floor 11 | 2025-06-27 → 2025-06-28 (+1d) | 2025-08-01 → 2025-08-02 (+1d) |  | 358.72d → 358.25d |
| PG-30774 | T&C - Floor 12 |  | 2025-08-16 → 2025-08-14 (-2d) |  | 346.67d → 347.75d |

| ID | Task | Start | Finish | Complete | Total float |
| --- | --- | --- | --- | --- | --- |
| PG-30776 | T&C - Floor 14 | 2025-08-07 → 2025-08-08 (+1d) |  |  | 325.07d → 324.67d |
| PG-30777 | T&C - Floor 15 | 2025-08-20 → 2025-08-21 (+1d) |  |  | 315.07d → 314.67d |
| PG-30778 | T&C - Floor 16 | 2025-09-01 → 2025-09-02 (+1d) | 2025-10-06 → 2025-10-07 (+1d) |  | 304.73d → 304.33d |
| PG-30779 | T&C - Floor 17 | 2025-09-13 → 2025-09-15 (+2d) | 2025-10-18 → 2025-10-20 (+2d) |  | 293.73d → 293.33d |
| PG-30780 | T&C - Floor 18 | 2025-09-27 → 2025-09-29 (+2d) |  |  | 281.9d → 281.5d |
| PG-30781 | T&C - Floor 19 | 2025-10-11 → 2025-10-13 (+2d) |  |  | 270.9d → 270.5d |
| PG-30782 | T&C - Floor 20 | 2025-10-25 → 2025-10-27 (+2d) |  |  | 258.9d → 258.5d |
| PG-30783 | T&C - Floor 21 | 2025-11-07 → 2025-11-08 (+1d) | 2025-12-11 → 2025-12-12 (+1d) |  | 249.23d → 248.83d |
| PG-30784 | T&C - Floor 22 |  | 2026-01-01 → 2026-01-02 (+1d) |  | 229.4d → 229d |
| PG-30785 | T&C - Floor 23 | 2025-12-19 → 2025-12-20 (+1d) | 2026-01-23 → 2026-01-24 (+1d) |  | 211.4d → 211d |
| PG-30786 | T&C - Floor 24 | 2026-01-09 → 2026-01-10 (+1d) | 2026-02-14 → 2026-02-16 (+2d) |  | 192.23d → 191.83d |
| PG-30787 | T&C - Floor 25 | 2026-02-03 → 2026-02-04 (+1d) | 2026-03-10 → 2026-03-11 (+1d) |  | 172.73d → 172.33d |
| PG-30788 | T&C - Floor 26 | 2026-02-24 → 2026-02-25 (+1d) |  |  | 125.23d → 124.83d |
| 1.6.1.2.2 | **Common Areas** |  | 2026-05-09 → 2026-05-11 (+2d) |  |  |
| PG-30790 | T&C - Internal FPS Works |  | 2025-11-29 → 2025-12-01 (+2d) |  | 228.4d → 228d |
| PG-30789 | T&C - Internal Electrical Works | 2025-11-13 → 2025-11-14 (+1d) | 2025-11-29 → 2025-12-01 (+2d) |  | 228.57d → 228.17d |
| PG-30791 | T&C - Data & Communication Works | 2025-11-19 → 2025-11-20 (+1d) |  |  | 223.07d → 222.67d |
| PG-30792 | T&C - Internal PHE Works including OHT | 2025-12-23 → 2025-12-24 (+1d) |  |  | 187.23d → 186.83d |
| PG-30795 | T&C - Lightining Arrestor works | 2026-01-22 → 2026-01-23 (+1d) | 2026-01-31 → 2026-02-02 (+2d) |  | 221.4d → 221d |
| PG-30794 | T&C - Electrical Panel Works | 2026-02-25 → 2026-02-26 (+1d) |  |  | 164.07d → 163.67d |
| PG-30793 | T&C - Lift Works | 2026-04-16 → 2026-04-17 (+1d) | 2026-05-09 → 2026-05-11 (+2d) |  | 121.9d → 121.5d |
| 1.6.1.3.1 | **Units** |  | 2026-07-15 → 2026-07-16 (+1d) |  |  |
| PG-30798 | T&C - Floor 2 |  |  | 66% → 87% | 419.36d → 419.86d |
| PG-30799 | T&C - Floor 3 |  | 2025-06-11 → 2025-06-16 (+5d) | 3% → 12% | 401.3d → 398.54d |
| PG-30800 | T&C - Floor 4 | 2025-05-20 → 2025-05-21 (+1d) | 2025-06-25 → 2025-06-26 (+1d) |  | 390.04d → 389.5d |
| PG-30802 | T&C - Floor 6 | 2025-06-19 → 2025-06-20 (+1d) |  |  | 365.92d → 365.82d |
| PG-30805 | T&C - Floor 9 | 2025-08-05 → 2025-08-06 (+1d) | 2025-09-09 → 2025-09-10 (+1d) |  |  |
| PG-30806 | T&C - Floor 10 | 2025-08-22 → 2025-08-23 (+1d) | 2025-09-26 → 2025-09-27 (+1d) |  |  |
| PG-30807 | T&C - Floor 11 | 2025-09-04 → 2025-09-05 (+1d) | 2025-10-10 → 2025-10-11 (+1d) |  |  |
| PG-30808 | T&C - Floor 12 | 2025-09-20 → 2025-09-22 (+2d) | 2025-10-25 → 2025-10-27 (+2d) |  |  |
| PG-30809 | T&C - Floor 13 | 2025-10-04 → 2025-10-06 (+2d) | 2025-11-08 → 2025-11-10 (+2d) |  |  |
| PG-30810 | T&C - Floor 14 | 2025-10-15 → 2025-10-16 (+1d) | 2025-11-19 → 2025-11-20 (+1d) |  |  |
| PG-30812 | T&C - Floor 16 |  | 2025-12-15 → 2025-12-16 (+1d) |  |  |
| PG-30813 | T&C - Floor 17 |  | 2025-12-27 → 2025-12-29 (+2d) |  |  |
| PG-30814 | T&C - Floor 18 |  | 2026-01-09 → 2026-01-10 (+1d) |  |  |
| PG-30815 | T&C - Floor 19 |  | 2026-01-22 → 2026-01-23 (+1d) |  |  |
| PG-30816 | T&C - Floor 20 | 2026-01-01 → 2026-01-02 (+1d) |  |  |  |
| PG-30817 | T&C - Floor 21 | 2026-01-14 → 2026-01-15 (+1d) |  |  |  |
| PG-30818 | T&C - Floor 22 | 2026-01-28 → 2026-01-29 (+1d) |  |  |  |
| PG-30819 | T&C - Floor 23 |  | 2026-03-16 → 2026-03-17 (+1d) |  |  |
| PG-30820 | T&C - Floor 24 | 2026-02-23 → 2026-02-24 (+1d) |  |  |  |
| PG-30821 | T&C - Floor 25 | 2026-03-16 → 2026-03-17 (+1d) |  |  |  |
| PG-30822 | T&C - Floor 26 | 2026-04-06 → 2026-04-07 (+1d) | 2026-05-13 → 2026-05-14 (+1d) |  |  |
| PG-30823 | T&C - Floor 27 | 2026-04-28 → 2026-04-29 (+1d) | 2026-06-03 → 2026-06-04 (+1d) |  |  |
| PG-30824 | T&C - Floor 28 | 2026-05-20 → 2026-05-21 (+1d) | 2026-06-24 → 2026-06-25 (+1d) |  |  |
| PG-30825 | T&C - Floor 29 |  | 2026-07-15 → 2026-07-16 (+1d) |  |  |
| 1.6.1.3.2 | **Common Areas** | 2026-02-27 → 2026-02-28 (+1d) |  |  |  |
| PG-30826 | T&C - Internal Electrical Works | 2026-02-27 → 2026-02-28 (+1d) |  |  |  |
| PG-30827 | T&C - Internal FPS Works | 2026-02-27 → 2026-02-28 (+1d) | 2026-03-17 → 2026-03-18 (+1d) |  |  |
| PG-30828 | T&C - Data & Communication Works | 2026-03-05 → 2026-03-06 (+1d) |  |  |  |
| PG-30829 | T&C - Internal PHE Works including OHT |  | 2026-05-01 → 2026-05-02 (+1d) |  |  |
| PG-30832 | T&C - Lightining Arrestor works |  | 2026-05-15 → 2026-05-16 (+1d) |  |  |
| PG-30830 | T&C - Lift Works |  | 2026-08-10 → 2026-08-11 (+1d) |  |  |
| 1.6.9.3 | **STP Works** | 2026-02-17 → 2026-02-18 (+1d) | 2026-03-24 → 2026-03-25 (+1d) |  |  |
| PG-31521 | T&C - Sewage Treatment Plant 01 ( 1000KLD ) | 2026-02-17 → 2026-02-18 (+1d) | 2026-03-24 → 2026-03-25 (+1d) |  | 217.62d → 217.08d |
| 1.7.1 | **Building 1** |  | 2026-11-04 → 2026-11-05 (+1d) |  |  |
| 1.7.1.1.1 | **Units** |  | 2026-03-28 → 2026-03-30 (+2d) |  |  |
| PG-31538 | Floor 4 |  |  | 59% → 79% | 448.17d → 448.67d |
| PG-31539 | Floor 5 |  |  | 3% → 23% | 431.81d → 432.25d |
| PG-31542 | Floor 8 | 2025-06-19 → 2025-06-20 (+1d) |  |  | 393.67d → 393.58d |
| PG-31545 | Floor 11 | 2025-08-02 → 2025-08-04 (+2d) | 2025-09-08 → 2025-09-09 (+1d) |  | 357.65d → 357.17d |
| PG-31548 | Floor 14 | 2025-09-10 → 2025-09-11 (+1d) | 2025-10-15 → 2025-10-16 (+1d) |  | 325.79d → 325.33d |
| PG-31549 | Floor 15 | 2025-09-22 → 2025-09-23 (+1d) | 2025-10-27 → 2025-10-28 (+1d) |  | 315.79d → 315.33d |
| PG-31550 | Floor 16 | 2025-10-06 → 2025-10-07 (+1d) | 2025-11-10 → 2025-11-11 (+1d) |  | 304.79d → 304.33d |
| PG-31551 | Floor 17 | 2025-10-18 → 2025-10-20 (+2d) | 2025-11-22 → 2025-11-24 (+2d) |  | 293.79d → 293.33d |
| PG-31552 | Floor 18 | 2025-10-31 → 2025-11-03 (+3d) | 2025-12-05 → 2025-12-06 (+1d) |  | 282.79d → 282.33d |
| PG-31553 | Floor 19 | 2025-11-26 → 2025-11-27 (+1d) | 2025-12-30 → 2025-12-31 (+1d) |  | 261.79d → 261.33d |
| PG-31554 | Floor 20 | 2025-12-17 → 2025-12-18 (+1d) | 2026-01-22 → 2026-01-23 (+1d) |  | 242.62d → 242.17d |
| PG-31555 | Floor 21 | 2026-01-08 → 2026-01-09 (+1d) | 2026-02-14 → 2026-02-16 (+2d) |  | 223.62d → 223.17d |
| PG-31556 | Floor 22 | 2026-02-02 → 2026-02-03 (+1d) | 2026-03-10 → 2026-03-11 (+1d) |  | 203.62d → 203.17d |

| ID | Task | Start | Finish | Complete | Total float |
| --- | --- | --- | --- | --- | --- |
| PG-31557 | Floor 23 | 2026-02-20 → 2026-02-21 (+1d) | 2026-03-28 → 2026-03-30 (+2d) |  | 187.62d → 187.17d |
| 1.7.1.1.2 | **Common Areas** | 2025-10-20 → 2025-10-21 (+1d) |  |  |  |
| PG-31559 | Internal Electrical Works | 2025-10-20 → 2025-10-21 (+1d) | 2025-12-29 → 2025-12-30 (+1d) |  | 263.29d → 262.83d |
| PG-31560 | Internal FPS Works | 2025-10-20 → 2025-10-21 (+1d) | 2025-12-29 → 2025-12-30 (+1d) |  | 262.95d → 262.5d |
| PG-31561 | Data & Communication Works | 2025-10-25 → 2025-10-27 (+2d) | 2026-01-03 → 2026-01-05 (+2d) |  | 257.95d → 257.5d |
| PG-31562 | Internal PHE Works including OHT | 2025-12-08 → 2025-12-09 (+1d) | 2026-02-19 → 2026-02-20 (+1d) |  | 219.62d → 219.08d |
| PG-31565 | Lightining Arrestor works | 2025-12-23 → 2025-12-24 (+1d) | 2026-01-10 → 2026-01-12 (+2d) |  | 251.79d → 251.33d |
| PG-31564 | Electrical Panel Works | 2026-03-21 → 2026-03-23 (+2d) | 2026-05-30 → 2026-06-01 (+2d) |  | 133.29d → 132.83d |
| 1.7.1.2 | **Tower 2** |  | 2026-10-16 → 2026-10-17 (+1d) |  |  |
| 1.7.1.2.1 | **Units** |  | 2026-05-05 → 2026-05-06 (+1d) |  |  |
| PG-31569 | Floor 3 |  | 2025-05-09 → 2025-05-10 A (+1d) | 97% → 100% | 459.75d → none |
| PG-31570 | Floor 4 |  |  | 38% → 58% | 441.75d → 442.25d |
| PG-31571 | Floor 5 |  |  | 7% → 27% | 432.34d → 432.84d |
| PG-31574 | Floor 8 | 2025-06-23 → 2025-06-24 (+1d) | 2025-07-28 → 2025-07-29 (+1d) |  | 391.76d → 391.25d |
| PG-31576 | Floor 10 | 2025-07-21 → 2025-07-19 (-2d) |  |  | 368.75d → 370.04d |
| PG-31577 | Floor 11 | 2025-08-01 → 2025-08-02 (+1d) |  |  | 358.72d → 358.25d |
| PG-31578 | Floor 12 | 2025-08-16 → 2025-08-14 (-2d) | 2025-09-20 → 2025-09-19 (-1d) |  | 346.67d → 347.75d |
| PG-31580 | Floor 14 |  | 2025-10-16 → 2025-10-17 (+1d) |  | 325.07d → 324.67d |
| PG-31581 | Floor 15 |  | 2025-10-28 → 2025-10-29 (+1d) |  | 315.07d → 314.67d |
| PG-31582 | Floor 16 | 2025-10-06 → 2025-10-07 (+1d) |  |  | 304.73d → 304.33d |
| PG-31583 | Floor 17 | 2025-10-18 → 2025-10-20 (+2d) |  |  | 293.73d → 293.33d |
| PG-31584 | Floor 18 |  | 2025-12-06 → 2025-12-08 (+2d) |  | 281.9d → 281.5d |
| PG-31585 | Floor 19 |  | 2025-12-19 → 2025-12-20 (+1d) |  | 270.9d → 270.5d |
| PG-31586 | Floor 20 |  | 2026-01-02 → 2026-01-03 (+1d) |  | 258.9d → 258.5d |
| PG-31587 | Floor 21 | 2025-12-11 → 2025-12-12 (+1d) | 2026-01-14 → 2026-01-15 (+1d) |  | 249.23d → 248.83d |
| PG-31588 | Floor 22 | 2026-01-01 → 2026-01-02 (+1d) | 2026-02-07 → 2026-02-09 (+2d) |  | 229.4d → 229d |
| PG-31589 | Floor 23 | 2026-01-23 → 2026-01-24 (+1d) | 2026-02-28 → 2026-03-02 (+2d) |  | 211.4d → 211d |
| PG-31590 | Floor 24 | 2026-02-14 → 2026-02-16 (+2d) | 2026-03-23 → 2026-03-24 (+1d) |  | 192.23d → 191.83d |
| PG-31591 | Floor 25 | 2026-03-10 → 2026-03-11 (+1d) |  |  | 172.73d → 172.33d |
| PG-31592 | Floor 26 |  | 2026-05-05 → 2026-05-06 (+1d) |  | 154.9d → 154.5d |
| 1.7.1.2.2 | **Comman Areas** | 2025-11-29 → 2025-12-01 (+2d) | 2026-10-16 → 2026-10-17 (+1d) |  |  |
| PG-31595 | Internal FPS Works | 2025-11-29 → 2025-12-01 (+2d) | 2026-02-09 → 2026-02-10 (+1d) |  | 228.4d → 228d |
| PG-31596 | Data & Communication Works |  | 2026-02-14 → 2026-02-16 (+2d) |  | 223.07d → 222.67d |
| PG-31597 | Internal PHE Works including OHT |  | 2026-03-28 → 2026-03-30 (+2d) |  | 187.23d → 186.83d |
| PG-31600 | Lightining Arrestor works | 2026-01-31 → 2026-02-02 (+2d) | 2026-02-17 → 2026-02-18 (+1d) |  | 221.4d → 221d |
| PG-31599 | Electrical Panel Works |  | 2026-04-24 → 2026-04-25 (+1d) |  | 164.07d → 163.67d |
| PG-31594 | Internal Electrical Works |  | 2026-06-09 → 2026-06-10 (+1d) |  | 125.23d → 124.83d |
| PG-31598 | Lift Works | 2026-05-09 → 2026-05-11 (+2d) | 2026-06-12 → 2026-06-13 (+1d) |  | 121.9d → 121.5d |
| PG-31593 | Common Area Civil Works | 2026-08-05 → 2026-08-06 (+1d) | 2026-10-16 → 2026-10-17 (+1d) |  | 16.4d → 16d |
| 1.7.1.3 | **Tower 3** |  | 2026-11-04 → 2026-11-05 (+1d) |  |  |
| 1.7.1.3.1 | **Units** |  | 2026-08-20 → 2026-08-21 (+1d) |  |  |
| PG-31601 | Ground Floor |  |  | 39% → 59% | 442.73d → 443.23d |
| PG-31602 | Floor 1 |  | 2025-06-12 → 2025-06-16 (+4d) | 3% → 12% | 431d → 428.26d |
| PG-31604 | Floor 3 | 2025-06-11 → 2025-06-16 (+5d) | 2025-07-17 → 2025-07-21 (+4d) |  | 401.3d → 398.54d |
| PG-31605 | Floor 4 | 2025-06-25 → 2025-06-26 (+1d) | 2025-07-30 → 2025-07-31 (+1d) |  | 390.04d → 389.5d |
| PG-31607 | Floor 6 |  | 2025-08-28 → 2025-08-29 (+1d) |  | 365.92d → 365.82d |
| PG-31608 | Floor 7 |  | 2025-09-12 → 2025-09-11 (-1d) |  | 353.75d → 354.28d |
| PG-31610 | Floor 9 | 2025-09-09 → 2025-09-10 (+1d) |  |  |  |
| PG-31611 | Floor 10 | 2025-09-26 → 2025-09-27 (+1d) | 2025-11-03 → 2025-11-04 (+1d) |  |  |
| PG-31612 | Floor 11 | 2025-10-10 → 2025-10-11 (+1d) |  |  |  |
| PG-31613 | Floor 12 | 2025-10-25 → 2025-10-27 (+2d) | 2025-12-01 → 2025-12-02 (+1d) |  |  |
| PG-31614 | Floor 13 | 2025-11-08 → 2025-11-10 (+2d) |  |  |  |
| PG-31615 | Floor 14 | 2025-11-19 → 2025-11-20 (+1d) |  |  |  |
| PG-31617 | Floor 16 | 2025-12-15 → 2025-12-16 (+1d) |  |  |  |
| PG-31618 | Floor 17 | 2025-12-27 → 2025-12-29 (+2d) |  |  |  |
| PG-31619 | Floor 18 | 2026-01-09 → 2026-01-10 (+1d) |  |  |  |
| PG-31620 | Floor 19 | 2026-01-22 → 2026-01-23 (+1d) |  |  |  |
| PG-31622 | Floor 21 |  | 2026-03-25 → 2026-03-26 (+1d) |  |  |
| PG-31623 | Floor 22 |  | 2026-04-07 → 2026-04-08 (+1d) |  |  |
| PG-31624 | Floor 23 | 2026-03-16 → 2026-03-17 (+1d) | 2026-04-20 → 2026-04-21 (+1d) |  |  |
| PG-31625 | Floor 24 |  | 2026-05-02 → 2026-05-04 (+2d) |  |  |
| PG-31627 | Floor 26 | 2026-05-13 → 2026-05-14 (+1d) |  |  |  |
| PG-31628 | Floor 27 | 2026-06-03 → 2026-06-04 (+1d) |  |  |  |
| PG-31629 | Floor 28 | 2026-06-24 → 2026-06-25 (+1d) |  |  |  |
| PG-31630 | Floor 29 | 2026-07-15 → 2026-07-16 (+1d) | 2026-08-20 → 2026-08-21 (+1d) |  |  |
| 1.7.1.3.2 | **Common Areas** |  | 2026-11-04 → 2026-11-05 (+1d) |  |  |
| PG-31632 | Internal Electrical Works |  | 2026-04-03 → 2026-04-04 (+1d) |  |  |
| PG-31633 | Internal FPS Works | 2026-03-17 → 2026-03-18 (+1d) |  |  |  |
| PG-31635 | Internal PHE Works including OHT | 2026-05-01 → 2026-05-02 (+1d) |  |  |  |
| PG-31638 | Lightining Arrestor works | 2026-05-15 → 2026-05-16 (+1d) | 2026-05-23 → 2026-05-25 (+2d) |  |  |

| ID | Task | Start | Finish | Total float |
| --- | --- | --- | --- | --- |
| PG-31636 | Lift Works | 2026-08-10 → 2026-08-11 (+1d) |  |  |
| PG-31631 | Common Area Civil Works | 2026-10-17 → 2026-10-19 (+2d) | 2026-11-04 → 2026-11-05 (+1d) |  |
| 1.7.9.3 | **STP Works** | 2026-03-24 → 2026-03-25 (+1d) | 2026-04-27 → 2026-04-28 (+1d) |  |
| PG-32343 | Sewage Treatment Plant 01 ( 1000KLD ) | 2026-03-24 → 2026-03-25 (+1d) | 2026-04-27 → 2026-04-28 (+1d) | 217.62d → 217.08d |
| PG-32378 | Building 1 | 2026-11-04 → 2026-11-05 (+1d) |  |  |
| PG-32386 | Project InfraStructure Works ( Services & MEP ) | 2027-01-25 → 2027-01-27 (+2d) |  |  |
| 1.10 | **Post Construction Statutory Approvals** |  | 2027-03-02 → 2027-03-03 (+1d) |  |
| PG-32396 | Pollution Control board clearance for STP | 2026-04-27 → 2026-04-28 (+1d) | 2026-06-01 → 2026-06-02 (+1d) | 217.62d → 217.08d |
| PG-32394 | CEIG Approval - Lift |  | 2026-12-19 → 2026-12-21 (+2d) |  |
| PG-32395 | Pollution Control board CFO | 2026-12-19 → 2026-12-21 (+2d) | 2027-01-25 → 2027-01-27 (+2d) |  |
| PG-32397 | Occupation Certificate | 2026-12-19 → 2026-12-21 (+2d) | 2027-03-02 → 2027-03-03 (+1d) |  |
| 2 | **Milestone** |  | 2027-03-02 → 2027-03-03 (+1d) |  |
| MS-1001 | Tower 1 - Structure Complete | 2025-08-18 → 2025-08-19 (+1d) | 2025-08-18 → 2025-08-19 (+1d) | 480.45d → 480d |
| MS-0105 | Electrical Panels Delivered | 2025-08-23 → 2025-08-25 (+2d) | 2025-08-23 → 2025-08-25 (+2d) | 474.79d → 474.33d |
| MS-2001 | Tower 2 - Structure Complete | 2025-09-25 → 2025-09-26 (+1d) | 2025-09-25 → 2025-09-26 (+1d) | 447.07d → 446.67d |
| MS-1002 | Tower 1 - MEP 1st Fix Complete | 2025-11-22 → 2025-11-24 (+2d) | 2025-11-22 → 2025-11-24 (+2d) | 399.45d → 399d |
| MS-0107 | FRP Water Tanks Delivered | 2025-12-01 → 2025-12-02 (+1d) | 2025-12-01 → 2025-12-02 (+1d) | 392.45d → 391.92d |
| MS-1003 | Tower 1 - MEP 2nd Fix Complete | 2025-12-27 → 2025-12-29 (+2d) | 2025-12-27 → 2025-12-29 (+2d) | 369.45d → 369d |
| MS-2002 | Tower 2 - MEP 1st Fix Complete | 2025-12-27 → 2025-12-29 (+2d) | 2025-12-27 → 2025-12-29 (+2d) | 369.4d → 369d |
| MS-3001 | Tower 3 - Structure Complete | 2026-01-10 → 2026-01-12 (+2d) | 2026-01-10 → 2026-01-12 (+2d) |  |
| MS-1005 | Tower 1 - MEP Final Fix Complete | 2026-01-16 → 2026-01-17 (+1d) | 2026-01-16 → 2026-01-17 (+1d) | 351.95d → 351.5d |
| MS-2005 | Tower 2 - MEP Final Fix Complete | 2026-02-24 → 2026-02-25 (+1d) | 2026-02-24 → 2026-02-25 (+1d) | 320.23d → 319.83d |
| MS-2004 | Tower 2 - Internal Finishes Complete | 2026-03-20 → 2026-03-21 (+1d) | 2026-03-20 → 2026-03-21 (+1d) | 299.23d → 298.83d |
| MS-9001 | STP Commissioned | 2026-03-24 → 2026-03-25 (+1d) | 2026-03-24 → 2026-03-25 (+1d) | 295.95d → 295.42d |
| MS-3002 | Tower 3 - MEP 1st Fix Complete | 2026-04-14 → 2026-04-15 (+1d) | 2026-04-14 → 2026-04-15 (+1d) |  |
| MS-2006 | Tower 2 - Lifts Commissioned | 2026-04-16 → 2026-04-17 (+1d) | 2026-04-16 → 2026-04-17 (+1d) | 275.73d → 275.33d |
| MS-2007 | Tower 2 - T&C Complete | 2026-05-09 → 2026-05-11 (+2d) | 2026-05-09 → 2026-05-11 (+2d) | 256.23d → 255.83d |
| MS-3003 | Tower 3 - MEP 2nd Fix Complete | 2026-05-19 → 2026-05-20 (+1d) | 2026-05-19 → 2026-05-20 (+1d) |  |
| MS-3004 | Tower 3 - Internal Finishes Complete | 2026-07-03 → 2026-07-04 (+1d) | 2026-07-03 → 2026-07-04 (+1d) |  |
| MS-9991 | Statutory Approvals Obtained | 2027-03-02 → 2027-03-03 (+1d) | 2027-03-02 → 2027-03-03 (+1d) |  |

## Version 11 (data date 2025-05-23, saved 2026-09-20, file APX_2025-05-23.xer)

Last finish 2027-03-09 → 2027-03-08 (-1d). Complete tasks 1218 → 1267.

Changed:

| ID | Task | Start | Finish | Complete | Total float |
| --- | --- | --- | --- | --- | --- |
| 1 | **Project Genisis** |  | 2027-03-09 → 2027-03-08 (-1d) |  |  |
| PG-32433 | Project Close Out | 2027-03-03 → 2027-03-02 (-1d) | 2027-03-09 → 2027-03-08 (-1d) |  |  |
| 1.2.8 | **Transformer Supply** | 2026-02-28 → 2026-02-27 (-1d) |  |  |  |
| PG-10035 | Purchase Order works | 2026-02-28 → 2026-02-27 (-1d) |  |  |  |
| PG-10036 | Materials Supply to site | 2026-06-25 → 2026-06-24 (-1d) |  |  |  |
| 1.3 | **Construction** |  | 2026-10-19 → 2026-10-17 (-2d) |  |  |
| 1.3.1 | **Building 1** |  | 2026-10-19 → 2026-10-17 (-2d) |  |  |
| 1.3.1.1.2 | **Structure works** |  | 2025-08-19 → 2025-08-18 (-1d) |  |  |
| PG-10169 | Reinforcement |  | 2025-05-17 A | 89% → 100% | 46.5d → none |
| PG-10170 | Concrete | 2025-05-17 A | 2025-05-19 A | 0% → 100% | 46.5d → none |
| 1.3.1.1.2.23 | **Floor 20** |  | 2025-05-31 → 2025-05-30 (-1d) |  |  |
| 1.3.1.1.2.23.1 | **Columns / shear walls** |  | 2025-05-26 → 2025-05-24 (-2d) |  |  |
| PG-10171 | Reinforcement | 2025-05-19 A | 2025-05-23 A | 0% → 100% | 46.5d → none |
| PG-10172 | Formwork | 2025-05-21 A | 2025-05-26 → 2025-05-24 (-2d) | 0% → 59% | 46.5d → 45.86d |
| 1.3.1.1.2.23.2 | **Slab, Beams & Staircase** |  | 2025-05-31 → 2025-05-30 (-1d) |  |  |
| PG-10173 | Formwork |  | 2025-05-28 → 2025-05-27 (-1d) |  | 46.5d → 45.86d |
| PG-10174 | Reinforcement |  | 2025-05-30 → 2025-05-29 (-1d) |  | 46.5d → 45.86d |
| PG-10175 | Concrete |  | 2025-05-31 → 2025-05-30 (-1d) |  | 46.5d → 45.86d |
| 1.3.1.1.2.24 | **Floor 21** |  | 2025-06-13 → 2025-06-12 (-1d) |  |  |
| 1.3.1.1.2.24.1 | **Columns / shear walls** |  | 2025-06-07 → 2025-06-06 (-1d) |  |  |
| PG-10176 | Reinforcement |  | 2025-06-05 → 2025-06-04 (-1d) |  | 46.5d → 45.86d |
| PG-10177 | Formwork |  | 2025-06-07 → 2025-06-06 (-1d) |  | 46.5d → 45.86d |
| 1.3.1.1.2.24.2 | **Slab, Beams & Staircase** |  | 2025-06-13 → 2025-06-12 (-1d) |  |  |
| PG-10178 | Formwork |  | 2025-06-10 → 2025-06-09 (-1d) |  | 46.5d → 45.86d |
| PG-10179 | Reinforcement |  | 2025-06-12 → 2025-06-11 (-1d) |  | 46.5d → 45.86d |
| PG-10180 | Concrete |  | 2025-06-13 → 2025-06-12 (-1d) |  | 46.5d → 45.86d |
| 1.3.1.1.2.25 | **Floor 22** |  | 2025-06-26 → 2025-06-25 (-1d) |  |  |
| 1.3.1.1.2.25.1 | **Columns / shear walls** |  | 2025-06-20 → 2025-06-19 (-1d) |  |  |
| PG-10181 | Reinforcement |  | 2025-06-18 → 2025-06-17 (-1d) |  | 46.5d → 45.86d |
| PG-10182 | Formwork |  | 2025-06-20 → 2025-06-19 (-1d) |  | 46.5d → 45.86d |
| 1.3.1.1.2.25.2 | **Slab, Beams & Staircase** |  | 2025-06-26 → 2025-06-25 (-1d) |  |  |
| PG-10183 | Formwork |  | 2025-06-23 → 2025-06-21 (-2d) |  | 46.5d → 45.86d |
| PG-10184 | Reinforcement |  | 2025-06-25 → 2025-06-24 (-1d) |  | 46.5d → 45.86d |
| PG-10185 | Concrete |  | 2025-06-26 → 2025-06-25 (-1d) |  | 46.5d → 45.86d |
| 1.3.1.1.2.26 | **Floor 23** |  | 2025-07-09 → 2025-07-08 (-1d) |  |  |
| 1.3.1.1.2.26.1 | **Columns / shear walls** |  | 2025-07-03 → 2025-07-02 (-1d) |  |  |
| PG-10186 | Reinforcement |  | 2025-07-01 → 2025-06-30 (-1d) |  | 46.5d → 45.86d |
| PG-10187 | Formwork |  | 2025-07-03 → 2025-07-02 (-1d) |  | 46.5d → 45.86d |
| 1.3.1.1.2.26.2 | **Slab, Beams & Staircase** |  | 2025-07-09 → 2025-07-08 (-1d) |  |  |
| PG-10188 | Formwork |  | 2025-07-05 → 2025-07-04 (-1d) |  | 46.5d → 45.86d |
| PG-10189 | Reinforcement |  | 2025-07-08 → 2025-07-07 (-1d) |  | 46.5d → 45.86d |
| PG-10190 | Concrete |  | 2025-07-09 → 2025-07-08 (-1d) |  | 46.5d → 45.86d |
| 1.3.1.1.2.27 | **Above Terrace Floor** |  | 2025-08-19 → 2025-08-18 (-1d) |  |  |
| 1.3.1.1.2.27.1 | **Columns / shear walls/Parapet Walls** |  | 2025-07-23 → 2025-07-22 (-1d) |  |  |
| PG-10191 | Reinforcement |  | 2025-07-14 → 2025-07-12 (-2d) |  | 124d → 123.36d |
| PG-10192 | Formwork |  | 2025-07-17 → 2025-07-16 (-1d) |  | 124d → 123.36d |
| PG-10193 | Concrete |  | 2025-07-23 → 2025-07-22 (-1d) |  | 124d → 123.36d |
| 1.3.1.1.2.27.2 | **Slab, Beams & Staircase Head rooms, Lift headroom** |  | 2025-08-19 → 2025-08-18 (-1d) |  |  |
| PG-10197 | Terrace Waterproofing and Protective finishing. |  | 2025-08-19 → 2025-08-18 (-1d) |  | 249.17d → 248.52d |
| PG-10194 | Formwork |  | 2025-07-29 → 2025-07-28 (-1d) |  | 249.17d → 248.52d |
| PG-10195 | Reinforcement |  | 2025-08-04 → 2025-08-02 (-2d) |  | 249.17d → 248.52d |
| PG-10196 | Concrete |  | 2025-08-06 → 2025-08-05 (-1d) |  | 249.17d → 248.52d |
| PG-10279 | Final Fix - CP & Sanitary fixtures |  | 2025-05-17 A | 96% → 100% | 393.58d → none |
| PG-10282 | Final Fix - Smoke & heat detectors, FHC , FAS Etc. |  | 2025-05-17 A | 92% → 100% | 393.58d → none |
| PG-10285 | Final Fix - Electrical Fixtures |  | 2025-05-17 A | 87% → 100% | 393.58d → none |
| PG-10288 | Final Fix - CP & Sanitary fixtures | 2025-05-20 → 2025-05-21 A (+1d) |  | 0% → 23% | 382.53d → 381.63d |
| PG-10291 | Final Fix - Smoke & heat detectors, FHC , FAS Etc. | 2025-05-20 → 2025-05-21 A (+1d) |  | 0% → 31% | 382.53d → 381.8d |
| 1.3.1.1.3.13 | **Floor 10** |  | 2025-06-14 → 2025-06-16 (+2d) |  |  |
| 1.3.1.1.3.13.1 | **PHE Works** |  | 2025-06-14 → 2025-06-16 (+2d) |  |  |
| PG-10297 | Final Fix - CP & Sanitary fixtures | 2025-06-03 → 2025-06-04 (+1d) | 2025-06-14 → 2025-06-16 (+2d) |  | 369.82d → 367.97d |
| 1.3.1.1.3.13.2 | **Fire Fighting Works** |  | 2025-06-14 → 2025-06-16 (+2d) |  |  |
| PG-10299 | 2nd Fix - Sprinkler fixing & Pressure testing |  |  | 17% → 78% | 377.21d → 375.94d |
| PG-10300 | Final Fix - Smoke & heat detectors, FHC , FAS Etc. | 2025-06-03 → 2025-06-04 (+1d) | 2025-06-14 → 2025-06-16 (+2d) |  | 369.82d → 367.97d |
| 1.3.1.1.3.13.3 | **Electrical Works** |  | 2025-06-14 → 2025-06-16 (+2d) |  |  |
| PG-10302 | 2nd Fix - Wiring works |  | 2025-05-23 → 2025-05-24 (+1d) | 53% → 94% | 382.31d → 380.77d |
| PG-10303 | Final Fix - Electrical Fixtures | 2025-06-07 → 2025-06-09 (+2d) | 2025-06-14 → 2025-06-16 (+2d) |  | 369.82d → 367.97d |
| PG-10311 | 2nd Fix - Wiring works | 2025-05-21 A |  | 0% → 20% | 370d → 369.36d |
| 1.3.1.1.3.15 | **Floor 12** |  | 2025-07-10 → 2025-07-11 (+1d) |  |  |
| 1.3.1.1.3.15.1 | **PHE Works** |  | 2025-07-10 → 2025-07-11 (+1d) |  |  |
| PG-10315 | Final Fix - CP & Sanitary fixtures | 2025-06-28 → 2025-06-30 (+2d) | 2025-07-10 → 2025-07-11 (+1d) |  | 348.66d → 347.75d |

| ID | Task | Start | Finish | Complete | Total float |
| --- | --- | --- | --- | --- | --- |
| 1.3.1.1.3.15.2 | **Fire Fighting Works** |  | 2025-07-10 → 2025-07-11 (+1d) |  |  |
| PG-10318 | Final Fix - Smoke & heat detectors, FHC , FAS Etc. | 2025-06-28 → 2025-06-30 (+2d) | 2025-07-10 → 2025-07-11 (+1d) |  | 348.66d → 347.75d |
| 1.3.1.1.3.15.3 | **Electrical Works** |  | 2025-07-10 → 2025-07-11 (+1d) |  |  |
| PG-10321 | Final Fix - Electrical Fixtures | 2025-07-03 → 2025-07-04 (+1d) | 2025-07-10 → 2025-07-11 (+1d) |  | 348.66d → 347.75d |
| 1.3.1.1.3.16 | **Floor 13** |  | 2025-07-23 → 2025-07-24 (+1d) |  |  |
| 1.3.1.1.3.16.1 | **PHE Works** |  | 2025-07-23 → 2025-07-24 (+1d) |  |  |
| PG-10322 | 1st Fix - Piping works |  | 2025-05-17 → 2025-05-19 A (+2d) | 88% → 100% | 337.98d → none |
| PG-10323 | 2nd Fix - diverter fixing & Pressure testing |  | 2025-05-24 → 2025-05-26 (+2d) | 29% → 89% | 337.98d → 336.27d |
| PG-10324 | Final Fix - CP & Sanitary fixtures | 2025-07-11 → 2025-07-12 (+1d) | 2025-07-23 → 2025-07-24 (+1d) |  | 337.98d → 336.27d |
| 1.3.1.1.3.16.2 | **Fire Fighting Works** |  | 2025-07-23 → 2025-07-24 (+1d) |  |  |
| PG-10325 | 1st Fix - Piping and Shaft hydrant works |  | 2025-05-28 → 2025-05-29 (+1d) | 11% → 61% | 381.51d → 379.94d |
| PG-10326 | 2nd Fix - Sprinkler fixing & Pressure testing | 2025-06-19 → 2025-06-20 (+1d) | 2025-07-01 → 2025-07-02 (+1d) |  | 347.98d → 346.27d |
| PG-10327 | Final Fix - Smoke & heat detectors, FHC , FAS Etc. | 2025-07-12 → 2025-07-14 (+2d) | 2025-07-23 → 2025-07-24 (+1d) |  | 337.98d → 336.27d |
| 1.3.1.1.3.16.3 | **Electrical Works** |  | 2025-07-23 → 2025-07-24 (+1d) |  |  |
| PG-10329 | 2nd Fix - Wiring works | 2025-06-12 → 2025-06-13 (+1d) | 2025-06-30 → 2025-07-01 (+1d) |  | 352.98d → 351.27d |
| PG-10330 | Final Fix - Electrical Fixtures | 2025-07-17 → 2025-07-18 (+1d) | 2025-07-23 → 2025-07-24 (+1d) |  | 337.98d → 336.27d |
| PG-10331 | 1st Fix - Piping works | 2025-05-19 A | 2025-06-02 → 2025-05-31 (-2d) | 0% → 36% | 325.33d → 324.99d |
| PG-10332 | 2nd Fix - diverter fixing & Pressure testing | 2025-05-28 → 2025-05-27 (-1d) | 2025-06-09 → 2025-06-07 (-2d) |  | 325.33d → 324.99d |
| PG-10333 | Final Fix - CP & Sanitary fixtures | 2025-07-28 → 2025-07-26 (-2d) |  |  | 325.33d → 324.99d |
| 1.3.1.1.3.17.2 | **Fire Fighting Works** | 2025-05-28 → 2025-05-26 (-2d) |  |  |  |
| PG-10334 | 1st Fix - Piping and Shaft hydrant works | 2025-05-28 → 2025-05-26 (-2d) | 2025-06-11 → 2025-06-09 (-2d) |  | 372d → 372.45d |
| PG-10335 | 2nd Fix - Sprinkler fixing & Pressure testing | 2025-07-04 → 2025-07-03 (-1d) | 2025-07-16 → 2025-07-15 (-1d) |  | 335.33d → 334.99d |
| PG-10336 | Final Fix - Smoke & heat detectors, FHC , FAS Etc. | 2025-07-28 → 2025-07-26 (-2d) |  |  | 325.33d → 324.99d |
| PG-10337 | 1st Fix - GI wire pulling | 2025-05-19 A | 2025-05-28 → 2025-05-26 (-2d) | 0% → 64% | 372d → 372.45d |
| PG-10338 | 2nd Fix - Wiring works | 2025-06-27 → 2025-06-26 (-1d) | 2025-07-15 → 2025-07-14 (-1d) |  | 340.33d → 339.99d |
| PG-10339 | Final Fix - Electrical Fixtures | 2025-08-01 → 2025-07-31 (-1d) |  |  | 325.33d → 324.99d |
| PG-10340 | 1st Fix - Piping works |  | 2025-06-14 → 2025-06-13 (-1d) |  | 132.83d → 132.19d |
| PG-10341 | 2nd Fix - diverter fixing & Pressure testing |  | 2025-06-21 → 2025-06-20 (-1d) |  | 132.83d → 132.19d |
| PG-10343 | 1st Fix - Piping and Shaft hydrant works |  | 2025-06-24 → 2025-06-23 (-1d) |  | 362d → 361.36d |
| PG-10344 | 2nd Fix - Sprinkler fixing & Pressure testing |  | 2025-07-29 → 2025-07-28 (-1d) |  | 324.33d → 323.69d |
| PG-10346 | 1st Fix - GI wire pulling |  | 2025-06-10 → 2025-06-09 (-1d) |  | 362d → 361.36d |
| PG-10347 | 2nd Fix - Wiring works |  | 2025-07-28 → 2025-07-26 (-2d) |  | 329.33d → 328.69d |
| PG-10349 | 1st Fix - Piping works |  | 2025-06-27 → 2025-06-26 (-1d) |  | 304.33d → 303.69d |
| PG-10350 | 2nd Fix - diverter fixing & Pressure testing |  | 2025-07-04 → 2025-07-03 (-1d) |  | 304.33d → 303.69d |
| PG-10352 | 1st Fix - Piping and Shaft hydrant works |  | 2025-07-07 → 2025-07-05 (-2d) |  | 351d → 350.36d |
| PG-10353 | 2nd Fix - Sprinkler fixing & Pressure testing |  | 2025-08-11 → 2025-08-09 (-2d) |  | 313.33d → 312.69d |
| PG-10355 | 1st Fix - GI wire pulling |  | 2025-06-23 → 2025-06-21 (-2d) |  | 351d → 350.36d |
| PG-10356 | 2nd Fix - Wiring works |  | 2025-08-09 → 2025-08-08 (-1d) |  | 318.33d → 317.69d |
| PG-10358 | 1st Fix - Piping works |  | 2025-07-10 → 2025-07-09 (-1d) |  | 293.33d → 292.69d |
| PG-10359 | 2nd Fix - diverter fixing & Pressure testing |  | 2025-07-17 → 2025-07-16 (-1d) |  | 293.33d → 292.69d |
| PG-10361 | 1st Fix - Piping and Shaft hydrant works |  | 2025-07-19 → 2025-07-18 (-1d) |  | 340d → 339.36d |
| PG-10362 | 2nd Fix - Sprinkler fixing & Pressure testing |  | 2025-08-25 → 2025-08-23 (-2d) |  | 302.33d → 301.69d |
| PG-10364 | 1st Fix - GI wire pulling |  | 2025-07-05 → 2025-07-04 (-1d) |  | 340d → 339.36d |
| PG-10365 | 2nd Fix - Wiring works |  | 2025-08-23 → 2025-08-22 (-1d) |  | 307.33d → 306.69d |
| PG-10367 | 1st Fix - Piping works |  | 2025-07-23 → 2025-07-22 (-1d) |  | 46.5d → 45.86d |
| PG-10368 | 2nd Fix - diverter fixing & Pressure testing |  | 2025-07-30 → 2025-07-29 (-1d) |  | 282.33d → 281.69d |
| PG-10370 | 1st Fix - Piping and Shaft hydrant works |  | 2025-08-01 → 2025-07-31 (-1d) |  | 329d → 328.36d |
| PG-10371 | 2nd Fix - Sprinkler fixing & Pressure testing |  | 2025-09-06 → 2025-09-05 (-1d) |  | 291.33d → 290.69d |
| PG-10373 | 1st Fix - GI wire pulling |  | 2025-07-18 → 2025-07-17 (-1d) |  | 329d → 328.36d |
| PG-10374 | 2nd Fix - Wiring works |  | 2025-09-05 → 2025-09-04 (-1d) |  | 296.33d → 295.69d |
| PG-10376 | 1st Fix - Piping works |  | 2025-08-14 → 2025-08-13 (-1d) |  | 165.5d → 164.86d |
| PG-10377 | 2nd Fix - diverter fixing & Pressure testing |  | 2025-08-22 → 2025-08-21 (-1d) |  | 165.5d → 164.86d |
| PG-10379 | 1st Fix - Piping and Shaft hydrant works |  | 2025-08-25 → 2025-08-23 (-2d) |  | 177.5d → 176.86d |
| PG-10380 | 2nd Fix - Sprinkler fixing & Pressure testing |  | 2025-09-29 → 2025-09-27 (-2d) |  | 272.33d → 271.69d |
| PG-10382 | 1st Fix - GI wire pulling |  | 2025-08-09 → 2025-08-08 (-1d) |  | 46.5d → 45.86d |
| PG-10383 | 2nd Fix - Wiring works |  | 2025-09-27 → 2025-09-26 (-1d) |  | 277.33d → 276.69d |
| PG-10385 | 1st Fix - Piping works |  | 2025-09-06 → 2025-09-05 (-1d) |  | 187.17d → 186.52d |
| PG-10386 | 2nd Fix - diverter fixing & Pressure testing |  | 2025-09-13 → 2025-09-12 (-1d) |  | 242.17d → 241.52d |
| PG-10388 | 1st Fix - Piping and Shaft hydrant works |  | 2025-09-16 → 2025-09-15 (-1d) |  | 288.83d → 288.19d |
| PG-10389 | 2nd Fix - Sprinkler fixing & Pressure testing |  | 2025-10-22 → 2025-10-21 (-1d) |  | 251.83d → 251.19d |
| PG-10391 | 1st Fix - GI wire pulling |  | 2025-09-02 → 2025-09-01 (-1d) |  | 288.83d → 288.19d |
| PG-10392 | 2nd Fix - Wiring works |  | 2025-10-21 → 2025-10-20 (-1d) |  | 257.17d → 256.52d |
| PG-10394 | 1st Fix - Piping works |  | 2025-09-29 → 2025-09-27 (-2d) |  | 187.17d → 186.52d |
| PG-10395 | 2nd Fix - diverter fixing & Pressure testing |  | 2025-10-07 → 2025-10-06 (-1d) |  | 223.17d → 222.52d |
| PG-10397 | 1st Fix - Piping and Shaft hydrant works |  | 2025-10-09 → 2025-10-08 (-1d) |  | 269.83d → 269.19d |
| PG-10398 | 2nd Fix - Sprinkler fixing & Pressure testing |  | 2025-11-14 → 2025-11-13 (-1d) |  | 233.17d → 232.52d |
| PG-10400 | 1st Fix - GI wire pulling |  | 2025-09-24 → 2025-09-23 (-1d) |  | 269.83d → 269.19d |
| PG-10401 | 2nd Fix - Wiring works |  | 2025-11-13 → 2025-11-12 (-1d) |  | 238.17d → 237.52d |
| PG-10403 | 1st Fix - Piping works |  | 2025-10-22 → 2025-10-21 (-1d) |  | 187.17d → 186.52d |
| PG-10404 | 2nd Fix - diverter fixing & Pressure testing |  | 2025-10-29 → 2025-10-28 (-1d) |  | 203.17d → 202.52d |

| ID | Task | Start | Finish | Complete | Total float |
| --- | --- | --- | --- | --- | --- |
| PG-10406 | 1st Fix - Piping and Shaft hydrant works |  | 2025-10-31 → 2025-10-30 (-1d) |  | 250.83d → 250.19d |
| PG-10407 | 2nd Fix - Sprinkler fixing & Pressure testing |  | 2025-12-06 → 2025-12-05 (-1d) |  | 213.17d → 212.52d |
| PG-10409 | 1st Fix - GI wire pulling |  | 2025-10-17 → 2025-10-16 (-1d) |  | 250.83d → 250.19d |
| PG-10410 | 2nd Fix - Wiring works |  | 2025-12-05 → 2025-12-04 (-1d) |  | 218.17d → 217.52d |
| PG-10412 | 1st Fix - Piping works |  | 2025-11-14 → 2025-11-13 (-1d) |  | 187.17d → 186.52d |
| PG-10413 | 2nd Fix - diverter fixing & Pressure testing |  | 2025-11-21 → 2025-11-20 (-1d) |  | 187.17d → 186.52d |
| PG-10415 | 1st Fix - Piping and Shaft hydrant works |  | 2025-11-24 → 2025-11-22 (-2d) |  | 232d → 231.36d |
| PG-10416 | 2nd Fix - Sprinkler fixing & Pressure testing |  | 2025-12-29 → 2025-12-27 (-2d) |  | 194.67d → 194.02d |
| PG-10418 | 1st Fix - GI wire pulling |  | 2025-11-10 → 2025-11-08 (-2d) |  | 232d → 231.36d |
| PG-10419 | 2nd Fix - Wiring works |  | 2025-12-27 → 2025-12-26 (-1d) |  | 199.67d → 199.02d |
| PG-10562 | Final Coat Painting |  |  | 64% → 97% | 418.06d → 417.34d |
| PG-10567 | Final Coat Painting |  |  | 60% → 92% | 382.53d → 381.8d |
| 1.3.1.1.4.13 | **Floor 10** |  | 2025-06-07 → 2025-06-09 (+2d) |  |  |
| PG-10574 | Painting Works - Putty, Primer and 1st |  | 2025-05-17 → 2025-05-19 A (+2d) | 80% → 100% | 407.05d → none |
| PG-10576 | Final Coat Painting | 2025-05-17 → 2025-05-19 A (+2d) |  | 0% → 23% | 406.49d → 405.55d |
| 1.3.1.1.4.13.2 | **Wall Finishing works - Civil** |  | 2025-06-07 → 2025-06-09 (+2d) |  |  |
| PG-10580 | Painting Works - Putty, Primer and 1st |  | 2025-05-17 → 2025-05-19 A (+2d) | 71% → 100% | 369.82d → none |
| PG-10581 | Final Coat Painting | 2025-05-17 → 2025-05-19 A (+2d) | 2025-06-07 → 2025-06-09 (+2d) | 0% → 18% | 369.82d → 367.97d |
| 1.3.1.1.4.13.3 | **Floor Finishing Works - Civil** |  | 2025-05-17 → 2025-05-19 (+2d) |  |  |
| PG-10585 | Wooden doors |  | 2025-05-17 → 2025-05-19 A (+2d) | 67% → 100% | 369.82d → none |
| PG-10589 | Toilet False ceiling |  | 2025-05-20 A | 47% → 100% | 382.17d → none |
| PG-10592 | UPVC Windows & Sliding doors | 2025-05-20 A |  | 0% → 77% | 357.17d → 356.52d |
| PG-10598 | Floor Tiling - Dry area |  | 2025-05-20 A | 56% → 100% | 357.17d → none |
| 1.3.1.1.4.15 | **Floor 12** |  | 2025-07-03 → 2025-07-04 (+1d) |  |  |
| 1.3.1.1.4.15.1 | **Ceiling Finishing works - Civil** |  | 2025-07-03 → 2025-07-04 (+1d) |  |  |
| PG-10601 | Cornice fixing | 2025-05-17 A | 2025-05-22 A | 0% → 100% | 396d → none |
| PG-10604 | Final Coat Painting |  | 2025-07-03 → 2025-07-04 (+1d) |  | 383.49d → 382.58d |
| 1.3.1.1.4.15.2 | **Wall Finishing works - Civil** |  | 2025-07-03 → 2025-07-04 (+1d) |  |  |
| PG-10607 | Dadoing - Wet area |  | 2025-05-20 → 2025-05-21 A (+1d) | 35% → 100% | 348.66d → none |
| PG-10609 | Final Coat Painting |  | 2025-07-03 → 2025-07-04 (+1d) |  | 348.66d → 347.75d |
| PG-10611 | Floor Tiling - Wet area | 2025-05-20 → 2025-05-21 A (+1d) |  | 0% → 51% | 348.66d → 347.75d |
| 1.3.1.1.4.16 | **Floor 13** |  | 2025-07-18 → 2025-07-19 (+1d) |  |  |
| 1.3.1.1.4.16.1 | **Ceiling Finishing works - Civil** |  | 2025-07-18 → 2025-07-19 (+1d) |  |  |
| PG-10614 | Gypsum Plastering |  | 2025-05-21 → 2025-05-22 A (+1d) | 27% → 100% | 381.69d → none |
| PG-10615 | Cornice fixing | 2025-05-30 → 2025-05-31 (+1d) | 2025-06-04 → 2025-06-05 (+1d) |  | 381.51d → 379.94d |
| PG-10617 | Toilet False ceiling | 2025-06-06 → 2025-06-07 (+1d) | 2025-06-11 → 2025-06-12 (+1d) |  | 364.48d → 362.77d |
| PG-10616 | Painting Works - Putty, Primer and 1st | 2025-06-17 → 2025-06-18 (+1d) | 2025-06-24 → 2025-06-25 (+1d) |  | 370.64d → 368.94d |
| PG-10618 | Final Coat Painting | 2025-06-24 → 2025-06-25 (+1d) | 2025-07-18 → 2025-07-19 (+1d) |  | 370.64d → 368.94d |
| 1.3.1.1.4.16.2 | **Wall Finishing works - Civil** |  | 2025-07-16 → 2025-07-17 (+1d) |  |  |
| PG-10621 | Dadoing - Wet area | 2025-05-24 → 2025-05-26 (+2d) | 2025-05-30 → 2025-05-31 (+1d) |  | 337.98d → 336.27d |
| PG-10620 | UPVC Windows & Sliding doors | 2025-06-11 → 2025-06-12 (+1d) | 2025-06-17 → 2025-06-18 (+1d) |  | 337.98d → 336.27d |
| PG-10622 | Painting Works - Putty, Primer and 1st | 2025-06-17 → 2025-06-18 (+1d) | 2025-06-24 → 2025-06-25 (+1d) |  | 337.98d → 336.27d |
| PG-10623 | Final Coat Painting | 2025-06-24 → 2025-06-25 (+1d) | 2025-07-16 → 2025-07-17 (+1d) |  | 337.98d → 336.27d |
| 1.3.1.1.4.16.3 | **Floor Finishing Works - Civil** |  | 2025-06-24 → 2025-06-25 (+1d) |  |  |
| PG-10625 | Floor Tiling - Wet area | 2025-05-30 → 2025-05-31 (+1d) | 2025-06-05 → 2025-06-06 (+1d) |  | 337.98d → 336.27d |
| PG-10626 | Floor Tiling - Dry area | 2025-06-05 → 2025-06-06 (+1d) | 2025-06-11 → 2025-06-12 (+1d) |  | 337.98d → 336.27d |
| PG-10627 | Wooden doors | 2025-06-18 → 2025-06-19 (+1d) | 2025-06-24 → 2025-06-25 (+1d) |  | 337.98d → 336.27d |
| 1.3.1.1.4.17.1 | **Ceiling Finishing works - Civil** | 2025-05-28 → 2025-05-26 (-2d) |  |  |  |
| PG-10628 | Gypsum Plastering | 2025-05-28 → 2025-05-26 (-2d) | 2025-06-04 → 2025-06-02 (-2d) |  | 372d → 372.45d |
| PG-10629 | Cornice fixing | 2025-06-13 → 2025-06-11 (-2d) | 2025-06-18 → 2025-06-16 (-2d) |  | 372d → 372.45d |
| PG-10631 | Toilet False ceiling | 2025-06-21 → 2025-06-20 (-1d) | 2025-06-26 → 2025-06-25 (-1d) |  | 352.33d → 351.99d |
| PG-10630 | Painting Works - Putty, Primer and 1st | 2025-07-02 → 2025-07-01 (-1d) | 2025-07-09 → 2025-07-08 (-1d) |  | 360d → 359.66d |
| PG-10632 | Final Coat Painting | 2025-07-09 → 2025-07-08 (-1d) |  |  | 360d → 359.66d |
| PG-10633 | Balcony Railing Fixing works | 2025-05-19 A | 2025-05-23 A | 0% → 100% | 354.33d → none |
| PG-10635 | Dadoing - Wet area | 2025-06-09 → 2025-06-07 (-2d) | 2025-06-14 → 2025-06-13 (-1d) |  | 325.33d → 324.99d |
| PG-10634 | UPVC Windows & Sliding doors | 2025-06-26 → 2025-06-25 (-1d) | 2025-07-02 → 2025-07-01 (-1d) |  | 325.33d → 324.99d |
| PG-10636 | Painting Works - Putty, Primer and 1st | 2025-07-02 → 2025-07-01 (-1d) | 2025-07-09 → 2025-07-08 (-1d) |  | 325.33d → 324.99d |
| PG-10637 | Final Coat Painting | 2025-07-09 → 2025-07-08 (-1d) |  |  | 325.33d → 324.99d |
| 1.3.1.1.4.17.3 | **Floor Finishing Works - Civil** |  | 2025-07-09 → 2025-07-08 (-1d) |  |  |
| PG-10638 | Waterproofing for sunken areas | 2025-05-19 A | 2025-05-22 A | 0% → 100% | 345.33d → none |
| PG-10639 | Floor Tiling - Wet area | 2025-06-14 → 2025-06-13 (-1d) | 2025-06-20 → 2025-06-19 (-1d) |  | 325.33d → 324.99d |
| PG-10640 | Floor Tiling - Dry area | 2025-06-20 → 2025-06-19 (-1d) | 2025-06-26 → 2025-06-25 (-1d) |  | 325.33d → 324.99d |
| PG-10641 | Wooden doors | 2025-07-03 → 2025-07-02 (-1d) | 2025-07-09 → 2025-07-08 (-1d) |  | 325.33d → 324.99d |
| PG-10642 | Gypsum Plastering |  | 2025-06-17 → 2025-06-16 (-1d) |  | 362d → 361.36d |
| PG-10643 | Cornice fixing |  | 2025-07-01 → 2025-06-30 (-1d) |  | 362d → 361.36d |
| PG-10645 | Toilet False ceiling |  | 2025-07-09 → 2025-07-08 (-1d) |  | 341.33d → 340.69d |
| PG-10644 | Painting Works - Putty, Primer and 1st |  | 2025-07-22 → 2025-07-21 (-1d) |  | 350d → 349.36d |
| PG-10647 | Balcony Railing Fixing works |  | 2025-06-05 → 2025-06-04 (-1d) |  | 161.83d → 161.19d |
| PG-10649 | Dadoing - Wet area |  | 2025-06-27 → 2025-06-26 (-1d) |  | 132.83d → 132.19d |
| PG-10648 | UPVC Windows & Sliding doors |  | 2025-07-15 → 2025-07-14 (-1d) |  | 132.83d → 132.19d |

| ID | Task | Finish | Total float |
| --- | --- | --- | --- |
| PG-10650 | Painting Works - Putty, Primer and 1st | 2025-07-22 → 2025-07-21 (-1d) | 132.83d → 132.19d |
| 1.3.1.1.4.18.3 | **Floor Finishing Works - Civil** | 2025-07-22 → 2025-07-21 (-1d) |  |
| PG-10652 | Waterproofing for sunken areas | 2025-06-04 → 2025-06-03 (-1d) | 152.83d → 152.19d |
| PG-10653 | Floor Tiling - Wet area | 2025-07-03 → 2025-07-02 (-1d) | 132.83d → 132.19d |
| PG-10654 | Floor Tiling - Dry area | 2025-07-09 → 2025-07-08 (-1d) | 132.83d → 132.19d |
| PG-10655 | Wooden doors | 2025-07-22 → 2025-07-21 (-1d) | 132.83d → 132.19d |
| PG-10656 | Gypsum Plastering | 2025-06-30 → 2025-06-28 (-2d) | 351d → 350.36d |
| PG-10657 | Cornice fixing | 2025-07-14 → 2025-07-12 (-2d) | 351d → 350.36d |
| PG-10659 | Toilet False ceiling | 2025-07-22 → 2025-07-21 (-1d) | 330.33d → 329.69d |
| PG-10658 | Painting Works - Putty, Primer and 1st | 2025-08-04 → 2025-08-02 (-2d) | 339d → 338.36d |
| PG-10661 | Balcony Railing Fixing works | 2025-06-18 → 2025-06-17 (-1d) | 333.33d → 332.69d |
| PG-10663 | Dadoing - Wet area | 2025-07-10 → 2025-07-09 (-1d) | 304.33d → 303.69d |
| PG-10662 | UPVC Windows & Sliding doors | 2025-07-28 → 2025-07-26 (-2d) | 304.33d → 303.69d |
| PG-10664 | Painting Works - Putty, Primer and 1st | 2025-08-04 → 2025-08-02 (-2d) | 304.33d → 303.69d |
| 1.3.1.1.4.19.3 | **Floor Finishing Works - Civil** | 2025-08-04 → 2025-08-02 (-2d) |  |
| PG-10666 | Waterproofing for sunken areas | 2025-06-17 → 2025-06-16 (-1d) | 324.33d → 323.69d |
| PG-10667 | Floor Tiling - Wet area | 2025-07-16 → 2025-07-15 (-1d) | 304.33d → 303.69d |
| PG-10668 | Floor Tiling - Dry area | 2025-07-22 → 2025-07-21 (-1d) | 304.33d → 303.69d |
| PG-10669 | Wooden doors | 2025-08-04 → 2025-08-02 (-2d) | 304.33d → 303.69d |
| PG-10670 | Gypsum Plastering | 2025-07-12 → 2025-07-11 (-1d) | 340d → 339.36d |
| PG-10671 | Cornice fixing | 2025-07-26 → 2025-07-25 (-1d) | 340d → 339.36d |
| PG-10673 | Toilet False ceiling | 2025-08-04 → 2025-08-02 (-2d) | 319.33d → 318.69d |
| PG-10672 | Painting Works - Putty, Primer and 1st | 2025-08-18 → 2025-08-16 (-2d) | 328d → 327.36d |
| PG-10675 | Balcony Railing Fixing works | 2025-07-01 → 2025-06-30 (-1d) | 322.33d → 321.69d |
| PG-10677 | Dadoing - Wet area | 2025-07-23 → 2025-07-22 (-1d) | 293.33d → 292.69d |
| PG-10676 | UPVC Windows & Sliding doors | 2025-08-09 → 2025-08-08 (-1d) | 293.33d → 292.69d |
| PG-10678 | Painting Works - Putty, Primer and 1st | 2025-08-18 → 2025-08-16 (-2d) | 293.33d → 292.69d |
| 1.3.1.1.4.20.3 | **Floor Finishing Works - Civil** | 2025-08-18 → 2025-08-16 (-2d) |  |
| PG-10680 | Waterproofing for sunken areas | 2025-06-30 → 2025-06-28 (-2d) | 313.33d → 312.69d |
| PG-10681 | Floor Tiling - Wet area | 2025-07-29 → 2025-07-28 (-1d) | 293.33d → 292.69d |
| PG-10682 | Floor Tiling - Dry area | 2025-08-04 → 2025-08-02 (-2d) | 293.33d → 292.69d |
| PG-10683 | Wooden doors | 2025-08-18 → 2025-08-16 (-2d) | 293.33d → 292.69d |
| PG-10684 | Gypsum Plastering | 2025-07-25 → 2025-07-24 (-1d) | 329d → 328.36d |
| PG-10685 | Cornice fixing | 2025-08-08 → 2025-08-07 (-1d) | 329d → 328.36d |
| PG-10687 | Toilet False ceiling | 2025-08-18 → 2025-08-16 (-2d) | 308.33d → 307.69d |
| PG-10686 | Painting Works - Putty, Primer and 1st | 2025-08-30 → 2025-08-29 (-1d) | 317d → 316.36d |
| PG-10689 | Balcony Railing Fixing works | 2025-07-14 → 2025-07-12 (-2d) | 311.33d → 310.69d |
| PG-10691 | Dadoing - Wet area | 2025-08-05 → 2025-08-04 (-1d) | 282.33d → 281.69d |
| PG-10690 | UPVC Windows & Sliding doors | 2025-08-23 → 2025-08-22 (-1d) | 282.33d → 281.69d |
| PG-10692 | Painting Works - Putty, Primer and 1st | 2025-08-30 → 2025-08-29 (-1d) | 282.33d → 281.69d |
| 1.3.1.1.4.21.3 | **Floor Finishing Works - Civil** | 2025-08-30 → 2025-08-29 (-1d) |  |
| PG-10694 | Waterproofing for sunken areas | 2025-07-12 → 2025-07-11 (-1d) | 302.33d → 301.69d |
| PG-10695 | Floor Tiling - Wet area | 2025-08-11 → 2025-08-09 (-2d) | 282.33d → 281.69d |
| PG-10696 | Floor Tiling - Dry area | 2025-08-18 → 2025-08-16 (-2d) | 282.33d → 281.69d |
| PG-10697 | Wooden doors | 2025-08-30 → 2025-08-29 (-1d) | 282.33d → 281.69d |
| PG-10698 | Gypsum Plastering | 2025-08-18 → 2025-08-16 (-2d) | 177.5d → 176.86d |
| PG-10699 | Cornice fixing | 2025-09-01 → 2025-08-30 (-2d) | 177.5d → 176.86d |
| PG-10701 | Toilet False ceiling | 2025-09-09 → 2025-09-08 (-1d) | 289.33d → 288.69d |
| PG-10700 | Painting Works - Putty, Primer and 1st | 2025-09-22 → 2025-09-20 (-2d) | 165.5d → 164.86d |
| PG-10703 | Balcony Railing Fixing works | 2025-08-05 → 2025-08-04 (-1d) | 194.5d → 193.86d |
| PG-10705 | Dadoing - Wet area | 2025-08-28 → 2025-08-27 (-1d) | 165.5d → 164.86d |
| PG-10704 | UPVC Windows & Sliding doors | 2025-09-15 → 2025-09-13 (-2d) | 165.5d → 164.86d |
| PG-10706 | Painting Works - Putty, Primer and 1st | 2025-09-22 → 2025-09-20 (-2d) | 261.33d → 260.69d |
| 1.3.1.1.4.22.3 | **Floor Finishing Works - Civil** | 2025-09-22 → 2025-09-20 (-2d) |  |
| PG-10708 | Waterproofing for sunken areas | 2025-08-04 → 2025-08-02 (-2d) | 185.5d → 184.86d |
| PG-10709 | Floor Tiling - Wet area | 2025-09-03 → 2025-09-02 (-1d) | 165.5d → 164.86d |
| PG-10710 | Floor Tiling - Dry area | 2025-09-09 → 2025-09-08 (-1d) | 165.5d → 164.86d |
| PG-10711 | Wooden doors | 2025-09-22 → 2025-09-20 (-2d) | 261.33d → 260.69d |
| PG-10712 | Gypsum Plastering | 2025-09-09 → 2025-09-08 (-1d) | 288.83d → 288.19d |
| PG-10713 | Cornice fixing | 2025-09-23 → 2025-09-22 (-1d) | 288.83d → 288.19d |
| PG-10715 | Toilet False ceiling | 2025-10-01 → 2025-09-30 (-1d) | 268.83d → 268.19d |
| PG-10714 | Painting Works - Putty, Primer and 1st | 2025-10-15 → 2025-10-14 (-1d) | 276.83d → 276.19d |
| PG-10717 | Balcony Railing Fixing works | 2025-08-28 → 2025-08-27 (-1d) | 271.17d → 270.52d |
| PG-10719 | Dadoing - Wet area | 2025-09-19 → 2025-09-18 (-1d) | 242.17d → 241.52d |
| PG-10718 | UPVC Windows & Sliding doors | 2025-10-08 → 2025-10-07 (-1d) | 242.17d → 241.52d |
| PG-10720 | Painting Works - Putty, Primer and 1st | 2025-10-15 → 2025-10-14 (-1d) | 242.17d → 241.52d |
| 1.3.1.1.4.23.3 | **Floor Finishing Works - Civil** | 2025-10-15 → 2025-10-14 (-1d) |  |
| PG-10722 | Waterproofing for sunken areas | 2025-08-27 → 2025-08-26 (-1d) | 262.17d → 261.52d |
| PG-10723 | Floor Tiling - Wet area | 2025-09-25 → 2025-09-24 (-1d) | 242.17d → 241.52d |
| PG-10724 | Floor Tiling - Dry area | 2025-10-01 → 2025-09-30 (-1d) | 242.17d → 241.52d |

| ID | Task | Finish | Total float |
| --- | --- | --- | --- |
| PG-10725 | Wooden doors | 2025-10-15 → 2025-10-14 (-1d) | 242.17d → 241.52d |
| PG-10726 | Gypsum Plastering | 2025-10-01 → 2025-09-30 (-1d) | 269.83d → 269.19d |
| PG-10727 | Cornice fixing | 2025-10-16 → 2025-10-15 (-1d) | 269.83d → 269.19d |
| PG-10729 | Toilet False ceiling | 2025-10-24 → 2025-10-23 (-1d) | 250.17d → 249.52d |
| PG-10728 | Painting Works - Putty, Primer and 1st | 2025-11-07 → 2025-11-06 (-1d) | 257.83d → 257.19d |
| PG-10731 | Balcony Railing Fixing works | 2025-09-19 → 2025-09-18 (-1d) | 252.17d → 251.52d |
| PG-10733 | Dadoing - Wet area | 2025-10-13 → 2025-10-11 (-2d) | 223.17d → 222.52d |
| PG-10732 | UPVC Windows & Sliding doors | 2025-10-30 → 2025-10-29 (-1d) | 223.17d → 222.52d |
| PG-10734 | Painting Works - Putty, Primer and 1st | 2025-11-07 → 2025-11-06 (-1d) | 223.17d → 222.52d |
| 1.3.1.1.4.24.3 | **Floor Finishing Works - Civil** | 2025-11-07 → 2025-11-06 (-1d) |  |
| PG-10736 | Waterproofing for sunken areas | 2025-09-18 → 2025-09-17 (-1d) | 243.17d → 242.52d |
| PG-10737 | Floor Tiling - Wet area | 2025-10-18 → 2025-10-17 (-1d) | 223.17d → 222.52d |
| PG-10738 | Floor Tiling - Dry area | 2025-10-24 → 2025-10-23 (-1d) | 223.17d → 222.52d |
| PG-10739 | Wooden doors | 2025-11-07 → 2025-11-06 (-1d) | 223.17d → 222.52d |
| PG-10740 | Gypsum Plastering | 2025-10-24 → 2025-10-23 (-1d) | 250.83d → 250.19d |
| PG-10741 | Cornice fixing | 2025-11-08 → 2025-11-07 (-1d) | 250.83d → 250.19d |
| PG-10743 | Toilet False ceiling | 2025-11-17 → 2025-11-15 (-2d) | 230.17d → 229.52d |
| PG-10742 | Painting Works - Putty, Primer and 1st | 2025-11-29 → 2025-11-28 (-1d) | 238.83d → 238.19d |
| PG-10745 | Balcony Railing Fixing works | 2025-10-13 → 2025-10-11 (-2d) | 232.17d → 231.52d |
| PG-10747 | Dadoing - Wet area | 2025-11-05 → 2025-11-04 (-1d) | 203.17d → 202.52d |
| PG-10746 | UPVC Windows & Sliding doors | 2025-11-22 → 2025-11-21 (-1d) | 203.17d → 202.52d |
| PG-10748 | Painting Works - Putty, Primer and 1st | 2025-11-29 → 2025-11-28 (-1d) | 203.17d → 202.52d |
| 1.3.1.1.4.25.3 | **Floor Finishing Works - Civil** | 2025-11-29 → 2025-11-28 (-1d) |  |
| PG-10750 | Waterproofing for sunken areas | 2025-10-11 → 2025-10-10 (-1d) | 223.17d → 222.52d |
| PG-10751 | Floor Tiling - Wet area | 2025-11-11 → 2025-11-10 (-1d) | 203.17d → 202.52d |
| PG-10752 | Floor Tiling - Dry area | 2025-11-17 → 2025-11-15 (-2d) | 203.17d → 202.52d |
| PG-10753 | Wooden doors | 2025-11-29 → 2025-11-28 (-1d) | 203.17d → 202.52d |
| PG-10754 | Gypsum Plastering | 2025-11-17 → 2025-11-15 (-2d) | 232d → 231.36d |
| PG-10755 | Cornice fixing | 2025-12-01 → 2025-11-29 (-2d) | 232d → 231.36d |
| PG-10757 | Toilet False ceiling | 2025-12-09 → 2025-12-08 (-1d) | 211.67d → 211.02d |
| PG-10756 | Painting Works - Putty, Primer and 1st | 2025-12-22 → 2025-12-20 (-2d) | 220d → 219.36d |
| PG-10759 | Balcony Railing Fixing works | 2025-11-05 → 2025-11-04 (-1d) | 216.17d → 215.52d |
| PG-10761 | Dadoing - Wet area | 2025-11-27 → 2025-11-26 (-1d) | 187.17d → 186.52d |
| PG-10760 | UPVC Windows & Sliding doors | 2025-12-15 → 2025-12-13 (-2d) | 187.17d → 186.52d |
| PG-10762 | Painting Works - Putty, Primer and 1st | 2025-12-22 → 2025-12-20 (-2d) | 187.17d → 186.52d |
| 1.3.1.1.4.26.3 | **Floor Finishing Works - Civil** | 2025-12-22 → 2025-12-20 (-2d) |  |
| PG-10764 | Waterproofing for sunken areas | 2025-11-04 → 2025-11-03 (-1d) | 207.17d → 206.52d |
| PG-10765 | Floor Tiling - Wet area | 2025-12-03 → 2025-12-02 (-1d) | 187.17d → 186.52d |
| PG-10766 | Floor Tiling - Dry area | 2025-12-09 → 2025-12-08 (-1d) | 187.17d → 186.52d |
| PG-10767 | Wooden doors | 2025-12-22 → 2025-12-20 (-2d) | 187.17d → 186.52d |
| 1.3.1.1.4.27 | **External Finishing works** | 2025-12-04 → 2025-12-03 (-1d) |  |
| PG-10768 | External walls tie rod hole plugging with GP2 | 2025-09-11 → 2025-09-10 (-1d) | 251.33d → 250.69d |
| PG-10769 | External walls grinding works | 2025-10-17 → 2025-10-16 (-1d) | 251.33d → 250.69d |
| PG-10770 | Texture and painting works | 2025-12-04 → 2025-12-03 (-1d) | 251.33d → 250.69d |
| 1.3.1.1.5.1 | **Ceiling Finishing works - Civil** | 2026-01-24 → 2026-01-23 (-1d) |  |
| PG-10771 | Gypsum Plastering | 2025-10-21 → 2025-10-20 (-1d) | 46.5d → 45.86d |
| PG-10772 | Cornice fixing | 2025-10-24 → 2025-10-23 (-1d) | 177.5d → 176.86d |
| PG-10773 | Painting Works - Putty, Primer and 1st | 2025-11-15 → 2025-11-14 (-1d) | 165.5d → 164.86d |
| PG-10774 | False ceiling | 2025-12-20 → 2025-12-19 (-1d) | 165.5d → 164.86d |
| PG-10775 | Final Coat Painting | 2026-01-24 → 2026-01-23 (-1d) | 180.5d → 179.86d |
| PG-10776 | UPVC Windows & Sliding doors | 2025-11-26 → 2025-11-25 (-1d) | 171.5d → 170.86d |
| PG-10777 | Wall Cladding Upto 1.2 Mts | 2025-12-31 → 2025-12-30 (-1d) | 171.5d → 170.86d |
| PG-10778 | Painting Works - Texture & one coat Painting works | 2026-01-24 → 2026-01-23 (-1d) | 165.5d → 164.86d |
| 1.3.1.1.5.3 | **Floor Finishing Works - Civil** | 2025-11-20 → 2025-11-19 (-1d) |  |
| PG-10780 | Fire Doors installation | 2025-11-03 → 2025-10-31 (-3d) | 216.17d → 215.52d |
| PG-10781 | Verified tile flooring works | 2025-11-20 → 2025-11-19 (-1d) | 216.17d → 215.52d |
| 1.3.1.1.5.4 | **Fire Staircase Finishing Works - Civil** | 2026-02-11 → 2026-02-10 (-1d) |  |
| PG-10782 | Staircase Railing Fixing works | 2025-11-14 → 2025-11-13 (-1d) | 46.5d → 45.86d |
| PG-10783 | Wall and ceiling Gypsum plastering | 2025-12-08 → 2025-12-06 (-2d) | 46.5d → 45.86d |
| PG-10784 | Staircase Flooring and Skirting Works | 2026-01-06 → 2026-01-05 (-1d) | 46.5d → 45.86d |
| PG-10785 | UPVC Window fixing works | 2026-01-23 → 2026-01-22 (-1d) | 46.5d → 45.86d |
| PG-10786 | Staircase Painting works | 2026-02-11 → 2026-02-10 (-1d) | 46.5d → 45.86d |
| PG-10787 | Tie rod hole packing | 2025-08-01 → 2025-07-31 (-1d) | 124d → 123.36d |
| PG-10788 | Grinding works | 2025-08-07 → 2025-08-06 (-1d) | 124d → 123.36d |
| PG-10789 | Lift pit waterproofing works | 2025-09-02 → 2025-09-01 (-1d) | 124d → 123.36d |
| PG-10790 | Shaft door opening finishing | 2025-09-10 → 2025-09-09 (-1d) | 124d → 123.36d |
| PG-10791 | Painting works | 2025-09-19 → 2025-09-18 (-1d) | 124d → 123.36d |
| 1.3.1.1.6.2 | **Electrical Shaft works** | 2025-08-26 → 2025-08-25 (-1d) |  |
| PG-10793 | Tie rod hole packing | 2025-08-01 → 2025-07-31 (-1d) | 262.83d → 262.19d |
| PG-10794 | Grinding works | 2025-08-07 → 2025-08-06 (-1d) | 262.83d → 262.19d |

| ID | Task | Start | Finish | Complete | Total float |
| --- | --- | --- | --- | --- | --- |
| PG-10795 | Shaft door opening finishing |  | 2025-08-16 → 2025-08-14 (-2d) |  | 262.83d → 262.19d |
| PG-10796 | Painting works |  | 2025-08-26 → 2025-08-25 (-1d) |  | 262.83d → 262.19d |
| 1.3.1.1.6.3 | **FPS Shaft works** |  | 2025-08-26 → 2025-08-25 (-1d) |  |  |
| PG-10797 | Tie rod hole packing |  | 2025-08-01 → 2025-07-31 (-1d) |  | 262.5d → 261.86d |
| PG-10798 | Grinding works |  | 2025-08-07 → 2025-08-06 (-1d) |  | 262.5d → 261.86d |
| PG-10799 | Shaft door opening finishing |  | 2025-08-16 → 2025-08-14 (-2d) |  | 262.5d → 261.86d |
| PG-10800 | Painting works |  | 2025-08-26 → 2025-08-25 (-1d) |  | 262.5d → 261.86d |
| 1.3.1.1.6.4 | **PHE Shaft works** |  | 2025-08-26 → 2025-08-25 (-1d) |  |  |
| PG-10801 | Tie rod hole packing |  | 2025-08-01 → 2025-07-31 (-1d) |  | 221.17d → 220.52d |
| PG-10802 | Grinding works |  | 2025-08-07 → 2025-08-06 (-1d) |  | 221.17d → 220.52d |
| PG-10803 | Shaft door opening finishing |  | 2025-08-16 → 2025-08-14 (-2d) |  | 221.17d → 220.52d |
| PG-10804 | Painting works |  | 2025-08-26 → 2025-08-25 (-1d) |  | 221.17d → 220.52d |
| 1.3.1.1.6.5 | **Data & Communication Shaft** |  | 2025-08-23 → 2025-08-22 (-1d) |  |  |
| PG-10805 | Tie rod hole packing |  | 2025-08-01 → 2025-07-31 (-1d) |  | 257.5d → 256.86d |
| PG-10806 | Grinding works |  | 2025-08-07 → 2025-08-06 (-1d) |  | 257.5d → 256.86d |
| PG-10807 | Shaft door opening finishing |  | 2025-08-13 → 2025-08-12 (-1d) |  | 257.5d → 256.86d |
| PG-10808 | Painting works |  | 2025-08-23 → 2025-08-22 (-1d) |  | 257.5d → 256.86d |
| 1.3.1.1.7.1 | **Electrical** |  | 2025-10-07 → 2025-10-06 (-1d) |  |  |
| PG-10813 | Tray Works |  | 2025-09-06 → 2025-09-05 (-1d) |  | 262.83d → 262.19d |
| PG-10814 | Cable & Conducting works |  | 2025-09-18 → 2025-09-17 (-1d) |  | 262.83d → 262.19d |
| PG-10815 | Wiring/DB/connector box installation and termination works |  | 2025-10-07 → 2025-10-06 (-1d) |  | 262.83d → 262.19d |
| 1.3.1.1.7.2 | **FPS** |  | 2025-10-07 → 2025-10-06 (-1d) |  |  |
| PG-10816 | Shaft MS Piping & fixtures installation |  | 2025-09-18 → 2025-09-17 (-1d) |  | 262.5d → 261.86d |
| PG-10817 | Tray / cabling / conducting & wiring works |  | 2025-10-07 → 2025-10-06 (-1d) |  | 262.5d → 261.86d |
| 1.3.1.1.7.3 | **Data & Communication** |  | 2025-10-13 → 2025-10-11 (-2d) |  |  |
| PG-10818 | Tray Works |  | 2025-09-06 → 2025-09-05 (-1d) |  | 257.5d → 256.86d |
| PG-10819 | Tray / cabling / conducting & wiring works |  | 2025-09-24 → 2025-09-23 (-1d) |  | 257.5d → 256.86d |
| PG-10820 | Wiring/DB/connector box installation and termination works |  | 2025-10-13 → 2025-10-11 (-2d) |  | 257.5d → 256.86d |
| PG-10821 | Bracket fixing works |  | 2025-09-03 → 2025-09-02 (-1d) |  | 221.17d → 220.52d |
| PG-10822 | Piping Works |  | 2025-09-20 → 2025-09-19 (-1d) |  | 221.17d → 220.52d |
| PG-10826 | Guide Rails fixing works |  | 2025-11-07 → 2025-11-06 (-1d) |  | 124d → 123.36d |
| 1.3.1.1.9 | **Electrical Panel Works** |  | 2026-02-27 → 2026-02-26 (-1d) |  |  |
| PG-10831 | Wall Tie rod hole packing & Grinding works. |  | 2025-08-08 → 2025-08-07 (-1d) |  | 132.83d → 132.19d |
| 1.3.1.1.9.2 | **Electrical Panel works** |  | 2026-02-27 → 2026-02-26 (-1d) |  |  |
| PG-10837 | Electrical Panel Testing and commissioning works |  | 2026-02-27 → 2026-02-26 (-1d) |  | 132.83d → 132.19d |
| 1.3.1.1.10 | **Entrance Lobby works** |  | 2026-07-01 → 2026-06-30 (-1d) |  |  |
| PG-10842 | Interior Works |  | 2026-07-01 → 2026-06-30 (-1d) |  | 46.5d → 45.86d |
| 1.3.1.2.2.22 | **Floor 19** |  | 2025-05-19 → 2025-05-20 (+1d) |  |  |
| 1.3.1.2.2.22.2 | **Slab, Beams & Staircase** |  | 2025-05-19 → 2025-05-20 (+1d) |  |  |
| PG-10966 | Reinforcement |  | 2025-05-17 → 2025-05-19 A (+2d) | 64% → 100% | 16d → none |
| PG-10967 | Concrete | 2025-05-17 → 2025-05-19 A (+2d) | 2025-05-19 → 2025-05-20 A (+1d) | 0% → 100% | 16d → none |
| 1.3.1.2.2.23 | **Floor 20** | 2025-05-19 → 2025-05-20 (+1d) |  |  |  |
| 1.3.1.2.2.23.1 | **Columns / shear walls** | 2025-05-19 → 2025-05-20 (+1d) |  |  |  |
| PG-10968 | Reinforcement | 2025-05-19 → 2025-05-20 A (+1d) |  | 0% → 89% | 16d → 15.56d |
| PG-10969 | Formwork | 2025-05-21 → 2025-05-22 A (+1d) |  | 0% → 27% | 16d → 15.09d |
| PG-11091 | Final Fix - CP & Sanitary fixtures |  | 2025-05-21 A | 65% → 100% | 391.25d → none |
| PG-11094 | Final Fix - Smoke & heat detectors, FHC , FAS Etc. |  | 2025-05-21 A | 64% → 100% | 391.25d → none |
| PG-11097 | Final Fix - Electrical Fixtures |  | 2025-05-21 A | 38% → 100% | 391.25d → none |
| PG-11100 | Final Fix - CP & Sanitary fixtures | 2025-05-19 → 2025-05-20 A (+1d) |  | 0% → 33% | 383.71d → 382.74d |
| PG-11103 | Final Fix - Smoke & heat detectors, FHC , FAS Etc. | 2025-05-19 → 2025-05-20 A (+1d) |  | 0% → 39% | 383.71d → 382.98d |
| 1.3.1.2.3.13 | **Floor 10** |  | 2025-06-14 → 2025-06-18 (+4d) |  |  |
| 1.3.1.2.3.13.1 | **PHE Works** |  | 2025-06-14 → 2025-06-18 (+4d) |  |  |
| PG-11109 | Final Fix - CP & Sanitary fixtures | 2025-06-03 → 2025-06-06 (+3d) | 2025-06-14 → 2025-06-18 (+4d) |  | 370.04d → 366.14d |
| 1.3.1.2.3.13.2 | **Fire Fighting Works** |  | 2025-06-14 → 2025-06-18 (+4d) |  |  |
| PG-11111 | 2nd Fix - Sprinkler fixing & Pressure testing |  | 2025-05-24 → 2025-05-26 (+2d) | 29% → 90% | 377.87d → 376.11d |
| PG-11112 | Final Fix - Smoke & heat detectors, FHC , FAS Etc. | 2025-06-03 → 2025-06-06 (+3d) | 2025-06-14 → 2025-06-18 (+4d) |  | 370.04d → 366.14d |
| 1.3.1.2.3.13.3 | **Electrical Works** |  | 2025-06-14 → 2025-06-18 (+4d) |  |  |
| PG-11114 | 2nd Fix - Wiring works |  |  | 43% → 90% | 382.85d → 381.94d |
| PG-11115 | Final Fix - Electrical Fixtures | 2025-06-09 → 2025-06-12 (+3d) | 2025-06-14 → 2025-06-18 (+4d) |  | 370.04d → 366.14d |
| PG-11123 | 2nd Fix - Wiring works | 2025-05-22 → 2025-05-23 A (+1d) |  | 0% → 3% | 371.92d → 371.02d |
| PG-11124 | Final Fix - Electrical Fixtures | 2025-06-21 → 2025-06-23 (+2d) |  |  | 358.25d → 357.36d |
| PG-11134 | 1st Fix - Piping works |  | 2025-05-19 → 2025-05-20 A (+1d) | 79% → 100% | 336.92d → none |
| PG-11135 | 2nd Fix - diverter fixing & Pressure testing |  | 2025-05-26 → 2025-05-27 (+1d) | 12% → 72% | 336.59d → 335.19d |
| PG-11136 | Final Fix - CP & Sanitary fixtures | 2025-07-12 → 2025-07-14 (+2d) |  |  | 336.59d → 335.19d |
| PG-11137 | 1st Fix - Piping and Shaft hydrant works |  |  | 4% → 56% | 382.9d → 381.36d |
| PG-11138 | 2nd Fix - Sprinkler fixing & Pressure testing | 2025-06-20 → 2025-06-21 (+1d) | 2025-07-02 → 2025-07-03 (+1d) |  | 345.59d → 344.19d |
| PG-11139 | Final Fix - Smoke & heat detectors, FHC , FAS Etc. | 2025-07-12 → 2025-07-14 (+2d) |  |  | 336.59d → 335.19d |
| PG-11141 | 2nd Fix - Wiring works | 2025-06-16 → 2025-06-17 (+1d) | 2025-07-01 → 2025-07-02 (+1d) |  | 351.59d → 350.19d |
| PG-11142 | Final Fix - Electrical Fixtures | 2025-07-18 → 2025-07-19 (+1d) |  |  | 336.59d → 335.19d |
| 1.3.1.2.3.17 | **Floor 14** | 2025-05-19 → 2025-05-20 (+1d) |  |  |  |

| ID | Task | Start | Finish | Complete | Total float |
| --- | --- | --- | --- | --- | --- |
| 1.3.1.2.3.17.1 | **PHE Works** | 2025-05-19 → 2025-05-20 (+1d) |  |  |  |
| PG-11143 | 1st Fix - Piping works | 2025-05-19 → 2025-05-20 A (+1d) | 2025-06-02 → 2025-06-03 (+1d) | 0% → 25% | 324.67d → 323.64d |
| PG-11144 | 2nd Fix - diverter fixing & Pressure testing | 2025-05-28 → 2025-05-29 (+1d) | 2025-06-09 → 2025-06-10 (+1d) |  | 324.67d → 323.64d |
| PG-11145 | Final Fix - CP & Sanitary fixtures | 2025-07-28 → 2025-07-29 (+1d) |  |  | 324.67d → 323.64d |
| 1.3.1.2.3.17.2 | **Fire Fighting Works** | 2025-05-29 → 2025-05-28 (-1d) |  |  |  |
| PG-11146 | 1st Fix - Piping and Shaft hydrant works | 2025-05-29 → 2025-05-28 (-1d) | 2025-06-12 → 2025-06-11 (-1d) |  | 370.67d → 370.5d |
| PG-11147 | 2nd Fix - Sprinkler fixing & Pressure testing | 2025-07-04 → 2025-07-05 (+1d) | 2025-07-16 → 2025-07-17 (+1d) |  | 334.67d → 333.64d |
| PG-11148 | Final Fix - Smoke & heat detectors, FHC , FAS Etc. | 2025-07-28 → 2025-07-29 (+1d) |  |  | 324.67d → 323.64d |
| 1.3.1.2.3.17.3 | **Electrical Works** | 2025-05-19 → 2025-05-20 (+1d) |  |  |  |
| PG-11149 | 1st Fix - GI wire pulling | 2025-05-19 → 2025-05-20 A (+1d) | 2025-05-29 → 2025-05-28 (-1d) | 0% → 44% | 370.67d → 370.5d |
| PG-11150 | 2nd Fix - Wiring works | 2025-06-30 → 2025-07-01 (+1d) | 2025-07-15 → 2025-07-16 (+1d) |  | 339.67d → 338.64d |
| PG-11151 | Final Fix - Electrical Fixtures | 2025-08-01 → 2025-08-02 (+1d) |  |  | 324.67d → 323.64d |
| PG-11163 | Final Fix - CP & Sanitary fixtures | 2025-08-20 → 2025-08-21 (+1d) |  |  | 304.33d → 303.43d |
| PG-11166 | Final Fix - Smoke & heat detectors, FHC , FAS Etc. | 2025-08-20 → 2025-08-21 (+1d) |  |  | 304.33d → 303.43d |
| PG-11172 | Final Fix - CP & Sanitary fixtures | 2025-09-02 → 2025-09-03 (+1d) |  |  | 293.33d → 292.43d |
| PG-11175 | Final Fix - Smoke & heat detectors, FHC , FAS Etc. | 2025-09-02 → 2025-09-03 (+1d) |  |  | 293.33d → 292.43d |
| 1.3.1.2.3.21.2 | **Fire Fighting Works** | 2025-07-18 → 2025-07-19 (+1d) |  |  |  |
| PG-11182 | 1st Fix - Piping and Shaft hydrant works | 2025-07-18 → 2025-07-19 (+1d) |  |  | 329.17d → 328.26d |
| PG-11183 | 2nd Fix - Sprinkler fixing & Pressure testing | 2025-08-25 → 2025-08-26 (+1d) |  |  | 289.5d → 288.59d |
| PG-11186 | 2nd Fix - Wiring works | 2025-08-18 → 2025-08-19 (+1d) |  |  | 295.5d → 294.59d |
| 1.3.1.2.3.22.2 | **Fire Fighting Works** | 2025-07-30 → 2025-07-31 (+1d) |  |  |  |
| PG-11191 | 1st Fix - Piping and Shaft hydrant works | 2025-07-30 → 2025-07-31 (+1d) |  |  | 318.17d → 317.26d |
| PG-11192 | 2nd Fix - Sprinkler fixing & Pressure testing | 2025-09-06 → 2025-09-08 (+2d) |  |  | 278.5d → 277.59d |
| PG-11195 | 2nd Fix - Wiring works | 2025-08-30 → 2025-09-01 (+2d) |  |  | 284.5d → 283.59d |
| 1.3.1.2.3.23.2 | **Fire Fighting Works** | 2025-08-14 → 2025-08-16 (+2d) |  |  |  |
| PG-11200 | 1st Fix - Piping and Shaft hydrant works | 2025-08-14 → 2025-08-16 (+2d) |  |  | 306.33d → 305.43d |
| PG-11201 | 2nd Fix - Sprinkler fixing & Pressure testing | 2025-09-20 → 2025-09-22 (+2d) |  |  | 266.5d → 265.59d |
| PG-11204 | 2nd Fix - Wiring works | 2025-09-13 → 2025-09-15 (+2d) |  |  | 272.5d → 271.59d |
| PG-11210 | 2nd Fix - Sprinkler fixing & Pressure testing | 2025-10-03 → 2025-10-04 (+1d) |  |  | 257.83d → 256.93d |
| PG-11213 | 2nd Fix - Wiring works | 2025-09-13 → 2025-09-15 (+2d) |  |  | 272.83d → 271.93d |
| 1.3.1.2.3.25 | **Floor 22** |  | 2025-11-29 → 2025-12-01 (+2d) |  |  |
| 1.3.1.2.3.25.1 | **PHE Works** |  | 2025-11-29 → 2025-12-01 (+2d) |  |  |
| PG-11217 | Final Fix - CP & Sanitary fixtures |  | 2025-11-29 → 2025-12-01 (+2d) |  | 229d → 228.09d |
| 1.3.1.2.3.25.2 | **Fire Fighting Works** |  | 2025-11-29 → 2025-12-01 (+2d) |  |  |
| PG-11220 | Final Fix - Smoke & heat detectors, FHC , FAS Etc. |  | 2025-11-29 → 2025-12-01 (+2d) |  | 229d → 228.09d |
| 1.3.1.2.3.25.3 | **Electrical Works** |  | 2025-11-29 → 2025-12-01 (+2d) |  |  |
| PG-11223 | Final Fix - Electrical Fixtures |  | 2025-11-29 → 2025-12-01 (+2d) |  | 229d → 228.09d |
| PG-11224 | 1st Fix - Piping works |  | 2025-10-13 → 2025-10-14 (+1d) |  | 124.83d → 123.93d |
| PG-11225 | 2nd Fix - diverter fixing & Pressure testing |  | 2025-10-20 → 2025-10-21 (+1d) |  | 211d → 210.09d |
| PG-11226 | Final Fix - CP & Sanitary fixtures | 2025-12-09 → 2025-12-10 (+1d) |  |  | 211d → 210.09d |
| PG-11227 | 1st Fix - Piping and Shaft hydrant works |  | 2025-10-23 → 2025-10-24 (+1d) |  | 257.83d → 256.93d |
| PG-11228 | 2nd Fix - Sprinkler fixing & Pressure testing |  | 2025-11-27 → 2025-11-28 (+1d) |  | 221d → 220.09d |
| PG-11229 | Final Fix - Smoke & heat detectors, FHC , FAS Etc. | 2025-12-09 → 2025-12-10 (+1d) |  |  | 211d → 210.09d |
| PG-11230 | 1st Fix - GI wire pulling |  | 2025-10-09 → 2025-10-10 (+1d) |  | 257.83d → 256.93d |
| PG-11231 | 2nd Fix - Wiring works |  | 2025-11-26 → 2025-11-27 (+1d) |  | 226d → 225.09d |
| PG-11232 | Final Fix - Electrical Fixtures | 2025-12-13 → 2025-12-15 (+2d) |  |  | 211d → 210.09d |
| 1.3.1.2.3.27 | **Floor 24** | 2025-10-21 → 2025-10-22 (+1d) |  |  |  |
| 1.3.1.2.3.27.1 | **PHE Works** | 2025-10-21 → 2025-10-22 (+1d) |  |  |  |
| PG-11233 | 1st Fix - Piping works | 2025-10-21 → 2025-10-22 (+1d) |  |  | 124.83d → 123.93d |
| PG-11234 | 2nd Fix - diverter fixing & Pressure testing | 2025-10-30 → 2025-10-31 (+1d) |  |  | 191.83d → 190.93d |
| PG-11237 | 2nd Fix - Sprinkler fixing & Pressure testing | 2025-12-08 → 2025-12-09 (+1d) |  |  | 200.33d → 199.43d |
| 1.3.1.2.3.27.3 | **Electrical Works** | 2025-10-21 → 2025-10-22 (+1d) |  |  |  |
| PG-11239 | 1st Fix - GI wire pulling | 2025-10-21 → 2025-10-22 (+1d) |  |  | 240.5d → 239.59d |
| PG-11240 | 2nd Fix - Wiring works | 2025-12-01 → 2025-12-02 (+1d) |  |  | 205.83d → 204.93d |
| 1.3.1.2.3.28.2 | **Fire Fighting Works** | 2025-11-22 → 2025-11-24 (+2d) |  |  |  |
| PG-11245 | 1st Fix - Piping and Shaft hydrant works | 2025-11-22 → 2025-11-24 (+2d) |  |  | 220d → 219.09d |
| PG-11246 | 2nd Fix - Sprinkler fixing & Pressure testing | 2025-12-30 → 2025-12-31 (+1d) |  |  | 182.33d → 181.43d |
| PG-11249 | 2nd Fix - Wiring works | 2025-12-23 → 2025-12-24 (+1d) |  |  | 188.33d → 187.43d |
| PG-11251 | 1st Fix - Piping works |  | 2025-12-18 → 2025-12-19 (+1d) |  | 124.83d → 123.93d |
| PG-11252 | 2nd Fix - diverter fixing & Pressure testing |  | 2025-12-25 → 2025-12-26 (+1d) |  | 124.83d → 123.93d |
| PG-11253 | Final Fix - CP & Sanitary fixtures | 2026-02-12 → 2026-02-13 (+1d) |  |  | 124.83d → 123.93d |
| PG-11255 | 2nd Fix - Sprinkler fixing & Pressure testing |  | 2026-02-02 → 2026-02-03 (+1d) |  | 133.83d → 132.93d |
| PG-11256 | Final Fix - Smoke & heat detectors, FHC , FAS Etc. | 2026-02-12 → 2026-02-13 (+1d) |  |  | 124.83d → 123.93d |
| PG-11258 | 2nd Fix - Wiring works |  | 2026-01-31 → 2026-02-02 (+2d) |  | 139.83d → 138.93d |
| PG-11259 | Final Fix - Electrical Fixtures | 2026-02-18 → 2026-02-19 (+1d) |  |  | 124.83d → 123.93d |
| PG-11401 | Final Coat Painting |  |  | 68% → 100% | 418.39d → 417.66d |
| PG-11406 | Final Coat Painting |  |  | 67% → 100% | 383.71d → 382.98d |
| 1.3.1.2.4.13 | **Floor 10** |  | 2025-06-09 → 2025-06-13 (+4d) |  |  |
| 1.3.1.2.4.13.1 | **Ceiling Finishing works - Civil** |  | 2025-06-09 → 2025-06-13 (+4d) |  |  |
| PG-11413 | Painting Works - Putty, Primer and 1st |  | 2025-05-19 → 2025-05-20 A (+1d) | 65% → 100% | 404.64d → none |

| ID | Task | Start | Finish | Complete | Total float |
| --- | --- | --- | --- | --- | --- |
| PG-11415 | Final Coat Painting | 2025-05-19 → 2025-05-20 A (+1d) | 2025-06-09 → 2025-06-13 (+4d) | 0% → 3% | 404.64d → 400.58d |
| 1.3.1.2.4.13.2 | **Wall Finishing works - Civil** |  | 2025-06-07 → 2025-06-11 (+4d) |  |  |
| PG-11419 | Painting Works - Putty, Primer and 1st |  | 2025-05-17 → 2025-05-19 A (+2d) | 77% → 100% | 370.04d → none |
| PG-11420 | Final Coat Painting | 2025-05-17 → 2025-05-19 A (+2d) | 2025-06-07 → 2025-06-11 (+4d) | 0% → 8% | 370.04d → 366.14d |
| 1.3.1.2.4.13.3 | **Floor Finishing Works - Civil** |  | 2025-05-17 → 2025-05-19 (+2d) |  |  |
| PG-11424 | Wooden doors |  | 2025-05-17 → 2025-05-19 A (+2d) | 75% → 100% | 370.04d → none |
| PG-11428 | Toilet False ceiling |  | 2025-05-19 A | 58% → 100% | 383.08d → none |
| PG-11431 | UPVC Windows & Sliding doors | 2025-05-19 A |  | 0% → 91% | 358.25d → 357.36d |
| PG-11437 | Floor Tiling - Dry area |  | 2025-05-19 A | 74% → 100% | 358.25d → none |
| PG-11440 | Cornice fixing | 2025-05-17 A | 2025-05-22 A | 0% → 100% | 395.33d → none |
| PG-11446 | Dadoing - Wet area |  | 2025-05-19 → 2025-05-20 A (+1d) | 47% → 100% | 347.75d → none |
| PG-11450 | Floor Tiling - Wet area | 2025-05-19 → 2025-05-20 A (+1d) |  | 0% → 69% | 347.75d → 347.12d |
| PG-11453 | Gypsum Plastering |  | 2025-05-22 → 2025-05-23 A (+1d) | 17% → 100% | 383.07d → none |
| PG-11454 | Cornice fixing | 2025-05-31 → 2025-06-02 (+2d) |  |  | 382.9d → 381.36d |
| PG-11456 | Toilet False ceiling | 2025-06-07 → 2025-06-09 (+2d) | 2025-06-12 → 2025-06-13 (+1d) |  | 362.59d → 361.19d |
| PG-11455 | Painting Works - Putty, Primer and 1st | 2025-06-18 → 2025-06-19 (+1d) | 2025-06-25 → 2025-06-26 (+1d) |  | 371.25d → 369.86d |
| PG-11457 | Final Coat Painting | 2025-06-25 → 2025-06-26 (+1d) |  |  | 371.25d → 369.86d |
| PG-11460 | Dadoing - Wet area | 2025-05-26 → 2025-05-27 (+1d) | 2025-05-31 → 2025-06-02 (+2d) |  | 336.59d → 335.19d |
| PG-11459 | UPVC Windows & Sliding doors | 2025-06-12 → 2025-06-13 (+1d) | 2025-06-18 → 2025-06-19 (+1d) |  | 336.59d → 335.19d |
| PG-11461 | Painting Works - Putty, Primer and 1st | 2025-06-18 → 2025-06-19 (+1d) | 2025-06-25 → 2025-06-26 (+1d) |  | 336.59d → 335.19d |
| PG-11462 | Final Coat Painting | 2025-06-25 → 2025-06-26 (+1d) |  |  | 336.59d → 335.19d |
| 1.3.1.2.4.16.3 | **Floor Finishing Works - Civil** |  | 2025-06-25 → 2025-06-26 (+1d) |  |  |
| PG-11464 | Floor Tiling - Wet area | 2025-05-31 → 2025-06-02 (+2d) | 2025-06-06 → 2025-06-07 (+1d) |  | 336.59d → 335.19d |
| PG-11465 | Floor Tiling - Dry area | 2025-06-06 → 2025-06-07 (+1d) | 2025-06-12 → 2025-06-13 (+1d) |  | 336.59d → 335.19d |
| PG-11466 | Wooden doors | 2025-06-19 → 2025-06-20 (+1d) | 2025-06-25 → 2025-06-26 (+1d) |  | 336.59d → 335.19d |
| 1.3.1.2.4.17 | **Floor 14** | 2025-05-19 → 2025-05-20 (+1d) |  |  |  |
| 1.3.1.2.4.17.1 | **Ceiling Finishing works - Civil** | 2025-05-29 → 2025-05-28 (-1d) |  |  |  |
| PG-11467 | Gypsum Plastering | 2025-05-29 → 2025-05-28 (-1d) | 2025-06-05 → 2025-06-04 (-1d) |  | 370.67d → 370.5d |
| PG-11468 | Cornice fixing | 2025-06-14 → 2025-06-13 (-1d) | 2025-06-19 → 2025-06-18 (-1d) |  | 370.67d → 370.5d |
| PG-11470 | Toilet False ceiling | 2025-06-21 → 2025-06-23 (+2d) | 2025-06-26 → 2025-06-27 (+1d) |  | 351.67d → 350.64d |
| PG-11469 | Painting Works - Putty, Primer and 1st | 2025-07-02 → 2025-07-03 (+1d) | 2025-07-09 → 2025-07-10 (+1d) |  | 359.33d → 358.31d |
| PG-11471 | Final Coat Painting | 2025-07-09 → 2025-07-10 (+1d) |  |  | 359.33d → 358.31d |
| 1.3.1.2.4.17.2 | **Wall Finishing works - Civil** | 2025-05-19 → 2025-05-20 (+1d) |  |  |  |
| PG-11472 | Balcony Railing Fixing works | 2025-05-19 → 2025-05-20 A (+1d) |  | 0% → 85% | 353.67d → 353.09d |
| PG-11474 | Dadoing - Wet area | 2025-06-09 → 2025-06-10 (+1d) | 2025-06-14 → 2025-06-16 (+2d) |  | 324.67d → 323.64d |
| PG-11473 | UPVC Windows & Sliding doors | 2025-06-26 → 2025-06-27 (+1d) | 2025-07-02 → 2025-07-03 (+1d) |  | 324.67d → 323.64d |
| PG-11475 | Painting Works - Putty, Primer and 1st | 2025-07-02 → 2025-07-03 (+1d) | 2025-07-09 → 2025-07-10 (+1d) |  | 324.67d → 323.64d |
| PG-11476 | Final Coat Painting | 2025-07-09 → 2025-07-10 (+1d) |  |  | 324.67d → 323.64d |
| 1.3.1.2.4.17.3 | **Floor Finishing Works - Civil** | 2025-05-19 → 2025-05-20 (+1d) | 2025-07-09 → 2025-07-10 (+1d) |  |  |
| PG-11477 | Waterproofing for sunken areas | 2025-05-19 → 2025-05-20 A (+1d) | 2025-05-22 → 2025-05-23 A (+1d) | 0% → 100% | 344.67d → none |
| PG-11478 | Floor Tiling - Wet area | 2025-06-14 → 2025-06-16 (+2d) | 2025-06-20 → 2025-06-21 (+1d) |  | 324.67d → 323.64d |
| PG-11479 | Floor Tiling - Dry area | 2025-06-20 → 2025-06-21 (+1d) | 2025-06-26 → 2025-06-27 (+1d) |  | 324.67d → 323.64d |
| PG-11480 | Wooden doors | 2025-07-03 → 2025-07-04 (+1d) | 2025-07-09 → 2025-07-10 (+1d) |  | 324.67d → 323.64d |
| PG-11538 | Cornice fixing | 2025-08-18 → 2025-08-19 (+1d) |  |  | 318.17d → 317.26d |
| 1.3.1.2.4.25 | **Floor 22** |  | 2025-11-22 → 2025-11-24 (+2d) |  |  |
| 1.3.1.2.4.25.1 | **Ceiling Finishing works - Civil** |  | 2025-11-22 → 2025-11-24 (+2d) |  |  |
| PG-11583 | Final Coat Painting |  | 2025-11-22 → 2025-11-24 (+2d) |  | 263.67d → 262.76d |
| 1.3.1.2.4.25.2 | **Wall Finishing works - Civil** |  | 2025-11-22 → 2025-11-24 (+2d) |  |  |
| PG-11588 | Final Coat Painting |  | 2025-11-22 → 2025-11-24 (+2d) |  | 229d → 228.09d |
| 1.3.1.2.4.26.1 | **Ceiling Finishing works - Civil** | 2025-10-09 → 2025-10-10 (+1d) |  |  |  |
| PG-11593 | Gypsum Plastering | 2025-10-09 → 2025-10-10 (+1d) | 2025-10-16 → 2025-10-17 (+1d) |  | 257.83d → 256.93d |
| PG-11594 | Cornice fixing | 2025-10-25 → 2025-10-27 (+2d) | 2025-10-30 → 2025-10-31 (+1d) |  | 257.83d → 256.93d |
| PG-11596 | Toilet False ceiling | 2025-11-03 → 2025-11-04 (+1d) | 2025-11-07 → 2025-11-08 (+1d) |  | 238d → 237.09d |
| PG-11595 | Painting Works - Putty, Primer and 1st | 2025-11-13 → 2025-11-14 (+1d) | 2025-11-20 → 2025-11-21 (+1d) |  | 246.83d → 245.93d |
| PG-11597 | Final Coat Painting | 2025-11-20 → 2025-11-21 (+1d) |  |  | 246.83d → 245.93d |
| PG-11600 | Dadoing - Wet area | 2025-10-20 → 2025-10-21 (+1d) | 2025-10-25 → 2025-10-27 (+2d) |  | 211d → 210.09d |
| PG-11599 | UPVC Windows & Sliding doors | 2025-11-07 → 2025-11-08 (+1d) | 2025-11-13 → 2025-11-14 (+1d) |  | 211d → 210.09d |
| PG-11601 | Painting Works - Putty, Primer and 1st | 2025-11-13 → 2025-11-14 (+1d) | 2025-11-20 → 2025-11-21 (+1d) |  | 211d → 210.09d |
| PG-11602 | Final Coat Painting | 2025-11-20 → 2025-11-21 (+1d) |  |  | 211d → 210.09d |
| 1.3.1.2.4.26.3 | **Floor Finishing Works - Civil** |  | 2025-11-20 → 2025-11-21 (+1d) |  |  |
| PG-11604 | Floor Tiling - Wet area | 2025-10-25 → 2025-10-27 (+2d) | 2025-10-31 → 2025-11-03 (+3d) |  | 211d → 210.09d |
| PG-11605 | Floor Tiling - Dry area | 2025-10-31 → 2025-11-03 (+3d) | 2025-11-07 → 2025-11-08 (+1d) |  | 211d → 210.09d |
| PG-11606 | Wooden doors | 2025-11-14 → 2025-11-15 (+1d) | 2025-11-20 → 2025-11-21 (+1d) |  | 211d → 210.09d |
| 1.3.1.2.4.27 | **Floor 24** | 2025-10-21 → 2025-10-22 (+1d) |  |  |  |
| PG-11608 | Cornice fixing | 2025-11-17 → 2025-11-18 (+1d) |  |  | 240.5d → 239.59d |
| 1.3.1.2.4.27.2 | **Wall Finishing works - Civil** | 2025-10-21 → 2025-10-22 (+1d) |  |  |  |
| PG-11612 | Balcony Railing Fixing works | 2025-10-21 → 2025-10-22 (+1d) | 2025-10-25 → 2025-10-27 (+2d) |  | 220.5d → 219.59d |
| 1.3.1.2.4.27.3 | **Floor Finishing Works - Civil** | 2025-10-21 → 2025-10-22 (+1d) |  |  |  |
| PG-11617 | Waterproofing for sunken areas | 2025-10-21 → 2025-10-22 (+1d) | 2025-10-24 → 2025-10-25 (+1d) |  | 211.5d → 210.59d |
| PG-11638 | Toilet False ceiling | 2026-01-07 → 2026-01-08 (+1d) | 2026-01-12 → 2026-01-13 (+1d) |  | 150.83d → 149.93d |

| ID | Task | Start | Finish | Complete | Total float |
| --- | --- | --- | --- | --- | --- |
| PG-11637 | Painting Works - Putty, Primer and 1st | 2026-01-17 → 2026-01-19 (+2d) | 2026-01-24 → 2026-01-27 (+3d) |  | 191.17d → 190.26d |
| PG-11639 | Final Coat Painting | 2026-01-24 → 2026-01-27 (+3d) |  |  | 191.17d → 190.26d |
| PG-11642 | Dadoing - Wet area | 2025-12-25 → 2025-12-26 (+1d) | 2025-12-31 → 2026-01-01 (+1d) |  | 124.83d → 123.93d |
| PG-11641 | UPVC Windows & Sliding doors | 2026-01-12 → 2026-01-13 (+1d) | 2026-01-17 → 2026-01-19 (+2d) |  | 124.83d → 123.93d |
| PG-11643 | Painting Works - Putty, Primer and 1st | 2026-01-17 → 2026-01-19 (+2d) | 2026-01-24 → 2026-01-27 (+3d) |  | 124.83d → 123.93d |
| PG-11644 | Final Coat Painting | 2026-01-24 → 2026-01-27 (+3d) |  |  | 124.83d → 123.93d |
| 1.3.1.2.4.29.3 | **Floor Finishing Works - Civil** |  | 2026-01-24 → 2026-01-27 (+3d) |  |  |
| PG-11646 | Floor Tiling - Wet area | 2025-12-31 → 2026-01-01 (+1d) | 2026-01-06 → 2026-01-07 (+1d) |  | 124.83d → 123.93d |
| PG-11647 | Floor Tiling - Dry area | 2026-01-06 → 2026-01-07 (+1d) | 2026-01-12 → 2026-01-13 (+1d) |  | 124.83d → 123.93d |
| PG-11648 | Wooden doors | 2026-01-19 → 2026-01-20 (+1d) | 2026-01-24 → 2026-01-27 (+3d) |  | 124.83d → 123.93d |
| PG-11673 | Lift Wall Cladding Works | 2026-01-12 → 2026-01-13 (+1d) |  |  | 157.17d → 156.26d |
| PG-11694 | Tray Works |  | 2025-10-15 → 2025-10-16 (+1d) |  | 228.17d → 227.26d |
| PG-11695 | Cable & Conducting works | 2025-10-15 → 2025-10-16 (+1d) |  |  | 228.17d → 227.26d |
| 1.3.1.2.7.2 | **FPS** |  | 2025-11-13 → 2025-11-14 (+1d) |  |  |
| PG-11697 | Shaft MS Piping & fixtures installation |  | 2025-10-27 → 2025-10-28 (+1d) |  | 228d → 227.09d |
| PG-11698 | Tray / cabling / conducting & wiring works | 2025-10-27 → 2025-10-28 (+1d) | 2025-11-13 → 2025-11-14 (+1d) |  | 228d → 227.09d |
| PG-11708 | Lift Frame fixing works |  | 2026-01-12 → 2026-01-13 (+1d) |  | 121.5d → 120.59d |
| PG-11709 | CAR Assembly works | 2026-01-12 → 2026-01-13 (+1d) |  |  | 121.5d → 120.59d |
| PG-11721 | Painting Works |  | 2026-06-15 → 2026-06-16 (+1d) |  | 16d → 15.09d |
| PG-11723 | Interior Works | 2026-06-15 → 2026-06-16 (+1d) |  |  | 16d → 15.09d |
| 1.3.1.3 | **Tower 3 ( 2B+G+29 ) TYP 4 Units - 118 Units** |  | 2026-10-19 → 2026-10-17 (-2d) |  |  |
| 1.3.1.3.2 | **Structure works** |  | 2026-01-12 → 2026-01-10 (-2d) |  |  |
| 1.3.1.3.2.17 | **Floor 14** |  | 2025-05-19 → 2025-05-20 (+1d) |  |  |
| 1.3.1.3.2.17.2 | **Slab, Beams & Staircase** |  | 2025-05-19 → 2025-05-20 (+1d) |  |  |
| PG-11822 | Reinforcement |  | 2025-05-17 → 2025-05-19 A (+2d) | 61% → 100% | 0d → none |
| PG-11823 | Concrete | 2025-05-17 → 2025-05-19 A (+2d) | 2025-05-19 → 2025-05-20 A (+1d) | 0% → 100% | 0d → none |
| 1.3.1.3.2.18 | **Floor 15** | 2025-05-19 → 2025-05-20 (+1d) |  |  |  |
| 1.3.1.3.2.18.1 | **Columns / shear walls** | 2025-05-19 → 2025-05-20 (+1d) |  |  |  |
| PG-11824 | Reinforcement | 2025-05-19 → 2025-05-20 A (+1d) |  | 0% → 95% |  |
| 1.3.1.3.2.33 | **Above Terrace Floor** |  | 2026-01-12 → 2026-01-10 (-2d) |  |  |
| 1.3.1.3.2.33.1 | **Columns / shear walls/Parapet Walls** |  | 2025-12-17 → 2025-12-16 (-1d) |  |  |
| PG-11901 | Concrete |  | 2025-12-17 → 2025-12-16 (-1d) |  |  |
| 1.3.1.3.2.33.2 | **Slab, Beams & Staircase Head rooms, Lift headroom** |  | 2026-01-12 → 2026-01-10 (-2d) |  |  |
| PG-11905 | Terrace Waterproofing and Protective finishing. |  | 2026-01-12 → 2026-01-10 (-2d) |  |  |
| PG-11902 | Formwork | 2025-12-17 → 2025-12-16 (-1d) | 2025-12-23 → 2025-12-22 (-1d) |  |  |
| PG-11903 | Reinforcement | 2025-12-23 → 2025-12-22 (-1d) | 2025-12-29 → 2025-12-27 (-2d) |  |  |
| PG-11904 | Concrete | 2025-12-29 → 2025-12-27 (-2d) | 2025-12-31 → 2025-12-30 (-1d) |  |  |
| 1.3.1.3.3.7 | **Floor 4** |  | 2025-05-21 → 2025-05-22 (+1d) |  |  |
| 1.3.1.3.3.7.1 | **PHE Works** |  | 2025-05-21 → 2025-05-22 (+1d) |  |  |
| PG-11951 | Final Fix - CP & Sanitary fixtures |  | 2025-05-21 → 2025-05-22 A (+1d) | 51% → 100% | 389.5d → none |
| PG-11954 | Final Fix - Smoke & heat detectors, FHC , FAS Etc. |  | 2025-05-21 A | 57% → 100% | 389.5d → none |
| PG-11957 | Final Fix - Electrical Fixtures |  | 2025-05-21 A | 38% → 100% | 389.5d → none |
| PG-11969 | Final Fix - CP & Sanitary fixtures | 2025-06-09 → 2025-06-10 (+1d) |  |  | 365.82d → 364.28d |
| PG-11971 | 2nd Fix - Sprinkler fixing & Pressure testing | 2025-05-16 → 2025-05-17 A (+1d) | 2025-05-28 → 2025-05-29 (+1d) | 0% → 55% | 376.14d → 374.44d |
| PG-11972 | Final Fix - Smoke & heat detectors, FHC , FAS Etc. | 2025-06-09 → 2025-06-10 (+1d) |  |  | 365.82d → 364.28d |
| PG-11974 | 2nd Fix - Wiring works |  | 2025-05-27 → 2025-05-28 (+1d) | 29% → 73% | 380.76d → 379.44d |
| PG-11975 | Final Fix - Electrical Fixtures | 2025-06-13 → 2025-06-14 (+1d) |  |  | 365.82d → 364.28d |
| 1.3.1.3.3.10 | **Floor 7** |  | 2025-07-04 → 2025-07-05 (+1d) |  |  |
| 1.3.1.3.3.10.1 | **PHE Works** |  | 2025-07-04 → 2025-07-05 (+1d) |  |  |
| PG-11978 | Final Fix - CP & Sanitary fixtures | 2025-06-25 → 2025-06-26 (+1d) | 2025-07-04 → 2025-07-05 (+1d) |  | 354.28d → 352.52d |
| 1.3.1.3.3.10.2 | **Fire Fighting Works** |  | 2025-07-04 → 2025-07-05 (+1d) |  |  |
| PG-11980 | 2nd Fix - Sprinkler fixing & Pressure testing | 2025-06-02 → 2025-06-03 (+1d) | 2025-06-13 → 2025-06-14 (+1d) |  | 364.28d → 362.52d |
| PG-11981 | Final Fix - Smoke & heat detectors, FHC , FAS Etc. | 2025-06-25 → 2025-06-26 (+1d) | 2025-07-04 → 2025-07-05 (+1d) |  | 354.28d → 352.52d |
| 1.3.1.3.3.10.3 | **Electrical Works** |  | 2025-07-04 → 2025-07-05 (+1d) |  |  |
| PG-11983 | 2nd Fix - Wiring works | 2025-05-26 → 2025-05-27 (+1d) | 2025-06-12 → 2025-06-13 (+1d) |  | 368.28d → 366.52d |
| PG-11984 | Final Fix - Electrical Fixtures | 2025-06-28 → 2025-06-30 (+2d) | 2025-07-04 → 2025-07-05 (+1d) |  | 354.28d → 352.52d |
| 1.3.1.3.3.11 | **Floor 8** |  | 2025-07-23 → 2025-07-24 (+1d) |  |  |
| 1.3.1.3.3.11.1 | **PHE Works** |  | 2025-07-23 → 2025-07-24 (+1d) |  |  |
| PG-11985 | 1st Fix - Piping works |  | 2025-05-16 → 2025-05-17 A (+1d) | 94% → 100% | 337.67d → none |
| PG-11986 | 2nd Fix - diverter fixing & Pressure testing |  | 2025-05-23 → 2025-05-24 (+1d) | 32% → 92% | 337.64d → 335.94d |
| PG-11987 | Final Fix - CP & Sanitary fixtures | 2025-07-11 → 2025-07-12 (+1d) | 2025-07-23 → 2025-07-24 (+1d) |  | 337.64d → 335.94d |
| 1.3.1.3.3.11.2 | **Fire Fighting Works** |  | 2025-07-23 → 2025-07-24 (+1d) |  |  |
| PG-11988 | 1st Fix - Piping and Shaft hydrant works |  | 2025-05-26 → 2025-05-27 (+1d) | 25% → 76% | 383.33d → 381.86d |
| PG-11989 | 2nd Fix - Sprinkler fixing & Pressure testing | 2025-06-18 → 2025-06-19 (+1d) | 2025-06-30 → 2025-07-01 (+1d) |  | 347.64d → 345.94d |
| PG-11990 | Final Fix - Smoke & heat detectors, FHC , FAS Etc. | 2025-07-11 → 2025-07-12 (+1d) | 2025-07-23 → 2025-07-24 (+1d) |  | 337.64d → 335.94d |
| 1.3.1.3.3.11.3 | **Electrical Works** |  | 2025-07-23 → 2025-07-24 (+1d) |  |  |
| PG-11992 | 2nd Fix - Wiring works | 2025-06-13 → 2025-06-14 (+1d) | 2025-06-28 → 2025-06-30 (+2d) |  | 352.64d → 350.94d |
| PG-11993 | Final Fix - Electrical Fixtures | 2025-07-16 → 2025-07-17 (+1d) | 2025-07-23 → 2025-07-24 (+1d) |  | 337.64d → 335.94d |
| 1.3.1.3.3.12 | **Floor 9** | 2025-05-19 → 2025-05-20 (+1d) |  |  |  |
| 1.3.1.3.3.12.1 | **PHE Works** | 2025-05-19 → 2025-05-20 (+1d) |  |  |  |

| ID | Task | Start | Finish | Complete | Total float |
| --- | --- | --- | --- | --- | --- |
| PG-11994 | 1st Fix - Piping works | 2025-05-19 → 2025-05-20 A (+1d) |  | 0% → 27% | 325.33d → 324.72d |
| PG-11996 | Final Fix - CP & Sanitary fixtures | 2025-07-26 → 2025-07-25 (-1d) |  |  | 325.33d → 324.72d |
| PG-11999 | Final Fix - Smoke & heat detectors, FHC , FAS Etc. | 2025-07-26 → 2025-07-25 (-1d) |  |  | 325.33d → 324.72d |
| 1.3.1.3.3.12.3 | **Electrical Works** | 2025-05-19 → 2025-05-20 (+1d) |  |  |  |
| PG-12000 | 1st Fix - GI wire pulling | 2025-05-19 → 2025-05-20 A (+1d) |  | 0% → 38% | 371.17d → 370.34d |
| 1.3.1.3.3.13 | **Floor 10** |  | 2025-08-23 → 2025-08-22 (-1d) |  |  |
| 1.3.1.3.3.13.1 | **PHE Works** |  | 2025-08-23 → 2025-08-22 (-1d) |  |  |
| PG-12005 | Final Fix - CP & Sanitary fixtures |  | 2025-08-23 → 2025-08-22 (-1d) |  |  |
| 1.3.1.3.3.13.2 | **Fire Fighting Works** | 2025-06-12 → 2025-06-11 (-1d) | 2025-08-23 → 2025-08-22 (-1d) |  |  |
| PG-12006 | 1st Fix - Piping and Shaft hydrant works | 2025-06-12 → 2025-06-11 (-1d) | 2025-06-26 → 2025-06-25 (-1d) |  |  |
| PG-12008 | Final Fix - Smoke & heat detectors, FHC , FAS Etc. |  | 2025-08-23 → 2025-08-22 (-1d) |  |  |
| 1.3.1.3.3.13.3 | **Electrical Works** |  | 2025-08-23 → 2025-08-22 (-1d) |  |  |
| PG-12009 | 1st Fix - GI wire pulling |  | 2025-06-12 → 2025-06-11 (-1d) |  |  |
| PG-12010 | 2nd Fix - Wiring works | 2025-07-16 → 2025-07-15 (-1d) |  |  |  |
| PG-12011 | Final Fix - Electrical Fixtures |  | 2025-08-23 → 2025-08-22 (-1d) |  |  |
| 1.3.1.3.3.14 | **Floor 11** |  | 2025-09-05 → 2025-09-04 (-1d) |  |  |
| 1.3.1.3.3.14.1 | **PHE Works** |  | 2025-09-05 → 2025-09-04 (-1d) |  |  |
| PG-12014 | Final Fix - CP & Sanitary fixtures |  | 2025-09-05 → 2025-09-04 (-1d) |  |  |
| 1.3.1.3.3.14.2 | **Fire Fighting Works** |  | 2025-09-05 → 2025-09-04 (-1d) |  |  |
| PG-12017 | Final Fix - Smoke & heat detectors, FHC , FAS Etc. |  | 2025-09-05 → 2025-09-04 (-1d) |  |  |
| 1.3.1.3.3.14.3 | **Electrical Works** |  | 2025-09-05 → 2025-09-04 (-1d) |  |  |
| PG-12019 | 2nd Fix - Wiring works | 2025-07-29 → 2025-07-28 (-1d) |  |  |  |
| PG-12020 | Final Fix - Electrical Fixtures |  | 2025-09-05 → 2025-09-04 (-1d) |  |  |
| 1.3.1.3.3.15 | **Floor 12** |  | 2025-09-22 → 2025-09-20 (-2d) |  |  |
| 1.3.1.3.3.15.1 | **PHE Works** |  | 2025-09-22 → 2025-09-20 (-2d) |  |  |
| PG-12023 | Final Fix - CP & Sanitary fixtures |  | 2025-09-22 → 2025-09-20 (-2d) |  |  |
| 1.3.1.3.3.15.2 | **Fire Fighting Works** | 2025-07-08 → 2025-07-07 (-1d) | 2025-09-22 → 2025-09-20 (-2d) |  |  |
| PG-12024 | 1st Fix - Piping and Shaft hydrant works | 2025-07-08 → 2025-07-07 (-1d) | 2025-07-22 → 2025-07-21 (-1d) |  |  |
| PG-12026 | Final Fix - Smoke & heat detectors, FHC , FAS Etc. |  | 2025-09-22 → 2025-09-20 (-2d) |  |  |
| 1.3.1.3.3.15.3 | **Electrical Works** |  | 2025-09-22 → 2025-09-20 (-2d) |  |  |
| PG-12027 | 1st Fix - GI wire pulling |  | 2025-07-08 → 2025-07-07 (-1d) |  |  |
| PG-12028 | 2nd Fix - Wiring works | 2025-08-09 → 2025-08-08 (-1d) |  |  |  |
| PG-12029 | Final Fix - Electrical Fixtures |  | 2025-09-22 → 2025-09-20 (-2d) |  |  |
| 1.3.1.3.3.16 | **Floor 13** |  | 2025-10-06 → 2025-10-04 (-2d) |  |  |
| 1.3.1.3.3.16.1 | **PHE Works** |  | 2025-10-06 → 2025-10-04 (-2d) |  |  |
| PG-12032 | Final Fix - CP & Sanitary fixtures |  | 2025-10-06 → 2025-10-04 (-2d) |  |  |
| 1.3.1.3.3.16.2 | **Fire Fighting Works** | 2025-07-21 → 2025-07-19 (-2d) | 2025-10-06 → 2025-10-04 (-2d) |  |  |
| PG-12033 | 1st Fix - Piping and Shaft hydrant works | 2025-07-21 → 2025-07-19 (-2d) | 2025-08-04 → 2025-08-02 (-2d) |  |  |
| PG-12035 | Final Fix - Smoke & heat detectors, FHC , FAS Etc. |  | 2025-10-06 → 2025-10-04 (-2d) |  |  |
| 1.3.1.3.3.16.3 | **Electrical Works** |  | 2025-10-06 → 2025-10-04 (-2d) |  |  |
| PG-12036 | 1st Fix - GI wire pulling |  | 2025-07-21 → 2025-07-19 (-2d) |  |  |
| PG-12037 | 2nd Fix - Wiring works | 2025-08-23 → 2025-08-22 (-1d) |  |  |  |
| PG-12038 | Final Fix - Electrical Fixtures |  | 2025-10-06 → 2025-10-04 (-2d) |  |  |
| 1.3.1.3.3.17 | **Floor 14** |  | 2025-10-16 → 2025-10-15 (-1d) |  |  |
| 1.3.1.3.3.17.1 | **PHE Works** |  | 2025-10-16 → 2025-10-15 (-1d) |  |  |
| PG-12041 | Final Fix - CP & Sanitary fixtures |  | 2025-10-16 → 2025-10-15 (-1d) |  |  |
| 1.3.1.3.3.17.2 | **Fire Fighting Works** | 2025-08-02 → 2025-08-01 (-1d) | 2025-10-16 → 2025-10-15 (-1d) |  |  |
| PG-12042 | 1st Fix - Piping and Shaft hydrant works | 2025-08-02 → 2025-08-01 (-1d) | 2025-08-18 → 2025-08-16 (-2d) |  |  |
| PG-12044 | Final Fix - Smoke & heat detectors, FHC , FAS Etc. |  | 2025-10-16 → 2025-10-15 (-1d) |  |  |
| 1.3.1.3.3.17.3 | **Electrical Works** |  | 2025-10-16 → 2025-10-15 (-1d) |  |  |
| PG-12045 | 1st Fix - GI wire pulling |  | 2025-08-02 → 2025-08-01 (-1d) |  |  |
| PG-12046 | 2nd Fix - Wiring works | 2025-09-04 → 2025-09-03 (-1d) |  |  |  |
| PG-12047 | Final Fix - Electrical Fixtures |  | 2025-10-16 → 2025-10-15 (-1d) |  |  |
| 1.3.1.3.3.18.2 | **Fire Fighting Works** | 2025-08-16 → 2025-08-14 (-2d) |  |  |  |
| PG-12051 | 1st Fix - Piping and Shaft hydrant works | 2025-08-16 → 2025-08-14 (-2d) | 2025-08-30 → 2025-08-29 (-1d) |  |  |
| PG-12054 | 1st Fix - GI wire pulling |  | 2025-08-16 → 2025-08-14 (-2d) |  |  |
| 1.3.1.3.3.19 | **Floor 16** |  | 2025-11-12 → 2025-11-11 (-1d) |  |  |
| 1.3.1.3.3.19.1 | **PHE Works** |  | 2025-11-12 → 2025-11-11 (-1d) |  |  |
| PG-12059 | Final Fix - CP & Sanitary fixtures |  | 2025-11-12 → 2025-11-11 (-1d) |  |  |
| 1.3.1.3.3.19.2 | **Fire Fighting Works** | 2025-08-29 → 2025-08-28 (-1d) | 2025-11-12 → 2025-11-11 (-1d) |  |  |
| PG-12060 | 1st Fix - Piping and Shaft hydrant works | 2025-08-29 → 2025-08-28 (-1d) | 2025-09-12 → 2025-09-11 (-1d) |  |  |
| PG-12062 | Final Fix - Smoke & heat detectors, FHC , FAS Etc. |  | 2025-11-12 → 2025-11-11 (-1d) |  |  |
| 1.3.1.3.3.19.3 | **Electrical Works** |  | 2025-11-12 → 2025-11-11 (-1d) |  |  |
| PG-12063 | 1st Fix - GI wire pulling |  | 2025-08-29 → 2025-08-28 (-1d) |  |  |
| PG-12064 | 2nd Fix - Wiring works | 2025-10-03 → 2025-10-01 (-2d) |  |  |  |
| PG-12065 | Final Fix - Electrical Fixtures |  | 2025-11-12 → 2025-11-11 (-1d) |  |  |
| 1.3.1.3.3.20 | **Floor 17** |  | 2025-11-24 → 2025-11-22 (-2d) |  |  |
| 1.3.1.3.3.20.1 | **PHE Works** |  | 2025-11-24 → 2025-11-22 (-2d) |  |  |
| PG-12068 | Final Fix - CP & Sanitary fixtures |  | 2025-11-24 → 2025-11-22 (-2d) |  |  |
| 1.3.1.3.3.20.2 | **Fire Fighting Works** | 2025-09-11 → 2025-09-10 (-1d) | 2025-11-24 → 2025-11-22 (-2d) |  |  |

| ID | Task | Start | Finish |
| --- | --- | --- | --- |
| PG-12069 | 1st Fix - Piping and Shaft hydrant works | 2025-09-11 → 2025-09-10 (-1d) | 2025-09-25 → 2025-09-24 (-1d) |
| PG-12071 | Final Fix - Smoke & heat detectors, FHC , FAS Etc. |  | 2025-11-24 → 2025-11-22 (-2d) |
| 1.3.1.3.3.20.3 | **Electrical Works** |  | 2025-11-24 → 2025-11-22 (-2d) |
| PG-12072 | 1st Fix - GI wire pulling |  | 2025-09-11 → 2025-09-10 (-1d) |
| PG-12073 | 2nd Fix - Wiring works | 2025-10-15 → 2025-10-14 (-1d) |  |
| PG-12074 | Final Fix - Electrical Fixtures |  | 2025-11-24 → 2025-11-22 (-2d) |
| 1.3.1.3.3.21 | **Floor 18** |  | 2025-12-06 → 2025-12-05 (-1d) |
| 1.3.1.3.3.21.1 | **PHE Works** |  | 2025-12-06 → 2025-12-05 (-1d) |
| PG-12077 | Final Fix - CP & Sanitary fixtures |  | 2025-12-06 → 2025-12-05 (-1d) |
| 1.3.1.3.3.21.2 | **Fire Fighting Works** | 2025-09-24 → 2025-09-23 (-1d) | 2025-12-06 → 2025-12-05 (-1d) |
| PG-12078 | 1st Fix - Piping and Shaft hydrant works | 2025-09-24 → 2025-09-23 (-1d) | 2025-10-09 → 2025-10-08 (-1d) |
| PG-12080 | Final Fix - Smoke & heat detectors, FHC , FAS Etc. |  | 2025-12-06 → 2025-12-05 (-1d) |
| 1.3.1.3.3.21.3 | **Electrical Works** |  | 2025-12-06 → 2025-12-05 (-1d) |
| PG-12081 | 1st Fix - GI wire pulling |  | 2025-09-24 → 2025-09-23 (-1d) |
| PG-12082 | 2nd Fix - Wiring works | 2025-10-28 → 2025-10-27 (-1d) |  |
| PG-12083 | Final Fix - Electrical Fixtures |  | 2025-12-06 → 2025-12-05 (-1d) |
| 1.3.1.3.3.22 | **Floor 19** |  | 2025-12-19 → 2025-12-18 (-1d) |
| 1.3.1.3.3.22.1 | **PHE Works** |  | 2025-12-19 → 2025-12-18 (-1d) |
| PG-12086 | Final Fix - CP & Sanitary fixtures |  | 2025-12-19 → 2025-12-18 (-1d) |
| 1.3.1.3.3.22.2 | **Fire Fighting Works** | 2025-10-08 → 2025-10-07 (-1d) | 2025-12-19 → 2025-12-18 (-1d) |
| PG-12087 | 1st Fix - Piping and Shaft hydrant works | 2025-10-08 → 2025-10-07 (-1d) | 2025-10-22 → 2025-10-21 (-1d) |
| PG-12089 | Final Fix - Smoke & heat detectors, FHC , FAS Etc. |  | 2025-12-19 → 2025-12-18 (-1d) |
| 1.3.1.3.3.22.3 | **Electrical Works** |  | 2025-12-19 → 2025-12-18 (-1d) |
| PG-12090 | 1st Fix - GI wire pulling |  | 2025-10-08 → 2025-10-07 (-1d) |
| PG-12091 | 2nd Fix - Wiring works | 2025-11-11 → 2025-11-10 (-1d) |  |
| PG-12092 | Final Fix - Electrical Fixtures |  | 2025-12-19 → 2025-12-18 (-1d) |
| 1.3.1.3.3.23 | **Floor 20** |  | 2026-01-02 → 2026-01-01 (-1d) |
| 1.3.1.3.3.23.1 | **PHE Works** |  | 2026-01-02 → 2026-01-01 (-1d) |
| PG-12095 | Final Fix - CP & Sanitary fixtures |  | 2026-01-02 → 2026-01-01 (-1d) |
| 1.3.1.3.3.23.2 | **Fire Fighting Works** |  | 2026-01-02 → 2026-01-01 (-1d) |
| PG-12098 | Final Fix - Smoke & heat detectors, FHC , FAS Etc. |  | 2026-01-02 → 2026-01-01 (-1d) |
| 1.3.1.3.3.23.3 | **Electrical Works** |  | 2026-01-02 → 2026-01-01 (-1d) |
| PG-12100 | 2nd Fix - Wiring works | 2025-11-24 → 2025-11-22 (-2d) |  |
| PG-12101 | Final Fix - Electrical Fixtures |  | 2026-01-02 → 2026-01-01 (-1d) |
| 1.3.1.3.3.24 | **Floor 21** |  | 2026-01-15 → 2026-01-14 (-1d) |
| 1.3.1.3.3.24.1 | **PHE Works** |  | 2026-01-15 → 2026-01-14 (-1d) |
| PG-12102 | 1st Fix - Piping works |  | 2025-11-08 → 2025-11-07 (-1d) |
| PG-12103 | 2nd Fix - diverter fixing & Pressure testing |  | 2025-11-15 → 2025-11-14 (-1d) |
| PG-12104 | Final Fix - CP & Sanitary fixtures | 2026-01-02 → 2026-01-01 (-1d) | 2026-01-15 → 2026-01-14 (-1d) |
| 1.3.1.3.3.24.2 | **Fire Fighting Works** |  | 2026-01-15 → 2026-01-14 (-1d) |
| PG-12106 | 2nd Fix - Sprinkler fixing & Pressure testing | 2025-12-12 → 2025-12-11 (-1d) | 2025-12-23 → 2025-12-22 (-1d) |
| PG-12107 | Final Fix - Smoke & heat detectors, FHC , FAS Etc. | 2026-01-02 → 2026-01-01 (-1d) | 2026-01-15 → 2026-01-14 (-1d) |
| 1.3.1.3.3.24.3 | **Electrical Works** |  | 2026-01-02 → 2026-01-01 (-1d) |
| PG-12109 | 2nd Fix - Wiring works | 2025-11-24 → 2025-11-22 (-2d) |  |
| PG-12110 | Final Fix - Electrical Fixtures |  | 2026-01-02 → 2026-01-01 (-1d) |
| 1.3.1.3.3.25 | **Floor 22** |  | 2026-01-29 → 2026-01-28 (-1d) |
| 1.3.1.3.3.25.1 | **PHE Works** |  | 2026-01-29 → 2026-01-28 (-1d) |
| PG-12111 | 1st Fix - Piping works |  | 2025-11-21 → 2025-11-20 (-1d) |
| PG-12112 | 2nd Fix - diverter fixing & Pressure testing |  | 2025-11-28 → 2025-11-27 (-1d) |
| PG-12113 | Final Fix - CP & Sanitary fixtures | 2026-01-15 → 2026-01-14 (-1d) | 2026-01-29 → 2026-01-28 (-1d) |
| 1.3.1.3.3.25.2 | **Fire Fighting Works** |  | 2026-01-29 → 2026-01-28 (-1d) |
| PG-12115 | 2nd Fix - Sprinkler fixing & Pressure testing | 2025-12-25 → 2025-12-24 (-1d) | 2026-01-05 → 2026-01-03 (-2d) |
| PG-12116 | Final Fix - Smoke & heat detectors, FHC , FAS Etc. | 2026-01-15 → 2026-01-14 (-1d) | 2026-01-29 → 2026-01-28 (-1d) |
| 1.3.1.3.3.25.3 | **Electrical Works** |  | 2026-01-29 → 2026-01-28 (-1d) |
| PG-12118 | 2nd Fix - Wiring works | 2025-12-19 → 2025-12-18 (-1d) | 2026-01-03 → 2026-01-02 (-1d) |
| PG-12119 | Final Fix - Electrical Fixtures | 2026-01-21 → 2026-01-20 (-1d) | 2026-01-29 → 2026-01-28 (-1d) |
| PG-12120 | 1st Fix - Piping works |  | 2025-12-03 → 2025-12-02 (-1d) |
| PG-12121 | 2nd Fix - diverter fixing & Pressure testing |  | 2025-12-10 → 2025-12-09 (-1d) |
| PG-12122 | Final Fix - CP & Sanitary fixtures | 2026-01-30 → 2026-01-29 (-1d) |  |
| PG-12123 | 1st Fix - Piping and Shaft hydrant works |  | 2025-12-12 → 2025-12-11 (-1d) |
| PG-12124 | 2nd Fix - Sprinkler fixing & Pressure testing |  | 2026-01-16 → 2026-01-15 (-1d) |
| PG-12125 | Final Fix - Smoke & heat detectors, FHC , FAS Etc. | 2026-01-30 → 2026-01-29 (-1d) |  |
| PG-12126 | 1st Fix - GI wire pulling |  | 2025-11-28 → 2025-11-27 (-1d) |
| PG-12127 | 2nd Fix - Wiring works |  | 2026-01-15 → 2026-01-14 (-1d) |
| PG-12128 | Final Fix - Electrical Fixtures | 2026-02-04 → 2026-02-03 (-1d) |  |
| 1.3.1.3.3.27 | **Floor 24** |  | 2026-02-24 → 2026-02-23 (-1d) |
| 1.3.1.3.3.27.1 | **PHE Works** |  | 2026-02-24 → 2026-02-23 (-1d) |
| PG-12129 | 1st Fix - Piping works |  | 2025-12-17 → 2025-12-16 (-1d) |
| PG-12130 | 2nd Fix - diverter fixing & Pressure testing |  | 2025-12-24 → 2025-12-23 (-1d) |
| PG-12131 | Final Fix - CP & Sanitary fixtures | 2026-02-12 → 2026-02-11 (-1d) | 2026-02-24 → 2026-02-23 (-1d) |

| ID | Task | Start | Finish |
| --- | --- | --- | --- |
| 1.3.1.3.3.27.2 | **Fire Fighting Works** | 2025-12-13 → 2025-12-12 (-1d) | 2026-02-24 → 2026-02-23 (-1d) |
| PG-12132 | 1st Fix - Piping and Shaft hydrant works | 2025-12-13 → 2025-12-12 (-1d) | 2025-12-26 → 2025-12-25 (-1d) |
| PG-12133 | 2nd Fix - Sprinkler fixing & Pressure testing | 2026-01-19 → 2026-01-17 (-2d) | 2026-01-31 → 2026-01-30 (-1d) |
| PG-12134 | Final Fix - Smoke & heat detectors, FHC , FAS Etc. | 2026-02-12 → 2026-02-11 (-1d) | 2026-02-24 → 2026-02-23 (-1d) |
| 1.3.1.3.3.27.3 | **Electrical Works** |  | 2026-02-24 → 2026-02-23 (-1d) |
| PG-12135 | 1st Fix - GI wire pulling |  | 2025-12-12 → 2025-12-11 (-1d) |
| PG-12136 | 2nd Fix - Wiring works | 2026-01-13 → 2026-01-12 (-1d) | 2026-01-30 → 2026-01-29 (-1d) |
| PG-12137 | Final Fix - Electrical Fixtures | 2026-02-17 → 2026-02-16 (-1d) | 2026-02-24 → 2026-02-23 (-1d) |
| 1.3.1.3.3.28 | **Floor 25** | 2025-12-25 → 2025-12-24 (-1d) | 2026-03-17 → 2026-03-16 (-1d) |
| 1.3.1.3.3.28.1 | **PHE Works** | 2025-12-25 → 2025-12-24 (-1d) | 2026-03-17 → 2026-03-16 (-1d) |
| PG-12138 | 1st Fix - Piping works | 2025-12-25 → 2025-12-24 (-1d) | 2026-01-07 → 2026-01-06 (-1d) |
| PG-12139 | 2nd Fix - diverter fixing & Pressure testing | 2026-01-03 → 2026-01-02 (-1d) | 2026-01-14 → 2026-01-13 (-1d) |
| PG-12140 | Final Fix - CP & Sanitary fixtures |  | 2026-03-17 → 2026-03-16 (-1d) |
| 1.3.1.3.3.28.2 | **Fire Fighting Works** | 2026-01-03 → 2026-01-02 (-1d) | 2026-03-17 → 2026-03-16 (-1d) |
| PG-12141 | 1st Fix - Piping and Shaft hydrant works | 2026-01-03 → 2026-01-02 (-1d) | 2026-01-17 → 2026-01-16 (-1d) |
| PG-12142 | 2nd Fix - Sprinkler fixing & Pressure testing |  | 2026-02-21 → 2026-02-20 (-1d) |
| PG-12143 | Final Fix - Smoke & heat detectors, FHC , FAS Etc. |  | 2026-03-17 → 2026-03-16 (-1d) |
| 1.3.1.3.3.28.3 | **Electrical Works** | 2025-12-25 → 2025-12-24 (-1d) | 2026-03-17 → 2026-03-16 (-1d) |
| PG-12144 | 1st Fix - GI wire pulling | 2025-12-25 → 2025-12-24 (-1d) | 2026-01-03 → 2026-01-02 (-1d) |
| PG-12145 | 2nd Fix - Wiring works |  | 2026-02-20 → 2026-02-19 (-1d) |
| PG-12146 | Final Fix - Electrical Fixtures |  | 2026-03-17 → 2026-03-16 (-1d) |
| 1.3.1.3.3.29 | **Floor 26** | 2026-01-15 → 2026-01-14 (-1d) | 2026-04-07 → 2026-04-06 (-1d) |
| 1.3.1.3.3.29.1 | **PHE Works** | 2026-01-15 → 2026-01-14 (-1d) | 2026-04-07 → 2026-04-06 (-1d) |
| PG-12147 | 1st Fix - Piping works | 2026-01-15 → 2026-01-14 (-1d) | 2026-01-30 → 2026-01-29 (-1d) |
| PG-12148 | 2nd Fix - diverter fixing & Pressure testing | 2026-01-23 → 2026-01-22 (-1d) | 2026-02-06 → 2026-02-05 (-1d) |
| PG-12149 | Final Fix - CP & Sanitary fixtures | 2026-03-28 → 2026-03-27 (-1d) | 2026-04-07 → 2026-04-06 (-1d) |
| 1.3.1.3.3.29.2 | **Fire Fighting Works** | 2026-01-24 → 2026-01-23 (-1d) | 2026-04-07 → 2026-04-06 (-1d) |
| PG-12150 | 1st Fix - Piping and Shaft hydrant works | 2026-01-24 → 2026-01-23 (-1d) |  |
| PG-12151 | 2nd Fix - Sprinkler fixing & Pressure testing |  | 2026-03-16 → 2026-03-14 (-2d) |
| PG-12152 | Final Fix - Smoke & heat detectors, FHC , FAS Etc. | 2026-03-28 → 2026-03-27 (-1d) | 2026-04-07 → 2026-04-06 (-1d) |
| 1.3.1.3.3.29.3 | **Electrical Works** | 2026-01-15 → 2026-01-14 (-1d) | 2026-04-07 → 2026-04-06 (-1d) |
| PG-12153 | 1st Fix - GI wire pulling | 2026-01-15 → 2026-01-14 (-1d) |  |
| PG-12154 | 2nd Fix - Wiring works |  | 2026-03-14 → 2026-03-13 (-1d) |
| PG-12155 | Final Fix - Electrical Fixtures | 2026-04-01 → 2026-03-31 (-1d) | 2026-04-07 → 2026-04-06 (-1d) |
| 1.3.1.3.3.30 | **Floor 27** | 2026-02-07 → 2026-02-06 (-1d) | 2026-04-29 → 2026-04-28 (-1d) |
| 1.3.1.3.3.30.1 | **PHE Works** | 2026-02-07 → 2026-02-06 (-1d) | 2026-04-29 → 2026-04-28 (-1d) |
| PG-12156 | 1st Fix - Piping works | 2026-02-07 → 2026-02-06 (-1d) |  |
| PG-12157 | 2nd Fix - diverter fixing & Pressure testing | 2026-02-17 → 2026-02-16 (-1d) |  |
| PG-12158 | Final Fix - CP & Sanitary fixtures |  | 2026-04-29 → 2026-04-28 (-1d) |
| 1.3.1.3.3.30.2 | **Fire Fighting Works** | 2026-02-17 → 2026-02-16 (-1d) | 2026-04-29 → 2026-04-28 (-1d) |
| PG-12159 | 1st Fix - Piping and Shaft hydrant works | 2026-02-17 → 2026-02-16 (-1d) |  |
| PG-12160 | 2nd Fix - Sprinkler fixing & Pressure testing | 2026-03-27 → 2026-03-26 (-1d) |  |
| PG-12161 | Final Fix - Smoke & heat detectors, FHC , FAS Etc. |  | 2026-04-29 → 2026-04-28 (-1d) |
| 1.3.1.3.3.30.3 | **Electrical Works** | 2026-02-07 → 2026-02-06 (-1d) | 2026-04-29 → 2026-04-28 (-1d) |
| PG-12162 | 1st Fix - GI wire pulling | 2026-02-07 → 2026-02-06 (-1d) |  |
| PG-12163 | 2nd Fix - Wiring works | 2026-03-20 → 2026-03-19 (-1d) |  |
| PG-12164 | Final Fix - Electrical Fixtures |  | 2026-04-29 → 2026-04-28 (-1d) |
| 1.3.1.3.3.31 | **Floor 28** |  | 2026-05-21 → 2026-05-20 (-1d) |
| 1.3.1.3.3.31.1 | **PHE Works** |  | 2026-05-21 → 2026-05-20 (-1d) |
| PG-12165 | 1st Fix - Piping works |  | 2026-03-14 → 2026-03-13 (-1d) |
| PG-12166 | 2nd Fix - diverter fixing & Pressure testing |  | 2026-03-21 → 2026-03-20 (-1d) |
| PG-12167 | Final Fix - CP & Sanitary fixtures |  | 2026-05-21 → 2026-05-20 (-1d) |
| 1.3.1.3.3.31.2 | **Fire Fighting Works** |  | 2026-05-21 → 2026-05-20 (-1d) |
| PG-12168 | 1st Fix - Piping and Shaft hydrant works |  | 2026-03-24 → 2026-03-23 (-1d) |
| PG-12169 | 2nd Fix - Sprinkler fixing & Pressure testing |  | 2026-04-28 → 2026-04-27 (-1d) |
| PG-12170 | Final Fix - Smoke & heat detectors, FHC , FAS Etc. |  | 2026-05-21 → 2026-05-20 (-1d) |
| 1.3.1.3.3.31.3 | **Electrical Works** |  | 2026-05-21 → 2026-05-20 (-1d) |
| PG-12171 | 1st Fix - GI wire pulling |  | 2026-03-10 → 2026-03-09 (-1d) |
| PG-12172 | 2nd Fix - Wiring works |  | 2026-04-27 → 2026-04-25 (-2d) |
| PG-12173 | Final Fix - Electrical Fixtures |  | 2026-05-21 → 2026-05-20 (-1d) |
| 1.3.1.3.3.32 | **Floor 29** | 2026-03-23 → 2026-03-21 (-2d) |  |
| 1.3.1.3.3.32.1 | **PHE Works** | 2026-03-23 → 2026-03-21 (-2d) |  |
| PG-12174 | 1st Fix - Piping works | 2026-03-23 → 2026-03-21 (-2d) | 2026-04-06 → 2026-04-04 (-2d) |
| PG-12175 | 2nd Fix - diverter fixing & Pressure testing | 2026-04-01 → 2026-03-31 (-1d) | 2026-04-13 → 2026-04-11 (-2d) |
| PG-12176 | Final Fix - CP & Sanitary fixtures | 2026-06-01 → 2026-05-30 (-2d) |  |
| 1.3.1.3.3.32.2 | **Fire Fighting Works** | 2026-03-31 → 2026-03-30 (-1d) |  |
| PG-12177 | 1st Fix - Piping and Shaft hydrant works | 2026-03-31 → 2026-03-30 (-1d) | 2026-04-15 → 2026-04-14 (-1d) |
| PG-12178 | 2nd Fix - Sprinkler fixing & Pressure testing | 2026-05-08 → 2026-05-07 (-1d) | 2026-05-20 → 2026-05-19 (-1d) |
| PG-12179 | Final Fix - Smoke & heat detectors, FHC , FAS Etc. | 2026-06-01 → 2026-05-30 (-2d) |  |
| 1.3.1.3.3.32.3 | **Electrical Works** | 2026-03-23 → 2026-03-21 (-2d) |  |

| ID | Task | Start | Finish | Complete | Total float |
| --- | --- | --- | --- | --- | --- |
| PG-12180 | 1st Fix - GI wire pulling | 2026-03-23 → 2026-03-21 (-2d) | 2026-04-01 → 2026-03-31 (-1d) |  |  |
| PG-12181 | 2nd Fix - Wiring works | 2026-04-29 → 2026-04-28 (-1d) | 2026-05-19 → 2026-05-18 (-1d) |  |  |
| PG-12182 | Final Fix - Electrical Fixtures | 2026-06-05 → 2026-06-04 (-1d) |  |  |  |
| PG-12280 | Painting Works - Putty, Primer and 1st |  | 2025-05-20 → 2025-05-21 A (+1d) | 41% → 100% | 401.55d → none |
| PG-12282 | Final Coat Painting | 2025-05-21 → 2025-05-22 A (+1d) |  | 0% → 3% | 400.48d → 398.98d |
| PG-12286 | Painting Works - Putty, Primer and 1st |  | 2025-05-21 → 2025-05-22 A (+1d) | 29% → 100% | 366.14d → none |
| PG-12287 | Final Coat Painting | 2025-05-21 → 2025-05-22 A (+1d) |  | 0% → 3% | 365.82d → 364.28d |
| 1.3.1.3.4.9.3 | **Floor Finishing Works - Civil** |  | 2025-05-21 → 2025-05-22 (+1d) |  |  |
| PG-12291 | Wooden doors |  | 2025-05-21 → 2025-05-22 A (+1d) | 8% → 100% | 365.82d → none |
| 1.3.1.3.4.10 | **Floor 7** |  | 2025-06-28 → 2025-06-30 (+2d) |  |  |
| 1.3.1.3.4.10.1 | **Ceiling Finishing works - Civil** |  | 2025-06-28 → 2025-06-30 (+2d) |  |  |
| PG-12295 | Toilet False ceiling | 2025-05-20 → 2025-05-21 A (+1d) | 2025-05-24 → 2025-05-26 (+2d) | 0% → 63% | 381.28d → 379.52d |
| PG-12294 | Painting Works - Putty, Primer and 1st | 2025-05-30 → 2025-05-31 (+1d) | 2025-06-06 → 2025-06-07 (+1d) |  | 387.94d → 386.19d |
| PG-12296 | Final Coat Painting | 2025-06-06 → 2025-06-07 (+1d) | 2025-06-28 → 2025-06-30 (+2d) |  | 387.94d → 386.19d |
| 1.3.1.3.4.10.2 | **Wall Finishing works - Civil** |  | 2025-06-27 → 2025-06-28 (+1d) |  |  |
| PG-12298 | UPVC Windows & Sliding doors | 2025-05-24 → 2025-05-26 (+2d) | 2025-05-30 → 2025-05-31 (+1d) |  | 354.28d → 352.52d |
| PG-12300 | Painting Works - Putty, Primer and 1st | 2025-05-30 → 2025-05-31 (+1d) | 2025-06-06 → 2025-06-07 (+1d) |  | 354.28d → 352.52d |
| PG-12301 | Final Coat Painting | 2025-06-06 → 2025-06-07 (+1d) | 2025-06-27 → 2025-06-28 (+1d) |  | 354.28d → 352.52d |
| 1.3.1.3.4.10.3 | **Floor Finishing Works - Civil** |  | 2025-06-06 → 2025-06-07 (+1d) |  |  |
| PG-12303 | Floor Tiling - Wet area |  | 2025-05-19 → 2025-05-20 A (+1d) | 57% → 100% | 354.28d → none |
| PG-12304 | Floor Tiling - Dry area | 2025-05-19 → 2025-05-20 A (+1d) | 2025-05-24 → 2025-05-26 (+2d) | 0% → 68% | 354.28d → 352.52d |
| PG-12305 | Wooden doors | 2025-05-31 → 2025-06-02 (+2d) | 2025-06-06 → 2025-06-07 (+1d) |  | 354.28d → 352.52d |
| 1.3.1.3.4.11 | **Floor 8** |  | 2025-07-17 → 2025-07-18 (+1d) |  |  |
| 1.3.1.3.4.11.1 | **Ceiling Finishing works - Civil** |  | 2025-07-17 → 2025-07-18 (+1d) |  |  |
| PG-12306 | Gypsum Plastering |  | 2025-05-19 → 2025-05-20 A (+1d) | 58% → 100% | 383.58d → none |
| PG-12307 | Cornice fixing | 2025-05-28 → 2025-05-29 (+1d) | 2025-06-02 → 2025-06-03 (+1d) |  | 383.33d → 381.86d |
| PG-12309 | Toilet False ceiling | 2025-06-05 → 2025-06-06 (+1d) | 2025-06-10 → 2025-06-11 (+1d) |  | 364.64d → 362.94d |
| PG-12308 | Painting Works - Putty, Primer and 1st | 2025-06-16 → 2025-06-17 (+1d) | 2025-06-23 → 2025-06-24 (+1d) |  | 371.3d → 369.61d |
| PG-12310 | Final Coat Painting | 2025-06-23 → 2025-06-24 (+1d) | 2025-07-17 → 2025-07-18 (+1d) |  | 371.3d → 369.61d |
| 1.3.1.3.4.11.2 | **Wall Finishing works - Civil** |  | 2025-07-16 → 2025-07-17 (+1d) |  |  |
| PG-12313 | Dadoing - Wet area | 2025-05-23 → 2025-05-24 (+1d) | 2025-05-29 → 2025-05-30 (+1d) |  | 337.64d → 335.94d |
| PG-12312 | UPVC Windows & Sliding doors | 2025-06-10 → 2025-06-11 (+1d) | 2025-06-16 → 2025-06-17 (+1d) |  | 337.64d → 335.94d |
| PG-12314 | Painting Works - Putty, Primer and 1st | 2025-06-16 → 2025-06-17 (+1d) | 2025-06-23 → 2025-06-24 (+1d) |  | 337.64d → 335.94d |
| PG-12315 | Final Coat Painting | 2025-06-23 → 2025-06-24 (+1d) | 2025-07-16 → 2025-07-17 (+1d) |  | 337.64d → 335.94d |
| 1.3.1.3.4.11.3 | **Floor Finishing Works - Civil** |  | 2025-06-23 → 2025-06-24 (+1d) |  |  |
| PG-12317 | Floor Tiling - Wet area | 2025-05-29 → 2025-05-30 (+1d) | 2025-06-04 → 2025-06-05 (+1d) |  | 337.64d → 335.94d |
| PG-12318 | Floor Tiling - Dry area | 2025-06-04 → 2025-06-05 (+1d) | 2025-06-10 → 2025-06-11 (+1d) |  | 337.64d → 335.94d |
| PG-12319 | Wooden doors | 2025-06-17 → 2025-06-18 (+1d) | 2025-06-23 → 2025-06-24 (+1d) |  | 337.64d → 335.94d |
| 1.3.1.3.4.12 | **Floor 9** | 2025-05-19 → 2025-05-20 (+1d) |  |  |  |
| 1.3.1.3.4.12.2 | **Wall Finishing works - Civil** | 2025-05-19 → 2025-05-20 (+1d) |  |  |  |
| PG-12325 | Balcony Railing Fixing works | 2025-05-19 → 2025-05-20 A (+1d) |  | 0% → 86% | 354.33d → 353.96d |
| 1.3.1.3.4.12.3 | **Floor Finishing Works - Civil** | 2025-05-19 → 2025-05-20 (+1d) |  |  |  |
| PG-12330 | Waterproofing for sunken areas | 2025-05-19 → 2025-05-20 A (+1d) | 2025-05-22 → 2025-05-23 A (+1d) | 0% → 100% | 345.33d → none |
| 1.3.1.3.4.13 | **Floor 10** |  | 2025-08-18 → 2025-08-16 (-2d) |  |  |
| 1.3.1.3.4.13.1 | **Ceiling Finishing works - Civil** | 2025-06-12 → 2025-06-11 (-1d) | 2025-08-18 → 2025-08-16 (-2d) |  |  |
| PG-12334 | Gypsum Plastering | 2025-06-12 → 2025-06-11 (-1d) | 2025-06-19 → 2025-06-18 (-1d) |  |  |
| PG-12335 | Cornice fixing | 2025-06-28 → 2025-06-27 (-1d) | 2025-07-03 → 2025-07-02 (-1d) |  |  |
| PG-12338 | Final Coat Painting |  | 2025-08-18 → 2025-08-16 (-2d) |  |  |
| 1.3.1.3.4.13.2 | **Wall Finishing works - Civil** |  | 2025-08-16 → 2025-08-14 (-2d) |  |  |
| PG-12343 | Final Coat Painting |  | 2025-08-16 → 2025-08-14 (-2d) |  |  |
| 1.3.1.3.4.14 | **Floor 11** |  | 2025-08-30 → 2025-08-29 (-1d) |  |  |
| 1.3.1.3.4.14.1 | **Ceiling Finishing works - Civil** |  | 2025-08-30 → 2025-08-29 (-1d) |  |  |
| PG-12352 | Final Coat Painting |  | 2025-08-30 → 2025-08-29 (-1d) |  |  |
| 1.3.1.3.4.14.2 | **Wall Finishing works - Civil** |  | 2025-08-29 → 2025-08-28 (-1d) |  |  |
| PG-12357 | Final Coat Painting |  | 2025-08-29 → 2025-08-28 (-1d) |  |  |
| 1.3.1.3.4.15 | **Floor 12** |  | 2025-09-15 → 2025-09-13 (-2d) |  |  |
| 1.3.1.3.4.15.1 | **Ceiling Finishing works - Civil** | 2025-07-08 → 2025-07-07 (-1d) | 2025-09-15 → 2025-09-13 (-2d) |  |  |
| PG-12362 | Gypsum Plastering | 2025-07-08 → 2025-07-07 (-1d) | 2025-07-15 → 2025-07-14 (-1d) |  |  |
| PG-12363 | Cornice fixing | 2025-07-24 → 2025-07-23 (-1d) | 2025-07-29 → 2025-07-28 (-1d) |  |  |
| PG-12366 | Final Coat Painting |  | 2025-09-15 → 2025-09-13 (-2d) |  |  |
| 1.3.1.3.4.15.2 | **Wall Finishing works - Civil** |  | 2025-09-15 → 2025-09-13 (-2d) |  |  |
| PG-12371 | Final Coat Painting |  | 2025-09-15 → 2025-09-13 (-2d) |  |  |
| 1.3.1.3.4.16 | **Floor 13** |  | 2025-09-27 → 2025-09-26 (-1d) |  |  |
| 1.3.1.3.4.16.1 | **Ceiling Finishing works - Civil** | 2025-07-21 → 2025-07-19 (-2d) | 2025-09-27 → 2025-09-26 (-1d) |  |  |
| PG-12376 | Gypsum Plastering | 2025-07-21 → 2025-07-19 (-2d) | 2025-07-28 → 2025-07-26 (-2d) |  |  |
| PG-12377 | Cornice fixing | 2025-08-06 → 2025-08-05 (-1d) | 2025-08-11 → 2025-08-09 (-2d) |  |  |
| PG-12380 | Final Coat Painting |  | 2025-09-27 → 2025-09-26 (-1d) |  |  |
| 1.3.1.3.4.16.2 | **Wall Finishing works - Civil** |  | 2025-09-27 → 2025-09-26 (-1d) |  |  |
| PG-12385 | Final Coat Painting |  | 2025-09-27 → 2025-09-26 (-1d) |  |  |
| 1.3.1.3.4.17 | **Floor 14** |  | 2025-10-09 → 2025-10-08 (-1d) |  |  |

| ID | Task | Start | Finish |
| --- | --- | --- | --- |
| 1.3.1.3.4.17.1 | **Ceiling Finishing works - Civil** | 2025-08-02 → 2025-08-01 (-1d) | 2025-10-09 → 2025-10-08 (-1d) |
| PG-12390 | Gypsum Plastering | 2025-08-02 → 2025-08-01 (-1d) | 2025-08-09 → 2025-08-08 (-1d) |
| PG-12391 | Cornice fixing | 2025-08-20 → 2025-08-19 (-1d) | 2025-08-25 → 2025-08-23 (-2d) |
| PG-12394 | Final Coat Painting |  | 2025-10-09 → 2025-10-08 (-1d) |
| 1.3.1.3.4.17.2 | **Wall Finishing works - Civil** |  | 2025-10-09 → 2025-10-08 (-1d) |
| PG-12399 | Final Coat Painting |  | 2025-10-09 → 2025-10-08 (-1d) |
| 1.3.1.3.4.18.1 | **Ceiling Finishing works - Civil** | 2025-08-16 → 2025-08-14 (-2d) |  |
| PG-12404 | Gypsum Plastering | 2025-08-16 → 2025-08-14 (-2d) | 2025-08-23 → 2025-08-22 (-1d) |
| PG-12405 | Cornice fixing | 2025-09-02 → 2025-09-01 (-1d) | 2025-09-06 → 2025-09-05 (-1d) |
| 1.3.1.3.4.19 | **Floor 16** |  | 2025-11-05 → 2025-11-04 (-1d) |
| 1.3.1.3.4.19.1 | **Ceiling Finishing works - Civil** | 2025-08-29 → 2025-08-28 (-1d) | 2025-11-05 → 2025-11-04 (-1d) |
| PG-12418 | Gypsum Plastering | 2025-08-29 → 2025-08-28 (-1d) | 2025-09-05 → 2025-09-04 (-1d) |
| PG-12419 | Cornice fixing | 2025-09-15 → 2025-09-13 (-2d) | 2025-09-19 → 2025-09-18 (-1d) |
| PG-12422 | Final Coat Painting |  | 2025-11-05 → 2025-11-04 (-1d) |
| 1.3.1.3.4.19.2 | **Wall Finishing works - Civil** |  | 2025-11-05 → 2025-11-04 (-1d) |
| PG-12427 | Final Coat Painting |  | 2025-11-05 → 2025-11-04 (-1d) |
| 1.3.1.3.4.20 | **Floor 17** |  | 2025-11-17 → 2025-11-15 (-2d) |
| 1.3.1.3.4.20.1 | **Ceiling Finishing works - Civil** | 2025-09-11 → 2025-09-10 (-1d) | 2025-11-17 → 2025-11-15 (-2d) |
| PG-12432 | Gypsum Plastering | 2025-09-11 → 2025-09-10 (-1d) | 2025-09-18 → 2025-09-17 (-1d) |
| PG-12433 | Cornice fixing | 2025-09-27 → 2025-09-26 (-1d) | 2025-10-03 → 2025-10-01 (-2d) |
| PG-12436 | Final Coat Painting |  | 2025-11-17 → 2025-11-15 (-2d) |
| 1.3.1.3.4.20.2 | **Wall Finishing works - Civil** |  | 2025-11-17 → 2025-11-15 (-2d) |
| PG-12441 | Final Coat Painting |  | 2025-11-17 → 2025-11-15 (-2d) |
| 1.3.1.3.4.21 | **Floor 18** |  | 2025-11-29 → 2025-11-28 (-1d) |
| 1.3.1.3.4.21.1 | **Ceiling Finishing works - Civil** | 2025-09-24 → 2025-09-23 (-1d) | 2025-11-29 → 2025-11-28 (-1d) |
| PG-12446 | Gypsum Plastering | 2025-09-24 → 2025-09-23 (-1d) | 2025-10-01 → 2025-09-30 (-1d) |
| PG-12447 | Cornice fixing | 2025-10-11 → 2025-10-10 (-1d) | 2025-10-16 → 2025-10-15 (-1d) |
| PG-12450 | Final Coat Painting |  | 2025-11-29 → 2025-11-28 (-1d) |
| 1.3.1.3.4.21.2 | **Wall Finishing works - Civil** |  | 2025-11-29 → 2025-11-28 (-1d) |
| PG-12455 | Final Coat Painting |  | 2025-11-29 → 2025-11-28 (-1d) |
| 1.3.1.3.4.22 | **Floor 19** |  | 2025-12-12 → 2025-12-11 (-1d) |
| 1.3.1.3.4.22.1 | **Ceiling Finishing works - Civil** | 2025-10-08 → 2025-10-07 (-1d) | 2025-12-12 → 2025-12-11 (-1d) |
| PG-12460 | Gypsum Plastering | 2025-10-08 → 2025-10-07 (-1d) | 2025-10-15 → 2025-10-14 (-1d) |
| PG-12461 | Cornice fixing | 2025-10-24 → 2025-10-23 (-1d) | 2025-10-29 → 2025-10-28 (-1d) |
| PG-12464 | Final Coat Painting |  | 2025-12-12 → 2025-12-11 (-1d) |
| 1.3.1.3.4.22.2 | **Wall Finishing works - Civil** |  | 2025-12-12 → 2025-12-11 (-1d) |
| PG-12469 | Final Coat Painting |  | 2025-12-12 → 2025-12-11 (-1d) |
| 1.3.1.3.4.23 | **Floor 20** |  | 2025-12-26 → 2025-12-25 (-1d) |
| 1.3.1.3.4.23.1 | **Ceiling Finishing works - Civil** |  | 2025-12-26 → 2025-12-25 (-1d) |
| PG-12478 | Final Coat Painting |  | 2025-12-26 → 2025-12-25 (-1d) |
| 1.3.1.3.4.23.2 | **Wall Finishing works - Civil** |  | 2025-12-26 → 2025-12-25 (-1d) |
| PG-12483 | Final Coat Painting |  | 2025-12-26 → 2025-12-25 (-1d) |
| 1.3.1.3.4.24 | **Floor 21** |  | 2026-01-08 → 2026-01-07 (-1d) |
| 1.3.1.3.4.24.1 | **Ceiling Finishing works - Civil** |  | 2026-01-08 → 2026-01-07 (-1d) |
| PG-12491 | Toilet False ceiling | 2025-11-28 → 2025-11-27 (-1d) | 2025-12-03 → 2025-12-02 (-1d) |
| PG-12490 | Painting Works - Putty, Primer and 1st | 2025-12-09 → 2025-12-08 (-1d) | 2025-12-16 → 2025-12-15 (-1d) |
| PG-12492 | Final Coat Painting | 2025-12-16 → 2025-12-15 (-1d) | 2026-01-08 → 2026-01-07 (-1d) |
| 1.3.1.3.4.24.2 | **Wall Finishing works - Civil** |  | 2026-01-08 → 2026-01-07 (-1d) |
| PG-12495 | Dadoing - Wet area | 2025-11-15 → 2025-11-14 (-1d) | 2025-11-21 → 2025-11-20 (-1d) |
| PG-12494 | UPVC Windows & Sliding doors | 2025-12-03 → 2025-12-02 (-1d) | 2025-12-09 → 2025-12-08 (-1d) |
| PG-12496 | Painting Works - Putty, Primer and 1st | 2025-12-09 → 2025-12-08 (-1d) | 2025-12-16 → 2025-12-15 (-1d) |
| PG-12497 | Final Coat Painting | 2025-12-16 → 2025-12-15 (-1d) | 2026-01-08 → 2026-01-07 (-1d) |
| 1.3.1.3.4.24.3 | **Floor Finishing Works - Civil** |  | 2025-12-16 → 2025-12-15 (-1d) |
| PG-12499 | Floor Tiling - Wet area | 2025-11-21 → 2025-11-20 (-1d) | 2025-11-27 → 2025-11-26 (-1d) |
| PG-12500 | Floor Tiling - Dry area | 2025-11-27 → 2025-11-26 (-1d) | 2025-12-03 → 2025-12-02 (-1d) |
| PG-12501 | Wooden doors | 2025-12-10 → 2025-12-09 (-1d) | 2025-12-16 → 2025-12-15 (-1d) |
| 1.3.1.3.4.25 | **Floor 22** |  | 2026-01-21 → 2026-01-20 (-1d) |
| 1.3.1.3.4.25.1 | **Ceiling Finishing works - Civil** |  | 2026-01-21 → 2026-01-20 (-1d) |
| PG-12505 | Toilet False ceiling | 2025-12-11 → 2025-12-10 (-1d) | 2025-12-16 → 2025-12-15 (-1d) |
| PG-12504 | Painting Works - Putty, Primer and 1st | 2025-12-22 → 2025-12-20 (-2d) | 2025-12-29 → 2025-12-27 (-2d) |
| PG-12506 | Final Coat Painting | 2025-12-29 → 2025-12-27 (-2d) | 2026-01-21 → 2026-01-20 (-1d) |
| 1.3.1.3.4.25.2 | **Wall Finishing works - Civil** |  | 2026-01-21 → 2026-01-20 (-1d) |
| PG-12509 | Dadoing - Wet area | 2025-11-28 → 2025-11-27 (-1d) | 2025-12-04 → 2025-12-03 (-1d) |
| PG-12508 | UPVC Windows & Sliding doors | 2025-12-16 → 2025-12-15 (-1d) | 2025-12-22 → 2025-12-20 (-2d) |
| PG-12510 | Painting Works - Putty, Primer and 1st | 2025-12-22 → 2025-12-20 (-2d) | 2025-12-29 → 2025-12-27 (-2d) |
| PG-12511 | Final Coat Painting | 2025-12-29 → 2025-12-27 (-2d) | 2026-01-21 → 2026-01-20 (-1d) |
| 1.3.1.3.4.25.3 | **Floor Finishing Works - Civil** |  | 2025-12-29 → 2025-12-27 (-2d) |
| PG-12513 | Floor Tiling - Wet area | 2025-12-04 → 2025-12-03 (-1d) | 2025-12-10 → 2025-12-09 (-1d) |
| PG-12514 | Floor Tiling - Dry area | 2025-12-10 → 2025-12-09 (-1d) | 2025-12-16 → 2025-12-15 (-1d) |
| PG-12515 | Wooden doors | 2025-12-23 → 2025-12-22 (-1d) | 2025-12-29 → 2025-12-27 (-2d) |

| ID | Task | Start | Finish |
| --- | --- | --- | --- |
| 1.3.1.3.4.26.1 | **Ceiling Finishing works - Civil** | 2025-11-28 → 2025-11-27 (-1d) |  |
| PG-12516 | Gypsum Plastering | 2025-11-28 → 2025-11-27 (-1d) | 2025-12-05 → 2025-12-04 (-1d) |
| PG-12517 | Cornice fixing | 2025-12-15 → 2025-12-13 (-2d) | 2025-12-19 → 2025-12-18 (-1d) |
| PG-12519 | Toilet False ceiling | 2025-12-23 → 2025-12-22 (-1d) | 2025-12-27 → 2025-12-26 (-1d) |
| PG-12518 | Painting Works - Putty, Primer and 1st | 2026-01-02 → 2026-01-01 (-1d) | 2026-01-09 → 2026-01-08 (-1d) |
| PG-12520 | Final Coat Painting | 2026-01-09 → 2026-01-08 (-1d) |  |
| PG-12523 | Dadoing - Wet area | 2025-12-10 → 2025-12-09 (-1d) | 2025-12-16 → 2025-12-15 (-1d) |
| PG-12522 | UPVC Windows & Sliding doors | 2025-12-27 → 2025-12-26 (-1d) | 2026-01-02 → 2026-01-01 (-1d) |
| PG-12524 | Painting Works - Putty, Primer and 1st | 2026-01-02 → 2026-01-01 (-1d) | 2026-01-09 → 2026-01-08 (-1d) |
| PG-12525 | Final Coat Painting | 2026-01-09 → 2026-01-08 (-1d) |  |
| 1.3.1.3.4.26.3 | **Floor Finishing Works - Civil** |  | 2026-01-09 → 2026-01-08 (-1d) |
| PG-12527 | Floor Tiling - Wet area | 2025-12-16 → 2025-12-15 (-1d) | 2025-12-22 → 2025-12-20 (-2d) |
| PG-12528 | Floor Tiling - Dry area | 2025-12-22 → 2025-12-20 (-2d) | 2025-12-27 → 2025-12-26 (-1d) |
| PG-12529 | Wooden doors | 2026-01-03 → 2026-01-02 (-1d) | 2026-01-09 → 2026-01-08 (-1d) |
| 1.3.1.3.4.27 | **Floor 24** |  | 2026-02-17 → 2026-02-16 (-1d) |
| 1.3.1.3.4.27.1 | **Ceiling Finishing works - Civil** | 2025-12-12 → 2025-12-11 (-1d) | 2026-02-17 → 2026-02-16 (-1d) |
| PG-12530 | Gypsum Plastering | 2025-12-12 → 2025-12-11 (-1d) | 2025-12-19 → 2025-12-18 (-1d) |
| PG-12531 | Cornice fixing | 2025-12-29 → 2025-12-27 (-2d) | 2026-01-02 → 2026-01-01 (-1d) |
| PG-12533 | Toilet False ceiling | 2026-01-06 → 2026-01-05 (-1d) | 2026-01-10 → 2026-01-09 (-1d) |
| PG-12532 | Painting Works - Putty, Primer and 1st | 2026-01-16 → 2026-01-15 (-1d) | 2026-01-23 → 2026-01-22 (-1d) |
| PG-12534 | Final Coat Painting | 2026-01-23 → 2026-01-22 (-1d) | 2026-02-17 → 2026-02-16 (-1d) |
| 1.3.1.3.4.27.2 | **Wall Finishing works - Civil** |  | 2026-02-17 → 2026-02-16 (-1d) |
| PG-12537 | Dadoing - Wet area | 2025-12-24 → 2025-12-23 (-1d) | 2025-12-30 → 2025-12-29 (-1d) |
| PG-12536 | UPVC Windows & Sliding doors | 2026-01-10 → 2026-01-09 (-1d) | 2026-01-16 → 2026-01-15 (-1d) |
| PG-12538 | Painting Works - Putty, Primer and 1st | 2026-01-16 → 2026-01-15 (-1d) | 2026-01-23 → 2026-01-22 (-1d) |
| PG-12539 | Final Coat Painting | 2026-01-23 → 2026-01-22 (-1d) | 2026-02-17 → 2026-02-16 (-1d) |
| 1.3.1.3.4.27.3 | **Floor Finishing Works - Civil** |  | 2026-01-23 → 2026-01-22 (-1d) |
| PG-12541 | Floor Tiling - Wet area | 2025-12-30 → 2025-12-29 (-1d) | 2026-01-05 → 2026-01-03 (-2d) |
| PG-12542 | Floor Tiling - Dry area | 2026-01-05 → 2026-01-03 (-2d) | 2026-01-10 → 2026-01-09 (-1d) |
| PG-12543 | Wooden doors | 2026-01-17 → 2026-01-16 (-1d) | 2026-01-23 → 2026-01-22 (-1d) |
| 1.3.1.3.4.28 | **Floor 25** | 2025-12-25 → 2025-12-24 (-1d) | 2026-03-10 → 2026-03-09 (-1d) |
| 1.3.1.3.4.28.1 | **Ceiling Finishing works - Civil** | 2026-01-03 → 2026-01-02 (-1d) | 2026-03-10 → 2026-03-09 (-1d) |
| PG-12544 | Gypsum Plastering | 2026-01-03 → 2026-01-02 (-1d) | 2026-01-10 → 2026-01-09 (-1d) |
| PG-12545 | Cornice fixing | 2026-01-20 → 2026-01-19 (-1d) | 2026-01-24 → 2026-01-23 (-1d) |
| PG-12547 | Toilet False ceiling | 2026-01-28 → 2026-01-27 (-1d) | 2026-02-02 → 2026-01-31 (-2d) |
| PG-12546 | Painting Works - Putty, Primer and 1st | 2026-02-07 → 2026-02-06 (-1d) | 2026-02-14 → 2026-02-13 (-1d) |
| PG-12548 | Final Coat Painting | 2026-02-14 → 2026-02-13 (-1d) | 2026-03-10 → 2026-03-09 (-1d) |
| 1.3.1.3.4.28.2 | **Wall Finishing works - Civil** | 2025-12-25 → 2025-12-24 (-1d) | 2026-03-10 → 2026-03-09 (-1d) |
| PG-12549 | Balcony Railing Fixing works | 2025-12-25 → 2025-12-24 (-1d) | 2025-12-30 → 2025-12-29 (-1d) |
| PG-12551 | Dadoing - Wet area | 2026-01-14 → 2026-01-13 (-1d) | 2026-01-20 → 2026-01-19 (-1d) |
| PG-12550 | UPVC Windows & Sliding doors | 2026-02-02 → 2026-01-31 (-2d) | 2026-02-07 → 2026-02-06 (-1d) |
| PG-12552 | Painting Works - Putty, Primer and 1st | 2026-02-07 → 2026-02-06 (-1d) | 2026-02-14 → 2026-02-13 (-1d) |
| PG-12553 | Final Coat Painting | 2026-02-14 → 2026-02-13 (-1d) | 2026-03-10 → 2026-03-09 (-1d) |
| 1.3.1.3.4.28.3 | **Floor Finishing Works - Civil** | 2025-12-25 → 2025-12-24 (-1d) | 2026-02-14 → 2026-02-13 (-1d) |
| PG-12554 | Waterproofing for sunken areas | 2025-12-25 → 2025-12-24 (-1d) | 2025-12-29 → 2025-12-27 (-2d) |
| PG-12555 | Floor Tiling - Wet area | 2026-01-20 → 2026-01-19 (-1d) | 2026-01-27 → 2026-01-24 (-3d) |
| PG-12556 | Floor Tiling - Dry area | 2026-01-27 → 2026-01-24 (-3d) | 2026-02-02 → 2026-01-31 (-2d) |
| PG-12557 | Wooden doors | 2026-02-09 → 2026-02-07 (-2d) | 2026-02-14 → 2026-02-13 (-1d) |
| 1.3.1.3.4.29 | **Floor 26** | 2026-01-15 → 2026-01-14 (-1d) | 2026-04-01 → 2026-03-31 (-1d) |
| 1.3.1.3.4.29.1 | **Ceiling Finishing works - Civil** |  | 2026-04-01 → 2026-03-31 (-1d) |
| PG-12559 | Cornice fixing | 2026-02-11 → 2026-02-10 (-1d) |  |
| PG-12561 | Toilet False ceiling | 2026-02-19 → 2026-02-18 (-1d) | 2026-02-24 → 2026-02-23 (-1d) |
| PG-12560 | Painting Works - Putty, Primer and 1st | 2026-03-02 → 2026-02-28 (-2d) | 2026-03-09 → 2026-03-07 (-2d) |
| PG-12562 | Final Coat Painting | 2026-03-09 → 2026-03-07 (-2d) | 2026-04-01 → 2026-03-31 (-1d) |
| 1.3.1.3.4.29.2 | **Wall Finishing works - Civil** | 2026-01-15 → 2026-01-14 (-1d) | 2026-03-31 → 2026-03-30 (-1d) |
| PG-12563 | Balcony Railing Fixing works | 2026-01-15 → 2026-01-14 (-1d) | 2026-01-20 → 2026-01-19 (-1d) |
| PG-12565 | Dadoing - Wet area | 2026-02-06 → 2026-02-05 (-1d) | 2026-02-12 → 2026-02-11 (-1d) |
| PG-12564 | UPVC Windows & Sliding doors | 2026-02-24 → 2026-02-23 (-1d) | 2026-03-02 → 2026-02-28 (-2d) |
| PG-12566 | Painting Works - Putty, Primer and 1st | 2026-03-02 → 2026-02-28 (-2d) | 2026-03-09 → 2026-03-07 (-2d) |
| PG-12567 | Final Coat Painting | 2026-03-09 → 2026-03-07 (-2d) | 2026-03-31 → 2026-03-30 (-1d) |
| 1.3.1.3.4.29.3 | **Floor Finishing Works - Civil** | 2026-01-15 → 2026-01-14 (-1d) | 2026-03-09 → 2026-03-07 (-2d) |
| PG-12568 | Waterproofing for sunken areas | 2026-01-15 → 2026-01-14 (-1d) | 2026-01-19 → 2026-01-17 (-2d) |
| PG-12569 | Floor Tiling - Wet area | 2026-02-12 → 2026-02-11 (-1d) | 2026-02-18 → 2026-02-17 (-1d) |
| PG-12570 | Floor Tiling - Dry area | 2026-02-18 → 2026-02-17 (-1d) | 2026-02-24 → 2026-02-23 (-1d) |
| PG-12571 | Wooden doors | 2026-03-03 → 2026-03-02 (-1d) | 2026-03-09 → 2026-03-07 (-2d) |
| 1.3.1.3.4.30 | **Floor 27** | 2026-02-07 → 2026-02-06 (-1d) | 2026-04-22 → 2026-04-21 (-1d) |
| 1.3.1.3.4.30.1 | **Ceiling Finishing works - Civil** |  | 2026-04-22 → 2026-04-21 (-1d) |
| PG-12576 | Final Coat Painting |  | 2026-04-22 → 2026-04-21 (-1d) |
| 1.3.1.3.4.30.2 | **Wall Finishing works - Civil** | 2026-02-07 → 2026-02-06 (-1d) | 2026-04-22 → 2026-04-21 (-1d) |
| PG-12577 | Balcony Railing Fixing works | 2026-02-07 → 2026-02-06 (-1d) | 2026-02-12 → 2026-02-11 (-1d) |

| ID | Task | Start | Finish |
| --- | --- | --- | --- |
| PG-12581 | Final Coat Painting |  | 2026-04-22 → 2026-04-21 (-1d) |
| 1.3.1.3.4.30.3 | **Floor Finishing Works - Civil** | 2026-02-07 → 2026-02-06 (-1d) |  |
| PG-12582 | Waterproofing for sunken areas | 2026-02-07 → 2026-02-06 (-1d) | 2026-02-11 → 2026-02-10 (-1d) |
| 1.3.1.3.4.31 | **Floor 28** |  | 2026-05-14 → 2026-05-13 (-1d) |
| 1.3.1.3.4.31.1 | **Ceiling Finishing works - Civil** | 2026-03-10 → 2026-03-09 (-1d) | 2026-05-14 → 2026-05-13 (-1d) |
| PG-12586 | Gypsum Plastering | 2026-03-10 → 2026-03-09 (-1d) | 2026-03-17 → 2026-03-16 (-1d) |
| PG-12587 | Cornice fixing |  | 2026-03-31 → 2026-03-30 (-1d) |
| PG-12589 | Toilet False ceiling | 2026-04-03 → 2026-04-02 (-1d) | 2026-04-08 → 2026-04-07 (-1d) |
| PG-12588 | Painting Works - Putty, Primer and 1st | 2026-04-14 → 2026-04-13 (-1d) | 2026-04-21 → 2026-04-20 (-1d) |
| PG-12590 | Final Coat Painting | 2026-04-21 → 2026-04-20 (-1d) | 2026-05-14 → 2026-05-13 (-1d) |
| 1.3.1.3.4.31.2 | **Wall Finishing works - Civil** |  | 2026-05-14 → 2026-05-13 (-1d) |
| PG-12593 | Dadoing - Wet area | 2026-03-21 → 2026-03-20 (-1d) | 2026-03-27 → 2026-03-26 (-1d) |
| PG-12592 | UPVC Windows & Sliding doors | 2026-04-08 → 2026-04-07 (-1d) | 2026-04-14 → 2026-04-13 (-1d) |
| PG-12594 | Painting Works - Putty, Primer and 1st | 2026-04-14 → 2026-04-13 (-1d) | 2026-04-21 → 2026-04-20 (-1d) |
| PG-12595 | Final Coat Painting | 2026-04-21 → 2026-04-20 (-1d) | 2026-05-14 → 2026-05-13 (-1d) |
| 1.3.1.3.4.31.3 | **Floor Finishing Works - Civil** |  | 2026-04-21 → 2026-04-20 (-1d) |
| PG-12597 | Floor Tiling - Wet area | 2026-03-27 → 2026-03-26 (-1d) | 2026-04-02 → 2026-04-01 (-1d) |
| PG-12598 | Floor Tiling - Dry area | 2026-04-02 → 2026-04-01 (-1d) | 2026-04-08 → 2026-04-07 (-1d) |
| PG-12599 | Wooden doors | 2026-04-15 → 2026-04-14 (-1d) | 2026-04-21 → 2026-04-20 (-1d) |
| 1.3.1.3.4.32 | **Floor 29** | 2026-03-23 → 2026-03-21 (-2d) |  |
| 1.3.1.3.4.32.1 | **Ceiling Finishing works - Civil** | 2026-04-01 → 2026-03-31 (-1d) |  |
| PG-12600 | Gypsum Plastering | 2026-04-01 → 2026-03-31 (-1d) | 2026-04-08 → 2026-04-07 (-1d) |
| PG-12601 | Cornice fixing | 2026-04-24 → 2026-04-23 (-1d) | 2026-04-29 → 2026-04-28 (-1d) |
| PG-12603 | Toilet False ceiling | 2026-04-25 → 2026-04-24 (-1d) | 2026-04-30 → 2026-04-29 (-1d) |
| PG-12602 | Painting Works - Putty, Primer and 1st | 2026-05-06 → 2026-05-05 (-1d) | 2026-05-13 → 2026-05-12 (-1d) |
| PG-12604 | Final Coat Painting | 2026-05-13 → 2026-05-12 (-1d) |  |
| 1.3.1.3.4.32.2 | **Wall Finishing works - Civil** | 2026-03-23 → 2026-03-21 (-2d) |  |
| PG-12605 | Balcony Railing Fixing works | 2026-03-23 → 2026-03-21 (-2d) | 2026-03-27 → 2026-03-26 (-1d) |
| PG-12607 | Dadoing - Wet area | 2026-04-13 → 2026-04-11 (-2d) | 2026-04-18 → 2026-04-17 (-1d) |
| PG-12606 | UPVC Windows & Sliding doors | 2026-04-30 → 2026-04-29 (-1d) | 2026-05-06 → 2026-05-05 (-1d) |
| PG-12608 | Painting Works - Putty, Primer and 1st | 2026-05-06 → 2026-05-05 (-1d) | 2026-05-13 → 2026-05-12 (-1d) |
| PG-12609 | Final Coat Painting | 2026-05-13 → 2026-05-12 (-1d) |  |
| 1.3.1.3.4.32.3 | **Floor Finishing Works - Civil** | 2026-03-23 → 2026-03-21 (-2d) | 2026-05-13 → 2026-05-12 (-1d) |
| PG-12610 | Waterproofing for sunken areas | 2026-03-23 → 2026-03-21 (-2d) | 2026-03-26 → 2026-03-25 (-1d) |
| PG-12611 | Floor Tiling - Wet area | 2026-04-18 → 2026-04-17 (-1d) | 2026-04-24 → 2026-04-23 (-1d) |
| PG-12612 | Floor Tiling - Dry area | 2026-04-24 → 2026-04-23 (-1d) | 2026-04-30 → 2026-04-29 (-1d) |
| PG-12613 | Wooden doors | 2026-05-07 → 2026-05-06 (-1d) | 2026-05-13 → 2026-05-12 (-1d) |
| 1.3.1.3.4.33 | **External Finishing works** | 2025-12-31 → 2025-12-30 (-1d) | 2026-04-28 → 2026-04-27 (-1d) |
| PG-12614 | External walls tie rod hole plugging with GP2 | 2025-12-31 → 2025-12-30 (-1d) | 2026-02-05 → 2026-02-04 (-1d) |
| PG-12615 | External walls grinding works | 2026-01-23 → 2026-01-22 (-1d) | 2026-03-12 → 2026-03-11 (-1d) |
| PG-12616 | Texture and painting works | 2026-03-06 → 2026-03-05 (-1d) | 2026-04-28 → 2026-04-27 (-1d) |
| 1.3.1.3.5 | **Corridor & Fire Staircase Finishing works** | 2026-03-09 → 2026-03-07 (-2d) | 2026-07-04 → 2026-07-03 (-1d) |
| 1.3.1.3.5.1 | **Ceiling Finishing works - Civil** | 2026-03-09 → 2026-03-07 (-2d) | 2026-05-30 → 2026-05-29 (-1d) |
| PG-12617 | Gypsum Plastering | 2026-03-09 → 2026-03-07 (-2d) | 2026-03-16 → 2026-03-14 (-2d) |
| PG-12618 | Cornice fixing | 2026-03-14 → 2026-03-13 (-1d) | 2026-03-19 → 2026-03-18 (-1d) |
| PG-12619 | Painting Works - Putty, Primer and 1st | 2026-04-01 → 2026-03-31 (-1d) | 2026-04-08 → 2026-04-07 (-1d) |
| PG-12620 | False ceiling | 2026-04-08 → 2026-04-07 (-1d) | 2026-05-13 → 2026-05-12 (-1d) |
| PG-12621 | Final Coat Painting | 2026-04-24 → 2026-04-23 (-1d) | 2026-05-30 → 2026-05-29 (-1d) |
| 1.3.1.3.5.2 | **Wall Finishing works - Civil** | 2026-04-13 → 2026-04-11 (-2d) | 2026-07-04 → 2026-07-03 (-1d) |
| PG-12622 | UPVC Windows & Sliding doors | 2026-04-13 → 2026-04-11 (-2d) | 2026-04-18 → 2026-04-17 (-1d) |
| PG-12623 | Wall Cladding Upto 1.2 Mts | 2026-04-30 → 2026-04-29 (-1d) | 2026-05-23 → 2026-05-22 (-1d) |
| PG-12624 | Painting Works - Texture & one coat Painting works | 2026-05-30 → 2026-05-29 (-1d) | 2026-06-17 → 2026-06-16 (-1d) |
| PG-12625 | Final Coat Painting | 2026-06-11 → 2026-06-10 (-1d) | 2026-07-04 → 2026-07-03 (-1d) |
| 1.3.1.3.5.3 | **Floor Finishing Works - Civil** | 2026-03-16 → 2026-03-14 (-2d) | 2026-04-14 → 2026-04-13 (-1d) |
| PG-12626 | Fire Doors installation | 2026-03-16 → 2026-03-14 (-2d) | 2026-03-27 → 2026-03-26 (-1d) |
| PG-12627 | Vitrified tile flooring works | 2026-03-27 → 2026-03-26 (-1d) | 2026-04-14 → 2026-04-13 (-1d) |
| 1.3.1.3.5.4 | **Fire Staircase Finishing Works - Civil** | 2026-03-16 → 2026-03-14 (-2d) | 2026-07-04 → 2026-07-03 (-1d) |
| PG-12628 | Staircase Railing Fixing works | 2026-03-16 → 2026-03-14 (-2d) | 2026-04-08 → 2026-04-07 (-1d) |
| PG-12629 | Wall and ceiling Gypsum plastering | 2026-03-25 → 2026-03-24 (-1d) | 2026-05-01 → 2026-04-30 (-1d) |
| PG-12630 | Staircase Flooring and Skirting Works | 2026-04-14 → 2026-04-13 (-1d) | 2026-05-30 → 2026-05-29 (-1d) |
| PG-12631 | UPVC Window fixing works | 2026-05-29 → 2026-05-28 (-1d) | 2026-06-17 → 2026-06-16 (-1d) |
| PG-12632 | Staircase Painting works | 2026-06-11 → 2026-06-10 (-1d) | 2026-07-04 → 2026-07-03 (-1d) |
| 1.3.1.3.6 | **MEP Civil Works (Shaft, Lift Shaft & OHT )** | 2025-12-17 → 2025-12-16 (-1d) | 2026-05-16 → 2026-05-15 (-1d) |
| 1.3.1.3.6.1 | **Lift Shaft Works** | 2025-12-17 → 2025-12-16 (-1d) | 2026-05-16 → 2026-05-15 (-1d) |
| PG-12633 | Tie rod hole packing | 2025-12-17 → 2025-12-16 (-1d) | 2025-12-26 → 2025-12-25 (-1d) |
| PG-12634 | Grinding works | 2025-12-26 → 2025-12-25 (-1d) | 2026-01-01 → 2025-12-31 (-1d) |
| PG-12635 | Lift pit water proofing works | 2026-01-01 → 2025-12-31 (-1d) | 2026-01-27 → 2026-01-24 (-3d) |
| PG-12636 | Shaft door opening finishing | 2026-01-27 → 2026-01-24 (-3d) |  |
| PG-12638 | Lift Wall Cladding Works |  | 2026-05-16 → 2026-05-15 (-1d) |
| 1.3.1.3.6.2 | **Electrical Shaft works** | 2025-12-17 → 2025-12-16 (-1d) | 2026-01-19 → 2026-01-17 (-2d) |

| ID | Task | Start | Finish |
| --- | --- | --- | --- |
| PG-12639 | Tie rod hole packing | 2025-12-17 → 2025-12-16 (-1d) | 2025-12-26 → 2025-12-25 (-1d) |
| PG-12640 | Grinding works | 2025-12-26 → 2025-12-25 (-1d) | 2026-01-01 → 2025-12-31 (-1d) |
| PG-12641 | Shaft door opening finishing | 2026-01-01 → 2025-12-31 (-1d) | 2026-01-09 → 2026-01-08 (-1d) |
| PG-12642 | Painting works | 2026-01-09 → 2026-01-08 (-1d) | 2026-01-19 → 2026-01-17 (-2d) |
| 1.3.1.3.6.3 | **FPS Shaft works** | 2025-12-17 → 2025-12-16 (-1d) | 2026-01-19 → 2026-01-17 (-2d) |
| PG-12643 | Tie rod hole packing | 2025-12-17 → 2025-12-16 (-1d) | 2025-12-26 → 2025-12-25 (-1d) |
| PG-12644 | Grinding works | 2025-12-26 → 2025-12-25 (-1d) | 2026-01-01 → 2025-12-31 (-1d) |
| PG-12645 | Shaft door opening finishing | 2026-01-01 → 2025-12-31 (-1d) | 2026-01-09 → 2026-01-08 (-1d) |
| PG-12646 | Painting works | 2026-01-09 → 2026-01-08 (-1d) | 2026-01-19 → 2026-01-17 (-2d) |
| 1.3.1.3.6.4 | **PHE Shaft works** | 2025-12-17 → 2025-12-16 (-1d) | 2026-01-19 → 2026-01-17 (-2d) |
| PG-12647 | Tie rod hole packing | 2025-12-17 → 2025-12-16 (-1d) | 2025-12-26 → 2025-12-25 (-1d) |
| PG-12648 | Grinding works | 2025-12-26 → 2025-12-25 (-1d) | 2026-01-01 → 2025-12-31 (-1d) |
| PG-12649 | Shaft door opening finishing | 2026-01-01 → 2025-12-31 (-1d) | 2026-01-09 → 2026-01-08 (-1d) |
| PG-12650 | Painting works | 2026-01-09 → 2026-01-08 (-1d) | 2026-01-19 → 2026-01-17 (-2d) |
| 1.3.1.3.6.5 | **Data & Communication Shaft** | 2025-12-17 → 2025-12-16 (-1d) | 2026-01-16 → 2026-01-15 (-1d) |
| PG-12651 | Tie rod hole packing | 2025-12-17 → 2025-12-16 (-1d) | 2025-12-26 → 2025-12-25 (-1d) |
| PG-12652 | Grinding works | 2025-12-26 → 2025-12-25 (-1d) | 2026-01-01 → 2025-12-31 (-1d) |
| PG-12653 | Shaft door opening finishing | 2026-01-01 → 2025-12-31 (-1d) | 2026-01-07 → 2026-01-06 (-1d) |
| PG-12654 | Painting works | 2026-01-07 → 2026-01-06 (-1d) | 2026-01-16 → 2026-01-15 (-1d) |
| 1.3.1.3.6.6 | **OHT Works** | 2025-12-17 → 2025-12-16 (-1d) | 2026-02-05 → 2026-02-04 (-1d) |
| PG-12655 | Tank materials Supply & Shifting | 2025-12-17 → 2025-12-16 (-1d) | 2025-12-29 → 2025-12-27 (-2d) |
| PG-12656 | Assembling OHT FRP Tank | 2025-12-29 → 2025-12-27 (-2d) | 2026-01-09 → 2026-01-08 (-1d) |
| PG-12657 | Installation of OHT Tank | 2026-01-09 → 2026-01-08 (-1d) | 2026-01-28 → 2026-01-27 (-1d) |
| PG-12658 | Water tightness works and checking | 2026-01-28 → 2026-01-27 (-1d) | 2026-02-05 → 2026-02-04 (-1d) |
| 1.3.1.3.7 | **MEP Shaft works** | 2026-01-16 → 2026-01-15 (-1d) |  |
| 1.3.1.3.7.1 | **Electrical** | 2026-01-19 → 2026-01-17 (-2d) | 2026-02-28 → 2026-02-27 (-1d) |
| PG-12659 | Tray Works | 2026-01-19 → 2026-01-17 (-2d) |  |
| PG-12660 | Cable & Conducting works |  | 2026-02-11 → 2026-02-10 (-1d) |
| PG-12661 | Wiring/DB/connector box installation and termination works | 2026-02-11 → 2026-02-10 (-1d) | 2026-02-28 → 2026-02-27 (-1d) |
| 1.3.1.3.7.2 | **FPS** | 2026-01-19 → 2026-01-17 (-2d) | 2026-02-28 → 2026-02-27 (-1d) |
| PG-12662 | Shaft MS Piping & fixtures installation | 2026-01-19 → 2026-01-17 (-2d) |  |
| PG-12663 | Tray / cabling / conducting & wiring works |  | 2026-02-28 → 2026-02-27 (-1d) |
| 1.3.1.3.7.3 | **Data & Communication** | 2026-01-16 → 2026-01-15 (-1d) | 2026-03-06 → 2026-03-05 (-1d) |
| PG-12664 | Tray Works | 2026-01-16 → 2026-01-15 (-1d) | 2026-01-31 → 2026-01-30 (-1d) |
| PG-12665 | Tray / cabling / conducting & wiring works | 2026-01-31 → 2026-01-30 (-1d) |  |
| PG-12666 | Wiring/DB/connector box installation and termination works |  | 2026-03-06 → 2026-03-05 (-1d) |
| 1.3.1.3.7.4 | **PHE** | 2026-01-19 → 2026-01-17 (-2d) |  |
| PG-12667 | Bracket fixing works | 2026-01-19 → 2026-01-17 (-2d) |  |
| PG-12668 | Piping Works |  | 2026-02-13 → 2026-02-12 (-1d) |
| PG-12669 | Terrace Ring main & OHT Connection works | 2026-02-13 → 2026-02-12 (-1d) | 2026-04-01 → 2026-03-31 (-1d) |
| PG-12670 | Commissioning | 2026-04-01 → 2026-03-31 (-1d) |  |
| 1.3.1.3.8 | **Lift Installation and Testing works** | 2026-01-01 → 2025-12-31 (-1d) | 2026-07-30 → 2026-07-29 (-1d) |
| PG-12671 | Lift Shaft Survey works | 2026-01-01 → 2025-12-31 (-1d) | 2026-01-13 → 2026-01-12 (-1d) |
| PG-12672 | Guide Rails fixing works |  | 2026-04-01 → 2026-03-31 (-1d) |
| PG-12673 | Lift Frame fixing works | 2026-04-01 → 2026-03-31 (-1d) |  |
| PG-12674 | CAR Assembly works |  | 2026-05-22 → 2026-05-21 (-1d) |
| PG-12675 | Lift Machine Room Works | 2026-05-22 → 2026-05-21 (-1d) |  |
| PG-12676 | Slow Speed & High Speed Testing works |  | 2026-07-30 → 2026-07-29 (-1d) |
| 1.3.1.3.10 | **Entrance Lobby works** | 2026-07-04 → 2026-07-03 (-1d) | 2026-10-19 → 2026-10-17 (-2d) |
| PG-12684 | Flooring Works | 2026-07-04 → 2026-07-03 (-1d) | 2026-07-21 → 2026-07-20 (-1d) |
| PG-12685 | Glass Door and installation Works | 2026-07-21 → 2026-07-20 (-1d) | 2026-08-13 → 2026-08-12 (-1d) |
| PG-12687 | Canopy Works | 2026-07-21 → 2026-07-20 (-1d) | 2026-08-20 → 2026-08-19 (-1d) |
| PG-12686 | Painting Works | 2026-08-13 → 2026-08-12 (-1d) |  |
| PG-12688 | Interior Works |  | 2026-10-19 → 2026-10-17 (-2d) |
| 1.3.1.3.11 | **Lightening Arrester works** | 2026-04-28 → 2026-04-27 (-1d) |  |
| PG-12689 | Conductor will be lifted with RCC Works, But Terrace works will be done once Parapet Painting done | 2026-04-28 → 2026-04-27 (-1d) |  |
| 1.3.1.5 | **Landscape and Hardscape works** | 2026-04-28 → 2026-04-27 (-1d) |  |
| PG-12715 | Hardscape ( Granite, Planter, Walkways Etc..) | 2026-04-28 → 2026-04-27 (-1d) | 2026-06-19 → 2026-06-18 (-1d) |
| PG-12716 | Filter media and soil filling works | 2026-06-13 → 2026-06-12 (-1d) | 2026-07-07 → 2026-07-06 (-1d) |
| PG-12717 | Irrigation piping works | 2026-06-25 → 2026-06-24 (-1d) | 2026-07-18 → 2026-07-17 (-1d) |
| PG-12718 | Planting works | 2026-07-18 → 2026-07-17 (-1d) |  |
| 1.3.9.1.1 | **Transformer Yard Civil Works** | 2026-03-23 → 2026-03-21 (-2d) |  |
| 1.3.9.1.1.1 | **Transformer 01** | 2026-03-23 → 2026-03-21 (-2d) |  |
| PG-30428 | Footing and Pedestal Excavation Works | 2026-03-23 → 2026-03-21 (-2d) | 2026-04-04 → 2026-04-03 (-1d) |
| PG-30429 | Footing and Pedestal Reinforcement works |  | 2026-04-10 → 2026-04-09 (-1d) |
| PG-30430 | Footing and Pedestal Concrete works | 2026-04-10 → 2026-04-09 (-1d) |  |
| PG-30431 | Fencing Retaining wall footing reinforcement works |  | 2026-04-29 → 2026-04-28 (-1d) |
| PG-30432 | Fencing Retaining wall footing formwork and concrete works | 2026-04-29 → 2026-04-28 (-1d) | 2026-05-06 → 2026-05-05 (-1d) |
| PG-30434 | Fencing works MS/GRC | 2026-05-04 → 2026-05-02 (-2d) | 2026-05-28 → 2026-05-27 (-1d) |
| PG-30433 | Retaining wall upto low level concrete works | 2026-05-06 → 2026-05-05 (-1d) | 2026-05-11 → 2026-05-09 (-2d) |

| ID | Task | Start | Finish | Complete | Total float |
| --- | --- | --- | --- | --- | --- |
| PG-30435 | Floor Aggregates spreading works | 2026-05-28 → 2026-05-27 (-1d) |  |  |  |
| PG-30460 | Cable Trench works |  | 2026-08-22 → 2026-08-21 (-1d) |  |  |
| PG-30461 | LTQS Installation Works | 2026-08-22 → 2026-08-21 (-1d) | 2026-09-01 → 2026-08-31 (-1d) |  |  |
| PG-30462 | Cable laying works | 2026-09-01 → 2026-08-31 (-1d) | 2026-09-16 → 2026-09-15 (-1d) |  |  |
| PG-30463 | Cable Termination works | 2026-09-16 → 2026-09-15 (-1d) | 2026-09-21 → 2026-09-19 (-2d) |  |  |
| PG-30464 | Testing and commissioning works | 2026-09-21 → 2026-09-19 (-2d) |  |  |  |
| 1.4 | **External Development Works** |  | 2025-12-23 → 2025-12-24 (+1d) |  |  |
| 1.4.6 | **Central Club House** |  | 2025-12-23 → 2025-12-24 (+1d) |  |  |
| PG-30711 | Club House Interior works | 2025-06-24 → 2025-06-25 (+1d) | 2025-12-23 → 2025-12-24 (+1d) |  | 306.48d → 304.77d |
| 1.4.6.2 | **MEP Works** |  | 2025-06-17 → 2025-06-19 (+2d) |  |  |
| PG-30697 | CP and Sanitary fixture works | 2025-05-20 → 2025-05-21 A (+1d) |  | 0% → 28% | 546.31d → 545.97d |
| 1.4.6.2.2 | **FPS Works** |  | 2025-06-17 → 2025-06-19 (+2d) |  |  |
| PG-30700 | Sprinkler fixing and Testing Works | 2025-05-20 → 2025-05-21 A (+1d) | 2025-06-17 → 2025-06-19 (+2d) | 0% → 3% | 306.48d → 304.77d |
| 1.4.6.3 | **Civil Finishing works** |  | 2025-05-20 → 2025-05-21 (+1d) |  |  |
| PG-30709 | Painting Works |  | 2025-05-20 → 2025-05-21 A (+1d) | 88% → 100% | 306.48d → none |
| PG-30737 | T&C - Floor 6 |  | 2025-05-21 → 2025-05-22 A (+1d) | 84% → 100% | 420.72d → none |
| PG-30738 | T&C - Floor 7 |  |  | 36% → 57% | 407.24d → 406.52d |
| PG-30739 | T&C - Floor 8 | 2025-05-17 A | 2025-06-19 → 2025-06-20 (+1d) | 0% → 16% | 393.58d → 392.67d |
| PG-30741 | T&C - Floor 10 | 2025-06-14 → 2025-06-16 (+2d) | 2025-07-19 → 2025-07-21 (+2d) |  | 369.82d → 367.97d |
| PG-30743 | T&C - Floor 12 | 2025-07-10 → 2025-07-11 (+1d) |  |  | 348.66d → 347.75d |
| PG-30744 | T&C - Floor 13 | 2025-07-23 → 2025-07-24 (+1d) | 2025-08-27 → 2025-08-28 (+1d) |  | 337.98d → 336.27d |
| PG-30745 | T&C - Floor 14 |  | 2025-09-11 → 2025-09-10 (-1d) |  | 325.33d → 324.99d |
| 1.6.1.2.1 | **Units** |  | 2026-04-01 → 2026-04-02 (+1d) |  |  |
| PG-30768 | T&C - Floor 6 |  |  | 76% → 96% | 418.32d → 417.59d |
| PG-30769 | T&C - Floor 7 |  |  | 45% → 65% | 409.08d → 408.35d |
| PG-30770 | T&C - Floor 8 | 2025-05-21 A | 2025-06-24 → 2025-06-21 (-3d) | 0% → 13% | 391.25d → 392.79d |
| PG-30772 | T&C - Floor 10 | 2025-06-14 → 2025-06-18 (+4d) | 2025-07-19 → 2025-07-23 (+4d) |  | 370.04d → 366.14d |
| PG-30775 | T&C - Floor 13 | 2025-07-25 → 2025-07-26 (+1d) | 2025-08-28 → 2025-08-29 (+1d) |  | 336.59d → 335.19d |
| PG-30776 | T&C - Floor 14 |  | 2025-09-11 → 2025-09-12 (+1d) |  | 324.67d → 323.64d |
| PG-30777 | T&C - Floor 15 |  | 2025-09-23 → 2025-09-24 (+1d) |  | 314.67d → 313.76d |
| PG-30780 | T&C - Floor 18 |  | 2025-11-04 → 2025-11-05 (+1d) |  | 281.5d → 280.59d |
| PG-30781 | T&C - Floor 19 |  | 2025-11-17 → 2025-11-18 (+1d) |  | 270.5d → 269.59d |
| PG-30782 | T&C - Floor 20 |  | 2025-12-01 → 2025-12-02 (+1d) |  | 258.5d → 257.59d |
| PG-30784 | T&C - Floor 22 | 2025-11-29 → 2025-12-01 (+2d) |  |  | 229d → 228.09d |
| PG-30788 | T&C - Floor 26 |  | 2026-04-01 → 2026-04-02 (+1d) |  | 124.83d → 123.93d |
| 1.6.1.2.2 | **Common Areas** | 2025-11-13 → 2025-11-14 (+1d) |  |  |  |
| PG-30790 | T&C - Internal FPS Works | 2025-11-13 → 2025-11-14 (+1d) |  |  | 228d → 227.09d |
| PG-30791 | T&C - Data & Communication Works |  | 2025-12-06 → 2025-12-08 (+2d) |  | 222.67d → 221.76d |
| PG-30792 | T&C - Internal PHE Works including OHT |  | 2026-01-16 → 2026-01-17 (+1d) |  | 186.83d → 185.93d |
| PG-30794 | T&C - Electrical Panel Works |  | 2026-03-21 → 2026-03-23 (+2d) |  | 163.67d → 162.76d |
| 1.6.1.3.1 | **Units** |  | 2026-07-16 → 2026-07-15 (-1d) |  |  |
| PG-30798 | T&C - Floor 2 |  | 2025-05-20 → 2025-05-21 A (+1d) | 87% → 100% | 419.86d → none |
| PG-30799 | T&C - Floor 3 |  |  | 12% → 32% | 398.54d → 397.82d |
| PG-30800 | T&C - Floor 4 | 2025-05-21 → 2025-05-22 A (+1d) | 2025-06-26 → 2025-06-24 (-2d) | 0% → 9% | 389.5d → 389.9d |
| PG-30802 | T&C - Floor 6 |  | 2025-07-24 → 2025-07-25 (+1d) |  | 365.82d → 364.28d |
| PG-30803 | T&C - Floor 7 | 2025-07-04 → 2025-07-05 (+1d) | 2025-08-07 → 2025-08-08 (+1d) |  | 354.28d → 352.52d |
| PG-30804 | T&C - Floor 8 | 2025-07-23 → 2025-07-24 (+1d) | 2025-08-26 → 2025-08-27 (+1d) |  | 337.64d → 335.94d |
| PG-30806 | T&C - Floor 10 | 2025-08-23 → 2025-08-22 (-1d) | 2025-09-27 → 2025-09-26 (-1d) |  |  |
| PG-30807 | T&C - Floor 11 | 2025-09-05 → 2025-09-04 (-1d) | 2025-10-11 → 2025-10-10 (-1d) |  |  |
| PG-30808 | T&C - Floor 12 | 2025-09-22 → 2025-09-20 (-2d) | 2025-10-27 → 2025-10-25 (-2d) |  |  |
| PG-30809 | T&C - Floor 13 | 2025-10-06 → 2025-10-04 (-2d) | 2025-11-10 → 2025-11-08 (-2d) |  |  |
| PG-30810 | T&C - Floor 14 | 2025-10-16 → 2025-10-15 (-1d) | 2025-11-20 → 2025-11-19 (-1d) |  |  |
| PG-30812 | T&C - Floor 16 | 2025-11-12 → 2025-11-11 (-1d) | 2025-12-16 → 2025-12-15 (-1d) |  |  |
| PG-30813 | T&C - Floor 17 | 2025-11-24 → 2025-11-22 (-2d) | 2025-12-29 → 2025-12-27 (-2d) |  |  |
| PG-30814 | T&C - Floor 18 | 2025-12-06 → 2025-12-05 (-1d) | 2026-01-10 → 2026-01-09 (-1d) |  |  |
| PG-30815 | T&C - Floor 19 | 2025-12-19 → 2025-12-18 (-1d) | 2026-01-23 → 2026-01-22 (-1d) |  |  |
| PG-30816 | T&C - Floor 20 | 2026-01-02 → 2026-01-01 (-1d) |  |  |  |
| PG-30817 | T&C - Floor 21 | 2026-01-15 → 2026-01-14 (-1d) |  |  |  |
| PG-30818 | T&C - Floor 22 | 2026-01-29 → 2026-01-28 (-1d) |  |  |  |
| PG-30819 | T&C - Floor 23 |  | 2026-03-17 → 2026-03-16 (-1d) |  |  |
| PG-30820 | T&C - Floor 24 | 2026-02-24 → 2026-02-23 (-1d) |  |  |  |
| PG-30821 | T&C - Floor 25 | 2026-03-17 → 2026-03-16 (-1d) |  |  |  |
| PG-30822 | T&C - Floor 26 | 2026-04-07 → 2026-04-06 (-1d) | 2026-05-14 → 2026-05-13 (-1d) |  |  |
| PG-30823 | T&C - Floor 27 | 2026-04-29 → 2026-04-28 (-1d) | 2026-06-04 → 2026-06-03 (-1d) |  |  |
| PG-30824 | T&C - Floor 28 | 2026-05-21 → 2026-05-20 (-1d) | 2026-06-25 → 2026-06-24 (-1d) |  |  |
| PG-30825 | T&C - Floor 29 |  | 2026-07-16 → 2026-07-15 (-1d) |  |  |
| 1.6.1.3.2 | **Common Areas** | 2026-02-28 → 2026-02-27 (-1d) |  |  |  |
| PG-30826 | T&C - Internal Electrical Works | 2026-02-28 → 2026-02-27 (-1d) |  |  |  |
| PG-30827 | T&C - Internal FPS Works | 2026-02-28 → 2026-02-27 (-1d) | 2026-03-18 → 2026-03-17 (-1d) |  |  |
| PG-30828 | T&C - Data & Communication Works | 2026-03-06 → 2026-03-05 (-1d) |  |  |  |

| ID | Task | Start | Finish | Complete | Total float |
| --- | --- | --- | --- | --- | --- |
| PG-30829 | T&C - Internal PHE Works including OHT |  | 2026-05-02 → 2026-05-01 (-1d) |  |  |
| PG-30832 | T&C - Lightining Arrestor works |  | 2026-05-16 → 2026-05-15 (-1d) |  |  |
| PG-30830 | T&C - Lift Works | 2026-07-30 → 2026-07-29 (-1d) | 2026-08-11 → 2026-08-10 (-1d) |  |  |
| PG-31526 | T&C - FPS & FA works ( External & Plant Room ) | 2025-08-26 → 2025-08-28 (+2d) | 2025-09-30 → 2025-10-01 (+1d) |  | 414.64d → 412.09d |
| 1.7 | **Snagging De Snagging** |  | 2026-12-05 → 2026-12-04 (-1d) |  |  |
| PG-32377 | Project Signage & Carpark / Driveway marking works | 2026-02-11 → 2026-02-12 (+1d) | 2026-02-24 → 2026-02-25 (+1d) |  | 315.48d → 313.77d |
| 1.7.1 | **Building 1** |  | 2026-11-05 → 2026-11-04 (-1d) |  |  |
| 1.7.1.1.1 | **Units** |  | 2026-03-30 → 2026-03-28 (-2d) |  |  |
| PG-31538 | Floor 4 |  |  | 79% → 98% | 448.67d → 447.94d |
| PG-31539 | Floor 5 |  |  | 23% → 43% | 432.25d → 431.52d |
| PG-31540 | Floor 6 | 2025-05-21 → 2025-05-22 A (+1d) |  | 0% → 3% | 420.72d → 419.58d |
| PG-31544 | Floor 10 | 2025-07-19 → 2025-07-21 (+2d) | 2025-08-25 → 2025-08-26 (+1d) |  | 369.82d → 367.97d |
| PG-31545 | Floor 11 |  | 2025-09-09 → 2025-09-08 (-1d) |  | 357.17d → 356.52d |
| PG-31547 | Floor 13 | 2025-08-27 → 2025-08-28 (+1d) | 2025-10-01 → 2025-10-03 (+2d) |  | 337.98d → 336.27d |
| PG-31548 | Floor 14 | 2025-09-11 → 2025-09-10 (-1d) |  |  | 325.33d → 324.99d |
| PG-31554 | Floor 20 |  | 2026-01-23 → 2026-01-22 (-1d) |  | 242.17d → 241.52d |
| PG-31555 | Floor 21 |  | 2026-02-16 → 2026-02-14 (-2d) |  | 223.17d → 222.52d |
| PG-31556 | Floor 22 |  | 2026-03-11 → 2026-03-10 (-1d) |  | 203.17d → 202.52d |
| PG-31557 | Floor 23 |  | 2026-03-30 → 2026-03-28 (-2d) |  | 187.17d → 186.52d |
| PG-31570 | Floor 4 |  |  | 58% → 77% | 442.25d → 441.52d |
| PG-31571 | Floor 5 |  |  | 27% → 46% | 432.84d → 432.11d |
| PG-31574 | Floor 8 | 2025-06-24 → 2025-06-21 (-3d) | 2025-07-29 → 2025-07-26 (-3d) |  | 391.25d → 392.79d |
| PG-31576 | Floor 10 | 2025-07-19 → 2025-07-23 (+4d) | 2025-08-25 → 2025-08-28 (+3d) |  | 370.04d → 366.14d |
| PG-31577 | Floor 11 |  | 2025-09-06 → 2025-09-08 (+2d) |  | 358.25d → 357.36d |
| PG-31579 | Floor 13 | 2025-08-28 → 2025-08-29 (+1d) | 2025-10-03 → 2025-10-04 (+1d) |  | 336.59d → 335.19d |
| PG-31580 | Floor 14 | 2025-09-11 → 2025-09-12 (+1d) |  |  | 324.67d → 323.64d |
| PG-31581 | Floor 15 | 2025-09-23 → 2025-09-24 (+1d) |  |  | 314.67d → 313.76d |
| PG-31582 | Floor 16 |  | 2025-11-11 → 2025-11-12 (+1d) |  | 304.33d → 303.43d |
| PG-31583 | Floor 17 |  | 2025-11-24 → 2025-11-25 (+1d) |  | 293.33d → 292.43d |
| PG-31584 | Floor 18 | 2025-11-04 → 2025-11-05 (+1d) |  |  | 281.5d → 280.59d |
| PG-31585 | Floor 19 | 2025-11-17 → 2025-11-18 (+1d) |  |  | 270.5d → 269.59d |
| PG-31586 | Floor 20 | 2025-12-01 → 2025-12-02 (+1d) |  |  | 258.5d → 257.59d |
| PG-31591 | Floor 25 |  | 2026-04-15 → 2026-04-16 (+1d) |  | 172.33d → 171.43d |
| PG-31592 | Floor 26 | 2026-04-01 → 2026-04-02 (+1d) |  |  | 154.5d → 153.59d |
| PG-31596 | Data & Communication Works | 2025-12-06 → 2025-12-08 (+2d) |  |  | 222.67d → 221.76d |
| PG-31597 | Internal PHE Works including OHT | 2026-01-16 → 2026-01-17 (+1d) |  |  | 186.83d → 185.93d |
| PG-31599 | Electrical Panel Works | 2026-03-21 → 2026-03-23 (+2d) |  |  | 163.67d → 162.76d |
| PG-31594 | Internal Electrical Works | 2026-04-01 → 2026-04-02 (+1d) |  |  | 124.83d → 123.93d |
| 1.7.1.3 | **Tower 3** |  | 2026-11-05 → 2026-11-04 (-1d) |  |  |
| 1.7.1.3.1 | **Units** |  | 2026-08-21 → 2026-08-20 (-1d) |  |  |
| PG-31601 | Ground Floor |  |  | 59% → 80% | 443.23d → 442.5d |
| PG-31602 | Floor 1 |  |  | 12% → 32% | 428.26d → 427.53d |
| PG-31603 | Floor 2 | 2025-05-20 → 2025-05-21 A (+1d) | 2025-06-26 → 2025-06-27 (+1d) | 0% → 3% | 419.86d → 417.8d |
| PG-31605 | Floor 4 | 2025-06-26 → 2025-06-24 (-2d) | 2025-07-31 → 2025-07-30 (-1d) |  | 389.5d → 389.9d |
| PG-31607 | Floor 6 | 2025-07-24 → 2025-07-25 (+1d) | 2025-08-29 → 2025-08-30 (+1d) |  | 365.82d → 364.28d |
| PG-31608 | Floor 7 | 2025-08-07 → 2025-08-08 (+1d) | 2025-09-11 → 2025-09-12 (+1d) |  | 354.28d → 352.52d |
| PG-31609 | Floor 8 | 2025-08-26 → 2025-08-27 (+1d) | 2025-10-01 → 2025-10-03 (+2d) |  | 337.64d → 335.94d |
| PG-31611 | Floor 10 | 2025-09-27 → 2025-09-26 (-1d) | 2025-11-04 → 2025-11-03 (-1d) |  |  |
| PG-31612 | Floor 11 | 2025-10-11 → 2025-10-10 (-1d) |  |  |  |
| PG-31613 | Floor 12 | 2025-10-27 → 2025-10-25 (-2d) | 2025-12-02 → 2025-12-01 (-1d) |  |  |
| PG-31614 | Floor 13 | 2025-11-10 → 2025-11-08 (-2d) |  |  |  |
| PG-31615 | Floor 14 | 2025-11-20 → 2025-11-19 (-1d) |  |  |  |
| PG-31617 | Floor 16 | 2025-12-16 → 2025-12-15 (-1d) |  |  |  |
| PG-31618 | Floor 17 | 2025-12-29 → 2025-12-27 (-2d) |  |  |  |
| PG-31619 | Floor 18 | 2026-01-10 → 2026-01-09 (-1d) |  |  |  |
| PG-31620 | Floor 19 | 2026-01-23 → 2026-01-22 (-1d) |  |  |  |
| PG-31621 | Floor 20 |  | 2026-03-13 → 2026-03-12 (-1d) |  |  |
| PG-31622 | Floor 21 |  | 2026-03-26 → 2026-03-25 (-1d) |  |  |
| PG-31623 | Floor 22 |  | 2026-04-08 → 2026-04-07 (-1d) |  |  |
| PG-31624 | Floor 23 | 2026-03-17 → 2026-03-16 (-1d) | 2026-04-21 → 2026-04-20 (-1d) |  |  |
| PG-31625 | Floor 24 |  | 2026-05-04 → 2026-05-02 (-2d) |  |  |
| PG-31626 | Floor 25 |  | 2026-05-26 → 2026-05-25 (-1d) |  |  |
| PG-31627 | Floor 26 | 2026-05-14 → 2026-05-13 (-1d) |  |  |  |
| PG-31628 | Floor 27 | 2026-06-04 → 2026-06-03 (-1d) |  |  |  |
| PG-31629 | Floor 28 | 2026-06-25 → 2026-06-24 (-1d) |  |  |  |
| PG-31630 | Floor 29 | 2026-07-16 → 2026-07-15 (-1d) | 2026-08-21 → 2026-08-20 (-1d) |  |  |
| 1.7.1.3.2 | **Common Areas** |  | 2026-11-05 → 2026-11-04 (-1d) |  |  |
| PG-31632 | Internal Electrical Works |  | 2026-04-04 → 2026-04-03 (-1d) |  |  |
| PG-31633 | Internal FPS Works | 2026-03-18 → 2026-03-17 (-1d) |  |  |  |
| PG-31634 | Data & Communication Works |  | 2026-04-09 → 2026-04-08 (-1d) |  |  |

| ID | Task | Start | Finish | Total float |
| --- | --- | --- | --- | --- |
| PG-31635 | Internal PHE Works including OHT | 2026-05-02 → 2026-05-01 (-1d) |  |  |
| PG-31638 | Lightining Arrestor works | 2026-05-16 → 2026-05-15 (-1d) | 2026-05-25 → 2026-05-23 (-2d) |  |
| PG-31636 | Lift Works | 2026-08-11 → 2026-08-10 (-1d) | 2026-09-04 → 2026-09-03 (-1d) |  |
| PG-31631 | Common Area Civil Works | 2026-10-19 → 2026-10-17 (-2d) | 2026-11-05 → 2026-11-04 (-1d) |  |
| 1.7.9 | **Project InfraStructure Works ( Services & MEP )** |  | 2026-12-05 → 2026-12-04 (-1d) |  |
| PG-32348 | FPS & FA works ( External & Plant Room ) | 2025-09-30 → 2025-10-01 (+1d) | 2025-10-11 → 2025-10-14 (+3d) | 414.64d → 412.09d |
| 1.7.9.1 | **Transformer Works** |  | 2026-12-05 → 2026-12-04 (-1d) |  |
| PG-32336 | Transformer 01 ( Building 01 & 02 ) |  | 2026-12-05 → 2026-12-04 (-1d) |  |
| 1.7.10 | **External Development Works** | 2025-12-23 → 2025-12-24 (+1d) | 2026-02-11 → 2026-02-12 (+1d) |  |
| PG-32370 | Clubhouse | 2025-12-23 → 2025-12-24 (+1d) | 2026-02-11 → 2026-02-12 (+1d) | 306.48d → 304.77d |
| 1.8 | **Handing Over** | 2026-02-11 → 2026-02-12 (+1d) |  |  |
| PG-32387 | External Development Works | 2026-02-11 → 2026-02-12 (+1d) | 2026-03-06 → 2026-03-07 (+1d) | 306.48d → 304.77d |
| PG-32378 | Building 1 | 2026-11-05 → 2026-11-04 (-1d) |  |  |
| PG-32386 | Project InfraStructure Works ( Services & MEP ) | 2027-01-27 → 2027-01-25 (-2d) |  |  |
| 1.10 | **Post Construction Statutory Approvals** |  | 2027-03-03 → 2027-03-02 (-1d) |  |
| PG-32391 | Fire NOC | 2025-06-17 → 2025-06-19 (+2d) | 2025-08-26 → 2025-08-28 (+2d) | 414.64d → 412.09d |
| PG-32394 | CEIG Approval - Lift |  | 2026-12-21 → 2026-12-19 (-2d) |  |
| PG-32395 | Pollution Control board CFO | 2026-12-21 → 2026-12-19 (-2d) | 2027-01-27 → 2027-01-25 (-2d) |  |
| PG-32397 | Occupation Certificate | 2026-12-21 → 2026-12-19 (-2d) | 2027-03-03 → 2027-03-02 (-1d) |  |
| 2 | **Milestone** |  | 2027-03-03 → 2027-03-02 (-1d) |  |
| MS-1001 | Tower 1 - Structure Complete | 2025-08-19 → 2025-08-18 (-1d) | 2025-08-19 → 2025-08-18 (-1d) | 480d → 479.36d |
| MS-1002 | Tower 1 - MEP 1st Fix Complete | 2025-11-24 → 2025-11-22 (-2d) | 2025-11-24 → 2025-11-22 (-2d) | 399d → 398.36d |
| MS-9005 | Club House Complete | 2025-12-23 → 2025-12-24 (+1d) | 2025-12-23 → 2025-12-24 (+1d) | 373.98d → 372.27d |
| MS-1003 | Tower 1 - MEP 2nd Fix Complete | 2025-12-29 → 2025-12-27 (-2d) | 2025-12-29 → 2025-12-27 (-2d) | 369d → 368.36d |
| MS-3001 | Tower 3 - Structure Complete | 2026-01-12 → 2026-01-10 (-2d) | 2026-01-12 → 2026-01-10 (-2d) |  |
| MS-2003 | Tower 2 - MEP 2nd Fix Complete | 2026-02-02 → 2026-02-03 (+1d) | 2026-02-02 → 2026-02-03 (+1d) | 339.17d → 338.26d |
| MS-9008 | External Development Complete | 2026-02-11 → 2026-02-12 (+1d) | 2026-02-11 → 2026-02-12 (+1d) | 331.14d → 329.44d |
| MS-3002 | Tower 3 - MEP 1st Fix Complete | 2026-04-15 → 2026-04-14 (-1d) | 2026-04-15 → 2026-04-14 (-1d) |  |
| MS-3003 | Tower 3 - MEP 2nd Fix Complete | 2026-05-20 → 2026-05-19 (-1d) | 2026-05-20 → 2026-05-19 (-1d) |  |
| MS-3004 | Tower 3 - Internal Finishes Complete | 2026-07-04 → 2026-07-03 (-1d) | 2026-07-04 → 2026-07-03 (-1d) |  |
| MS-3006 | Tower 3 - Lifts Commissioned | 2026-07-30 → 2026-07-29 (-1d) | 2026-07-30 → 2026-07-29 (-1d) |  |
| MS-9990 | Snagging Complete | 2026-12-05 → 2026-12-04 (-1d) | 2026-12-05 → 2026-12-04 (-1d) |  |
| MS-9991 | Statutory Approvals Obtained | 2027-03-03 → 2027-03-02 (-1d) | 2027-03-03 → 2027-03-02 (-1d) |  |

## Version 12 (data date 2025-05-30, saved 2026-09-20, file APX_2025-05-30.xer)

Last finish 2027-03-08 → 2027-03-09 (+1d). Complete tasks 1267 → 1305.

Changed:

| ID | Task | Start | Finish | Complete | Total float |
| --- | --- | --- | --- | --- | --- |
| 1 | **Project Genisis** |  | 2027-03-08 → 2027-03-09 (+1d) |  |  |
| PG-32433 | Project Close Out | 2027-03-02 → 2027-03-03 (+1d) | 2027-03-08 → 2027-03-09 (+1d) |  |  |
| 1.2 | **Procurement and Materials requirement to Site** |  | 2026-07-29 → 2026-07-30 (+1d) |  |  |
| PG-10011 | Second Consignment Supply to site ( 5th to 14th Floor ) | 2025-05-27 A |  | 0% → 24% | 23.19d → 24.35d |
| PG-10032 | Materials Supply to site | 2025-07-22 → 2025-07-21 (-1d) |  |  | 140.86d → 142.31d |
| 1.2.8 | **Transformer Supply** | 2026-02-27 → 2026-02-28 (+1d) | 2026-07-29 → 2026-07-30 (+1d) |  |  |
| PG-10035 | Purchase Order works | 2026-02-27 → 2026-02-28 (+1d) | 2026-03-11 → 2026-03-12 (+1d) |  |  |
| PG-10036 | Materials Supply to site | 2026-06-24 → 2026-06-25 (+1d) | 2026-07-29 → 2026-07-30 (+1d) |  |  |
| 1.3 | **Construction** |  | 2026-10-17 → 2026-10-19 (+2d) |  |  |
| 1.3.1 | **Building 1** |  | 2026-10-17 → 2026-10-19 (+2d) |  |  |
| 1.3.1.1.2.23.1 | **Columns / shear walls** |  | 2025-05-24 → 2025-05-26 (+2d) |  |  |
| PG-10172 | Formwork |  | 2025-05-24 → 2025-05-26 A (+2d) | 59% → 100% | 45.86d → none |
| PG-10173 | Formwork | 2025-05-24 A | 2025-05-27 → 2025-05-28 A (+1d) | 0% → 100% | 45.86d → none |
| PG-10174 | Reinforcement | 2025-05-27 A | 2025-05-29 → 2025-05-30 A (+1d) | 0% → 100% | 45.86d → none |
| PG-10175 | Concrete | 2025-05-30 A |  | 0% → 39% | 45.86d → 47.31d |
| 1.3.1.1.2.24 | **Floor 21** | 2025-05-31 → 2025-05-30 (-1d) |  |  |  |
| 1.3.1.1.2.24.1 | **Columns / shear walls** | 2025-05-31 → 2025-05-30 (-1d) |  |  |  |
| PG-10176 | Reinforcement | 2025-05-31 → 2025-05-30 (-1d) |  |  | 45.86d → 47.31d |
| PG-10177 | Formwork | 2025-06-03 → 2025-06-02 (-1d) |  |  | 45.86d → 47.31d |
| 1.3.1.1.2.24.2 | **Slab, Beams & Staircase** | 2025-06-06 → 2025-06-05 (-1d) |  |  |  |
| PG-10178 | Formwork | 2025-06-06 → 2025-06-05 (-1d) |  |  | 45.86d → 47.31d |
| PG-10179 | Reinforcement | 2025-06-09 → 2025-06-07 (-2d) |  |  | 45.86d → 47.31d |
| PG-10180 | Concrete | 2025-06-12 → 2025-06-11 (-1d) |  |  | 45.86d → 47.31d |
| 1.3.1.1.2.25 | **Floor 22** | 2025-06-13 → 2025-06-12 (-1d) |  |  |  |
| 1.3.1.1.2.25.1 | **Columns / shear walls** | 2025-06-13 → 2025-06-12 (-1d) |  |  |  |
| PG-10181 | Reinforcement | 2025-06-13 → 2025-06-12 (-1d) |  |  | 45.86d → 47.31d |
| PG-10182 | Formwork | 2025-06-16 → 2025-06-14 (-2d) |  |  | 45.86d → 47.31d |
| 1.3.1.1.2.25.2 | **Slab, Beams & Staircase** | 2025-06-19 → 2025-06-18 (-1d) |  |  |  |
| PG-10183 | Formwork | 2025-06-19 → 2025-06-18 (-1d) |  |  | 45.86d → 47.31d |
| PG-10184 | Reinforcement | 2025-06-21 → 2025-06-20 (-1d) |  |  | 45.86d → 47.31d |
| PG-10185 | Concrete | 2025-06-25 → 2025-06-24 (-1d) |  |  | 45.86d → 47.31d |
| 1.3.1.1.2.26 | **Floor 23** | 2025-06-26 → 2025-06-25 (-1d) |  |  |  |
| 1.3.1.1.2.26.1 | **Columns / shear walls** | 2025-06-26 → 2025-06-25 (-1d) |  |  |  |
| PG-10186 | Reinforcement | 2025-06-26 → 2025-06-25 (-1d) |  |  | 45.86d → 47.31d |
| PG-10187 | Formwork | 2025-06-28 → 2025-06-27 (-1d) |  |  | 45.86d → 47.31d |
| 1.3.1.1.2.26.2 | **Slab, Beams & Staircase** | 2025-07-02 → 2025-07-01 (-1d) |  |  |  |
| PG-10188 | Formwork | 2025-07-02 → 2025-07-01 (-1d) |  |  | 45.86d → 47.31d |
| PG-10189 | Reinforcement | 2025-07-04 → 2025-07-03 (-1d) |  |  | 45.86d → 47.31d |
| PG-10190 | Concrete | 2025-07-08 → 2025-07-07 (-1d) |  |  | 45.86d → 47.31d |
| 1.3.1.1.2.27 | **Above Terrace Floor** | 2025-07-09 → 2025-07-08 (-1d) |  |  |  |
| 1.3.1.1.2.27.1 | **Columns / shear walls/Parapet Walls** | 2025-07-09 → 2025-07-08 (-1d) |  |  |  |
| PG-10191 | Reinforcement | 2025-07-09 → 2025-07-08 (-1d) |  |  | 123.36d → 124.81d |
| PG-10192 | Formwork | 2025-07-11 → 2025-07-10 (-1d) |  |  | 123.36d → 124.81d |
| PG-10193 | Concrete | 2025-07-17 → 2025-07-16 (-1d) |  |  | 123.36d → 124.81d |
| 1.3.1.1.2.27.2 | **Slab, Beams & Staircase Head rooms, Lift headroom** | 2025-07-14 → 2025-07-12 (-2d) |  |  |  |
| PG-10197 | Terrace Waterproofing and Protective finishing. | 2025-07-14 → 2025-07-12 (-2d) |  |  | 248.52d → 249.97d |
| PG-10194 | Formwork | 2025-07-23 → 2025-07-22 (-1d) |  |  | 248.52d → 249.97d |
| PG-10195 | Reinforcement | 2025-07-29 → 2025-07-28 (-1d) |  |  | 248.52d → 249.97d |
| PG-10196 | Concrete | 2025-08-04 → 2025-08-02 (-2d) |  |  | 248.52d → 249.97d |
| 1.3.1.1.3.12 | **Floor 9** |  | 2025-05-31 → 2025-06-02 (+2d) |  |  |
| 1.3.1.1.3.12.1 | **PHE Works** |  | 2025-05-31 → 2025-06-02 (+2d) |  |  |
| PG-10288 | Final Fix - CP & Sanitary fixtures |  | 2025-05-31 → 2025-06-02 (+2d) | 23% → 84% | 381.63d → 381.83d |
| 1.3.1.1.3.12.2 | **Fire Fighting Works** |  | 2025-05-31 → 2025-06-02 (+2d) |  |  |
| PG-10291 | Final Fix - Smoke & heat detectors, FHC , FAS Etc. |  | 2025-05-31 → 2025-06-02 (+2d) | 31% → 92% | 381.8d → 381.83d |
| 1.3.1.1.3.12.3 | **Electrical Works** |  | 2025-05-31 → 2025-06-02 (+2d) |  |  |
| PG-10294 | Final Fix - Electrical Fixtures | 2025-05-24 → 2025-05-26 A (+2d) | 2025-05-31 → 2025-06-02 (+2d) | 0% → 90% | 381.8d → 381.83d |
| PG-10299 | 2nd Fix - Sprinkler fixing & Pressure testing |  | 2025-05-26 → 2025-05-27 A (+1d) | 78% → 100% | 375.94d → none |
| PG-10302 | 2nd Fix - Wiring works |  | 2025-05-24 A | 94% → 100% | 380.77d → none |
| PG-10306 | Final Fix - CP & Sanitary fixtures | 2025-06-18 → 2025-06-17 (-1d) |  |  | 356.52d → 357.93d |
| PG-10308 | 2nd Fix - Sprinkler fixing & Pressure testing | 2025-05-28 A | 2025-06-09 → 2025-06-07 (-2d) | 0% → 43% | 364.52d → 366.26d |
| PG-10309 | Final Fix - Smoke & heat detectors, FHC , FAS Etc. | 2025-06-18 → 2025-06-17 (-1d) |  |  | 356.52d → 357.93d |
| PG-10311 | 2nd Fix - Wiring works |  | 2025-06-07 → 2025-06-06 (-1d) | 20% → 60% | 369.36d → 371.09d |
| PG-10312 | Final Fix - Electrical Fixtures | 2025-06-23 → 2025-06-21 (-2d) |  |  | 356.52d → 357.93d |
| 1.3.1.1.3.15 | **Floor 12** |  | 2025-07-11 → 2025-07-12 (+1d) |  |  |
| 1.3.1.1.3.15.1 | **PHE Works** |  | 2025-07-11 → 2025-07-12 (+1d) |  |  |
| PG-10315 | Final Fix - CP & Sanitary fixtures | 2025-06-30 → 2025-07-01 (+1d) | 2025-07-11 → 2025-07-12 (+1d) |  | 347.75d → 347.83d |
| 1.3.1.1.3.15.2 | **Fire Fighting Works** |  | 2025-07-11 → 2025-07-12 (+1d) |  |  |
| PG-10317 | 2nd Fix - Sprinkler fixing & Pressure testing | 2025-06-09 → 2025-06-10 (+1d) | 2025-06-20 → 2025-06-21 (+1d) |  | 355.42d → 355.5d |
| PG-10318 | Final Fix - Smoke & heat detectors, FHC , FAS Etc. | 2025-06-30 → 2025-07-01 (+1d) | 2025-07-11 → 2025-07-12 (+1d) |  | 347.75d → 347.83d |
| 1.3.1.1.3.15.3 | **Electrical Works** |  | 2025-07-11 → 2025-07-12 (+1d) |  |  |

| ID | Task | Start | Finish | Complete | Total float |
| --- | --- | --- | --- | --- | --- |
| PG-10320 | 2nd Fix - Wiring works | 2025-06-02 → 2025-06-03 (+1d) | 2025-06-19 → 2025-06-20 (+1d) |  | 360.42d → 360.5d |
| PG-10321 | Final Fix - Electrical Fixtures | 2025-07-04 → 2025-07-05 (+1d) | 2025-07-11 → 2025-07-12 (+1d) |  | 347.75d → 347.83d |
| 1.3.1.1.3.16 | **Floor 13** |  | 2025-07-24 → 2025-07-23 (-1d) |  |  |
| 1.3.1.1.3.16.1 | **PHE Works** |  | 2025-07-24 → 2025-07-23 (-1d) |  |  |
| PG-10323 | 2nd Fix - diverter fixing & Pressure testing |  | 2025-05-26 A | 89% → 100% | 336.27d → none |
| PG-10324 | Final Fix - CP & Sanitary fixtures | 2025-07-12 → 2025-07-11 (-1d) | 2025-07-24 → 2025-07-23 (-1d) |  | 336.27d → 338.71d |
| 1.3.1.1.3.16.2 | **Fire Fighting Works** |  | 2025-07-24 → 2025-07-23 (-1d) |  |  |
| PG-10325 | 1st Fix - Piping and Shaft hydrant works |  | 2025-05-29 A | 61% → 100% | 379.94d → none |
| PG-10326 | 2nd Fix - Sprinkler fixing & Pressure testing | 2025-06-20 → 2025-06-19 (-1d) | 2025-07-02 → 2025-07-01 (-1d) |  | 346.27d → 348.71d |
| PG-10327 | Final Fix - Smoke & heat detectors, FHC , FAS Etc. | 2025-07-14 → 2025-07-12 (-2d) | 2025-07-24 → 2025-07-23 (-1d) |  | 336.27d → 338.71d |
| 1.3.1.1.3.16.3 | **Electrical Works** |  | 2025-07-24 → 2025-07-23 (-1d) |  |  |
| PG-10329 | 2nd Fix - Wiring works | 2025-06-13 → 2025-06-12 (-1d) | 2025-07-01 → 2025-06-30 (-1d) |  | 351.27d → 353.71d |
| PG-10330 | Final Fix - Electrical Fixtures | 2025-07-18 → 2025-07-17 (-1d) | 2025-07-24 → 2025-07-23 (-1d) |  | 336.27d → 338.71d |
| PG-10331 | 1st Fix - Piping works |  |  | 36% → 86% | 324.99d → 326.05d |
| PG-10332 | 2nd Fix - diverter fixing & Pressure testing | 2025-05-27 → 2025-05-28 A (+1d) |  | 0% → 34% | 324.99d → 326.05d |
| 1.3.1.1.3.17.2 | **Fire Fighting Works** | 2025-05-26 → 2025-05-28 (+2d) |  |  |  |
| PG-10334 | 1st Fix - Piping and Shaft hydrant works | 2025-05-26 → 2025-05-28 A (+2d) | 2025-06-09 → 2025-06-10 (+1d) | 0% → 38% | 372.45d → 373.39d |
| PG-10337 | 1st Fix - GI wire pulling |  | 2025-05-26 → 2025-05-27 A (+1d) | 64% → 100% | 372.45d → none |
| 1.3.1.1.3.18 | **Floor 15** | 2025-05-31 → 2025-05-30 (-1d) |  |  |  |
| 1.3.1.1.3.18.1 | **PHE Works** | 2025-05-31 → 2025-05-30 (-1d) |  |  |  |
| PG-10340 | 1st Fix - Piping works | 2025-05-31 → 2025-05-30 (-1d) |  |  | 132.19d → 133.64d |
| PG-10341 | 2nd Fix - diverter fixing & Pressure testing | 2025-06-10 → 2025-06-09 (-1d) |  |  | 132.19d → 133.64d |
| PG-10342 | Final Fix - CP & Sanitary fixtures | 2025-08-08 → 2025-08-07 (-1d) |  |  | 314.69d → 316.14d |
| 1.3.1.1.3.18.2 | **Fire Fighting Works** | 2025-06-10 → 2025-06-09 (-1d) |  |  |  |
| PG-10343 | 1st Fix - Piping and Shaft hydrant works | 2025-06-10 → 2025-06-09 (-1d) |  |  | 361.36d → 362.81d |
| PG-10344 | 2nd Fix - Sprinkler fixing & Pressure testing | 2025-07-17 → 2025-07-16 (-1d) |  |  | 323.69d → 325.14d |
| PG-10345 | Final Fix - Smoke & heat detectors, FHC , FAS Etc. | 2025-08-08 → 2025-08-07 (-1d) |  |  | 314.69d → 316.14d |
| 1.3.1.1.3.18.3 | **Electrical Works** | 2025-05-31 → 2025-05-30 (-1d) |  |  |  |
| PG-10346 | 1st Fix - GI wire pulling | 2025-05-31 → 2025-05-30 (-1d) |  |  | 361.36d → 362.81d |
| PG-10347 | 2nd Fix - Wiring works | 2025-07-10 → 2025-07-09 (-1d) |  |  | 328.69d → 330.14d |
| PG-10348 | Final Fix - Electrical Fixtures | 2025-08-13 → 2025-08-12 (-1d) |  |  | 314.69d → 316.14d |
| 1.3.1.1.3.19 | **Floor 16** | 2025-06-13 → 2025-06-12 (-1d) |  |  |  |
| 1.3.1.1.3.19.1 | **PHE Works** | 2025-06-13 → 2025-06-12 (-1d) |  |  |  |
| PG-10349 | 1st Fix - Piping works | 2025-06-13 → 2025-06-12 (-1d) |  |  | 303.69d → 305.14d |
| PG-10350 | 2nd Fix - diverter fixing & Pressure testing | 2025-06-23 → 2025-06-21 (-2d) |  |  | 303.69d → 305.14d |
| PG-10351 | Final Fix - CP & Sanitary fixtures | 2025-08-22 → 2025-08-21 (-1d) |  |  | 303.69d → 305.14d |
| 1.3.1.1.3.19.2 | **Fire Fighting Works** | 2025-06-23 → 2025-06-21 (-2d) |  |  |  |
| PG-10352 | 1st Fix - Piping and Shaft hydrant works | 2025-06-23 → 2025-06-21 (-2d) |  |  | 350.36d → 351.81d |
| PG-10353 | 2nd Fix - Sprinkler fixing & Pressure testing | 2025-07-30 → 2025-07-29 (-1d) |  |  | 312.69d → 314.14d |
| PG-10354 | Final Fix - Smoke & heat detectors, FHC , FAS Etc. | 2025-08-22 → 2025-08-21 (-1d) |  |  | 303.69d → 305.14d |
| 1.3.1.1.3.19.3 | **Electrical Works** | 2025-06-13 → 2025-06-12 (-1d) |  |  |  |
| PG-10355 | 1st Fix - GI wire pulling | 2025-06-13 → 2025-06-12 (-1d) |  |  | 350.36d → 351.81d |
| PG-10356 | 2nd Fix - Wiring works | 2025-07-23 → 2025-07-22 (-1d) |  |  | 317.69d → 319.14d |
| PG-10357 | Final Fix - Electrical Fixtures | 2025-08-27 → 2025-08-26 (-1d) |  |  | 303.69d → 305.14d |
| 1.3.1.1.3.20 | **Floor 17** | 2025-06-26 → 2025-06-25 (-1d) |  |  |  |
| 1.3.1.1.3.20.1 | **PHE Works** | 2025-06-26 → 2025-06-25 (-1d) |  |  |  |
| PG-10358 | 1st Fix - Piping works | 2025-06-26 → 2025-06-25 (-1d) |  |  | 292.69d → 294.14d |
| PG-10359 | 2nd Fix - diverter fixing & Pressure testing | 2025-07-05 → 2025-07-04 (-1d) |  |  | 292.69d → 294.14d |
| PG-10360 | Final Fix - CP & Sanitary fixtures | 2025-09-04 → 2025-09-03 (-1d) |  |  | 292.69d → 294.14d |
| 1.3.1.1.3.20.2 | **Fire Fighting Works** | 2025-07-05 → 2025-07-04 (-1d) |  |  |  |
| PG-10361 | 1st Fix - Piping and Shaft hydrant works | 2025-07-05 → 2025-07-04 (-1d) |  |  | 339.36d → 340.81d |
| PG-10362 | 2nd Fix - Sprinkler fixing & Pressure testing | 2025-08-12 → 2025-08-11 (-1d) |  |  | 301.69d → 303.14d |
| PG-10363 | Final Fix - Smoke & heat detectors, FHC , FAS Etc. | 2025-09-04 → 2025-09-03 (-1d) |  |  | 292.69d → 294.14d |
| 1.3.1.1.3.20.3 | **Electrical Works** | 2025-06-26 → 2025-06-25 (-1d) |  |  |  |
| PG-10364 | 1st Fix - GI wire pulling | 2025-06-26 → 2025-06-25 (-1d) |  |  | 339.36d → 340.81d |
| PG-10365 | 2nd Fix - Wiring works | 2025-08-05 → 2025-08-04 (-1d) |  |  | 306.69d → 308.14d |
| PG-10366 | Final Fix - Electrical Fixtures | 2025-09-09 → 2025-09-08 (-1d) |  |  | 292.69d → 294.14d |
| 1.3.1.1.3.21 | **Floor 18** | 2025-07-09 → 2025-07-08 (-1d) |  |  |  |
| 1.3.1.1.3.21.1 | **PHE Works** | 2025-07-09 → 2025-07-08 (-1d) |  |  |  |
| PG-10367 | 1st Fix - Piping works | 2025-07-09 → 2025-07-08 (-1d) |  |  | 45.86d → 47.31d |
| PG-10368 | 2nd Fix - diverter fixing & Pressure testing | 2025-07-18 → 2025-07-17 (-1d) |  |  | 281.69d → 283.14d |
| PG-10369 | Final Fix - CP & Sanitary fixtures | 2025-09-17 → 2025-09-16 (-1d) |  |  | 281.69d → 283.14d |
| 1.3.1.1.3.21.2 | **Fire Fighting Works** | 2025-07-18 → 2025-07-17 (-1d) |  |  |  |
| PG-10370 | 1st Fix - Piping and Shaft hydrant works | 2025-07-18 → 2025-07-17 (-1d) |  |  | 328.36d → 329.81d |
| PG-10371 | 2nd Fix - Sprinkler fixing & Pressure testing | 2025-08-26 → 2025-08-25 (-1d) |  |  | 290.69d → 292.14d |
| PG-10372 | Final Fix - Smoke & heat detectors, FHC , FAS Etc. | 2025-09-17 → 2025-09-16 (-1d) |  |  | 281.69d → 283.14d |
| 1.3.1.1.3.21.3 | **Electrical Works** | 2025-07-09 → 2025-07-08 (-1d) |  |  |  |
| PG-10373 | 1st Fix - GI wire pulling | 2025-07-09 → 2025-07-08 (-1d) |  |  | 328.36d → 329.81d |
| PG-10374 | 2nd Fix - Wiring works | 2025-08-19 → 2025-08-18 (-1d) |  |  | 295.69d → 297.14d |
| PG-10375 | Final Fix - Electrical Fixtures | 2025-09-22 → 2025-09-20 (-2d) |  |  | 281.69d → 283.14d |

| ID | Task | Start | Finish | Complete | Total float |
| --- | --- | --- | --- | --- | --- |
| 1.3.1.1.3.22 | **Floor 19** | 2025-07-31 → 2025-07-30 (-1d) |  |  |  |
| 1.3.1.1.3.22.1 | **PHE Works** | 2025-07-31 → 2025-07-30 (-1d) |  |  |  |
| PG-10376 | 1st Fix - Piping works | 2025-07-31 → 2025-07-30 (-1d) |  |  | 164.86d → 166.31d |
| PG-10377 | 2nd Fix - diverter fixing & Pressure testing | 2025-08-09 → 2025-08-08 (-1d) |  |  | 164.86d → 166.31d |
| PG-10378 | Final Fix - CP & Sanitary fixtures | 2025-10-13 → 2025-10-11 (-2d) |  |  | 260.69d → 262.14d |
| 1.3.1.1.3.22.2 | **Fire Fighting Works** | 2025-08-09 → 2025-08-08 (-1d) |  |  |  |
| PG-10379 | 1st Fix - Piping and Shaft hydrant works | 2025-08-09 → 2025-08-08 (-1d) |  |  | 176.86d → 178.31d |
| PG-10380 | 2nd Fix - Sprinkler fixing & Pressure testing | 2025-09-17 → 2025-09-16 (-1d) |  |  | 271.69d → 273.14d |
| PG-10381 | Final Fix - Smoke & heat detectors, FHC , FAS Etc. | 2025-10-13 → 2025-10-11 (-2d) |  |  | 260.69d → 262.14d |
| 1.3.1.1.3.22.3 | **Electrical Works** | 2025-07-31 → 2025-07-30 (-1d) |  |  |  |
| PG-10382 | 1st Fix - GI wire pulling | 2025-07-31 → 2025-07-30 (-1d) |  |  | 45.86d → 47.31d |
| PG-10383 | 2nd Fix - Wiring works | 2025-09-10 → 2025-09-09 (-1d) |  |  | 276.69d → 278.14d |
| PG-10384 | Final Fix - Electrical Fixtures | 2025-10-17 → 2025-10-16 (-1d) |  |  | 260.69d → 262.14d |
| 1.3.1.1.3.23 | **Floor 20** | 2025-08-23 → 2025-08-22 (-1d) |  |  |  |
| 1.3.1.1.3.23.1 | **PHE Works** | 2025-08-23 → 2025-08-22 (-1d) |  |  |  |
| PG-10385 | 1st Fix - Piping works | 2025-08-23 → 2025-08-22 (-1d) |  |  | 186.52d → 187.97d |
| PG-10386 | 2nd Fix - diverter fixing & Pressure testing | 2025-09-02 → 2025-09-01 (-1d) |  |  | 241.52d → 242.97d |
| 1.3.1.1.3.23.2 | **Fire Fighting Works** | 2025-09-02 → 2025-09-01 (-1d) |  |  |  |
| PG-10388 | 1st Fix - Piping and Shaft hydrant works | 2025-09-02 → 2025-09-01 (-1d) |  |  | 288.19d → 289.64d |
| PG-10389 | 2nd Fix - Sprinkler fixing & Pressure testing | 2025-10-10 → 2025-10-09 (-1d) |  |  | 251.19d → 252.64d |
| 1.3.1.1.3.23.3 | **Electrical Works** | 2025-08-23 → 2025-08-22 (-1d) |  |  |  |
| PG-10391 | 1st Fix - GI wire pulling | 2025-08-23 → 2025-08-22 (-1d) |  |  | 288.19d → 289.64d |
| PG-10392 | 2nd Fix - Wiring works | 2025-10-03 → 2025-10-01 (-2d) |  |  | 256.52d → 257.97d |
| PG-10393 | Final Fix - Electrical Fixtures | 2025-11-08 → 2025-11-07 (-1d) |  |  | 241.52d → 242.97d |
| 1.3.1.1.3.24 | **Floor 21** | 2025-09-15 → 2025-09-13 (-2d) |  |  |  |
| 1.3.1.1.3.24.1 | **PHE Works** | 2025-09-15 → 2025-09-13 (-2d) |  |  |  |
| PG-10394 | 1st Fix - Piping works | 2025-09-15 → 2025-09-13 (-2d) |  |  | 186.52d → 187.97d |
| PG-10395 | 2nd Fix - diverter fixing & Pressure testing | 2025-09-24 → 2025-09-23 (-1d) |  |  | 222.52d → 223.97d |
| PG-10396 | Final Fix - CP & Sanitary fixtures | 2025-11-26 → 2025-11-25 (-1d) |  |  | 222.52d → 223.97d |
| 1.3.1.1.3.24.2 | **Fire Fighting Works** | 2025-09-24 → 2025-09-23 (-1d) |  |  |  |
| PG-10397 | 1st Fix - Piping and Shaft hydrant works | 2025-09-24 → 2025-09-23 (-1d) |  |  | 269.19d → 270.64d |
| PG-10398 | 2nd Fix - Sprinkler fixing & Pressure testing | 2025-11-03 → 2025-10-31 (-3d) |  |  | 232.52d → 233.97d |
| PG-10399 | Final Fix - Smoke & heat detectors, FHC , FAS Etc. | 2025-11-26 → 2025-11-25 (-1d) |  |  | 222.52d → 223.97d |
| 1.3.1.1.3.24.3 | **Electrical Works** | 2025-09-15 → 2025-09-13 (-2d) |  |  |  |
| PG-10400 | 1st Fix - GI wire pulling | 2025-09-15 → 2025-09-13 (-2d) |  |  | 269.19d → 270.64d |
| PG-10401 | 2nd Fix - Wiring works | 2025-10-25 → 2025-10-24 (-1d) |  |  | 237.52d → 238.97d |
| PG-10402 | Final Fix - Electrical Fixtures | 2025-12-01 → 2025-11-29 (-2d) |  |  | 222.52d → 223.97d |
| 1.3.1.1.3.25 | **Floor 22** | 2025-10-08 → 2025-10-07 (-1d) |  |  |  |
| 1.3.1.1.3.25.1 | **PHE Works** | 2025-10-08 → 2025-10-07 (-1d) |  |  |  |
| PG-10403 | 1st Fix - Piping works | 2025-10-08 → 2025-10-07 (-1d) |  |  | 186.52d → 187.97d |
| PG-10404 | 2nd Fix - diverter fixing & Pressure testing | 2025-10-17 → 2025-10-16 (-1d) |  |  | 202.52d → 203.97d |
| PG-10405 | Final Fix - CP & Sanitary fixtures | 2025-12-18 → 2025-12-17 (-1d) |  |  | 202.52d → 203.97d |
| 1.3.1.1.3.25.2 | **Fire Fighting Works** | 2025-10-17 → 2025-10-16 (-1d) |  |  |  |
| PG-10406 | 1st Fix - Piping and Shaft hydrant works | 2025-10-17 → 2025-10-16 (-1d) |  |  | 250.19d → 251.64d |
| PG-10407 | 2nd Fix - Sprinkler fixing & Pressure testing | 2025-11-25 → 2025-11-24 (-1d) |  |  | 212.52d → 213.97d |
| PG-10408 | Final Fix - Smoke & heat detectors, FHC , FAS Etc. | 2025-12-18 → 2025-12-17 (-1d) |  |  | 202.52d → 203.97d |
| 1.3.1.1.3.25.3 | **Electrical Works** | 2025-10-08 → 2025-10-07 (-1d) |  |  |  |
| PG-10409 | 1st Fix - GI wire pulling | 2025-10-08 → 2025-10-07 (-1d) |  |  | 250.19d → 251.64d |
| PG-10410 | 2nd Fix - Wiring works | 2025-11-18 → 2025-11-17 (-1d) |  |  | 217.52d → 218.97d |
| PG-10411 | Final Fix - Electrical Fixtures | 2025-12-23 → 2025-12-22 (-1d) |  |  | 202.52d → 203.97d |
| 1.3.1.1.3.26 | **Floor 23** | 2025-10-30 → 2025-10-29 (-1d) |  |  |  |
| 1.3.1.1.3.26.1 | **PHE Works** | 2025-10-30 → 2025-10-29 (-1d) |  |  |  |
| PG-10412 | 1st Fix - Piping works | 2025-10-30 → 2025-10-29 (-1d) |  |  | 186.52d → 187.97d |
| PG-10413 | 2nd Fix - diverter fixing & Pressure testing | 2025-11-10 → 2025-11-08 (-2d) |  |  | 186.52d → 187.97d |
| 1.3.1.1.3.26.2 | **Fire Fighting Works** | 2025-11-10 → 2025-11-08 (-2d) |  |  |  |
| PG-10415 | 1st Fix - Piping and Shaft hydrant works | 2025-11-10 → 2025-11-08 (-2d) |  |  | 231.36d → 232.81d |
| PG-10416 | 2nd Fix - Sprinkler fixing & Pressure testing | 2025-12-17 → 2025-12-16 (-1d) |  |  | 194.02d → 195.47d |
| 1.3.1.1.3.26.3 | **Electrical Works** | 2025-10-30 → 2025-10-29 (-1d) |  |  |  |
| PG-10418 | 1st Fix - GI wire pulling | 2025-10-30 → 2025-10-29 (-1d) |  |  | 231.36d → 232.81d |
| PG-10419 | 2nd Fix - Wiring works | 2025-12-10 → 2025-12-09 (-1d) |  |  | 199.02d → 200.47d |
| 1.3.1.1.4.12 | **Floor 9** |  | 2025-05-24 → 2025-05-26 (+2d) |  |  |
| 1.3.1.1.4.12.1 | **Ceiling Finishing works - Civil** |  | 2025-05-23 → 2025-05-24 (+1d) |  |  |
| PG-10562 | Final Coat Painting |  | 2025-05-23 → 2025-05-24 A (+1d) | 97% → 100% | 417.34d → none |
| 1.3.1.1.4.12.2 | **Wall Finishing works - Civil** |  | 2025-05-24 → 2025-05-26 (+2d) |  |  |
| PG-10567 | Final Coat Painting |  | 2025-05-24 → 2025-05-26 A (+2d) | 92% → 100% | 381.8d → none |
| PG-10576 | Final Coat Painting |  |  | 23% → 58% | 405.55d → 406.61d |
| PG-10581 | Final Coat Painting |  |  | 18% → 53% | 367.97d → 369.03d |
| PG-10588 | Painting Works - Putty, Primer and 1st | 2025-05-26 A | 2025-06-02 → 2025-05-31 (-2d) | 0% → 73% | 393.19d → 394.8d |
| PG-10590 | Final Coat Painting | 2025-06-02 → 2025-05-31 (-2d) |  |  | 393.19d → 394.6d |
| PG-10592 | UPVC Windows & Sliding doors |  | 2025-05-26 A | 77% → 100% | 356.52d → none |

| ID | Task | Start | Finish | Complete | Total float |
| --- | --- | --- | --- | --- | --- |
| PG-10594 | Painting Works - Putty, Primer and 1st | 2025-05-26 A | 2025-06-02 → 2025-05-31 (-2d) | 0% → 75% | 356.52d → 358.26d |
| PG-10595 | Final Coat Painting | 2025-06-02 → 2025-05-31 (-2d) |  |  | 356.52d → 357.93d |
| 1.3.1.1.4.14.3 | **Floor Finishing Works - Civil** |  | 2025-06-02 → 2025-05-31 (-2d) |  |  |
| PG-10599 | Wooden doors | 2025-05-27 A | 2025-06-02 → 2025-05-31 (-2d) | 0% → 64% | 356.52d → 357.93d |
| 1.3.1.1.4.15 | **Floor 12** |  | 2025-07-04 → 2025-07-05 (+1d) |  |  |
| 1.3.1.1.4.15.1 | **Ceiling Finishing works - Civil** |  | 2025-07-04 → 2025-07-05 (+1d) |  |  |
| PG-10603 | Toilet False ceiling | 2025-05-27 → 2025-05-28 A (+1d) | 2025-05-31 → 2025-06-02 (+2d) | 0% → 63% | 372.42d → 372.5d |
| PG-10602 | Painting Works - Putty, Primer and 1st | 2025-06-06 → 2025-06-07 (+1d) | 2025-06-13 → 2025-06-14 (+1d) |  | 382.58d → 382.67d |
| PG-10604 | Final Coat Painting | 2025-06-13 → 2025-06-14 (+1d) | 2025-07-04 → 2025-07-05 (+1d) |  | 382.58d → 382.67d |
| 1.3.1.1.4.15.2 | **Wall Finishing works - Civil** |  | 2025-07-04 → 2025-07-05 (+1d) |  |  |
| PG-10606 | UPVC Windows & Sliding doors | 2025-05-31 → 2025-06-02 (+2d) | 2025-06-06 → 2025-06-07 (+1d) |  | 347.75d → 347.83d |
| PG-10608 | Painting Works - Putty, Primer and 1st | 2025-06-06 → 2025-06-07 (+1d) | 2025-06-13 → 2025-06-14 (+1d) |  | 347.75d → 347.83d |
| PG-10609 | Final Coat Painting | 2025-06-13 → 2025-06-14 (+1d) | 2025-07-04 → 2025-07-05 (+1d) |  | 347.75d → 347.83d |
| 1.3.1.1.4.15.3 | **Floor Finishing Works - Civil** |  | 2025-06-13 → 2025-06-14 (+1d) |  |  |
| PG-10611 | Floor Tiling - Wet area |  | 2025-05-26 → 2025-05-27 A (+1d) | 51% → 100% | 347.75d → none |
| PG-10612 | Floor Tiling - Dry area | 2025-05-26 → 2025-05-27 A (+1d) | 2025-05-31 → 2025-06-02 (+2d) | 0% → 64% | 347.75d → 347.83d |
| PG-10613 | Wooden doors | 2025-06-07 → 2025-06-09 (+2d) | 2025-06-13 → 2025-06-14 (+1d) |  | 347.75d → 347.83d |
| 1.3.1.1.4.16 | **Floor 13** |  | 2025-07-19 → 2025-07-18 (-1d) |  |  |
| 1.3.1.1.4.16.1 | **Ceiling Finishing works - Civil** |  | 2025-07-19 → 2025-07-18 (-1d) |  |  |
| PG-10617 | Toilet False ceiling | 2025-06-07 → 2025-06-06 (-1d) | 2025-06-12 → 2025-06-11 (-1d) |  | 362.77d → 365.21d |
| PG-10616 | Painting Works - Putty, Primer and 1st | 2025-06-18 → 2025-06-17 (-1d) | 2025-06-25 → 2025-06-24 (-1d) |  | 368.94d → 371.38d |
| PG-10618 | Final Coat Painting | 2025-06-25 → 2025-06-24 (-1d) | 2025-07-19 → 2025-07-18 (-1d) |  | 368.94d → 371.38d |
| 1.3.1.1.4.16.2 | **Wall Finishing works - Civil** |  | 2025-07-17 → 2025-07-16 (-1d) |  |  |
| PG-10621 | Dadoing - Wet area | 2025-05-26 A | 2025-05-31 → 2025-05-30 (-1d) | 0% → 99% | 336.27d → 338.71d |
| PG-10620 | UPVC Windows & Sliding doors | 2025-06-12 → 2025-06-11 (-1d) | 2025-06-18 → 2025-06-17 (-1d) |  | 336.27d → 338.71d |
| PG-10622 | Painting Works - Putty, Primer and 1st | 2025-06-18 → 2025-06-17 (-1d) | 2025-06-25 → 2025-06-24 (-1d) |  | 336.27d → 338.71d |
| PG-10623 | Final Coat Painting | 2025-06-25 → 2025-06-24 (-1d) | 2025-07-17 → 2025-07-16 (-1d) |  | 336.27d → 338.71d |
| 1.3.1.1.4.16.3 | **Floor Finishing Works - Civil** |  | 2025-06-25 → 2025-06-24 (-1d) |  |  |
| PG-10625 | Floor Tiling - Wet area | 2025-05-31 → 2025-05-30 (-1d) | 2025-06-06 → 2025-06-05 (-1d) |  | 336.27d → 338.71d |
| PG-10626 | Floor Tiling - Dry area | 2025-06-06 → 2025-06-05 (-1d) | 2025-06-12 → 2025-06-11 (-1d) |  | 336.27d → 338.71d |
| PG-10627 | Wooden doors | 2025-06-19 → 2025-06-18 (-1d) | 2025-06-25 → 2025-06-24 (-1d) |  | 336.27d → 338.71d |
| 1.3.1.1.4.17.1 | **Ceiling Finishing works - Civil** | 2025-05-26 → 2025-05-27 (+1d) |  |  |  |
| PG-10628 | Gypsum Plastering | 2025-05-26 → 2025-05-27 A (+1d) | 2025-06-02 → 2025-06-03 (+1d) | 0% → 49% | 372.45d → 373.39d |
| PG-10629 | Cornice fixing | 2025-06-11 → 2025-06-12 (+1d) | 2025-06-16 → 2025-06-17 (+1d) |  | 372.45d → 373.39d |
| 1.3.1.1.4.18 | **Floor 15** | 2025-05-31 → 2025-05-30 (-1d) |  |  |  |
| 1.3.1.1.4.18.1 | **Ceiling Finishing works - Civil** | 2025-06-10 → 2025-06-09 (-1d) |  |  |  |
| PG-10642 | Gypsum Plastering | 2025-06-10 → 2025-06-09 (-1d) |  |  | 361.36d → 362.81d |
| PG-10643 | Cornice fixing | 2025-06-26 → 2025-06-25 (-1d) |  |  | 361.36d → 362.81d |
| PG-10645 | Toilet False ceiling | 2025-07-04 → 2025-07-03 (-1d) |  |  | 340.69d → 342.14d |
| PG-10644 | Painting Works - Putty, Primer and 1st | 2025-07-15 → 2025-07-14 (-1d) |  |  | 349.36d → 350.81d |
| PG-10646 | Final Coat Painting | 2025-07-22 → 2025-07-21 (-1d) |  |  | 349.36d → 350.81d |
| 1.3.1.1.4.18.2 | **Wall Finishing works - Civil** | 2025-05-31 → 2025-05-30 (-1d) |  |  |  |
| PG-10647 | Balcony Railing Fixing works | 2025-05-31 → 2025-05-30 (-1d) |  |  | 161.19d → 162.64d |
| PG-10649 | Dadoing - Wet area | 2025-06-21 → 2025-06-20 (-1d) |  |  | 132.19d → 133.64d |
| PG-10648 | UPVC Windows & Sliding doors | 2025-07-09 → 2025-07-08 (-1d) |  |  | 132.19d → 133.64d |
| PG-10650 | Painting Works - Putty, Primer and 1st | 2025-07-15 → 2025-07-14 (-1d) |  |  | 132.19d → 133.64d |
| PG-10651 | Final Coat Painting | 2025-07-22 → 2025-07-21 (-1d) |  |  | 314.69d → 316.14d |
| 1.3.1.1.4.18.3 | **Floor Finishing Works - Civil** | 2025-05-31 → 2025-05-30 (-1d) |  |  |  |
| PG-10652 | Waterproofing for sunken areas | 2025-05-31 → 2025-05-30 (-1d) |  |  | 152.19d → 153.64d |
| PG-10653 | Floor Tiling - Wet area | 2025-06-27 → 2025-06-26 (-1d) |  |  | 132.19d → 133.64d |
| PG-10654 | Floor Tiling - Dry area | 2025-07-03 → 2025-07-02 (-1d) |  |  | 132.19d → 133.64d |
| PG-10655 | Wooden doors | 2025-07-16 → 2025-07-15 (-1d) |  |  | 132.19d → 133.64d |
| 1.3.1.1.4.19 | **Floor 16** | 2025-06-13 → 2025-06-12 (-1d) |  |  |  |
| 1.3.1.1.4.19.1 | **Ceiling Finishing works - Civil** | 2025-06-23 → 2025-06-21 (-2d) |  |  |  |
| PG-10656 | Gypsum Plastering | 2025-06-23 → 2025-06-21 (-2d) |  |  | 350.36d → 351.81d |
| PG-10657 | Cornice fixing | 2025-07-09 → 2025-07-08 (-1d) |  |  | 350.36d → 351.81d |
| PG-10659 | Toilet False ceiling | 2025-07-17 → 2025-07-16 (-1d) |  |  | 329.69d → 331.14d |
| PG-10658 | Painting Works - Putty, Primer and 1st | 2025-07-28 → 2025-07-26 (-2d) |  |  | 338.36d → 339.81d |
| PG-10660 | Final Coat Painting | 2025-08-04 → 2025-08-02 (-2d) |  |  | 338.36d → 339.81d |
| 1.3.1.1.4.19.2 | **Wall Finishing works - Civil** | 2025-06-13 → 2025-06-12 (-1d) |  |  |  |
| PG-10661 | Balcony Railing Fixing works | 2025-06-13 → 2025-06-12 (-1d) |  |  | 332.69d → 334.14d |
| PG-10663 | Dadoing - Wet area | 2025-07-04 → 2025-07-03 (-1d) |  |  | 303.69d → 305.14d |
| PG-10662 | UPVC Windows & Sliding doors | 2025-07-22 → 2025-07-21 (-1d) |  |  | 303.69d → 305.14d |
| PG-10664 | Painting Works - Putty, Primer and 1st | 2025-07-28 → 2025-07-26 (-2d) |  |  | 303.69d → 305.14d |
| PG-10665 | Final Coat Painting | 2025-08-04 → 2025-08-02 (-2d) |  |  | 303.69d → 305.14d |
| 1.3.1.1.4.19.3 | **Floor Finishing Works - Civil** | 2025-06-13 → 2025-06-12 (-1d) |  |  |  |
| PG-10666 | Waterproofing for sunken areas | 2025-06-13 → 2025-06-12 (-1d) |  |  | 323.69d → 325.14d |
| PG-10667 | Floor Tiling - Wet area | 2025-07-10 → 2025-07-09 (-1d) |  |  | 303.69d → 305.14d |
| PG-10668 | Floor Tiling - Dry area | 2025-07-16 → 2025-07-15 (-1d) |  |  | 303.69d → 305.14d |
| PG-10669 | Wooden doors | 2025-07-29 → 2025-07-28 (-1d) |  |  | 303.69d → 305.14d |

| ID | Task | Start | Total float |
| --- | --- | --- | --- |
| 1.3.1.1.4.20 | **Floor 17** | 2025-06-26 → 2025-06-25 (-1d) |  |
| 1.3.1.1.4.20.1 | **Ceiling Finishing works - Civil** | 2025-07-05 → 2025-07-04 (-1d) |  |
| PG-10670 | Gypsum Plastering | 2025-07-05 → 2025-07-04 (-1d) | 339.36d → 340.81d |
| PG-10671 | Cornice fixing | 2025-07-22 → 2025-07-21 (-1d) | 339.36d → 340.81d |
| PG-10673 | Toilet False ceiling | 2025-07-30 → 2025-07-29 (-1d) | 318.69d → 320.14d |
| PG-10672 | Painting Works - Putty, Primer and 1st | 2025-08-09 → 2025-08-08 (-1d) | 327.36d → 328.81d |
| PG-10674 | Final Coat Painting | 2025-08-18 → 2025-08-16 (-2d) | 327.36d → 328.81d |
| 1.3.1.1.4.20.2 | **Wall Finishing works - Civil** | 2025-06-26 → 2025-06-25 (-1d) |  |
| PG-10675 | Balcony Railing Fixing works | 2025-06-26 → 2025-06-25 (-1d) | 321.69d → 323.14d |
| PG-10677 | Dadoing - Wet area | 2025-07-17 → 2025-07-16 (-1d) | 292.69d → 294.14d |
| PG-10676 | UPVC Windows & Sliding doors | 2025-08-04 → 2025-08-02 (-2d) | 292.69d → 294.14d |
| PG-10678 | Painting Works - Putty, Primer and 1st | 2025-08-09 → 2025-08-08 (-1d) | 292.69d → 294.14d |
| PG-10679 | Final Coat Painting | 2025-08-18 → 2025-08-16 (-2d) | 292.69d → 294.14d |
| 1.3.1.1.4.20.3 | **Floor Finishing Works - Civil** | 2025-06-26 → 2025-06-25 (-1d) |  |
| PG-10680 | Waterproofing for sunken areas | 2025-06-26 → 2025-06-25 (-1d) | 312.69d → 314.14d |
| PG-10681 | Floor Tiling - Wet area | 2025-07-23 → 2025-07-22 (-1d) | 292.69d → 294.14d |
| PG-10682 | Floor Tiling - Dry area | 2025-07-29 → 2025-07-28 (-1d) | 292.69d → 294.14d |
| PG-10683 | Wooden doors | 2025-08-11 → 2025-08-09 (-2d) | 292.69d → 294.14d |
| 1.3.1.1.4.21 | **Floor 18** | 2025-07-09 → 2025-07-08 (-1d) |  |
| 1.3.1.1.4.21.1 | **Ceiling Finishing works - Civil** | 2025-07-18 → 2025-07-17 (-1d) |  |
| PG-10684 | Gypsum Plastering | 2025-07-18 → 2025-07-17 (-1d) | 328.36d → 329.81d |
| PG-10685 | Cornice fixing | 2025-08-04 → 2025-08-02 (-2d) | 328.36d → 329.81d |
| PG-10687 | Toilet False ceiling | 2025-08-12 → 2025-08-11 (-1d) | 307.69d → 309.14d |
| PG-10686 | Painting Works - Putty, Primer and 1st | 2025-08-23 → 2025-08-22 (-1d) | 316.36d → 317.81d |
| PG-10688 | Final Coat Painting | 2025-08-30 → 2025-08-29 (-1d) | 316.36d → 317.81d |
| 1.3.1.1.4.21.2 | **Wall Finishing works - Civil** | 2025-07-09 → 2025-07-08 (-1d) |  |
| PG-10689 | Balcony Railing Fixing works | 2025-07-09 → 2025-07-08 (-1d) | 310.69d → 312.14d |
| PG-10691 | Dadoing - Wet area | 2025-07-30 → 2025-07-29 (-1d) | 281.69d → 283.14d |
| PG-10690 | UPVC Windows & Sliding doors | 2025-08-18 → 2025-08-16 (-2d) | 281.69d → 283.14d |
| PG-10692 | Painting Works - Putty, Primer and 1st | 2025-08-23 → 2025-08-22 (-1d) | 281.69d → 283.14d |
| PG-10693 | Final Coat Painting | 2025-08-30 → 2025-08-29 (-1d) | 281.69d → 283.14d |
| 1.3.1.1.4.21.3 | **Floor Finishing Works - Civil** | 2025-07-09 → 2025-07-08 (-1d) |  |
| PG-10694 | Waterproofing for sunken areas | 2025-07-09 → 2025-07-08 (-1d) | 301.69d → 303.14d |
| PG-10695 | Floor Tiling - Wet area | 2025-08-05 → 2025-08-04 (-1d) | 281.69d → 283.14d |
| PG-10696 | Floor Tiling - Dry area | 2025-08-11 → 2025-08-09 (-2d) | 281.69d → 283.14d |
| PG-10697 | Wooden doors | 2025-08-25 → 2025-08-23 (-2d) | 281.69d → 283.14d |
| 1.3.1.1.4.22 | **Floor 19** | 2025-07-31 → 2025-07-30 (-1d) |  |
| 1.3.1.1.4.22.1 | **Ceiling Finishing works - Civil** | 2025-08-09 → 2025-08-08 (-1d) |  |
| PG-10698 | Gypsum Plastering | 2025-08-09 → 2025-08-08 (-1d) | 176.86d → 178.31d |
| PG-10699 | Cornice fixing | 2025-08-27 → 2025-08-26 (-1d) | 176.86d → 178.31d |
| PG-10701 | Toilet False ceiling | 2025-09-04 → 2025-09-03 (-1d) | 288.69d → 290.14d |
| PG-10700 | Painting Works - Putty, Primer and 1st | 2025-09-15 → 2025-09-13 (-2d) | 164.86d → 166.31d |
| PG-10702 | Final Coat Painting | 2025-09-22 → 2025-09-20 (-2d) | 295.36d → 296.81d |
| 1.3.1.1.4.22.2 | **Wall Finishing works - Civil** | 2025-07-31 → 2025-07-30 (-1d) |  |
| PG-10703 | Balcony Railing Fixing works | 2025-07-31 → 2025-07-30 (-1d) | 193.86d → 195.31d |
| PG-10705 | Dadoing - Wet area | 2025-08-22 → 2025-08-21 (-1d) | 164.86d → 166.31d |
| PG-10704 | UPVC Windows & Sliding doors | 2025-09-09 → 2025-09-08 (-1d) | 164.86d → 166.31d |
| PG-10706 | Painting Works - Putty, Primer and 1st | 2025-09-15 → 2025-09-13 (-2d) | 260.69d → 262.14d |
| PG-10707 | Final Coat Painting | 2025-09-22 → 2025-09-20 (-2d) | 260.69d → 262.14d |
| 1.3.1.1.4.22.3 | **Floor Finishing Works - Civil** | 2025-07-31 → 2025-07-30 (-1d) |  |
| PG-10708 | Waterproofing for sunken areas | 2025-07-31 → 2025-07-30 (-1d) | 184.86d → 186.31d |
| PG-10709 | Floor Tiling - Wet area | 2025-08-28 → 2025-08-27 (-1d) | 164.86d → 166.31d |
| PG-10710 | Floor Tiling - Dry area | 2025-09-03 → 2025-09-02 (-1d) | 164.86d → 166.31d |
| PG-10711 | Wooden doors | 2025-09-16 → 2025-09-15 (-1d) | 260.69d → 262.14d |
| 1.3.1.1.4.23 | **Floor 20** | 2025-08-23 → 2025-08-22 (-1d) |  |
| 1.3.1.1.4.23.1 | **Ceiling Finishing works - Civil** | 2025-09-02 → 2025-09-01 (-1d) |  |
| PG-10712 | Gypsum Plastering | 2025-09-02 → 2025-09-01 (-1d) | 288.19d → 289.64d |
| PG-10713 | Cornice fixing | 2025-09-18 → 2025-09-17 (-1d) | 288.19d → 289.64d |
| PG-10715 | Toilet False ceiling | 2025-09-26 → 2025-09-25 (-1d) | 268.19d → 269.64d |
| PG-10714 | Painting Works - Putty, Primer and 1st | 2025-10-08 → 2025-10-07 (-1d) | 276.19d → 277.64d |
| PG-10716 | Final Coat Painting | 2025-10-15 → 2025-10-14 (-1d) | 276.19d → 277.64d |
| 1.3.1.1.4.23.2 | **Wall Finishing works - Civil** | 2025-08-23 → 2025-08-22 (-1d) |  |
| PG-10717 | Balcony Railing Fixing works | 2025-08-23 → 2025-08-22 (-1d) | 270.52d → 271.97d |
| PG-10719 | Dadoing - Wet area | 2025-09-13 → 2025-09-12 (-1d) | 241.52d → 242.97d |
| PG-10718 | UPVC Windows & Sliding doors | 2025-10-01 → 2025-09-30 (-1d) | 241.52d → 242.97d |
| PG-10720 | Painting Works - Putty, Primer and 1st | 2025-10-08 → 2025-10-07 (-1d) | 241.52d → 242.97d |
| PG-10721 | Final Coat Painting | 2025-10-15 → 2025-10-14 (-1d) | 241.52d → 242.97d |
| 1.3.1.1.4.23.3 | **Floor Finishing Works - Civil** | 2025-08-23 → 2025-08-22 (-1d) |  |
| PG-10722 | Waterproofing for sunken areas | 2025-08-23 → 2025-08-22 (-1d) | 261.52d → 262.97d |
| PG-10723 | Floor Tiling - Wet area | 2025-09-19 → 2025-09-18 (-1d) | 241.52d → 242.97d |

| ID | Task | Start | Total float |
| --- | --- | --- | --- |
| PG-10724 | Floor Tiling - Dry area | 2025-09-25 → 2025-09-24 (-1d) | 241.52d → 242.97d |
| PG-10725 | Wooden doors | 2025-10-09 → 2025-10-08 (-1d) | 241.52d → 242.97d |
| 1.3.1.1.4.24 | **Floor 21** | 2025-09-15 → 2025-09-13 (-2d) |  |
| 1.3.1.1.4.24.1 | **Ceiling Finishing works - Civil** | 2025-09-24 → 2025-09-23 (-1d) |  |
| PG-10726 | Gypsum Plastering | 2025-09-24 → 2025-09-23 (-1d) | 269.19d → 270.64d |
| PG-10727 | Cornice fixing | 2025-10-11 → 2025-10-10 (-1d) | 269.19d → 270.64d |
| PG-10729 | Toilet False ceiling | 2025-10-20 → 2025-10-18 (-2d) | 249.52d → 250.97d |
| PG-10728 | Painting Works - Putty, Primer and 1st | 2025-10-30 → 2025-10-29 (-1d) | 257.19d → 258.64d |
| PG-10730 | Final Coat Painting | 2025-11-07 → 2025-11-06 (-1d) | 257.19d → 258.64d |
| 1.3.1.1.4.24.2 | **Wall Finishing works - Civil** | 2025-09-15 → 2025-09-13 (-2d) |  |
| PG-10731 | Balcony Railing Fixing works | 2025-09-15 → 2025-09-13 (-2d) | 251.52d → 252.97d |
| PG-10733 | Dadoing - Wet area | 2025-10-07 → 2025-10-06 (-1d) | 222.52d → 223.97d |
| PG-10732 | UPVC Windows & Sliding doors | 2025-10-24 → 2025-10-23 (-1d) | 222.52d → 223.97d |
| PG-10734 | Painting Works - Putty, Primer and 1st | 2025-10-30 → 2025-10-29 (-1d) | 222.52d → 223.97d |
| PG-10735 | Final Coat Painting | 2025-11-07 → 2025-11-06 (-1d) | 222.52d → 223.97d |
| 1.3.1.1.4.24.3 | **Floor Finishing Works - Civil** | 2025-09-15 → 2025-09-13 (-2d) |  |
| PG-10736 | Waterproofing for sunken areas | 2025-09-15 → 2025-09-13 (-2d) | 242.52d → 243.97d |
| PG-10737 | Floor Tiling - Wet area | 2025-10-13 → 2025-10-11 (-2d) | 222.52d → 223.97d |
| PG-10738 | Floor Tiling - Dry area | 2025-10-18 → 2025-10-17 (-1d) | 222.52d → 223.97d |
| PG-10739 | Wooden doors | 2025-10-31 → 2025-10-30 (-1d) | 222.52d → 223.97d |
| 1.3.1.1.4.25 | **Floor 22** | 2025-10-08 → 2025-10-07 (-1d) |  |
| 1.3.1.1.4.25.1 | **Ceiling Finishing works - Civil** | 2025-10-17 → 2025-10-16 (-1d) |  |
| PG-10740 | Gypsum Plastering | 2025-10-17 → 2025-10-16 (-1d) | 250.19d → 251.64d |
| PG-10741 | Cornice fixing | 2025-11-04 → 2025-11-03 (-1d) | 250.19d → 251.64d |
| PG-10743 | Toilet False ceiling | 2025-11-12 → 2025-11-11 (-1d) | 229.52d → 230.97d |
| PG-10742 | Painting Works - Putty, Primer and 1st | 2025-11-22 → 2025-11-21 (-1d) | 238.19d → 239.64d |
| PG-10744 | Final Coat Painting | 2025-11-29 → 2025-11-28 (-1d) | 238.19d → 239.64d |
| 1.3.1.1.4.25.2 | **Wall Finishing works - Civil** | 2025-10-08 → 2025-10-07 (-1d) |  |
| PG-10745 | Balcony Railing Fixing works | 2025-10-08 → 2025-10-07 (-1d) | 231.52d → 232.97d |
| PG-10747 | Dadoing - Wet area | 2025-10-29 → 2025-10-28 (-1d) | 202.52d → 203.97d |
| PG-10746 | UPVC Windows & Sliding doors | 2025-11-17 → 2025-11-15 (-2d) | 202.52d → 203.97d |
| PG-10748 | Painting Works - Putty, Primer and 1st | 2025-11-22 → 2025-11-21 (-1d) | 202.52d → 203.97d |
| PG-10749 | Final Coat Painting | 2025-11-29 → 2025-11-28 (-1d) | 202.52d → 203.97d |
| 1.3.1.1.4.25.3 | **Floor Finishing Works - Civil** | 2025-10-08 → 2025-10-07 (-1d) |  |
| PG-10750 | Waterproofing for sunken areas | 2025-10-08 → 2025-10-07 (-1d) | 222.52d → 223.97d |
| PG-10751 | Floor Tiling - Wet area | 2025-11-05 → 2025-11-04 (-1d) | 202.52d → 203.97d |
| PG-10752 | Floor Tiling - Dry area | 2025-11-11 → 2025-11-10 (-1d) | 202.52d → 203.97d |
| PG-10753 | Wooden doors | 2025-11-24 → 2025-11-22 (-2d) | 202.52d → 203.97d |
| 1.3.1.1.4.26 | **Floor 23** | 2025-10-30 → 2025-10-29 (-1d) |  |
| 1.3.1.1.4.26.1 | **Ceiling Finishing works - Civil** | 2025-11-10 → 2025-11-08 (-2d) |  |
| PG-10754 | Gypsum Plastering | 2025-11-10 → 2025-11-08 (-2d) | 231.36d → 232.81d |
| PG-10755 | Cornice fixing | 2025-11-26 → 2025-11-25 (-1d) | 231.36d → 232.81d |
| PG-10757 | Toilet False ceiling | 2025-12-04 → 2025-12-03 (-1d) | 211.02d → 212.47d |
| PG-10756 | Painting Works - Putty, Primer and 1st | 2025-12-15 → 2025-12-13 (-2d) | 219.36d → 220.81d |
| PG-10758 | Final Coat Painting | 2025-12-22 → 2025-12-20 (-2d) | 219.36d → 220.81d |
| 1.3.1.1.4.26.2 | **Wall Finishing works - Civil** | 2025-10-30 → 2025-10-29 (-1d) |  |
| PG-10759 | Balcony Railing Fixing works | 2025-10-30 → 2025-10-29 (-1d) | 215.52d → 216.97d |
| PG-10761 | Dadoing - Wet area | 2025-11-21 → 2025-11-20 (-1d) | 186.52d → 187.97d |
| PG-10760 | UPVC Windows & Sliding doors | 2025-12-09 → 2025-12-08 (-1d) | 186.52d → 187.97d |
| PG-10762 | Painting Works - Putty, Primer and 1st | 2025-12-15 → 2025-12-13 (-2d) | 186.52d → 187.97d |
| PG-10763 | Final Coat Painting | 2025-12-22 → 2025-12-20 (-2d) | 186.52d → 187.97d |
| 1.3.1.1.4.26.3 | **Floor Finishing Works - Civil** | 2025-10-30 → 2025-10-29 (-1d) |  |
| PG-10764 | Waterproofing for sunken areas | 2025-10-30 → 2025-10-29 (-1d) | 206.52d → 207.97d |
| PG-10765 | Floor Tiling - Wet area | 2025-11-27 → 2025-11-26 (-1d) | 186.52d → 187.97d |
| PG-10766 | Floor Tiling - Dry area | 2025-12-03 → 2025-12-02 (-1d) | 186.52d → 187.97d |
| PG-10767 | Wooden doors | 2025-12-16 → 2025-12-15 (-1d) | 186.52d → 187.97d |
| 1.3.1.1.4.27 | **External Finishing works** | 2025-08-06 → 2025-08-05 (-1d) |  |
| PG-10768 | External walls tie rod hole plugging with GP2 | 2025-08-06 → 2025-08-05 (-1d) | 250.69d → 252.14d |
| PG-10769 | External walls grinding works | 2025-08-30 → 2025-08-29 (-1d) | 250.69d → 252.14d |
| PG-10770 | Texture and painting works | 2025-10-11 → 2025-10-10 (-1d) | 250.69d → 252.14d |
| 1.3.1.1.5 | **Corridor & Fire Staircase Finishing works** | 2025-10-14 → 2025-10-13 (-1d) |  |
| 1.3.1.1.5.1 | **Ceiling Finishing works - Civil** | 2025-10-14 → 2025-10-13 (-1d) |  |
| PG-10771 | Gypsum Plastering | 2025-10-14 → 2025-10-13 (-1d) | 45.86d → 47.31d |
| PG-10772 | Cornice fixing | 2025-10-20 → 2025-10-18 (-2d) | 176.86d → 178.31d |
| PG-10773 | Painting Works - Putty, Primer and 1st | 2025-11-08 → 2025-11-07 (-1d) | 164.86d → 166.31d |
| PG-10774 | False ceiling | 2025-11-15 → 2025-11-14 (-1d) | 164.86d → 166.31d |
| PG-10775 | Final Coat Painting | 2025-12-20 → 2025-12-19 (-1d) | 179.86d → 181.31d |
| 1.3.1.1.5.2 | **Wall Finishing works - Civil** | 2025-11-20 → 2025-11-19 (-1d) |  |
| PG-10776 | UPVC Windows & Sliding doors | 2025-11-20 → 2025-11-19 (-1d) | 170.86d → 172.31d |
| PG-10777 | Wall Cladding Upto 1.2 Mts | 2025-12-08 → 2025-12-06 (-2d) | 170.86d → 172.31d |

| ID | Task | Start | Finish | Total float |
| --- | --- | --- | --- | --- |
| PG-10778 | Painting Works - Texture & one coat Painting works | 2026-01-07 → 2026-01-06 (-1d) |  | 164.86d → 166.31d |
| 1.3.1.1.5.3 | **Floor Finishing Works - Civil** | 2025-10-21 → 2025-10-20 (-1d) |  |  |
| PG-10780 | Fire Doors installation | 2025-10-21 → 2025-10-20 (-1d) |  | 215.52d → 216.97d |
| PG-10781 | Verified tile flooring works | 2025-11-03 → 2025-10-31 (-3d) |  | 215.52d → 216.97d |
| 1.3.1.1.5.4 | **Fire Staircase Finishing Works - Civil** | 2025-10-21 → 2025-10-20 (-1d) |  |  |
| PG-10782 | Staircase Railing Fixing works | 2025-10-21 → 2025-10-20 (-1d) |  | 45.86d → 47.31d |
| PG-10783 | Wall and ceiling Gypsum plastering | 2025-11-03 → 2025-10-31 (-3d) |  | 45.86d → 47.31d |
| PG-10784 | Staircase Flooring and Skirting Works | 2025-11-20 → 2025-11-19 (-1d) |  | 45.86d → 47.31d |
| PG-10785 | UPVC Window fixing works | 2026-01-06 → 2026-01-05 (-1d) |  | 45.86d → 47.31d |
| PG-10786 | Staircase Painting works | 2026-01-17 → 2026-01-16 (-1d) |  | 45.86d → 47.31d |
| 1.3.1.1.6 | **MEP Civil Works (Shaft, Lift Shaft & OHT )** | 2025-07-23 → 2025-07-22 (-1d) |  |  |
| 1.3.1.1.6.1 | **Lift Shaft Works** | 2025-07-23 → 2025-07-22 (-1d) |  |  |
| PG-10787 | Tie rod hole packing | 2025-07-23 → 2025-07-22 (-1d) |  | 123.36d → 124.81d |
| PG-10788 | Grinding works | 2025-08-01 → 2025-07-31 (-1d) |  | 123.36d → 124.81d |
| PG-10789 | Lift pit waterproofing works | 2025-08-07 → 2025-08-06 (-1d) |  | 123.36d → 124.81d |
| PG-10790 | Shaft door opening finishing | 2025-09-02 → 2025-09-01 (-1d) |  | 123.36d → 124.81d |
| PG-10791 | Painting works | 2025-09-10 → 2025-09-09 (-1d) |  | 123.36d → 124.81d |
| 1.3.1.1.6.2 | **Electrical Shaft works** | 2025-07-23 → 2025-07-22 (-1d) |  |  |
| PG-10793 | Tie rod hole packing | 2025-07-23 → 2025-07-22 (-1d) |  | 262.19d → 263.64d |
| PG-10794 | Grinding works | 2025-08-01 → 2025-07-31 (-1d) |  | 262.19d → 263.64d |
| PG-10795 | Shaft door opening finishing | 2025-08-07 → 2025-08-06 (-1d) |  | 262.19d → 263.64d |
| PG-10796 | Painting works | 2025-08-16 → 2025-08-14 (-2d) |  | 262.19d → 263.64d |
| 1.3.1.1.6.3 | **FPS Shaft works** | 2025-07-23 → 2025-07-22 (-1d) |  |  |
| PG-10797 | Tie rod hole packing | 2025-07-23 → 2025-07-22 (-1d) |  | 261.86d → 263.31d |
| PG-10798 | Grinding works | 2025-08-01 → 2025-07-31 (-1d) |  | 261.86d → 263.31d |
| PG-10799 | Shaft door opening finishing | 2025-08-07 → 2025-08-06 (-1d) |  | 261.86d → 263.31d |
| PG-10800 | Painting works | 2025-08-16 → 2025-08-14 (-2d) |  | 261.86d → 263.31d |
| 1.3.1.1.6.4 | **PHE Shaft works** | 2025-07-23 → 2025-07-22 (-1d) |  |  |
| PG-10801 | Tie rod hole packing | 2025-07-23 → 2025-07-22 (-1d) |  | 220.52d → 221.97d |
| PG-10802 | Grinding works | 2025-08-01 → 2025-07-31 (-1d) |  | 220.52d → 221.97d |
| PG-10803 | Shaft door opening finishing | 2025-08-07 → 2025-08-06 (-1d) |  | 220.52d → 221.97d |
| PG-10804 | Painting works | 2025-08-16 → 2025-08-14 (-2d) |  | 220.52d → 221.97d |
| 1.3.1.1.6.5 | **Data & Communication Shaft** | 2025-07-23 → 2025-07-22 (-1d) |  |  |
| PG-10805 | Tie rod hole packing | 2025-07-23 → 2025-07-22 (-1d) |  | 256.86d → 258.31d |
| PG-10806 | Grinding works | 2025-08-01 → 2025-07-31 (-1d) |  | 256.86d → 258.31d |
| PG-10807 | Shaft door opening finishing | 2025-08-07 → 2025-08-06 (-1d) |  | 256.86d → 258.31d |
| PG-10808 | Painting works | 2025-08-13 → 2025-08-12 (-1d) |  | 256.86d → 258.31d |
| 1.3.1.1.7 | **MEP Shaft works** | 2025-08-23 → 2025-08-22 (-1d) |  |  |
| 1.3.1.1.7.1 | **Electrical** | 2025-08-26 → 2025-08-25 (-1d) |  |  |
| PG-10813 | Tray Works | 2025-08-26 → 2025-08-25 (-1d) |  | 262.19d → 263.64d |
| PG-10814 | Cable & Conducting works | 2025-09-06 → 2025-09-05 (-1d) |  | 262.19d → 263.64d |
| PG-10815 | Wiring/DB/connector box installation and termination works | 2025-09-18 → 2025-09-17 (-1d) |  | 262.19d → 263.64d |
| 1.3.1.1.7.2 | **FPS** | 2025-08-26 → 2025-08-25 (-1d) |  |  |
| PG-10816 | Shaft MS Piping & fixtures installation | 2025-08-26 → 2025-08-25 (-1d) |  | 261.86d → 263.31d |
| PG-10817 | Tray / cabling / conducting & wiring works | 2025-09-18 → 2025-09-17 (-1d) |  | 261.86d → 263.31d |
| 1.3.1.1.7.3 | **Data & Communication** | 2025-08-23 → 2025-08-22 (-1d) |  |  |
| PG-10818 | Tray Works | 2025-08-23 → 2025-08-22 (-1d) |  | 256.86d → 258.31d |
| PG-10819 | Tray / cabling / conducting & wiring works | 2025-09-06 → 2025-09-05 (-1d) |  | 256.86d → 258.31d |
| PG-10820 | Wiring/DB/connector box installation and termination works | 2025-09-24 → 2025-09-23 (-1d) |  | 256.86d → 258.31d |
| 1.3.1.1.7.4 | **PHE** | 2025-08-26 → 2025-08-25 (-1d) |  |  |
| PG-10821 | Bracket fixing works | 2025-08-26 → 2025-08-25 (-1d) |  | 220.52d → 221.97d |
| PG-10822 | Piping Works | 2025-09-03 → 2025-09-02 (-1d) |  | 220.52d → 221.97d |
| 1.3.1.1.8 | **Lift Installation and Testing works** | 2025-08-07 → 2025-08-06 (-1d) |  |  |
| PG-10825 | Lift Shaft Survey works | 2025-08-07 → 2025-08-06 (-1d) |  | 149.86d → 151.31d |
| PG-10826 | Guide Rails fixing works | 2025-09-19 → 2025-09-18 (-1d) |  | 123.36d → 124.81d |
| 1.3.1.1.9 | **Electrical Panel Works** | 2025-07-22 → 2025-07-21 (-1d) |  |  |
| 1.3.1.1.9.1 | **Civil Finishing Works** | 2025-07-22 → 2025-07-21 (-1d) | 2025-09-04 → 2025-09-03 (-1d) |  |
| PG-10831 | Wall Tie rod hole packing & Grinding works. | 2025-07-22 → 2025-07-21 (-1d) |  | 132.19d → 133.64d |
| PG-10832 | Window, Louver and Door fixing works | 2025-08-08 → 2025-08-07 (-1d) |  | 132.19d → 133.64d |
| PG-10833 | Pedestal works |  | 2025-08-28 → 2025-08-27 (-1d) | 132.19d → 133.64d |
| PG-10834 | Painting works | 2025-08-28 → 2025-08-27 (-1d) | 2025-09-04 → 2025-09-03 (-1d) | 132.19d → 133.64d |
| 1.3.1.1.9.2 | **Electrical Panel works** | 2025-09-04 → 2025-09-03 (-1d) |  |  |
| PG-10835 | Electrical Panel assembly works | 2025-09-04 → 2025-09-03 (-1d) |  | 132.19d → 133.64d |
| 1.3.1.1.10 | **Entrance Lobby works** | 2026-02-11 → 2026-02-10 (-1d) |  |  |
| PG-10838 | Flooring Works | 2026-02-11 → 2026-02-10 (-1d) |  | 45.86d → 47.31d |
| PG-10841 | Canopy Works |  | 2026-04-17 → 2026-04-16 (-1d) | 64.69d → 66.14d |
| PG-10840 | Painting Works |  | 2026-05-09 → 2026-05-08 (-1d) | 45.86d → 47.31d |
| PG-10842 | Interior Works | 2026-05-09 → 2026-05-08 (-1d) |  | 45.86d → 47.31d |
| 1.3.1.1.11 | **Lightening Arrester works** | 2025-12-04 → 2025-12-03 (-1d) |  |  |
| PG-10843 | Conductor will be lifted with RCC Works, But Terrace works will be done once Parapet Painting done | 2025-12-04 → 2025-12-03 (-1d) |  | 250.69d → 252.14d |

| ID | Task | Start | Finish | Complete | Total float |
| --- | --- | --- | --- | --- | --- |
| 1.3.1.2 | **Tower 2 ( 2B+G+26 ) TYP 4 Units - 106 Units** |  | 2026-08-06 → 2026-08-07 (+1d) |  |  |
| 1.3.1.2.2 | **Structure works** |  | 2025-09-26 → 2025-09-27 (+1d) |  |  |
| 1.3.1.2.2.23 | **Floor 20** |  | 2025-05-31 → 2025-06-02 (+2d) |  |  |
| 1.3.1.2.2.23.1 | **Columns / shear walls** |  | 2025-05-26 → 2025-05-27 (+1d) |  |  |
| PG-10968 | Reinforcement |  | 2025-05-23 → 2025-05-24 A (+1d) | 89% → 100% | 15.56d → none |
| PG-10969 | Formwork |  | 2025-05-26 → 2025-05-27 A (+1d) | 27% → 100% | 15.09d → none |
| 1.3.1.2.2.23.2 | **Slab, Beams & Staircase** | 2025-05-24 → 2025-05-26 (+2d) | 2025-05-31 → 2025-06-02 (+2d) |  |  |
| PG-10970 | Formwork | 2025-05-24 → 2025-05-26 A (+2d) | 2025-05-28 → 2025-05-30 A (+2d) | 0% → 100% | 15.09d → none |
| PG-10971 | Reinforcement | 2025-05-27 → 2025-05-29 A (+2d) | 2025-05-30 → 2025-05-31 (+1d) | 0% → 63% | 15.09d → 15.08d |
| PG-10972 | Concrete | 2025-05-30 → 2025-06-02 (+3d) | 2025-05-31 → 2025-06-02 (+2d) |  | 15.09d → 15.08d |
| 1.3.1.2.2.24 | **Floor 21** | 2025-05-31 → 2025-06-03 (+3d) | 2025-06-13 → 2025-06-14 (+1d) |  |  |
| 1.3.1.2.2.24.1 | **Columns / shear walls** | 2025-05-31 → 2025-06-03 (+3d) | 2025-06-07 → 2025-06-09 (+2d) |  |  |
| PG-10973 | Reinforcement | 2025-05-31 → 2025-06-03 (+3d) | 2025-06-05 → 2025-06-06 (+1d) |  | 15.09d → 15.08d |
| PG-10974 | Formwork | 2025-06-03 → 2025-06-05 (+2d) | 2025-06-07 → 2025-06-09 (+2d) |  | 15.09d → 15.08d |
| 1.3.1.2.2.24.2 | **Slab, Beams & Staircase** | 2025-06-06 → 2025-06-09 (+3d) | 2025-06-13 → 2025-06-14 (+1d) |  |  |
| PG-10975 | Formwork | 2025-06-06 → 2025-06-09 (+3d) | 2025-06-10 → 2025-06-11 (+1d) |  | 15.09d → 15.08d |
| PG-10976 | Reinforcement | 2025-06-09 → 2025-06-11 (+2d) | 2025-06-12 → 2025-06-13 (+1d) |  | 15.09d → 15.08d |
| PG-10977 | Concrete | 2025-06-12 → 2025-06-14 (+2d) | 2025-06-13 → 2025-06-14 (+1d) |  | 15.09d → 15.08d |
| 1.3.1.2.2.25 | **Floor 22** | 2025-06-13 → 2025-06-16 (+3d) | 2025-06-26 → 2025-06-27 (+1d) |  |  |
| 1.3.1.2.2.25.1 | **Columns / shear walls** | 2025-06-13 → 2025-06-16 (+3d) | 2025-06-20 → 2025-06-21 (+1d) |  |  |
| PG-10978 | Reinforcement | 2025-06-13 → 2025-06-16 (+3d) | 2025-06-18 → 2025-06-19 (+1d) |  | 15.09d → 15.08d |
| PG-10979 | Formwork | 2025-06-16 → 2025-06-18 (+2d) | 2025-06-20 → 2025-06-21 (+1d) |  | 15.09d → 15.08d |
| 1.3.1.2.2.25.2 | **Slab, Beams & Staircase** | 2025-06-19 → 2025-06-21 (+2d) | 2025-06-26 → 2025-06-27 (+1d) |  |  |
| PG-10980 | Formwork | 2025-06-19 → 2025-06-21 (+2d) | 2025-06-23 → 2025-06-24 (+1d) |  | 15.09d → 15.08d |
| PG-10981 | Reinforcement | 2025-06-21 → 2025-06-24 (+3d) | 2025-06-25 → 2025-06-26 (+1d) |  | 15.09d → 15.08d |
| PG-10982 | Concrete | 2025-06-25 → 2025-06-27 (+2d) | 2025-06-26 → 2025-06-27 (+1d) |  | 15.09d → 15.08d |
| 1.3.1.2.2.26 | **Floor 23** | 2025-06-26 → 2025-06-28 (+2d) | 2025-07-09 → 2025-07-10 (+1d) |  |  |
| 1.3.1.2.2.26.1 | **Columns / shear walls** | 2025-06-26 → 2025-06-28 (+2d) | 2025-07-03 → 2025-07-04 (+1d) |  |  |
| PG-10983 | Reinforcement | 2025-06-26 → 2025-06-28 (+2d) | 2025-07-01 → 2025-07-02 (+1d) |  | 15.09d → 15.08d |
| PG-10984 | Formwork | 2025-06-28 → 2025-07-01 (+3d) | 2025-07-03 → 2025-07-04 (+1d) |  | 15.09d → 15.08d |
| 1.3.1.2.2.26.2 | **Slab, Beams & Staircase** | 2025-07-02 → 2025-07-04 (+2d) | 2025-07-09 → 2025-07-10 (+1d) |  |  |
| PG-10985 | Formwork | 2025-07-02 → 2025-07-04 (+2d) | 2025-07-05 → 2025-07-07 (+2d) |  | 15.09d → 15.08d |
| PG-10986 | Reinforcement | 2025-07-04 → 2025-07-07 (+3d) | 2025-07-08 → 2025-07-09 (+1d) |  | 15.09d → 15.08d |
| PG-10987 | Concrete | 2025-07-08 → 2025-07-10 (+2d) | 2025-07-09 → 2025-07-10 (+1d) |  | 15.09d → 15.08d |
| 1.3.1.2.2.27 | **Floor 24** | 2025-07-09 → 2025-07-11 (+2d) | 2025-07-22 → 2025-07-23 (+1d) |  |  |
| 1.3.1.2.2.27.1 | **Columns / shear walls** | 2025-07-09 → 2025-07-11 (+2d) | 2025-07-16 → 2025-07-17 (+1d) |  |  |
| PG-10988 | Reinforcement | 2025-07-09 → 2025-07-11 (+2d) | 2025-07-14 → 2025-07-15 (+1d) |  | 15.09d → 15.08d |
| PG-10989 | Formwork | 2025-07-11 → 2025-07-14 (+3d) | 2025-07-16 → 2025-07-17 (+1d) |  | 15.09d → 15.08d |
| 1.3.1.2.2.27.2 | **Slab, Beams & Staircase** | 2025-07-15 → 2025-07-17 (+2d) | 2025-07-22 → 2025-07-23 (+1d) |  |  |
| PG-10990 | Formwork | 2025-07-15 → 2025-07-17 (+2d) | 2025-07-18 → 2025-07-19 (+1d) |  | 15.09d → 15.08d |
| PG-10991 | Reinforcement | 2025-07-17 → 2025-07-19 (+2d) | 2025-07-21 → 2025-07-22 (+1d) |  | 15.09d → 15.08d |
| PG-10992 | Concrete | 2025-07-21 → 2025-07-23 (+2d) | 2025-07-22 → 2025-07-23 (+1d) |  | 15.09d → 15.08d |
| 1.3.1.2.2.28 | **Floor 25** | 2025-07-22 → 2025-07-24 (+2d) | 2025-08-04 → 2025-08-05 (+1d) |  |  |
| 1.3.1.2.2.28.1 | **Columns / shear walls** | 2025-07-22 → 2025-07-24 (+2d) | 2025-07-29 → 2025-07-30 (+1d) |  |  |
| PG-10993 | Reinforcement | 2025-07-22 → 2025-07-24 (+2d) | 2025-07-26 → 2025-07-28 (+2d) |  | 15.09d → 15.08d |
| PG-10994 | Formwork | 2025-07-24 → 2025-07-26 (+2d) | 2025-07-29 → 2025-07-30 (+1d) |  | 15.09d → 15.08d |
| 1.3.1.2.2.28.2 | **Slab, Beams & Staircase** | 2025-07-28 → 2025-07-30 (+2d) | 2025-08-04 → 2025-08-05 (+1d) |  |  |
| PG-10995 | Formwork | 2025-07-28 → 2025-07-30 (+2d) | 2025-07-31 → 2025-08-01 (+1d) |  | 15.09d → 15.08d |
| PG-10996 | Reinforcement | 2025-07-30 → 2025-08-01 (+2d) | 2025-08-02 → 2025-08-04 (+2d) |  | 15.09d → 15.08d |
| PG-10997 | Concrete | 2025-08-02 → 2025-08-05 (+3d) | 2025-08-04 → 2025-08-05 (+1d) |  | 15.09d → 15.08d |
| 1.3.1.2.2.29 | **Floor 26** | 2025-08-04 → 2025-08-06 (+2d) | 2025-08-18 → 2025-08-19 (+1d) |  |  |
| 1.3.1.2.2.29.1 | **Columns / shear walls** | 2025-08-04 → 2025-08-06 (+2d) | 2025-08-11 → 2025-08-12 (+1d) |  |  |
| PG-10998 | Reinforcement | 2025-08-04 → 2025-08-06 (+2d) | 2025-08-08 → 2025-08-09 (+1d) |  | 15.09d → 15.08d |
| PG-10999 | Formwork | 2025-08-06 → 2025-08-08 (+2d) | 2025-08-11 → 2025-08-12 (+1d) |  | 15.09d → 15.08d |
| 1.3.1.2.2.29.2 | **Slab, Beams & Staircase** | 2025-08-09 → 2025-08-12 (+3d) | 2025-08-18 → 2025-08-19 (+1d) |  |  |
| PG-11000 | Formwork | 2025-08-09 → 2025-08-12 (+3d) | 2025-08-13 → 2025-08-14 (+1d) |  | 15.09d → 15.08d |
| PG-11001 | Reinforcement | 2025-08-12 → 2025-08-14 (+2d) | 2025-08-16 → 2025-08-18 (+2d) |  | 15.09d → 15.08d |
| PG-11002 | Concrete | 2025-08-16 → 2025-08-19 (+3d) | 2025-08-18 → 2025-08-19 (+1d) |  | 15.09d → 15.08d |
| 1.3.1.2.2.30 | **Above Terrace Floor** | 2025-08-18 → 2025-08-20 (+2d) | 2025-09-26 → 2025-09-27 (+1d) |  |  |
| 1.3.1.2.2.30.1 | **Columns / shear walls/Parapet Walls** | 2025-08-18 → 2025-08-20 (+2d) | 2025-09-01 → 2025-09-02 (+1d) |  |  |
| PG-11003 | Reinforcement | 2025-08-18 → 2025-08-20 (+2d) | 2025-08-22 → 2025-08-23 (+1d) |  | 120.59d → 120.58d |
| PG-11004 | Formwork | 2025-08-20 → 2025-08-22 (+2d) | 2025-08-26 → 2025-08-27 (+1d) |  | 120.59d → 120.58d |
| PG-11005 | Concrete | 2025-08-26 → 2025-08-28 (+2d) | 2025-09-01 → 2025-09-02 (+1d) |  | 120.59d → 120.58d |
| 1.3.1.2.2.30.2 | **Slab, Beams & Staircase Head rooms, Lift headroom** | 2025-08-23 → 2025-08-26 (+3d) | 2025-09-26 → 2025-09-27 (+1d) |  |  |
| PG-11009 | Terrace Waterproofing and Protective finishing. | 2025-08-23 → 2025-08-26 (+3d) | 2025-09-26 → 2025-09-27 (+1d) |  | 213.26d → 213.25d |
| PG-11006 | Formwork | 2025-09-01 → 2025-09-02 (+1d) | 2025-09-06 → 2025-09-08 (+2d) |  | 213.26d → 213.25d |
| PG-11007 | Reinforcement | 2025-09-06 → 2025-09-08 (+2d) | 2025-09-12 → 2025-09-13 (+1d) |  | 213.26d → 213.25d |
| PG-11008 | Concrete | 2025-09-12 → 2025-09-13 (+1d) | 2025-09-15 → 2025-09-16 (+1d) |  | 213.26d → 213.25d |
| 1.3.1.2.3 | **MEP Internal works** |  | 2026-02-25 → 2026-02-26 (+1d) |  |  |
| PG-11100 | Final Fix - CP & Sanitary fixtures |  |  | 33% → 97% | 382.74d → 383.08d |

| ID | Task | Start | Finish | Complete | Total float |
| --- | --- | --- | --- | --- | --- |
| PG-11103 | Final Fix - Smoke & heat detectors, FHC , FAS Etc. |  | 2025-05-30 A | 39% → 100% | 382.98d → none |
| PG-11106 | Final Fix - Electrical Fixtures | 2025-05-23 → 2025-05-24 A (+1d) |  | 0% → 94% | 382.98d → 383.08d |
| PG-11111 | 2nd Fix - Sprinkler fixing & Pressure testing |  | 2025-05-26 → 2025-05-24 A (-2d) | 90% → 100% | 376.11d → none |
| PG-11114 | 2nd Fix - Wiring works |  | 2025-05-24 → 2025-05-26 A (+2d) | 90% → 100% | 381.94d → none |
| PG-11118 | Final Fix - CP & Sanitary fixtures | 2025-06-17 → 2025-06-16 (-1d) |  |  | 357.36d → 358.6d |
| PG-11120 | 2nd Fix - Sprinkler fixing & Pressure testing | 2025-05-27 → 2025-05-28 A (+1d) |  | 0% → 21% | 365.19d → 365.65d |
| PG-11121 | Final Fix - Smoke & heat detectors, FHC , FAS Etc. | 2025-06-17 → 2025-06-16 (-1d) |  |  | 357.36d → 358.6d |
| PG-11123 | 2nd Fix - Wiring works |  |  | 3% → 45% | 371.02d → 371.51d |
| PG-11124 | Final Fix - Electrical Fixtures | 2025-06-23 → 2025-06-21 (-2d) |  |  | 357.36d → 358.6d |
| 1.3.1.2.3.15 | **Floor 12** |  | 2025-07-11 → 2025-07-12 (+1d) |  |  |
| 1.3.1.2.3.15.1 | **PHE Works** |  | 2025-07-11 → 2025-07-12 (+1d) |  |  |
| PG-11127 | Final Fix - CP & Sanitary fixtures | 2025-06-30 → 2025-07-01 (+1d) | 2025-07-11 → 2025-07-12 (+1d) |  | 347.12d → 347.17d |
| 1.3.1.2.3.15.2 | **Fire Fighting Works** |  | 2025-07-11 → 2025-07-12 (+1d) |  |  |
| PG-11129 | 2nd Fix - Sprinkler fixing & Pressure testing | 2025-06-07 → 2025-06-09 (+2d) | 2025-06-19 → 2025-06-20 (+1d) |  | 356.12d → 356.17d |
| PG-11130 | Final Fix - Smoke & heat detectors, FHC , FAS Etc. | 2025-06-30 → 2025-07-01 (+1d) | 2025-07-11 → 2025-07-12 (+1d) |  | 347.12d → 347.17d |
| 1.3.1.2.3.15.3 | **Electrical Works** |  | 2025-07-11 → 2025-07-12 (+1d) |  |  |
| PG-11132 | 2nd Fix - Wiring works | 2025-06-03 → 2025-06-04 (+1d) | 2025-06-18 → 2025-06-19 (+1d) |  | 361.12d → 361.17d |
| PG-11133 | Final Fix - Electrical Fixtures | 2025-07-04 → 2025-07-05 (+1d) | 2025-07-11 → 2025-07-12 (+1d) |  | 347.12d → 347.17d |
| PG-11135 | 2nd Fix - diverter fixing & Pressure testing |  | 2025-05-27 A | 72% → 100% | 335.19d → none |
| PG-11137 | 1st Fix - Piping and Shaft hydrant works |  | 2025-05-29 → 2025-05-30 A (+1d) | 56% → 100% | 381.36d → none |
| PG-11143 | 1st Fix - Piping works |  |  | 25% → 75% | 323.64d → 324.7d |
| PG-11144 | 2nd Fix - diverter fixing & Pressure testing | 2025-05-29 → 2025-05-30 A (+1d) |  | 0% → 5% | 323.64d → 324.28d |
| 1.3.1.2.3.17.2 | **Fire Fighting Works** | 2025-05-28 → 2025-05-29 (+1d) |  |  |  |
| PG-11146 | 1st Fix - Piping and Shaft hydrant works | 2025-05-28 → 2025-05-29 A (+1d) |  | 0% → 12% | 370.5d → 371.49d |
| PG-11149 | 1st Fix - GI wire pulling |  | 2025-05-28 → 2025-05-29 A (+1d) | 44% → 100% | 370.5d → none |
| 1.3.1.2.3.18 | **Floor 15** | 2025-05-31 → 2025-06-03 (+3d) | 2025-08-21 → 2025-08-22 (+1d) |  |  |
| 1.3.1.2.3.18.1 | **PHE Works** | 2025-05-31 → 2025-06-03 (+3d) | 2025-08-21 → 2025-08-22 (+1d) |  |  |
| PG-11152 | 1st Fix - Piping works | 2025-05-31 → 2025-06-03 (+3d) | 2025-06-14 → 2025-06-16 (+2d) |  | 162.76d → 162.75d |
| PG-11153 | 2nd Fix - diverter fixing & Pressure testing | 2025-06-10 → 2025-06-12 (+2d) | 2025-06-21 → 2025-06-23 (+2d) |  | 162.76d → 162.75d |
| PG-11154 | Final Fix - CP & Sanitary fixtures | 2025-08-08 → 2025-08-11 (+3d) | 2025-08-21 → 2025-08-22 (+1d) |  | 313.76d → 313.75d |
| 1.3.1.2.3.18.2 | **Fire Fighting Works** | 2025-06-10 → 2025-06-11 (+1d) | 2025-08-21 → 2025-08-22 (+1d) |  |  |
| PG-11155 | 1st Fix - Piping and Shaft hydrant works | 2025-06-10 → 2025-06-11 (+1d) | 2025-06-24 → 2025-06-25 (+1d) |  | 360.43d → 360.42d |
| PG-11156 | 2nd Fix - Sprinkler fixing & Pressure testing | 2025-07-17 → 2025-07-19 (+2d) | 2025-07-29 → 2025-07-30 (+1d) |  | 322.76d → 322.75d |
| PG-11157 | Final Fix - Smoke & heat detectors, FHC , FAS Etc. | 2025-08-08 → 2025-08-11 (+3d) | 2025-08-21 → 2025-08-22 (+1d) |  | 313.76d → 313.75d |
| 1.3.1.2.3.18.3 | **Electrical Works** | 2025-05-31 → 2025-06-03 (+3d) | 2025-08-21 → 2025-08-22 (+1d) |  |  |
| PG-11158 | 1st Fix - GI wire pulling | 2025-05-31 → 2025-06-03 (+3d) | 2025-06-10 → 2025-06-11 (+1d) |  | 360.43d → 360.42d |
| PG-11159 | 2nd Fix - Wiring works | 2025-07-11 → 2025-07-12 (+1d) | 2025-07-28 → 2025-07-29 (+1d) |  | 327.76d → 327.75d |
| PG-11160 | Final Fix - Electrical Fixtures | 2025-08-13 → 2025-08-16 (+3d) | 2025-08-21 → 2025-08-22 (+1d) |  | 313.76d → 313.75d |
| 1.3.1.2.3.19 | **Floor 16** | 2025-06-13 → 2025-06-16 (+3d) | 2025-09-02 → 2025-09-03 (+1d) |  |  |
| 1.3.1.2.3.19.1 | **PHE Works** | 2025-06-13 → 2025-06-16 (+3d) | 2025-09-02 → 2025-09-03 (+1d) |  |  |
| PG-11161 | 1st Fix - Piping works | 2025-06-13 → 2025-06-16 (+3d) | 2025-06-27 → 2025-06-28 (+1d) |  | 303.43d → 303.42d |
| PG-11162 | 2nd Fix - diverter fixing & Pressure testing | 2025-06-23 → 2025-06-25 (+2d) | 2025-07-04 → 2025-07-05 (+1d) |  | 303.43d → 303.42d |
| PG-11163 | Final Fix - CP & Sanitary fixtures | 2025-08-21 → 2025-08-22 (+1d) | 2025-09-02 → 2025-09-03 (+1d) |  | 303.43d → 303.42d |
| 1.3.1.2.3.19.2 | **Fire Fighting Works** | 2025-06-23 → 2025-06-24 (+1d) | 2025-09-02 → 2025-09-03 (+1d) |  |  |
| PG-11164 | 1st Fix - Piping and Shaft hydrant works | 2025-06-23 → 2025-06-24 (+1d) | 2025-07-07 → 2025-07-08 (+1d) |  | 349.26d → 349.25d |
| PG-11165 | 2nd Fix - Sprinkler fixing & Pressure testing | 2025-07-30 → 2025-08-01 (+2d) | 2025-08-11 → 2025-08-12 (+1d) |  | 310.59d → 310.58d |
| PG-11166 | Final Fix - Smoke & heat detectors, FHC , FAS Etc. | 2025-08-21 → 2025-08-22 (+1d) | 2025-09-02 → 2025-09-03 (+1d) |  | 303.43d → 303.42d |
| 1.3.1.2.3.19.3 | **Electrical Works** | 2025-06-13 → 2025-06-16 (+3d) | 2025-09-02 → 2025-09-03 (+1d) |  |  |
| PG-11167 | 1st Fix - GI wire pulling | 2025-06-13 → 2025-06-16 (+3d) | 2025-06-23 → 2025-06-24 (+1d) |  | 349.26d → 349.25d |
| PG-11168 | 2nd Fix - Wiring works | 2025-07-25 → 2025-07-26 (+1d) | 2025-08-09 → 2025-08-11 (+2d) |  | 316.43d → 316.42d |
| PG-11169 | Final Fix - Electrical Fixtures | 2025-08-26 → 2025-08-28 (+2d) | 2025-09-02 → 2025-09-03 (+1d) |  | 303.43d → 303.42d |
| 1.3.1.2.3.20 | **Floor 17** | 2025-06-26 → 2025-06-28 (+2d) | 2025-09-15 → 2025-09-16 (+1d) |  |  |
| 1.3.1.2.3.20.1 | **PHE Works** | 2025-06-26 → 2025-06-28 (+2d) | 2025-09-15 → 2025-09-16 (+1d) |  |  |
| PG-11170 | 1st Fix - Piping works | 2025-06-26 → 2025-06-28 (+2d) | 2025-07-10 → 2025-07-11 (+1d) |  | 292.43d → 292.42d |
| PG-11171 | 2nd Fix - diverter fixing & Pressure testing | 2025-07-05 → 2025-07-08 (+3d) | 2025-07-17 → 2025-07-18 (+1d) |  | 292.43d → 292.42d |
| PG-11172 | Final Fix - CP & Sanitary fixtures | 2025-09-03 → 2025-09-04 (+1d) | 2025-09-15 → 2025-09-16 (+1d) |  | 292.43d → 292.42d |
| 1.3.1.2.3.20.2 | **Fire Fighting Works** | 2025-07-05 → 2025-07-07 (+2d) | 2025-09-15 → 2025-09-16 (+1d) |  |  |
| PG-11173 | 1st Fix - Piping and Shaft hydrant works | 2025-07-05 → 2025-07-07 (+2d) | 2025-07-19 → 2025-07-21 (+2d) |  | 338.26d → 338.25d |
| PG-11174 | 2nd Fix - Sprinkler fixing & Pressure testing | 2025-08-12 → 2025-08-14 (+2d) | 2025-08-25 → 2025-08-26 (+1d) |  | 299.59d → 299.58d |
| PG-11175 | Final Fix - Smoke & heat detectors, FHC , FAS Etc. | 2025-09-03 → 2025-09-04 (+1d) | 2025-09-15 → 2025-09-16 (+1d) |  | 292.43d → 292.42d |
| 1.3.1.2.3.20.3 | **Electrical Works** | 2025-06-26 → 2025-06-28 (+2d) | 2025-09-15 → 2025-09-16 (+1d) |  |  |
| PG-11176 | 1st Fix - GI wire pulling | 2025-06-26 → 2025-06-28 (+2d) | 2025-07-05 → 2025-07-07 (+2d) |  | 338.26d → 338.25d |
| PG-11177 | 2nd Fix - Wiring works | 2025-08-07 → 2025-08-08 (+1d) | 2025-08-23 → 2025-08-25 (+2d) |  | 305.43d → 305.42d |
| PG-11178 | Final Fix - Electrical Fixtures | 2025-09-08 → 2025-09-10 (+2d) | 2025-09-15 → 2025-09-16 (+1d) |  | 292.43d → 292.42d |
| 1.3.1.2.3.21 | **Floor 18** | 2025-07-09 → 2025-07-11 (+2d) | 2025-09-29 → 2025-09-30 (+1d) |  |  |
| 1.3.1.2.3.21.1 | **PHE Works** | 2025-07-09 → 2025-07-11 (+2d) | 2025-09-29 → 2025-09-30 (+1d) |  |  |
| PG-11179 | 1st Fix - Piping works | 2025-07-09 → 2025-07-11 (+2d) | 2025-07-23 → 2025-07-24 (+1d) |  | 280.59d → 280.58d |
| PG-11180 | 2nd Fix - diverter fixing & Pressure testing | 2025-07-19 → 2025-07-22 (+3d) | 2025-07-30 → 2025-07-31 (+1d) |  | 280.59d → 280.58d |
| PG-11181 | Final Fix - CP & Sanitary fixtures | 2025-09-16 → 2025-09-17 (+1d) | 2025-09-29 → 2025-09-30 (+1d) |  | 280.59d → 280.58d |
| 1.3.1.2.3.21.2 | **Fire Fighting Works** | 2025-07-19 → 2025-07-21 (+2d) | 2025-09-29 → 2025-09-30 (+1d) |  |  |

| ID | Task | Start | Finish | Total float |
| --- | --- | --- | --- | --- |
| PG-11182 | 1st Fix - Piping and Shaft hydrant works | 2025-07-19 → 2025-07-21 (+2d) | 2025-08-01 → 2025-08-02 (+1d) | 328.26d → 328.25d |
| PG-11183 | 2nd Fix - Sprinkler fixing & Pressure testing | 2025-08-26 → 2025-08-27 (+1d) | 2025-09-06 → 2025-09-08 (+2d) | 288.59d → 288.58d |
| PG-11184 | Final Fix - Smoke & heat detectors, FHC , FAS Etc. | 2025-09-16 → 2025-09-17 (+1d) | 2025-09-29 → 2025-09-30 (+1d) | 280.59d → 280.58d |
| 1.3.1.2.3.21.3 | **Electrical Works** | 2025-07-09 → 2025-07-11 (+2d) | 2025-09-29 → 2025-09-30 (+1d) |  |
| PG-11185 | 1st Fix - GI wire pulling | 2025-07-09 → 2025-07-11 (+2d) | 2025-07-18 → 2025-07-19 (+1d) | 328.26d → 328.25d |
| PG-11186 | 2nd Fix - Wiring works | 2025-08-19 → 2025-08-20 (+1d) | 2025-09-05 → 2025-09-06 (+1d) | 294.59d → 294.58d |
| PG-11187 | Final Fix - Electrical Fixtures | 2025-09-22 → 2025-09-23 (+1d) | 2025-09-29 → 2025-09-30 (+1d) | 280.59d → 280.58d |
| 1.3.1.2.3.22 | **Floor 19** | 2025-07-22 → 2025-07-24 (+2d) | 2025-10-13 → 2025-10-14 (+1d) |  |
| 1.3.1.2.3.22.1 | **PHE Works** | 2025-07-22 → 2025-07-24 (+2d) | 2025-10-13 → 2025-10-14 (+1d) |  |
| PG-11188 | 1st Fix - Piping works | 2025-07-22 → 2025-07-24 (+2d) | 2025-08-05 → 2025-08-06 (+1d) | 269.59d → 269.58d |
| PG-11189 | 2nd Fix - diverter fixing & Pressure testing | 2025-08-01 → 2025-08-04 (+3d) | 2025-08-12 → 2025-08-13 (+1d) | 269.59d → 269.58d |
| PG-11190 | Final Fix - CP & Sanitary fixtures | 2025-09-29 → 2025-09-30 (+1d) | 2025-10-13 → 2025-10-14 (+1d) | 269.59d → 269.58d |
| 1.3.1.2.3.22.2 | **Fire Fighting Works** | 2025-07-31 → 2025-08-01 (+1d) | 2025-10-13 → 2025-10-14 (+1d) |  |
| PG-11191 | 1st Fix - Piping and Shaft hydrant works | 2025-07-31 → 2025-08-01 (+1d) | 2025-08-14 → 2025-08-16 (+2d) | 317.26d → 317.25d |
| PG-11192 | 2nd Fix - Sprinkler fixing & Pressure testing | 2025-09-08 → 2025-09-09 (+1d) | 2025-09-19 → 2025-09-20 (+1d) | 277.59d → 277.58d |
| PG-11193 | Final Fix - Smoke & heat detectors, FHC , FAS Etc. | 2025-09-29 → 2025-09-30 (+1d) | 2025-10-13 → 2025-10-14 (+1d) | 269.59d → 269.58d |
| 1.3.1.2.3.22.3 | **Electrical Works** | 2025-07-22 → 2025-07-24 (+2d) | 2025-10-13 → 2025-10-14 (+1d) |  |
| PG-11194 | 1st Fix - GI wire pulling | 2025-07-22 → 2025-07-24 (+2d) | 2025-07-31 → 2025-08-01 (+1d) | 317.26d → 317.25d |
| PG-11195 | 2nd Fix - Wiring works | 2025-09-01 → 2025-09-02 (+1d) | 2025-09-18 → 2025-09-19 (+1d) | 283.59d → 283.58d |
| PG-11196 | Final Fix - Electrical Fixtures | 2025-10-06 → 2025-10-07 (+1d) | 2025-10-13 → 2025-10-14 (+1d) | 269.59d → 269.58d |
| 1.3.1.2.3.23 | **Floor 20** | 2025-08-04 → 2025-08-06 (+2d) | 2025-10-27 → 2025-10-28 (+1d) |  |
| 1.3.1.2.3.23.1 | **PHE Works** | 2025-08-04 → 2025-08-06 (+2d) | 2025-10-27 → 2025-10-28 (+1d) |  |
| PG-11197 | 1st Fix - Piping works | 2025-08-04 → 2025-08-06 (+2d) | 2025-08-20 → 2025-08-21 (+1d) | 257.59d → 257.58d |
| PG-11198 | 2nd Fix - diverter fixing & Pressure testing | 2025-08-16 → 2025-08-19 (+3d) | 2025-08-27 → 2025-08-28 (+1d) | 257.59d → 257.58d |
| PG-11199 | Final Fix - CP & Sanitary fixtures | 2025-10-14 → 2025-10-15 (+1d) | 2025-10-27 → 2025-10-28 (+1d) | 257.59d → 257.58d |
| 1.3.1.2.3.23.2 | **Fire Fighting Works** | 2025-08-16 → 2025-08-18 (+2d) | 2025-10-27 → 2025-10-28 (+1d) |  |
| PG-11200 | 1st Fix - Piping and Shaft hydrant works | 2025-08-16 → 2025-08-18 (+2d) | 2025-08-29 → 2025-08-30 (+1d) | 305.43d → 305.42d |
| PG-11201 | 2nd Fix - Sprinkler fixing & Pressure testing | 2025-09-22 → 2025-09-23 (+1d) | 2025-10-04 → 2025-10-06 (+2d) | 265.59d → 265.58d |
| PG-11202 | Final Fix - Smoke & heat detectors, FHC , FAS Etc. | 2025-10-14 → 2025-10-15 (+1d) | 2025-10-27 → 2025-10-28 (+1d) | 257.59d → 257.58d |
| 1.3.1.2.3.23.3 | **Electrical Works** | 2025-08-04 → 2025-08-06 (+2d) | 2025-10-27 → 2025-10-28 (+1d) |  |
| PG-11203 | 1st Fix - GI wire pulling | 2025-08-04 → 2025-08-06 (+2d) | 2025-08-14 → 2025-08-16 (+2d) | 305.43d → 305.42d |
| PG-11204 | 2nd Fix - Wiring works | 2025-09-15 → 2025-09-16 (+1d) | 2025-10-03 → 2025-10-04 (+1d) | 271.59d → 271.58d |
| PG-11205 | Final Fix - Electrical Fixtures | 2025-10-20 → 2025-10-21 (+1d) | 2025-10-27 → 2025-10-28 (+1d) | 257.59d → 257.58d |
| 1.3.1.2.3.24 | **Floor 21** | 2025-08-18 → 2025-08-20 (+2d) | 2025-11-08 → 2025-11-10 (+2d) |  |
| 1.3.1.2.3.24.1 | **PHE Works** | 2025-08-18 → 2025-08-20 (+2d) | 2025-11-08 → 2025-11-10 (+2d) |  |
| PG-11206 | 1st Fix - Piping works | 2025-08-18 → 2025-08-20 (+2d) | 2025-08-30 → 2025-09-01 (+2d) | 15.09d → 15.08d |
| PG-11207 | 2nd Fix - diverter fixing & Pressure testing | 2025-08-26 → 2025-08-28 (+2d) | 2025-09-06 → 2025-09-08 (+2d) | 247.93d → 247.92d |
| PG-11208 | Final Fix - CP & Sanitary fixtures | 2025-10-25 → 2025-10-27 (+2d) | 2025-11-08 → 2025-11-10 (+2d) | 247.93d → 247.92d |
| 1.3.1.2.3.24.2 | **Fire Fighting Works** | 2025-08-26 → 2025-08-28 (+2d) | 2025-11-08 → 2025-11-10 (+2d) |  |
| PG-11209 | 1st Fix - Piping and Shaft hydrant works | 2025-08-26 → 2025-08-28 (+2d) | 2025-09-09 → 2025-09-10 (+1d) | 295.59d → 295.58d |
| PG-11210 | 2nd Fix - Sprinkler fixing & Pressure testing | 2025-10-04 → 2025-10-06 (+2d) | 2025-10-15 → 2025-10-16 (+1d) | 256.93d → 256.92d |
| PG-11211 | Final Fix - Smoke & heat detectors, FHC , FAS Etc. | 2025-10-25 → 2025-10-27 (+2d) | 2025-11-08 → 2025-11-10 (+2d) | 247.93d → 247.92d |
| 1.3.1.2.3.24.3 | **Electrical Works** | 2025-08-18 → 2025-08-20 (+2d) | 2025-10-27 → 2025-10-28 (+1d) |  |
| PG-11212 | 1st Fix - GI wire pulling | 2025-08-18 → 2025-08-20 (+2d) | 2025-08-26 → 2025-08-27 (+1d) | 295.59d → 295.58d |
| PG-11213 | 2nd Fix - Wiring works | 2025-09-15 → 2025-09-16 (+1d) | 2025-10-03 → 2025-10-04 (+1d) | 271.93d → 271.92d |
| PG-11214 | Final Fix - Electrical Fixtures | 2025-10-20 → 2025-10-21 (+1d) | 2025-10-27 → 2025-10-28 (+1d) | 257.93d → 257.92d |
| 1.3.1.2.3.25 | **Floor 22** | 2025-09-08 → 2025-09-09 (+1d) | 2025-12-01 → 2025-12-02 (+1d) |  |
| 1.3.1.2.3.25.1 | **PHE Works** | 2025-09-08 → 2025-09-09 (+1d) | 2025-12-01 → 2025-12-02 (+1d) |  |
| PG-11215 | 1st Fix - Piping works | 2025-09-08 → 2025-09-09 (+1d) | 2025-09-22 → 2025-09-23 (+1d) | 123.93d → 123.92d |
| PG-11216 | 2nd Fix - diverter fixing & Pressure testing | 2025-09-16 → 2025-09-17 (+1d) | 2025-09-29 → 2025-09-30 (+1d) | 133.43d → 133.42d |
| PG-11217 | Final Fix - CP & Sanitary fixtures | 2025-11-19 → 2025-11-20 (+1d) | 2025-12-01 → 2025-12-02 (+1d) | 228.09d → 228.08d |
| 1.3.1.2.3.25.2 | **Fire Fighting Works** | 2025-09-17 → 2025-09-18 (+1d) | 2025-12-01 → 2025-12-02 (+1d) |  |
| PG-11218 | 1st Fix - Piping and Shaft hydrant works | 2025-09-17 → 2025-09-18 (+1d) | 2025-10-01 → 2025-10-03 (+2d) | 145.59d → 145.58d |
| PG-11219 | 2nd Fix - Sprinkler fixing & Pressure testing | 2025-10-24 → 2025-10-27 (+3d) | 2025-11-07 → 2025-11-08 (+1d) | 238.09d → 238.08d |
| PG-11220 | Final Fix - Smoke & heat detectors, FHC , FAS Etc. | 2025-11-19 → 2025-11-20 (+1d) | 2025-12-01 → 2025-12-02 (+1d) | 228.09d → 228.08d |
| 1.3.1.2.3.25.3 | **Electrical Works** | 2025-09-08 → 2025-09-09 (+1d) | 2025-12-01 → 2025-12-02 (+1d) |  |
| PG-11221 | 1st Fix - GI wire pulling | 2025-09-08 → 2025-09-09 (+1d) | 2025-09-17 → 2025-09-18 (+1d) | 15.09d → 15.08d |
| PG-11222 | 2nd Fix - Wiring works | 2025-10-17 → 2025-10-20 (+3d) | 2025-11-06 → 2025-11-07 (+1d) | 243.09d → 243.08d |
| PG-11223 | Final Fix - Electrical Fixtures | 2025-11-24 → 2025-11-25 (+1d) | 2025-12-01 → 2025-12-02 (+1d) | 228.09d → 228.08d |
| 1.3.1.2.3.26 | **Floor 23** | 2025-09-30 → 2025-10-01 (+1d) | 2025-12-20 → 2025-12-22 (+2d) |  |
| 1.3.1.2.3.26.1 | **PHE Works** | 2025-09-30 → 2025-10-01 (+1d) | 2025-12-20 → 2025-12-22 (+2d) |  |
| PG-11224 | 1st Fix - Piping works | 2025-09-30 → 2025-10-01 (+1d) | 2025-10-14 → 2025-10-15 (+1d) | 123.93d → 123.92d |
| PG-11225 | 2nd Fix - diverter fixing & Pressure testing | 2025-10-10 → 2025-10-11 (+1d) | 2025-10-21 → 2025-10-22 (+1d) | 210.09d → 210.08d |
| PG-11226 | Final Fix - CP & Sanitary fixtures | 2025-12-10 → 2025-12-11 (+1d) | 2025-12-20 → 2025-12-22 (+2d) | 210.09d → 210.08d |
| 1.3.1.2.3.26.2 | **Fire Fighting Works** | 2025-10-10 → 2025-10-11 (+1d) | 2025-12-20 → 2025-12-22 (+2d) |  |
| PG-11227 | 1st Fix - Piping and Shaft hydrant works | 2025-10-10 → 2025-10-11 (+1d) | 2025-10-24 → 2025-10-25 (+1d) | 256.93d → 256.92d |
| PG-11228 | 2nd Fix - Sprinkler fixing & Pressure testing | 2025-11-17 → 2025-11-18 (+1d) | 2025-11-28 → 2025-11-29 (+1d) | 220.09d → 220.08d |
| PG-11229 | Final Fix - Smoke & heat detectors, FHC , FAS Etc. | 2025-12-10 → 2025-12-11 (+1d) | 2025-12-20 → 2025-12-22 (+2d) | 210.09d → 210.08d |
| 1.3.1.2.3.26.3 | **Electrical Works** | 2025-09-30 → 2025-10-01 (+1d) | 2025-12-20 → 2025-12-22 (+2d) |  |
| PG-11230 | 1st Fix - GI wire pulling | 2025-09-30 → 2025-10-01 (+1d) | 2025-10-10 → 2025-10-11 (+1d) | 256.93d → 256.92d |

| ID | Task | Start | Finish | Complete | Total float |
| --- | --- | --- | --- | --- | --- |
| PG-11231 | 2nd Fix - Wiring works | 2025-11-10 → 2025-11-11 (+1d) | 2025-11-27 → 2025-11-28 (+1d) |  | 225.09d → 225.08d |
| PG-11232 | Final Fix - Electrical Fixtures | 2025-12-15 → 2025-12-16 (+1d) | 2025-12-20 → 2025-12-22 (+2d) |  | 210.09d → 210.08d |
| 1.3.1.2.3.27 | **Floor 24** | 2025-10-22 → 2025-10-23 (+1d) | 2026-01-10 → 2026-01-12 (+2d) |  |  |
| 1.3.1.2.3.27.1 | **PHE Works** | 2025-10-22 → 2025-10-23 (+1d) | 2026-01-10 → 2026-01-12 (+2d) |  |  |
| PG-11233 | 1st Fix - Piping works | 2025-10-22 → 2025-10-23 (+1d) | 2025-11-05 → 2025-11-06 (+1d) |  | 123.93d → 123.92d |
| PG-11234 | 2nd Fix - diverter fixing & Pressure testing | 2025-10-31 → 2025-11-03 (+3d) | 2025-11-12 → 2025-11-13 (+1d) |  | 190.93d → 190.92d |
| PG-11235 | Final Fix - CP & Sanitary fixtures | 2025-12-30 → 2025-12-31 (+1d) | 2026-01-10 → 2026-01-12 (+2d) |  | 190.93d → 190.92d |
| 1.3.1.2.3.27.2 | **Fire Fighting Works** | 2025-10-31 → 2025-11-03 (+3d) | 2026-01-10 → 2026-01-12 (+2d) |  |  |
| PG-11236 | 1st Fix - Piping and Shaft hydrant works | 2025-10-31 → 2025-11-03 (+3d) | 2025-11-14 → 2025-11-15 (+1d) |  | 239.59d → 239.58d |
| PG-11237 | 2nd Fix - Sprinkler fixing & Pressure testing | 2025-12-09 → 2025-12-10 (+1d) | 2025-12-19 → 2025-12-20 (+1d) |  | 199.43d → 199.42d |
| PG-11238 | Final Fix - Smoke & heat detectors, FHC , FAS Etc. | 2025-12-30 → 2025-12-31 (+1d) | 2026-01-10 → 2026-01-12 (+2d) |  | 190.93d → 190.92d |
| 1.3.1.2.3.27.3 | **Electrical Works** | 2025-10-22 → 2025-10-23 (+1d) | 2026-01-10 → 2026-01-12 (+2d) |  |  |
| PG-11239 | 1st Fix - GI wire pulling | 2025-10-22 → 2025-10-23 (+1d) | 2025-10-30 → 2025-10-31 (+1d) |  | 239.59d → 239.58d |
| PG-11240 | 2nd Fix - Wiring works | 2025-12-02 → 2025-12-03 (+1d) | 2025-12-18 → 2025-12-19 (+1d) |  | 204.93d → 204.92d |
| PG-11241 | Final Fix - Electrical Fixtures | 2026-01-03 → 2026-01-05 (+2d) | 2026-01-10 → 2026-01-12 (+2d) |  | 190.93d → 190.92d |
| 1.3.1.2.3.28 | **Floor 25** | 2025-11-13 → 2025-11-14 (+1d) | 2026-02-04 → 2026-02-05 (+1d) |  |  |
| 1.3.1.2.3.28.1 | **PHE Works** | 2025-11-13 → 2025-11-14 (+1d) | 2026-02-04 → 2026-02-05 (+1d) |  |  |
| PG-11242 | 1st Fix - Piping works | 2025-11-13 → 2025-11-14 (+1d) | 2025-11-27 → 2025-11-28 (+1d) |  | 123.93d → 123.92d |
| PG-11243 | 2nd Fix - diverter fixing & Pressure testing | 2025-11-22 → 2025-11-24 (+2d) | 2025-12-04 → 2025-12-05 (+1d) |  | 171.43d → 171.42d |
| PG-11244 | Final Fix - CP & Sanitary fixtures | 2026-01-22 → 2026-01-23 (+1d) | 2026-02-04 → 2026-02-05 (+1d) |  | 171.43d → 171.42d |
| 1.3.1.2.3.28.2 | **Fire Fighting Works** | 2025-11-24 → 2025-11-25 (+1d) | 2026-02-04 → 2026-02-05 (+1d) |  |  |
| PG-11245 | 1st Fix - Piping and Shaft hydrant works | 2025-11-24 → 2025-11-25 (+1d) | 2025-12-06 → 2025-12-08 (+2d) |  | 219.09d → 219.08d |
| PG-11246 | 2nd Fix - Sprinkler fixing & Pressure testing | 2025-12-31 → 2026-01-01 (+1d) | 2026-01-10 → 2026-01-12 (+2d) |  | 181.43d → 181.42d |
| PG-11247 | Final Fix - Smoke & heat detectors, FHC , FAS Etc. | 2026-01-22 → 2026-01-23 (+1d) | 2026-02-04 → 2026-02-05 (+1d) |  | 171.43d → 171.42d |
| 1.3.1.2.3.28.3 | **Electrical Works** | 2025-11-13 → 2025-11-14 (+1d) | 2026-02-04 → 2026-02-05 (+1d) |  |  |
| PG-11248 | 1st Fix - GI wire pulling | 2025-11-13 → 2025-11-14 (+1d) | 2025-11-22 → 2025-11-24 (+2d) |  | 219.09d → 219.08d |
| PG-11249 | 2nd Fix - Wiring works | 2025-12-24 → 2025-12-25 (+1d) | 2026-01-09 → 2026-01-10 (+1d) |  | 187.43d → 187.42d |
| PG-11250 | Final Fix - Electrical Fixtures | 2026-01-29 → 2026-01-30 (+1d) | 2026-02-04 → 2026-02-05 (+1d) |  | 171.43d → 171.42d |
| 1.3.1.2.3.29 | **Floor 26** | 2025-12-05 → 2025-12-06 (+1d) | 2026-02-25 → 2026-02-26 (+1d) |  |  |
| 1.3.1.2.3.29.1 | **PHE Works** | 2025-12-05 → 2025-12-06 (+1d) | 2026-02-25 → 2026-02-26 (+1d) |  |  |
| PG-11251 | 1st Fix - Piping works | 2025-12-05 → 2025-12-06 (+1d) | 2025-12-19 → 2025-12-20 (+1d) |  | 123.93d → 123.92d |
| PG-11252 | 2nd Fix - diverter fixing & Pressure testing | 2025-12-15 → 2025-12-16 (+1d) | 2025-12-26 → 2025-12-27 (+1d) |  | 123.93d → 123.92d |
| PG-11253 | Final Fix - CP & Sanitary fixtures | 2026-02-13 → 2026-02-14 (+1d) | 2026-02-25 → 2026-02-26 (+1d) |  | 123.93d → 123.92d |
| 1.3.1.2.3.29.2 | **Fire Fighting Works** | 2025-12-15 → 2025-12-16 (+1d) | 2026-02-25 → 2026-02-26 (+1d) |  |  |
| PG-11254 | 1st Fix - Piping and Shaft hydrant works | 2025-12-15 → 2025-12-16 (+1d) | 2025-12-29 → 2025-12-30 (+1d) |  | 202.09d → 202.08d |
| PG-11255 | 2nd Fix - Sprinkler fixing & Pressure testing | 2026-01-20 → 2026-01-21 (+1d) | 2026-02-03 → 2026-02-04 (+1d) |  | 132.93d → 132.92d |
| PG-11256 | Final Fix - Smoke & heat detectors, FHC , FAS Etc. | 2026-02-13 → 2026-02-14 (+1d) | 2026-02-25 → 2026-02-26 (+1d) |  | 123.93d → 123.92d |
| 1.3.1.2.3.29.3 | **Electrical Works** | 2025-12-05 → 2025-12-06 (+1d) | 2026-02-25 → 2026-02-26 (+1d) |  |  |
| PG-11257 | 1st Fix - GI wire pulling | 2025-12-05 → 2025-12-06 (+1d) | 2025-12-15 → 2025-12-16 (+1d) |  | 202.09d → 202.08d |
| PG-11258 | 2nd Fix - Wiring works | 2026-01-13 → 2026-01-14 (+1d) | 2026-02-02 → 2026-02-03 (+1d) |  | 138.93d → 138.92d |
| PG-11259 | Final Fix - Electrical Fixtures | 2026-02-19 → 2026-02-20 (+1d) | 2026-02-25 → 2026-02-26 (+1d) |  | 123.93d → 123.92d |
| 1.3.1.2.4 | **Civil Finishes - Units** |  | 2026-02-18 → 2026-02-19 (+1d) |  |  |
| 1.3.1.2.4.12 | **Floor 9** |  | 2025-05-23 → 2025-05-24 (+1d) |  |  |
| 1.3.1.2.4.12.1 | **Ceiling Finishing works - Civil** |  | 2025-05-23 → 2025-05-24 (+1d) |  |  |
| PG-11401 | Final Coat Painting |  | 2025-05-23 → 2025-05-24 A (+1d) |  | 417.66d → none |
| 1.3.1.2.4.12.2 | **Wall Finishing works - Civil** |  | 2025-05-23 → 2025-05-24 (+1d) |  |  |
| PG-11406 | Final Coat Painting |  | 2025-05-23 → 2025-05-24 A (+1d) |  | 382.98d → none |
| PG-11415 | Final Coat Painting |  |  | 3% → 32% | 400.58d → 401.05d |
| PG-11420 | Final Coat Painting |  |  | 8% → 41% | 366.14d → 367.2d |
| PG-11427 | Painting Works - Putty, Primer and 1st | 2025-05-24 A |  | 0% → 78% | 392.69d → 393.76d |
| PG-11431 | UPVC Windows & Sliding doors |  | 2025-05-24 A | 91% → 100% | 357.36d → none |
| PG-11433 | Painting Works - Putty, Primer and 1st | 2025-05-24 A |  | 0% → 83% | 357.36d → 358.73d |
| PG-11438 | Wooden doors | 2025-05-26 → 2025-05-27 A (+1d) |  | 0% → 77% | 357.36d → 358.6d |
| 1.3.1.2.4.15 | **Floor 12** |  | 2025-07-04 → 2025-07-05 (+1d) |  |  |
| 1.3.1.2.4.15.1 | **Ceiling Finishing works - Civil** |  | 2025-07-04 → 2025-07-05 (+1d) |  |  |
| PG-11442 | Toilet False ceiling | 2025-05-26 → 2025-05-27 A (+1d) | 2025-05-30 → 2025-05-31 (+1d) | 0% → 78% | 373.12d → 373.17d |
| PG-11441 | Painting Works - Putty, Primer and 1st | 2025-06-05 → 2025-06-06 (+1d) | 2025-06-12 → 2025-06-13 (+1d) |  | 382.62d → 382.67d |
| PG-11443 | Final Coat Painting | 2025-06-12 → 2025-06-13 (+1d) | 2025-07-04 → 2025-07-05 (+1d) |  | 382.62d → 382.67d |
| 1.3.1.2.4.15.2 | **Wall Finishing works - Civil** |  | 2025-07-04 → 2025-07-05 (+1d) |  |  |
| PG-11445 | UPVC Windows & Sliding doors | 2025-05-30 → 2025-05-31 (+1d) | 2025-06-05 → 2025-06-06 (+1d) |  | 347.12d → 347.17d |
| PG-11447 | Painting Works - Putty, Primer and 1st | 2025-06-05 → 2025-06-06 (+1d) | 2025-06-12 → 2025-06-13 (+1d) |  | 347.12d → 347.17d |
| PG-11448 | Final Coat Painting | 2025-06-12 → 2025-06-13 (+1d) | 2025-07-04 → 2025-07-05 (+1d) |  | 347.12d → 347.17d |
| 1.3.1.2.4.15.3 | **Floor Finishing Works - Civil** |  | 2025-06-12 → 2025-06-13 (+1d) |  |  |
| PG-11450 | Floor Tiling - Wet area |  | 2025-05-24 → 2025-05-26 A (+2d) | 69% → 100% | 347.12d → none |
| PG-11451 | Floor Tiling - Dry area | 2025-05-24 → 2025-05-26 A (+2d) | 2025-05-30 → 2025-05-31 (+1d) | 0% → 80% | 347.12d → 347.17d |
| PG-11452 | Wooden doors | 2025-06-06 → 2025-06-07 (+1d) | 2025-06-12 → 2025-06-13 (+1d) |  | 347.12d → 347.17d |
| PG-11460 | Dadoing - Wet area | 2025-05-27 A |  | 0% → 60% | 335.19d → 336.74d |
| 1.3.1.2.4.17.1 | **Ceiling Finishing works - Civil** | 2025-05-28 → 2025-05-29 (+1d) |  |  |  |
| PG-11467 | Gypsum Plastering | 2025-05-28 → 2025-05-29 A (+1d) |  | 0% → 18% | 370.5d → 371.49d |
| PG-11472 | Balcony Railing Fixing works |  | 2025-05-23 → 2025-05-24 A (+1d) | 85% → 100% | 353.09d → none |

| ID | Task | Start | Finish | Total float |
| --- | --- | --- | --- | --- |
| 1.3.1.2.4.18 | **Floor 15** | 2025-05-31 → 2025-06-03 (+3d) | 2025-08-13 → 2025-08-14 (+1d) |  |
| 1.3.1.2.4.18.1 | **Ceiling Finishing works - Civil** | 2025-06-10 → 2025-06-11 (+1d) | 2025-08-13 → 2025-08-14 (+1d) |  |
| PG-11481 | Gypsum Plastering | 2025-06-10 → 2025-06-11 (+1d) | 2025-06-17 → 2025-06-18 (+1d) | 360.43d → 360.42d |
| PG-11482 | Cornice fixing | 2025-06-26 → 2025-06-27 (+1d) | 2025-07-01 → 2025-07-02 (+1d) | 360.43d → 360.42d |
| PG-11484 | Toilet False ceiling | 2025-07-04 → 2025-07-07 (+3d) | 2025-07-09 → 2025-07-10 (+1d) | 339.76d → 339.75d |
| PG-11483 | Painting Works - Putty, Primer and 1st | 2025-07-15 → 2025-07-17 (+2d) | 2025-07-22 → 2025-07-23 (+1d) | 348.26d → 348.25d |
| PG-11485 | Final Coat Painting | 2025-07-22 → 2025-07-24 (+2d) | 2025-08-13 → 2025-08-14 (+1d) | 348.26d → 348.25d |
| 1.3.1.2.4.18.2 | **Wall Finishing works - Civil** | 2025-05-31 → 2025-06-03 (+3d) | 2025-08-13 → 2025-08-14 (+1d) |  |
| PG-11486 | Balcony Railing Fixing works | 2025-05-31 → 2025-06-03 (+3d) | 2025-06-05 → 2025-06-06 (+1d) | 191.76d → 191.75d |
| PG-11488 | Dadoing - Wet area | 2025-06-21 → 2025-06-24 (+3d) | 2025-06-27 → 2025-06-28 (+1d) | 162.76d → 162.75d |
| PG-11487 | UPVC Windows & Sliding doors | 2025-07-09 → 2025-07-11 (+2d) | 2025-07-15 → 2025-07-16 (+1d) | 162.76d → 162.75d |
| PG-11489 | Painting Works - Putty, Primer and 1st | 2025-07-15 → 2025-07-17 (+2d) | 2025-07-22 → 2025-07-23 (+1d) | 162.76d → 162.75d |
| PG-11490 | Final Coat Painting | 2025-07-22 → 2025-07-24 (+2d) | 2025-08-13 → 2025-08-14 (+1d) | 313.76d → 313.75d |
| 1.3.1.2.4.18.3 | **Floor Finishing Works - Civil** | 2025-05-31 → 2025-06-03 (+3d) | 2025-07-22 → 2025-07-23 (+1d) |  |
| PG-11491 | Waterproofing for sunken areas | 2025-05-31 → 2025-06-03 (+3d) | 2025-06-04 → 2025-06-05 (+1d) | 182.76d → 182.75d |
| PG-11492 | Floor Tiling - Wet area | 2025-06-27 → 2025-06-30 (+3d) | 2025-07-03 → 2025-07-04 (+1d) | 162.76d → 162.75d |
| PG-11493 | Floor Tiling - Dry area | 2025-07-03 → 2025-07-05 (+2d) | 2025-07-09 → 2025-07-10 (+1d) | 162.76d → 162.75d |
| PG-11494 | Wooden doors | 2025-07-16 → 2025-07-18 (+2d) | 2025-07-22 → 2025-07-23 (+1d) | 162.76d → 162.75d |
| 1.3.1.2.4.19 | **Floor 16** | 2025-06-13 → 2025-06-16 (+3d) | 2025-08-27 → 2025-08-28 (+1d) |  |
| 1.3.1.2.4.19.1 | **Ceiling Finishing works - Civil** | 2025-06-23 → 2025-06-24 (+1d) | 2025-08-27 → 2025-08-28 (+1d) |  |
| PG-11495 | Gypsum Plastering | 2025-06-23 → 2025-06-24 (+1d) | 2025-06-30 → 2025-07-01 (+1d) | 349.26d → 349.25d |
| PG-11496 | Cornice fixing | 2025-07-09 → 2025-07-10 (+1d) | 2025-07-14 → 2025-07-15 (+1d) | 349.26d → 349.25d |
| PG-11498 | Toilet False ceiling | 2025-07-17 → 2025-07-19 (+2d) | 2025-07-22 → 2025-07-23 (+1d) | 327.59d → 327.58d |
| PG-11497 | Painting Works - Putty, Primer and 1st | 2025-07-28 → 2025-07-30 (+2d) | 2025-08-04 → 2025-08-05 (+1d) | 337.09d → 337.08d |
| PG-11499 | Final Coat Painting | 2025-08-04 → 2025-08-06 (+2d) | 2025-08-27 → 2025-08-28 (+1d) | 337.09d → 337.08d |
| 1.3.1.2.4.19.2 | **Wall Finishing works - Civil** | 2025-06-13 → 2025-06-16 (+3d) | 2025-08-26 → 2025-08-27 (+1d) |  |
| PG-11500 | Balcony Railing Fixing works | 2025-06-13 → 2025-06-16 (+3d) | 2025-06-18 → 2025-06-19 (+1d) | 332.43d → 332.42d |
| PG-11502 | Dadoing - Wet area | 2025-07-04 → 2025-07-07 (+3d) | 2025-07-10 → 2025-07-11 (+1d) | 303.43d → 303.42d |
| PG-11501 | UPVC Windows & Sliding doors | 2025-07-22 → 2025-07-24 (+2d) | 2025-07-28 → 2025-07-29 (+1d) | 303.43d → 303.42d |
| PG-11503 | Painting Works - Putty, Primer and 1st | 2025-07-28 → 2025-07-30 (+2d) | 2025-08-04 → 2025-08-05 (+1d) | 303.43d → 303.42d |
| PG-11504 | Final Coat Painting | 2025-08-04 → 2025-08-06 (+2d) | 2025-08-26 → 2025-08-27 (+1d) | 303.43d → 303.42d |
| 1.3.1.2.4.19.3 | **Floor Finishing Works - Civil** | 2025-06-13 → 2025-06-16 (+3d) | 2025-08-04 → 2025-08-05 (+1d) |  |
| PG-11505 | Waterproofing for sunken areas | 2025-06-13 → 2025-06-16 (+3d) | 2025-06-17 → 2025-06-18 (+1d) | 323.43d → 323.42d |
| PG-11506 | Floor Tiling - Wet area | 2025-07-10 → 2025-07-12 (+2d) | 2025-07-16 → 2025-07-17 (+1d) | 303.43d → 303.42d |
| PG-11507 | Floor Tiling - Dry area | 2025-07-16 → 2025-07-18 (+2d) | 2025-07-22 → 2025-07-23 (+1d) | 303.43d → 303.42d |
| PG-11508 | Wooden doors | 2025-07-29 → 2025-07-31 (+2d) | 2025-08-04 → 2025-08-05 (+1d) | 303.43d → 303.42d |
| 1.3.1.2.4.20 | **Floor 17** | 2025-06-26 → 2025-06-28 (+2d) | 2025-09-09 → 2025-09-10 (+1d) |  |
| 1.3.1.2.4.20.1 | **Ceiling Finishing works - Civil** | 2025-07-05 → 2025-07-07 (+2d) | 2025-09-09 → 2025-09-10 (+1d) |  |
| PG-11509 | Gypsum Plastering | 2025-07-05 → 2025-07-07 (+2d) | 2025-07-12 → 2025-07-14 (+2d) | 338.26d → 338.25d |
| PG-11510 | Cornice fixing | 2025-07-22 → 2025-07-23 (+1d) | 2025-07-26 → 2025-07-28 (+2d) | 338.26d → 338.25d |
| PG-11512 | Toilet False ceiling | 2025-07-30 → 2025-08-01 (+2d) | 2025-08-04 → 2025-08-05 (+1d) | 316.59d → 316.58d |
| PG-11511 | Painting Works - Putty, Primer and 1st | 2025-08-09 → 2025-08-12 (+3d) | 2025-08-18 → 2025-08-19 (+1d) | 326.09d → 326.08d |
| PG-11513 | Final Coat Painting | 2025-08-18 → 2025-08-20 (+2d) | 2025-09-09 → 2025-09-10 (+1d) | 326.09d → 326.08d |
| 1.3.1.2.4.20.2 | **Wall Finishing works - Civil** | 2025-06-26 → 2025-06-28 (+2d) | 2025-09-08 → 2025-09-09 (+1d) |  |
| PG-11514 | Balcony Railing Fixing works | 2025-06-26 → 2025-06-28 (+2d) | 2025-07-01 → 2025-07-02 (+1d) | 321.43d → 321.42d |
| PG-11516 | Dadoing - Wet area | 2025-07-17 → 2025-07-19 (+2d) | 2025-07-23 → 2025-07-24 (+1d) | 292.43d → 292.42d |
| PG-11515 | UPVC Windows & Sliding doors | 2025-08-04 → 2025-08-06 (+2d) | 2025-08-09 → 2025-08-11 (+2d) | 292.43d → 292.42d |
| PG-11517 | Painting Works - Putty, Primer and 1st | 2025-08-09 → 2025-08-12 (+3d) | 2025-08-18 → 2025-08-19 (+1d) | 292.43d → 292.42d |
| PG-11518 | Final Coat Painting | 2025-08-18 → 2025-08-20 (+2d) | 2025-09-08 → 2025-09-09 (+1d) | 292.43d → 292.42d |
| 1.3.1.2.4.20.3 | **Floor Finishing Works - Civil** | 2025-06-26 → 2025-06-28 (+2d) | 2025-08-18 → 2025-08-19 (+1d) |  |
| PG-11519 | Waterproofing for sunken areas | 2025-06-26 → 2025-06-28 (+2d) | 2025-06-30 → 2025-07-01 (+1d) | 312.43d → 312.42d |
| PG-11520 | Floor Tiling - Wet area | 2025-07-23 → 2025-07-25 (+2d) | 2025-07-29 → 2025-07-30 (+1d) | 292.43d → 292.42d |
| PG-11521 | Floor Tiling - Dry area | 2025-07-29 → 2025-07-31 (+2d) | 2025-08-04 → 2025-08-05 (+1d) | 292.43d → 292.42d |
| PG-11522 | Wooden doors | 2025-08-11 → 2025-08-13 (+2d) | 2025-08-18 → 2025-08-19 (+1d) | 292.43d → 292.42d |
| 1.3.1.2.4.21 | **Floor 18** | 2025-07-09 → 2025-07-11 (+2d) | 2025-09-22 → 2025-09-23 (+1d) |  |
| 1.3.1.2.4.21.1 | **Ceiling Finishing works - Civil** | 2025-07-18 → 2025-07-19 (+1d) | 2025-09-22 → 2025-09-23 (+1d) |  |
| PG-11523 | Gypsum Plastering | 2025-07-18 → 2025-07-19 (+1d) | 2025-07-25 → 2025-07-26 (+1d) | 328.26d → 328.25d |
| PG-11524 | Cornice fixing | 2025-08-04 → 2025-08-05 (+1d) | 2025-08-08 → 2025-08-09 (+1d) | 328.26d → 328.25d |
| PG-11526 | Toilet False ceiling | 2025-08-12 → 2025-08-13 (+1d) | 2025-08-18 → 2025-08-19 (+1d) | 305.59d → 305.58d |
| PG-11525 | Painting Works - Putty, Primer and 1st | 2025-08-23 → 2025-08-25 (+2d) | 2025-08-30 → 2025-09-01 (+2d) | 316.43d → 316.42d |
| PG-11527 | Final Coat Painting | 2025-08-30 → 2025-09-01 (+2d) | 2025-09-22 → 2025-09-23 (+1d) | 316.43d → 316.42d |
| 1.3.1.2.4.21.2 | **Wall Finishing works - Civil** | 2025-07-09 → 2025-07-11 (+2d) | 2025-09-22 → 2025-09-23 (+1d) |  |
| PG-11528 | Balcony Railing Fixing works | 2025-07-09 → 2025-07-11 (+2d) | 2025-07-14 → 2025-07-15 (+1d) | 309.26d → 309.25d |
| PG-11530 | Dadoing - Wet area | 2025-07-30 → 2025-07-31 (+1d) | 2025-08-05 → 2025-08-06 (+1d) | 280.59d → 280.58d |
| PG-11529 | UPVC Windows & Sliding doors | 2025-08-18 → 2025-08-19 (+1d) | 2025-08-23 → 2025-08-25 (+2d) | 280.59d → 280.58d |
| PG-11531 | Painting Works - Putty, Primer and 1st | 2025-08-23 → 2025-08-25 (+2d) | 2025-08-30 → 2025-09-01 (+2d) | 280.59d → 280.58d |
| PG-11532 | Final Coat Painting | 2025-08-30 → 2025-09-01 (+2d) | 2025-09-22 → 2025-09-23 (+1d) | 280.59d → 280.58d |
| 1.3.1.2.4.21.3 | **Floor Finishing Works - Civil** | 2025-07-09 → 2025-07-11 (+2d) | 2025-08-30 → 2025-09-01 (+2d) |  |
| PG-11533 | Waterproofing for sunken areas | 2025-07-09 → 2025-07-11 (+2d) | 2025-07-12 → 2025-07-14 (+2d) | 300.26d → 300.25d |
| PG-11534 | Floor Tiling - Wet area | 2025-08-05 → 2025-08-06 (+1d) | 2025-08-11 → 2025-08-12 (+1d) | 280.59d → 280.58d |

| ID | Task | Start | Finish | Total float |
| --- | --- | --- | --- | --- |
| PG-11535 | Floor Tiling - Dry area | 2025-08-11 → 2025-08-12 (+1d) | 2025-08-18 → 2025-08-19 (+1d) | 280.59d → 280.58d |
| PG-11536 | Wooden doors | 2025-08-25 → 2025-08-26 (+1d) | 2025-08-30 → 2025-09-01 (+2d) | 280.59d → 280.58d |
| 1.3.1.2.4.22 | **Floor 19** | 2025-07-22 → 2025-07-24 (+2d) | 2025-10-06 → 2025-10-07 (+1d) |  |
| 1.3.1.2.4.22.1 | **Ceiling Finishing works - Civil** | 2025-07-31 → 2025-08-01 (+1d) | 2025-10-06 → 2025-10-07 (+1d) |  |
| PG-11537 | Gypsum Plastering | 2025-07-31 → 2025-08-01 (+1d) | 2025-08-07 → 2025-08-08 (+1d) | 317.26d → 317.25d |
| PG-11538 | Cornice fixing | 2025-08-19 → 2025-08-20 (+1d) | 2025-08-22 → 2025-08-23 (+1d) | 317.26d → 317.25d |
| PG-11540 | Toilet False ceiling | 2025-08-26 → 2025-08-27 (+1d) | 2025-08-30 → 2025-09-01 (+2d) | 294.59d → 294.58d |
| PG-11539 | Painting Works - Putty, Primer and 1st | 2025-09-05 → 2025-09-06 (+1d) | 2025-09-12 → 2025-09-13 (+1d) | 305.43d → 305.42d |
| PG-11541 | Final Coat Painting | 2025-09-12 → 2025-09-13 (+1d) | 2025-10-06 → 2025-10-07 (+1d) | 305.43d → 305.42d |
| 1.3.1.2.4.22.2 | **Wall Finishing works - Civil** | 2025-07-22 → 2025-07-24 (+2d) | 2025-10-06 → 2025-10-07 (+1d) |  |
| PG-11542 | Balcony Railing Fixing works | 2025-07-22 → 2025-07-24 (+2d) | 2025-07-26 → 2025-07-28 (+2d) | 298.26d → 298.25d |
| PG-11544 | Dadoing - Wet area | 2025-08-12 → 2025-08-13 (+1d) | 2025-08-19 → 2025-08-20 (+1d) | 269.59d → 269.58d |
| PG-11543 | UPVC Windows & Sliding doors | 2025-08-30 → 2025-09-01 (+2d) | 2025-09-05 → 2025-09-06 (+1d) | 269.59d → 269.58d |
| PG-11545 | Painting Works - Putty, Primer and 1st | 2025-09-05 → 2025-09-06 (+1d) | 2025-09-12 → 2025-09-13 (+1d) | 269.59d → 269.58d |
| PG-11546 | Final Coat Painting | 2025-09-12 → 2025-09-13 (+1d) | 2025-10-06 → 2025-10-07 (+1d) | 269.59d → 269.58d |
| 1.3.1.2.4.22.3 | **Floor Finishing Works - Civil** | 2025-07-22 → 2025-07-24 (+2d) | 2025-09-12 → 2025-09-13 (+1d) |  |
| PG-11547 | Waterproofing for sunken areas | 2025-07-22 → 2025-07-24 (+2d) | 2025-07-25 → 2025-07-26 (+1d) | 289.26d → 289.25d |
| PG-11548 | Floor Tiling - Wet area | 2025-08-19 → 2025-08-20 (+1d) | 2025-08-25 → 2025-08-26 (+1d) | 269.59d → 269.58d |
| PG-11549 | Floor Tiling - Dry area | 2025-08-25 → 2025-08-26 (+1d) | 2025-08-30 → 2025-09-01 (+2d) | 269.59d → 269.58d |
| PG-11550 | Wooden doors | 2025-09-06 → 2025-09-08 (+2d) | 2025-09-12 → 2025-09-13 (+1d) | 269.59d → 269.58d |
| 1.3.1.2.4.23 | **Floor 20** | 2025-08-04 → 2025-08-06 (+2d) | 2025-10-20 → 2025-10-21 (+1d) |  |
| 1.3.1.2.4.23.1 | **Ceiling Finishing works - Civil** | 2025-08-14 → 2025-08-16 (+2d) | 2025-10-20 → 2025-10-21 (+1d) |  |
| PG-11551 | Gypsum Plastering | 2025-08-14 → 2025-08-16 (+2d) | 2025-08-22 → 2025-08-23 (+1d) | 305.43d → 305.42d |
| PG-11552 | Cornice fixing | 2025-09-01 → 2025-09-03 (+2d) | 2025-09-05 → 2025-09-06 (+1d) | 305.43d → 305.42d |
| PG-11554 | Toilet False ceiling | 2025-09-09 → 2025-09-10 (+1d) | 2025-09-13 → 2025-09-15 (+2d) | 282.59d → 282.58d |
| PG-11553 | Painting Works - Putty, Primer and 1st | 2025-09-19 → 2025-09-20 (+1d) | 2025-09-26 → 2025-09-27 (+1d) | 293.43d → 293.42d |
| PG-11555 | Final Coat Painting | 2025-09-26 → 2025-09-27 (+1d) | 2025-10-20 → 2025-10-21 (+1d) | 293.43d → 293.42d |
| 1.3.1.2.4.23.2 | **Wall Finishing works - Civil** | 2025-08-04 → 2025-08-06 (+2d) | 2025-10-20 → 2025-10-21 (+1d) |  |
| PG-11556 | Balcony Railing Fixing works | 2025-08-04 → 2025-08-06 (+2d) | 2025-08-08 → 2025-08-09 (+1d) | 287.26d → 287.25d |
| PG-11558 | Dadoing - Wet area | 2025-08-27 → 2025-08-28 (+1d) | 2025-09-02 → 2025-09-03 (+1d) | 257.59d → 257.58d |
| PG-11557 | UPVC Windows & Sliding doors | 2025-09-13 → 2025-09-15 (+2d) | 2025-09-19 → 2025-09-20 (+1d) | 257.59d → 257.58d |
| PG-11559 | Painting Works - Putty, Primer and 1st | 2025-09-19 → 2025-09-20 (+1d) | 2025-09-26 → 2025-09-27 (+1d) | 257.59d → 257.58d |
| PG-11560 | Final Coat Painting | 2025-09-26 → 2025-09-27 (+1d) | 2025-10-20 → 2025-10-21 (+1d) | 257.59d → 257.58d |
| 1.3.1.2.4.23.3 | **Floor Finishing Works - Civil** | 2025-08-04 → 2025-08-06 (+2d) | 2025-09-26 → 2025-09-27 (+1d) |  |
| PG-11561 | Waterproofing for sunken areas | 2025-08-04 → 2025-08-06 (+2d) | 2025-08-07 → 2025-08-08 (+1d) | 278.26d → 278.25d |
| PG-11562 | Floor Tiling - Wet area | 2025-09-02 → 2025-09-03 (+1d) | 2025-09-08 → 2025-09-09 (+1d) | 257.59d → 257.58d |
| PG-11563 | Floor Tiling - Dry area | 2025-09-08 → 2025-09-09 (+1d) | 2025-09-13 → 2025-09-15 (+2d) | 257.59d → 257.58d |
| PG-11564 | Wooden doors | 2025-09-20 → 2025-09-22 (+2d) | 2025-09-26 → 2025-09-27 (+1d) | 257.59d → 257.58d |
| 1.3.1.2.4.24 | **Floor 21** | 2025-08-18 → 2025-08-20 (+2d) | 2025-10-31 → 2025-11-03 (+3d) |  |
| 1.3.1.2.4.24.1 | **Ceiling Finishing works - Civil** | 2025-08-26 → 2025-08-27 (+1d) | 2025-10-31 → 2025-11-03 (+3d) |  |
| PG-11565 | Gypsum Plastering | 2025-08-26 → 2025-08-27 (+1d) | 2025-09-02 → 2025-09-03 (+1d) | 295.59d → 295.58d |
| PG-11566 | Cornice fixing | 2025-09-11 → 2025-09-13 (+2d) | 2025-09-16 → 2025-09-17 (+1d) | 295.59d → 295.58d |
| PG-11568 | Toilet False ceiling | 2025-09-19 → 2025-09-20 (+1d) | 2025-09-24 → 2025-09-25 (+1d) | 273.93d → 273.92d |
| PG-11567 | Painting Works - Putty, Primer and 1st | 2025-09-30 → 2025-10-01 (+1d) | 2025-10-08 → 2025-10-09 (+1d) | 283.59d → 283.58d |
| PG-11569 | Final Coat Painting | 2025-10-08 → 2025-10-09 (+1d) | 2025-10-31 → 2025-11-03 (+3d) | 283.59d → 283.58d |
| 1.3.1.2.4.24.2 | **Wall Finishing works - Civil** | 2025-08-18 → 2025-08-20 (+2d) | 2025-10-31 → 2025-11-03 (+3d) |  |
| PG-11570 | Balcony Railing Fixing works | 2025-08-18 → 2025-08-20 (+2d) | 2025-08-22 → 2025-08-23 (+1d) | 275.59d → 275.58d |
| PG-11572 | Dadoing - Wet area | 2025-09-06 → 2025-09-08 (+2d) | 2025-09-12 → 2025-09-13 (+1d) | 247.93d → 247.92d |
| PG-11571 | UPVC Windows & Sliding doors | 2025-09-24 → 2025-09-25 (+1d) | 2025-09-30 → 2025-10-01 (+1d) | 247.93d → 247.92d |
| PG-11573 | Painting Works - Putty, Primer and 1st | 2025-09-30 → 2025-10-01 (+1d) | 2025-10-08 → 2025-10-09 (+1d) | 247.93d → 247.92d |
| PG-11574 | Final Coat Painting | 2025-10-08 → 2025-10-09 (+1d) | 2025-10-31 → 2025-11-03 (+3d) | 247.93d → 247.92d |
| 1.3.1.2.4.24.3 | **Floor Finishing Works - Civil** | 2025-08-18 → 2025-08-20 (+2d) | 2025-10-08 → 2025-10-09 (+1d) |  |
| PG-11575 | Waterproofing for sunken areas | 2025-08-18 → 2025-08-20 (+2d) | 2025-08-21 → 2025-08-22 (+1d) | 266.59d → 266.58d |
| PG-11576 | Floor Tiling - Wet area | 2025-09-12 → 2025-09-13 (+1d) | 2025-09-18 → 2025-09-19 (+1d) | 247.93d → 247.92d |
| PG-11577 | Floor Tiling - Dry area | 2025-09-18 → 2025-09-19 (+1d) | 2025-09-24 → 2025-09-25 (+1d) | 247.93d → 247.92d |
| PG-11578 | Wooden doors | 2025-10-01 → 2025-10-03 (+2d) | 2025-10-08 → 2025-10-09 (+1d) | 247.93d → 247.92d |
| 1.3.1.2.4.25 | **Floor 22** | 2025-09-08 → 2025-09-09 (+1d) | 2025-11-24 → 2025-11-25 (+1d) |  |
| 1.3.1.2.4.25.1 | **Ceiling Finishing works - Civil** | 2025-09-17 → 2025-09-18 (+1d) | 2025-11-24 → 2025-11-25 (+1d) |  |
| PG-11579 | Gypsum Plastering | 2025-09-17 → 2025-09-18 (+1d) | 2025-09-24 → 2025-09-25 (+1d) | 145.59d → 145.58d |
| PG-11580 | Cornice fixing | 2025-10-04 → 2025-10-06 (+2d) | 2025-10-09 → 2025-10-10 (+1d) | 145.59d → 145.58d |
| PG-11582 | Toilet False ceiling | 2025-10-13 → 2025-10-14 (+1d) | 2025-10-17 → 2025-10-18 (+1d) | 255.09d → 255.08d |
| PG-11581 | Painting Works - Putty, Primer and 1st | 2025-10-23 → 2025-10-24 (+1d) | 2025-10-30 → 2025-10-31 (+1d) | 133.43d → 133.42d |
| PG-11583 | Final Coat Painting | 2025-10-30 → 2025-10-31 (+1d) | 2025-11-24 → 2025-11-25 (+1d) | 262.76d → 262.75d |
| 1.3.1.2.4.25.2 | **Wall Finishing works - Civil** | 2025-09-08 → 2025-09-09 (+1d) | 2025-11-24 → 2025-11-25 (+1d) |  |
| PG-11584 | Balcony Railing Fixing works | 2025-09-08 → 2025-09-09 (+1d) | 2025-09-12 → 2025-09-13 (+1d) | 162.26d → 162.25d |
| PG-11586 | Dadoing - Wet area | 2025-09-29 → 2025-09-30 (+1d) | 2025-10-06 → 2025-10-07 (+1d) | 133.43d → 133.42d |
| PG-11585 | UPVC Windows & Sliding doors | 2025-10-17 → 2025-10-18 (+1d) | 2025-10-23 → 2025-10-24 (+1d) | 133.43d → 133.42d |
| PG-11587 | Painting Works - Putty, Primer and 1st | 2025-10-23 → 2025-10-24 (+1d) | 2025-10-30 → 2025-10-31 (+1d) | 228.09d → 228.08d |
| PG-11588 | Final Coat Painting | 2025-10-30 → 2025-10-31 (+1d) | 2025-11-24 → 2025-11-25 (+1d) | 228.09d → 228.08d |
| 1.3.1.2.4.25.3 | **Floor Finishing Works - Civil** | 2025-09-08 → 2025-09-09 (+1d) | 2025-10-30 → 2025-10-31 (+1d) |  |

| ID | Task | Start | Finish | Total float |
| --- | --- | --- | --- | --- |
| PG-11589 | Waterproofing for sunken areas | 2025-09-08 → 2025-09-09 (+1d) | 2025-09-11 → 2025-09-12 (+1d) | 153.26d → 153.25d |
| PG-11590 | Floor Tiling - Wet area | 2025-10-06 → 2025-10-07 (+1d) | 2025-10-11 → 2025-10-13 (+2d) | 133.43d → 133.42d |
| PG-11591 | Floor Tiling - Dry area | 2025-10-11 → 2025-10-13 (+2d) | 2025-10-17 → 2025-10-18 (+1d) | 133.43d → 133.42d |
| PG-11592 | Wooden doors | 2025-10-24 → 2025-10-25 (+1d) | 2025-10-30 → 2025-10-31 (+1d) | 228.09d → 228.08d |
| 1.3.1.2.4.26 | **Floor 23** | 2025-09-30 → 2025-10-01 (+1d) | 2025-12-13 → 2025-12-15 (+2d) |  |
| 1.3.1.2.4.26.1 | **Ceiling Finishing works - Civil** | 2025-10-10 → 2025-10-11 (+1d) | 2025-12-13 → 2025-12-15 (+2d) |  |
| PG-11593 | Gypsum Plastering | 2025-10-10 → 2025-10-11 (+1d) | 2025-10-17 → 2025-10-18 (+1d) | 256.93d → 256.92d |
| PG-11594 | Cornice fixing | 2025-10-27 → 2025-10-28 (+1d) | 2025-10-31 → 2025-11-03 (+3d) | 256.93d → 256.92d |
| PG-11596 | Toilet False ceiling | 2025-11-04 → 2025-11-05 (+1d) | 2025-11-08 → 2025-11-10 (+2d) | 237.09d → 237.08d |
| PG-11595 | Painting Works - Putty, Primer and 1st | 2025-11-14 → 2025-11-15 (+1d) | 2025-11-21 → 2025-11-22 (+1d) | 245.93d → 245.92d |
| PG-11597 | Final Coat Painting | 2025-11-21 → 2025-11-22 (+1d) | 2025-12-13 → 2025-12-15 (+2d) | 245.93d → 245.92d |
| 1.3.1.2.4.26.2 | **Wall Finishing works - Civil** | 2025-09-30 → 2025-10-01 (+1d) | 2025-12-13 → 2025-12-15 (+2d) |  |
| PG-11598 | Balcony Railing Fixing works | 2025-09-30 → 2025-10-01 (+1d) | 2025-10-06 → 2025-10-07 (+1d) | 237.76d → 237.75d |
| PG-11600 | Dadoing - Wet area | 2025-10-21 → 2025-10-22 (+1d) | 2025-10-27 → 2025-10-28 (+1d) | 210.09d → 210.08d |
| PG-11599 | UPVC Windows & Sliding doors | 2025-11-08 → 2025-11-10 (+2d) | 2025-11-14 → 2025-11-15 (+1d) | 210.09d → 210.08d |
| PG-11601 | Painting Works - Putty, Primer and 1st | 2025-11-14 → 2025-11-15 (+1d) | 2025-11-21 → 2025-11-22 (+1d) | 210.09d → 210.08d |
| PG-11602 | Final Coat Painting | 2025-11-21 → 2025-11-22 (+1d) | 2025-12-13 → 2025-12-15 (+2d) | 210.09d → 210.08d |
| 1.3.1.2.4.26.3 | **Floor Finishing Works - Civil** | 2025-09-30 → 2025-10-01 (+1d) | 2025-11-21 → 2025-11-22 (+1d) |  |
| PG-11603 | Waterproofing for sunken areas | 2025-09-30 → 2025-10-01 (+1d) | 2025-10-04 → 2025-10-06 (+2d) | 228.76d → 228.75d |
| PG-11604 | Floor Tiling - Wet area | 2025-10-27 → 2025-10-28 (+1d) | 2025-11-03 → 2025-11-04 (+1d) | 210.09d → 210.08d |
| PG-11605 | Floor Tiling - Dry area | 2025-11-03 → 2025-11-04 (+1d) | 2025-11-08 → 2025-11-10 (+2d) | 210.09d → 210.08d |
| PG-11606 | Wooden doors | 2025-11-15 → 2025-11-17 (+2d) | 2025-11-21 → 2025-11-22 (+1d) | 210.09d → 210.08d |
| 1.3.1.2.4.27 | **Floor 24** | 2025-10-22 → 2025-10-23 (+1d) | 2026-01-03 → 2026-01-05 (+2d) |  |
| 1.3.1.2.4.27.1 | **Ceiling Finishing works - Civil** | 2025-10-30 → 2025-10-31 (+1d) | 2026-01-03 → 2026-01-05 (+2d) |  |
| PG-11607 | Gypsum Plastering | 2025-10-30 → 2025-10-31 (+1d) | 2025-11-07 → 2025-11-08 (+1d) | 239.59d → 239.58d |
| PG-11608 | Cornice fixing | 2025-11-18 → 2025-11-19 (+1d) | 2025-11-21 → 2025-11-22 (+1d) | 239.59d → 239.58d |
| PG-11610 | Toilet False ceiling | 2025-11-25 → 2025-11-26 (+1d) | 2025-11-29 → 2025-12-01 (+2d) | 216.43d → 216.42d |
| PG-11609 | Painting Works - Putty, Primer and 1st | 2025-12-05 → 2025-12-06 (+1d) | 2025-12-12 → 2025-12-13 (+1d) | 227.59d → 227.58d |
| PG-11611 | Final Coat Painting | 2025-12-12 → 2025-12-13 (+1d) | 2026-01-03 → 2026-01-05 (+2d) | 227.59d → 227.58d |
| 1.3.1.2.4.27.2 | **Wall Finishing works - Civil** | 2025-10-22 → 2025-10-23 (+1d) | 2026-01-03 → 2026-01-05 (+2d) |  |
| PG-11612 | Balcony Railing Fixing works | 2025-10-22 → 2025-10-23 (+1d) | 2025-10-27 → 2025-10-28 (+1d) | 219.59d → 219.58d |
| PG-11614 | Dadoing - Wet area | 2025-11-12 → 2025-11-13 (+1d) | 2025-11-18 → 2025-11-19 (+1d) | 190.93d → 190.92d |
| PG-11613 | UPVC Windows & Sliding doors | 2025-11-29 → 2025-12-01 (+2d) | 2025-12-05 → 2025-12-06 (+1d) | 190.93d → 190.92d |
| PG-11615 | Painting Works - Putty, Primer and 1st | 2025-12-05 → 2025-12-06 (+1d) | 2025-12-12 → 2025-12-13 (+1d) | 190.93d → 190.92d |
| PG-11616 | Final Coat Painting | 2025-12-12 → 2025-12-13 (+1d) | 2026-01-03 → 2026-01-05 (+2d) | 190.93d → 190.92d |
| 1.3.1.2.4.27.3 | **Floor Finishing Works - Civil** | 2025-10-22 → 2025-10-23 (+1d) | 2025-12-12 → 2025-12-13 (+1d) |  |
| PG-11617 | Waterproofing for sunken areas | 2025-10-22 → 2025-10-23 (+1d) | 2025-10-25 → 2025-10-27 (+2d) | 210.59d → 210.58d |
| PG-11618 | Floor Tiling - Wet area | 2025-11-18 → 2025-11-19 (+1d) | 2025-11-24 → 2025-11-25 (+1d) | 190.93d → 190.92d |
| PG-11619 | Floor Tiling - Dry area | 2025-11-24 → 2025-11-25 (+1d) | 2025-11-29 → 2025-12-01 (+2d) | 190.93d → 190.92d |
| PG-11620 | Wooden doors | 2025-12-06 → 2025-12-08 (+2d) | 2025-12-12 → 2025-12-13 (+1d) | 190.93d → 190.92d |
| 1.3.1.2.4.28 | **Floor 25** | 2025-11-13 → 2025-11-14 (+1d) | 2026-01-28 → 2026-01-29 (+1d) |  |
| 1.3.1.2.4.28.1 | **Ceiling Finishing works - Civil** | 2025-11-22 → 2025-11-24 (+2d) | 2026-01-28 → 2026-01-29 (+1d) |  |
| PG-11621 | Gypsum Plastering | 2025-11-22 → 2025-11-24 (+2d) | 2025-11-29 → 2025-12-01 (+2d) | 219.09d → 219.08d |
| PG-11622 | Cornice fixing | 2025-12-09 → 2025-12-10 (+1d) | 2025-12-13 → 2025-12-15 (+2d) | 219.09d → 219.08d |
| PG-11624 | Toilet False ceiling | 2025-12-17 → 2025-12-18 (+1d) | 2025-12-22 → 2025-12-23 (+1d) | 198.43d → 198.42d |
| PG-11623 | Painting Works - Putty, Primer and 1st | 2025-12-27 → 2025-12-29 (+2d) | 2026-01-03 → 2026-01-05 (+2d) | 207.09d → 207.08d |
| PG-11625 | Final Coat Painting | 2026-01-03 → 2026-01-05 (+2d) | 2026-01-28 → 2026-01-29 (+1d) | 207.09d → 207.08d |
| 1.3.1.2.4.28.2 | **Wall Finishing works - Civil** | 2025-11-13 → 2025-11-14 (+1d) | 2026-01-28 → 2026-01-29 (+1d) |  |
| PG-11626 | Balcony Railing Fixing works | 2025-11-13 → 2025-11-14 (+1d) | 2025-11-18 → 2025-11-19 (+1d) | 200.09d → 200.08d |
| PG-11628 | Dadoing - Wet area | 2025-12-04 → 2025-12-05 (+1d) | 2025-12-10 → 2025-12-11 (+1d) | 171.43d → 171.42d |
| PG-11627 | UPVC Windows & Sliding doors | 2025-12-22 → 2025-12-23 (+1d) | 2025-12-27 → 2025-12-29 (+2d) | 171.43d → 171.42d |
| PG-11629 | Painting Works - Putty, Primer and 1st | 2025-12-27 → 2025-12-29 (+2d) | 2026-01-03 → 2026-01-05 (+2d) | 171.43d → 171.42d |
| PG-11630 | Final Coat Painting | 2026-01-03 → 2026-01-05 (+2d) | 2026-01-28 → 2026-01-29 (+1d) | 171.43d → 171.42d |
| 1.3.1.2.4.28.3 | **Floor Finishing Works - Civil** | 2025-11-13 → 2025-11-14 (+1d) | 2026-01-03 → 2026-01-05 (+2d) |  |
| PG-11631 | Waterproofing for sunken areas | 2025-11-13 → 2025-11-14 (+1d) | 2025-11-17 → 2025-11-18 (+1d) | 191.09d → 191.08d |
| PG-11632 | Floor Tiling - Wet area | 2025-12-10 → 2025-12-11 (+1d) | 2025-12-16 → 2025-12-17 (+1d) | 171.43d → 171.42d |
| PG-11633 | Floor Tiling - Dry area | 2025-12-16 → 2025-12-17 (+1d) | 2025-12-22 → 2025-12-23 (+1d) | 171.43d → 171.42d |
| PG-11634 | Wooden doors | 2025-12-29 → 2025-12-30 (+1d) | 2026-01-03 → 2026-01-05 (+2d) | 171.43d → 171.42d |
| 1.3.1.2.4.29 | **Floor 26** | 2025-12-05 → 2025-12-06 (+1d) | 2026-02-18 → 2026-02-19 (+1d) |  |
| 1.3.1.2.4.29.1 | **Ceiling Finishing works - Civil** | 2025-12-15 → 2025-12-16 (+1d) | 2026-02-18 → 2026-02-19 (+1d) |  |
| PG-11635 | Gypsum Plastering | 2025-12-15 → 2025-12-16 (+1d) | 2025-12-22 → 2025-12-23 (+1d) | 202.09d → 202.08d |
| PG-11636 | Cornice fixing | 2025-12-31 → 2026-01-01 (+1d) | 2026-01-05 → 2026-01-06 (+1d) | 202.09d → 202.08d |
| PG-11638 | Toilet False ceiling | 2026-01-08 → 2026-01-09 (+1d) | 2026-01-13 → 2026-01-14 (+1d) | 149.93d → 149.92d |
| PG-11637 | Painting Works - Putty, Primer and 1st | 2026-01-19 → 2026-01-20 (+1d) | 2026-01-27 → 2026-01-28 (+1d) | 190.26d → 190.25d |
| PG-11639 | Final Coat Painting | 2026-01-27 → 2026-01-28 (+1d) | 2026-02-18 → 2026-02-19 (+1d) | 190.26d → 190.25d |
| 1.3.1.2.4.29.2 | **Wall Finishing works - Civil** | 2025-12-05 → 2025-12-06 (+1d) | 2026-02-18 → 2026-02-19 (+1d) |  |
| PG-11640 | Balcony Railing Fixing works | 2025-12-05 → 2025-12-06 (+1d) | 2025-12-10 → 2025-12-11 (+1d) | 152.59d → 152.58d |
| PG-11642 | Dadoing - Wet area | 2025-12-26 → 2025-12-27 (+1d) | 2026-01-01 → 2026-01-02 (+1d) | 123.93d → 123.92d |
| PG-11641 | UPVC Windows & Sliding doors | 2026-01-13 → 2026-01-14 (+1d) | 2026-01-19 → 2026-01-20 (+1d) | 123.93d → 123.92d |
| PG-11643 | Painting Works - Putty, Primer and 1st | 2026-01-19 → 2026-01-20 (+1d) | 2026-01-27 → 2026-01-28 (+1d) | 123.93d → 123.92d |

| ID | Task | Start | Finish | Total float |
| --- | --- | --- | --- | --- |
| PG-11644 | Final Coat Painting | 2026-01-27 → 2026-01-28 (+1d) | 2026-02-18 → 2026-02-19 (+1d) | 123.93d → 123.92d |
| 1.3.1.2.4.29.3 | **Floor Finishing Works - Civil** | 2025-12-05 → 2025-12-06 (+1d) | 2026-01-27 → 2026-01-28 (+1d) |  |
| PG-11645 | Waterproofing for sunken areas | 2025-12-05 → 2025-12-06 (+1d) | 2025-12-09 → 2025-12-10 (+1d) | 143.59d → 143.58d |
| PG-11646 | Floor Tiling - Wet area | 2026-01-01 → 2026-01-02 (+1d) | 2026-01-07 → 2026-01-08 (+1d) | 123.93d → 123.92d |
| PG-11647 | Floor Tiling - Dry area | 2026-01-07 → 2026-01-08 (+1d) | 2026-01-13 → 2026-01-14 (+1d) | 123.93d → 123.92d |
| PG-11648 | Wooden doors | 2026-01-20 → 2026-01-21 (+1d) | 2026-01-27 → 2026-01-28 (+1d) | 123.93d → 123.92d |
| 1.3.1.2.4.30 | **External Finishing works** | 2025-09-15 → 2025-09-16 (+1d) | 2026-01-12 → 2026-01-13 (+1d) |  |
| PG-11649 | External walls tie rod hole plugging with GP2 | 2025-09-15 → 2025-09-16 (+1d) | 2025-10-21 → 2025-10-22 (+1d) | 220.09d → 220.08d |
| PG-11650 | External walls grinding works | 2025-10-09 → 2025-10-10 (+1d) | 2025-11-26 → 2025-11-27 (+1d) | 220.09d → 220.08d |
| PG-11651 | Texture and painting works | 2025-11-20 → 2025-11-21 (+1d) | 2026-01-12 → 2026-01-13 (+1d) | 220.09d → 220.08d |
| 1.3.1.2.5 | **Corridor & Fire Staircase Finishing works** | 2025-11-21 → 2025-11-22 (+1d) | 2026-03-21 → 2026-03-23 (+2d) |  |
| 1.3.1.2.5.1 | **Ceiling Finishing works - Civil** | 2025-11-21 → 2025-11-22 (+1d) | 2026-02-14 → 2026-02-16 (+2d) |  |
| PG-11652 | Gypsum Plastering | 2025-11-21 → 2025-11-22 (+1d) | 2025-11-28 → 2025-11-29 (+1d) | 15.09d → 15.08d |
| PG-11653 | Cornice fixing | 2025-11-27 → 2025-11-28 (+1d) | 2025-12-02 → 2025-12-03 (+1d) | 145.59d → 145.58d |
| PG-11654 | Painting Works - Putty, Primer and 1st | 2025-12-16 → 2025-12-17 (+1d) | 2025-12-23 → 2025-12-24 (+1d) | 133.43d → 133.42d |
| PG-11655 | False ceiling | 2025-12-23 → 2025-12-24 (+1d) | 2026-01-28 → 2026-01-29 (+1d) | 133.43d → 133.42d |
| PG-11656 | Final Coat Painting | 2026-01-08 → 2026-01-09 (+1d) | 2026-02-14 → 2026-02-16 (+2d) | 163.43d → 163.42d |
| 1.3.1.2.5.2 | **Wall Finishing works - Civil** | 2025-12-27 → 2025-12-29 (+2d) | 2026-03-21 → 2026-03-23 (+2d) |  |
| PG-11657 | UPVC Windows & Sliding doors | 2025-12-27 → 2025-12-29 (+2d) | 2026-01-02 → 2026-01-03 (+1d) | 139.43d → 139.42d |
| PG-11658 | Wall Cladding Upto 1.2 Mts | 2026-01-14 → 2026-01-15 (+1d) | 2026-02-07 → 2026-02-09 (+2d) | 139.43d → 139.42d |
| PG-11659 | Painting Works - Texture & one coat Painting works | 2026-02-14 → 2026-02-16 (+2d) | 2026-03-04 → 2026-03-05 (+1d) | 133.43d → 133.42d |
| PG-11660 | Final Coat Painting | 2026-02-25 → 2026-02-26 (+1d) | 2026-03-21 → 2026-03-23 (+2d) | 133.43d → 133.42d |
| 1.3.1.2.5.3 | **Floor Finishing Works - Civil** | 2025-11-28 → 2025-11-29 (+1d) | 2025-12-27 → 2025-12-29 (+2d) |  |
| PG-11661 | Fire Doors installation | 2025-11-28 → 2025-11-29 (+1d) | 2025-12-10 → 2025-12-11 (+1d) | 183.93d → 183.92d |
| PG-11662 | Vitrified tile flooring works | 2025-12-10 → 2025-12-11 (+1d) | 2025-12-27 → 2025-12-29 (+2d) | 183.93d → 183.92d |
| 1.3.1.2.5.4 | **Fire Staircase Finishing Works - Civil** | 2025-11-28 → 2025-11-29 (+1d) | 2026-03-20 → 2026-03-21 (+1d) |  |
| PG-11663 | Staircase Railing Fixing works | 2025-11-28 → 2025-11-29 (+1d) | 2025-12-22 → 2025-12-23 (+1d) | 15.09d → 15.08d |
| PG-11664 | Wall and ceiling Gypsum plastering | 2025-12-10 → 2025-12-11 (+1d) | 2026-01-14 → 2026-01-15 (+1d) | 15.09d → 15.08d |
| PG-11665 | Staircase Flooring and Skirting Works | 2025-12-27 → 2025-12-29 (+2d) | 2026-02-13 → 2026-02-14 (+1d) | 15.09d → 15.08d |
| PG-11666 | UPVC Window fixing works | 2026-02-14 → 2026-02-16 (+2d) | 2026-03-03 → 2026-03-04 (+1d) | 15.09d → 15.08d |
| PG-11667 | Staircase Painting works | 2026-02-25 → 2026-02-26 (+1d) | 2026-03-20 → 2026-03-21 (+1d) | 15.09d → 15.08d |
| 1.3.1.2.6 | **MEP Civil Works (Shaft, Lift Shaft & OHT )** | 2025-09-01 → 2025-09-02 (+1d) | 2026-01-30 → 2026-01-31 (+1d) |  |
| 1.3.1.2.6.1 | **Lift Shaft Works** | 2025-09-01 → 2025-09-02 (+1d) | 2026-01-30 → 2026-01-31 (+1d) |  |
| PG-11668 | Tie rod hole packing | 2025-09-01 → 2025-09-02 (+1d) | 2025-09-10 → 2025-09-11 (+1d) | 120.59d → 120.58d |
| PG-11669 | Grinding works | 2025-09-10 → 2025-09-11 (+1d) | 2025-09-16 → 2025-09-17 (+1d) | 120.59d → 120.58d |
| PG-11670 | Lift pit water proofing works | 2025-09-16 → 2025-09-17 (+1d) | 2025-10-10 → 2025-10-11 (+1d) | 120.59d → 120.58d |
| PG-11671 | Shaft door opening finishing | 2025-10-10 → 2025-10-13 (+3d) | 2025-10-18 → 2025-10-20 (+2d) | 120.59d → 120.58d |
| PG-11672 | Painting works | 2025-10-18 → 2025-10-20 (+2d) | 2025-10-28 → 2025-10-29 (+1d) | 120.59d → 120.58d |
| PG-11673 | Lift Wall Cladding Works | 2026-01-13 → 2026-01-14 (+1d) | 2026-01-30 → 2026-01-31 (+1d) | 156.26d → 156.25d |
| 1.3.1.2.6.2 | **Electrical Shaft works** | 2025-09-01 → 2025-09-02 (+1d) | 2025-10-04 → 2025-10-06 (+2d) |  |
| PG-11674 | Tie rod hole packing | 2025-09-01 → 2025-09-02 (+1d) | 2025-09-10 → 2025-09-11 (+1d) | 227.26d → 227.25d |
| PG-11675 | Grinding works | 2025-09-10 → 2025-09-11 (+1d) | 2025-09-16 → 2025-09-17 (+1d) | 227.26d → 227.25d |
| PG-11676 | Shaft door opening finishing | 2025-09-16 → 2025-09-17 (+1d) | 2025-09-24 → 2025-09-25 (+1d) | 227.26d → 227.25d |
| PG-11677 | Painting works | 2025-09-24 → 2025-09-25 (+1d) | 2025-10-04 → 2025-10-06 (+2d) | 227.26d → 227.25d |
| 1.3.1.2.6.3 | **FPS Shaft works** | 2025-09-01 → 2025-09-02 (+1d) | 2025-10-04 → 2025-10-06 (+2d) |  |
| PG-11678 | Tie rod hole packing | 2025-09-01 → 2025-09-02 (+1d) | 2025-09-10 → 2025-09-11 (+1d) | 227.09d → 227.08d |
| PG-11679 | Grinding works | 2025-09-10 → 2025-09-11 (+1d) | 2025-09-16 → 2025-09-17 (+1d) | 227.09d → 227.08d |
| PG-11680 | Shaft door opening finishing | 2025-09-16 → 2025-09-17 (+1d) | 2025-09-24 → 2025-09-25 (+1d) | 227.09d → 227.08d |
| PG-11681 | Painting works | 2025-09-24 → 2025-09-25 (+1d) | 2025-10-04 → 2025-10-06 (+2d) | 227.09d → 227.08d |
| 1.3.1.2.6.4 | **PHE Shaft works** | 2025-09-01 → 2025-09-02 (+1d) | 2025-10-04 → 2025-10-06 (+2d) |  |
| PG-11682 | Tie rod hole packing | 2025-09-01 → 2025-09-02 (+1d) | 2025-09-10 → 2025-09-11 (+1d) | 185.93d → 185.92d |
| PG-11683 | Grinding works | 2025-09-10 → 2025-09-11 (+1d) | 2025-09-16 → 2025-09-17 (+1d) | 185.93d → 185.92d |
| PG-11684 | Shaft door opening finishing | 2025-09-16 → 2025-09-17 (+1d) | 2025-09-24 → 2025-09-25 (+1d) | 185.93d → 185.92d |
| PG-11685 | Painting works | 2025-09-24 → 2025-09-25 (+1d) | 2025-10-04 → 2025-10-06 (+2d) | 185.93d → 185.92d |
| 1.3.1.2.6.5 | **Data & Communication Shaft** | 2025-09-01 → 2025-09-02 (+1d) | 2025-10-01 → 2025-10-03 (+2d) |  |
| PG-11686 | Tie rod hole packing | 2025-09-01 → 2025-09-02 (+1d) | 2025-09-10 → 2025-09-11 (+1d) | 221.76d → 221.75d |
| PG-11687 | Grinding works | 2025-09-10 → 2025-09-11 (+1d) | 2025-09-16 → 2025-09-17 (+1d) | 221.76d → 221.75d |
| PG-11688 | Shaft door opening finishing | 2025-09-16 → 2025-09-17 (+1d) | 2025-09-22 → 2025-09-23 (+1d) | 221.76d → 221.75d |
| PG-11689 | Painting works | 2025-09-22 → 2025-09-23 (+1d) | 2025-10-01 → 2025-10-03 (+2d) | 221.76d → 221.75d |
| 1.3.1.2.6.6 | **OHT Works** | 2025-09-01 → 2025-09-02 (+1d) | 2025-10-21 → 2025-10-22 (+1d) |  |
| PG-11690 | Tank materials Supply & Shifting | 2025-09-01 → 2025-09-02 (+1d) | 2025-09-12 → 2025-09-13 (+1d) | 193.26d → 193.25d |
| PG-11691 | Assembling OHT FRP Tank | 2025-09-12 → 2025-09-13 (+1d) | 2025-09-24 → 2025-09-25 (+1d) | 193.26d → 193.25d |
| PG-11692 | Installation of OHT Tank | 2025-09-24 → 2025-09-25 (+1d) | 2025-10-13 → 2025-10-14 (+1d) | 193.26d → 193.25d |
| PG-11693 | Water tightness works and checking | 2025-10-13 → 2025-10-14 (+1d) | 2025-10-21 → 2025-10-22 (+1d) | 193.26d → 193.25d |
| 1.3.1.2.7 | **MEP Shaft works** | 2025-10-01 → 2025-10-03 (+2d) | 2025-12-24 → 2025-12-25 (+1d) |  |
| 1.3.1.2.7.1 | **Electrical** | 2025-10-04 → 2025-10-06 (+2d) | 2025-11-14 → 2025-11-15 (+1d) |  |
| PG-11694 | Tray Works | 2025-10-04 → 2025-10-06 (+2d) | 2025-10-16 → 2025-10-17 (+1d) | 227.26d → 227.25d |
| PG-11695 | Cable & Conducting works | 2025-10-16 → 2025-10-17 (+1d) | 2025-10-27 → 2025-10-28 (+1d) | 227.26d → 227.25d |
| PG-11696 | Wiring/DB/connector box installation and termination works | 2025-10-27 → 2025-10-28 (+1d) | 2025-11-14 → 2025-11-15 (+1d) | 227.26d → 227.25d |
| 1.3.1.2.7.2 | **FPS** | 2025-10-04 → 2025-10-06 (+2d) | 2025-11-14 → 2025-11-15 (+1d) |  |

| ID | Task | Start | Finish | Complete | Total float |
| --- | --- | --- | --- | --- | --- |
| PG-11697 | Shaft MS Piping & fixtures installation | 2025-10-04 → 2025-10-06 (+2d) | 2025-10-28 → 2025-10-29 (+1d) |  | 227.09d → 227.08d |
| PG-11698 | Tray / cabling / conducting & wiring works | 2025-10-28 → 2025-10-29 (+1d) | 2025-11-14 → 2025-11-15 (+1d) |  | 227.09d → 227.08d |
| 1.3.1.2.7.3 | **Data & Communication** | 2025-10-01 → 2025-10-03 (+2d) | 2025-11-20 → 2025-11-21 (+1d) |  |  |
| PG-11699 | Tray Works | 2025-10-01 → 2025-10-03 (+2d) | 2025-10-16 → 2025-10-17 (+1d) |  | 221.76d → 221.75d |
| PG-11700 | Tray / cabling / conducting & wiring works | 2025-10-16 → 2025-10-17 (+1d) | 2025-11-03 → 2025-11-04 (+1d) |  | 221.76d → 221.75d |
| PG-11701 | Wiring/DB/connector box installation and termination works | 2025-11-03 → 2025-11-04 (+1d) | 2025-11-20 → 2025-11-21 (+1d) |  | 221.76d → 221.75d |
| 1.3.1.2.7.4 | **PHE** | 2025-10-04 → 2025-10-06 (+2d) | 2025-12-24 → 2025-12-25 (+1d) |  |  |
| PG-11702 | Bracket fixing works | 2025-10-04 → 2025-10-06 (+2d) | 2025-10-13 → 2025-10-14 (+1d) |  | 185.93d → 185.92d |
| PG-11703 | Piping Works | 2025-10-13 → 2025-10-14 (+1d) | 2025-10-29 → 2025-10-30 (+1d) |  | 185.93d → 185.92d |
| PG-11704 | Terrace Ring main & OHT Connection works | 2025-10-29 → 2025-10-31 (+2d) | 2025-12-16 → 2025-12-17 (+1d) |  | 185.93d → 185.92d |
| PG-11705 | Commissioning | 2025-12-16 → 2025-12-18 (+2d) | 2025-12-24 → 2025-12-25 (+1d) |  | 185.93d → 185.92d |
| 1.3.1.2.8 | **Lift Installation and Testing works** | 2025-09-16 → 2025-09-17 (+1d) | 2026-04-17 → 2026-04-18 (+1d) |  |  |
| PG-11706 | Lift Shaft Survey works | 2025-09-16 → 2025-09-17 (+1d) | 2025-09-26 → 2025-09-27 (+1d) |  | 146.26d → 146.25d |
| PG-11707 | Guide Rails fixing works | 2025-10-28 → 2025-10-29 (+1d) | 2025-12-15 → 2025-12-16 (+1d) |  | 120.59d → 120.58d |
| PG-11708 | Lift Frame fixing works | 2025-12-15 → 2025-12-16 (+1d) | 2026-01-13 → 2026-01-14 (+1d) |  | 120.59d → 120.58d |
| PG-11709 | CAR Assembly works | 2026-01-13 → 2026-01-14 (+1d) | 2026-02-05 → 2026-02-06 (+1d) |  | 120.59d → 120.58d |
| PG-11710 | Lift Machine Room Works | 2026-02-05 → 2026-02-06 (+1d) | 2026-03-13 → 2026-03-14 (+1d) |  | 120.59d → 120.58d |
| PG-11711 | Slow Speed & High Speed Testing works | 2026-03-13 → 2026-03-14 (+1d) | 2026-04-17 → 2026-04-18 (+1d) |  | 120.59d → 120.58d |
| 1.3.1.2.9 | **Electrical Panel Works** | 2025-07-22 → 2025-07-24 (+2d) | 2026-02-26 → 2026-02-27 (+1d) |  |  |
| 1.3.1.2.9.1 | **Civil Finishing Works** | 2025-07-22 → 2025-07-24 (+2d) | 2025-09-04 → 2025-09-05 (+1d) |  |  |
| PG-11712 | Wall Tie rod hole packing & Grinding works. | 2025-07-22 → 2025-07-24 (+2d) | 2025-08-07 → 2025-08-08 (+1d) |  | 162.76d → 162.75d |
| PG-11713 | Window, Louver and Door fixing works | 2025-08-07 → 2025-08-08 (+1d) | 2025-08-16 → 2025-08-18 (+2d) |  | 162.76d → 162.75d |
| PG-11714 | Pedestal works | 2025-08-16 → 2025-08-18 (+2d) | 2025-08-27 → 2025-08-28 (+1d) |  | 162.76d → 162.75d |
| PG-11715 | Painting works | 2025-08-27 → 2025-08-29 (+2d) | 2025-09-04 → 2025-09-05 (+1d) |  | 162.76d → 162.75d |
| 1.3.1.2.9.2 | **Electrical Panel works** | 2025-09-04 → 2025-09-05 (+1d) | 2026-02-26 → 2026-02-27 (+1d) |  |  |
| PG-11716 | Electrical Panel assembly works | 2025-09-04 → 2025-09-05 (+1d) | 2025-11-13 → 2025-11-14 (+1d) |  | 162.76d → 162.75d |
| PG-11717 | Electrical Panel installation and cable termination. | 2025-11-13 → 2025-11-15 (+2d) | 2026-01-21 → 2026-01-22 (+1d) |  | 162.76d → 162.75d |
| PG-11718 | Electrical Panel Testing and commissioning works | 2026-01-21 → 2026-01-22 (+1d) | 2026-02-26 → 2026-02-27 (+1d) |  | 162.76d → 162.75d |
| 1.3.1.2.10 | **Entrance Lobby works** | 2026-03-20 → 2026-03-21 (+1d) | 2026-08-06 → 2026-08-07 (+1d) |  |  |
| PG-11719 | Flooring Works | 2026-03-20 → 2026-03-21 (+1d) | 2026-04-24 → 2026-04-25 (+1d) |  | 15.09d → 15.08d |
| PG-11720 | Glass Door and installation Works | 2026-04-24 → 2026-04-25 (+1d) | 2026-05-29 → 2026-05-30 (+1d) |  | 15.09d → 15.08d |
| PG-11722 | Canopy Works | 2026-04-24 → 2026-04-25 (+1d) | 2026-05-23 → 2026-05-25 (+2d) |  | 34.76d → 34.75d |
| PG-11721 | Painting Works | 2026-05-29 → 2026-05-30 (+1d) | 2026-06-16 → 2026-06-17 (+1d) |  | 15.09d → 15.08d |
| PG-11723 | Interior Works | 2026-06-16 → 2026-06-17 (+1d) | 2026-08-06 → 2026-08-07 (+1d) |  | 15.09d → 15.08d |
| 1.3.1.2.11 | **Lightening Arrester works** | 2026-01-12 → 2026-01-13 (+1d) | 2026-01-23 → 2026-01-24 (+1d) |  |  |
| PG-11724 | Conductor will be lifted with RCC Works, But Terrace works will be done once Parapet Painting done | 2026-01-12 → 2026-01-13 (+1d) | 2026-01-23 → 2026-01-24 (+1d) |  | 220.09d → 220.08d |
| 1.3.1.3 | **Tower 3 ( 2B+G+29 ) TYP 4 Units - 118 Units** |  | 2026-10-17 → 2026-10-19 (+2d) |  |  |
| 1.3.1.3.2 | **Structure works** |  | 2026-01-10 → 2026-01-12 (+2d) |  |  |
| 1.3.1.3.2.18 | **Floor 15** |  | 2025-06-03 → 2025-06-04 (+1d) |  |  |
| 1.3.1.3.2.18.1 | **Columns / shear walls** |  | 2025-05-28 → 2025-05-29 (+1d) |  |  |
| PG-11824 | Reinforcement |  | 2025-05-23 → 2025-05-24 A (+1d) | 95% → 100% | 0d → none |
| PG-11825 | Formwork | 2025-05-23 → 2025-05-24 A (+1d) | 2025-05-28 → 2025-05-29 A (+1d) | 0% → 100% | 0d → none |
| 1.3.1.3.2.18.2 | **Slab, Beams & Staircase** | 2025-05-27 → 2025-05-28 (+1d) | 2025-06-03 → 2025-06-04 (+1d) |  |  |
| PG-11826 | Formwork | 2025-05-27 → 2025-05-28 A (+1d) | 2025-05-30 → 2025-05-31 (+1d) | 0% → 92% |  |
| PG-11827 | Reinforcement | 2025-05-29 → 2025-05-30 A (+1d) | 2025-06-02 → 2025-06-03 (+1d) | 0% → 20% |  |
| PG-11828 | Concrete | 2025-06-02 → 2025-06-03 (+1d) | 2025-06-03 → 2025-06-04 (+1d) |  |  |
| 1.3.1.3.2.19 | **Floor 16** | 2025-06-03 → 2025-06-04 (+1d) | 2025-06-16 → 2025-06-17 (+1d) |  |  |
| 1.3.1.3.2.19.1 | **Columns / shear walls** | 2025-06-03 → 2025-06-04 (+1d) | 2025-06-10 → 2025-06-11 (+1d) |  |  |
| PG-11829 | Reinforcement | 2025-06-03 → 2025-06-04 (+1d) | 2025-06-07 → 2025-06-09 (+2d) |  |  |
| PG-11830 | Formwork | 2025-06-05 → 2025-06-06 (+1d) | 2025-06-10 → 2025-06-11 (+1d) |  |  |
| 1.3.1.3.2.19.2 | **Slab, Beams & Staircase** | 2025-06-09 → 2025-06-10 (+1d) | 2025-06-16 → 2025-06-17 (+1d) |  |  |
| PG-11831 | Formwork | 2025-06-09 → 2025-06-10 (+1d) | 2025-06-12 → 2025-06-13 (+1d) |  |  |
| PG-11832 | Reinforcement | 2025-06-11 → 2025-06-12 (+1d) | 2025-06-14 → 2025-06-16 (+2d) |  |  |
| PG-11833 | Concrete | 2025-06-14 → 2025-06-16 (+2d) | 2025-06-16 → 2025-06-17 (+1d) |  |  |
| 1.3.1.3.2.20 | **Floor 17** | 2025-06-16 → 2025-06-17 (+1d) | 2025-06-28 → 2025-06-30 (+2d) |  |  |
| 1.3.1.3.2.20.1 | **Columns / shear walls** | 2025-06-16 → 2025-06-17 (+1d) | 2025-06-23 → 2025-06-24 (+1d) |  |  |
| PG-11834 | Reinforcement | 2025-06-16 → 2025-06-17 (+1d) | 2025-06-20 → 2025-06-21 (+1d) |  |  |
| PG-11835 | Formwork | 2025-06-18 → 2025-06-19 (+1d) | 2025-06-23 → 2025-06-24 (+1d) |  |  |
| 1.3.1.3.2.20.2 | **Slab, Beams & Staircase** | 2025-06-21 → 2025-06-23 (+2d) | 2025-06-28 → 2025-06-30 (+2d) |  |  |
| PG-11836 | Formwork | 2025-06-21 → 2025-06-23 (+2d) | 2025-06-25 → 2025-06-26 (+1d) |  |  |
| PG-11837 | Reinforcement | 2025-06-24 → 2025-06-25 (+1d) | 2025-06-27 → 2025-06-28 (+1d) |  |  |
| PG-11838 | Concrete | 2025-06-27 → 2025-06-28 (+1d) | 2025-06-28 → 2025-06-30 (+2d) |  |  |
| 1.3.1.3.2.21 | **Floor 18** | 2025-06-28 → 2025-06-30 (+2d) | 2025-07-11 → 2025-07-12 (+1d) |  |  |
| 1.3.1.3.2.21.1 | **Columns / shear walls** | 2025-06-28 → 2025-06-30 (+2d) | 2025-07-05 → 2025-07-07 (+2d) |  |  |
| PG-11839 | Reinforcement | 2025-06-28 → 2025-06-30 (+2d) | 2025-07-03 → 2025-07-04 (+1d) |  |  |
| PG-11840 | Formwork | 2025-07-01 → 2025-07-02 (+1d) | 2025-07-05 → 2025-07-07 (+2d) |  |  |
| 1.3.1.3.2.21.2 | **Slab, Beams & Staircase** | 2025-07-04 → 2025-07-05 (+1d) | 2025-07-11 → 2025-07-12 (+1d) |  |  |
| PG-11841 | Formwork | 2025-07-04 → 2025-07-05 (+1d) | 2025-07-08 → 2025-07-09 (+1d) |  |  |
| PG-11842 | Reinforcement | 2025-07-07 → 2025-07-08 (+1d) | 2025-07-10 → 2025-07-11 (+1d) |  |  |
| PG-11843 | Concrete | 2025-07-10 → 2025-07-11 (+1d) | 2025-07-11 → 2025-07-12 (+1d) |  |  |

| ID | Task | Start | Finish |
| --- | --- | --- | --- |
| 1.3.1.3.2.22 | **Floor 19** | 2025-07-11 → 2025-07-12 (+1d) | 2025-07-24 → 2025-07-25 (+1d) |
| 1.3.1.3.2.22.1 | **Columns / shear walls** | 2025-07-11 → 2025-07-12 (+1d) | 2025-07-18 → 2025-07-19 (+1d) |
| PG-11844 | Reinforcement | 2025-07-11 → 2025-07-12 (+1d) | 2025-07-16 → 2025-07-17 (+1d) |
| PG-11845 | Formwork | 2025-07-14 → 2025-07-15 (+1d) | 2025-07-18 → 2025-07-19 (+1d) |
| 1.3.1.3.2.22.2 | **Slab, Beams & Staircase** | 2025-07-17 → 2025-07-18 (+1d) | 2025-07-24 → 2025-07-25 (+1d) |
| PG-11846 | Formwork | 2025-07-17 → 2025-07-18 (+1d) | 2025-07-21 → 2025-07-22 (+1d) |
| PG-11847 | Reinforcement | 2025-07-19 → 2025-07-21 (+2d) | 2025-07-23 → 2025-07-24 (+1d) |
| PG-11848 | Concrete | 2025-07-23 → 2025-07-24 (+1d) | 2025-07-24 → 2025-07-25 (+1d) |
| 1.3.1.3.2.23 | **Floor 20** | 2025-07-24 → 2025-07-25 (+1d) | 2025-08-06 → 2025-08-07 (+1d) |
| 1.3.1.3.2.23.1 | **Columns / shear walls** | 2025-07-24 → 2025-07-25 (+1d) | 2025-07-31 → 2025-08-01 (+1d) |
| PG-11849 | Reinforcement | 2025-07-24 → 2025-07-25 (+1d) | 2025-07-29 → 2025-07-30 (+1d) |
| PG-11850 | Formwork | 2025-07-26 → 2025-07-28 (+2d) | 2025-07-31 → 2025-08-01 (+1d) |
| 1.3.1.3.2.23.2 | **Slab, Beams & Staircase** | 2025-07-30 → 2025-07-31 (+1d) | 2025-08-06 → 2025-08-07 (+1d) |
| PG-11851 | Formwork | 2025-07-30 → 2025-07-31 (+1d) | 2025-08-02 → 2025-08-04 (+2d) |
| PG-11852 | Reinforcement | 2025-08-01 → 2025-08-02 (+1d) | 2025-08-05 → 2025-08-06 (+1d) |
| PG-11853 | Concrete | 2025-08-05 → 2025-08-06 (+1d) | 2025-08-06 → 2025-08-07 (+1d) |
| 1.3.1.3.2.24 | **Floor 21** | 2025-08-06 → 2025-08-07 (+1d) | 2025-08-20 → 2025-08-21 (+1d) |
| 1.3.1.3.2.24.1 | **Columns / shear walls** | 2025-08-06 → 2025-08-07 (+1d) | 2025-08-13 → 2025-08-14 (+1d) |
| PG-11854 | Reinforcement | 2025-08-06 → 2025-08-07 (+1d) | 2025-08-11 → 2025-08-12 (+1d) |
| PG-11855 | Formwork | 2025-08-08 → 2025-08-09 (+1d) | 2025-08-13 → 2025-08-14 (+1d) |
| 1.3.1.3.2.24.2 | **Slab, Beams & Staircase** | 2025-08-12 → 2025-08-13 (+1d) | 2025-08-20 → 2025-08-21 (+1d) |
| PG-11856 | Formwork | 2025-08-12 → 2025-08-13 (+1d) | 2025-08-16 → 2025-08-18 (+2d) |
| PG-11857 | Reinforcement | 2025-08-14 → 2025-08-16 (+2d) | 2025-08-19 → 2025-08-20 (+1d) |
| PG-11858 | Concrete | 2025-08-19 → 2025-08-20 (+1d) | 2025-08-20 → 2025-08-21 (+1d) |
| 1.3.1.3.2.25 | **Floor 22** | 2025-08-20 → 2025-08-21 (+1d) | 2025-09-02 → 2025-09-03 (+1d) |
| 1.3.1.3.2.25.1 | **Columns / shear walls** | 2025-08-20 → 2025-08-21 (+1d) | 2025-08-27 → 2025-08-28 (+1d) |
| PG-11859 | Reinforcement | 2025-08-20 → 2025-08-21 (+1d) | 2025-08-25 → 2025-08-26 (+1d) |
| PG-11860 | Formwork | 2025-08-22 → 2025-08-23 (+1d) | 2025-08-27 → 2025-08-28 (+1d) |
| 1.3.1.3.2.25.2 | **Slab, Beams & Staircase** | 2025-08-26 → 2025-08-27 (+1d) | 2025-09-02 → 2025-09-03 (+1d) |
| PG-11861 | Formwork | 2025-08-26 → 2025-08-27 (+1d) | 2025-08-29 → 2025-08-30 (+1d) |
| PG-11862 | Reinforcement | 2025-08-28 → 2025-08-29 (+1d) | 2025-09-01 → 2025-09-02 (+1d) |
| PG-11863 | Concrete | 2025-09-01 → 2025-09-02 (+1d) | 2025-09-02 → 2025-09-03 (+1d) |
| 1.3.1.3.2.26 | **Floor 23** | 2025-09-02 → 2025-09-03 (+1d) | 2025-09-15 → 2025-09-16 (+1d) |
| 1.3.1.3.2.26.1 | **Columns / shear walls** | 2025-09-02 → 2025-09-03 (+1d) | 2025-09-09 → 2025-09-10 (+1d) |
| PG-11864 | Reinforcement | 2025-09-02 → 2025-09-03 (+1d) | 2025-09-06 → 2025-09-08 (+2d) |
| PG-11865 | Formwork | 2025-09-04 → 2025-09-05 (+1d) | 2025-09-09 → 2025-09-10 (+1d) |
| 1.3.1.3.2.26.2 | **Slab, Beams & Staircase** | 2025-09-08 → 2025-09-09 (+1d) | 2025-09-15 → 2025-09-16 (+1d) |
| PG-11866 | Formwork | 2025-09-08 → 2025-09-09 (+1d) | 2025-09-11 → 2025-09-12 (+1d) |
| PG-11867 | Reinforcement | 2025-09-10 → 2025-09-11 (+1d) | 2025-09-13 → 2025-09-15 (+2d) |
| PG-11868 | Concrete | 2025-09-13 → 2025-09-15 (+2d) | 2025-09-15 → 2025-09-16 (+1d) |
| 1.3.1.3.2.27 | **Floor 24** | 2025-09-15 → 2025-09-16 (+1d) | 2025-09-27 → 2025-09-29 (+2d) |
| 1.3.1.3.2.27.1 | **Columns / shear walls** | 2025-09-15 → 2025-09-16 (+1d) | 2025-09-22 → 2025-09-23 (+1d) |
| PG-11869 | Reinforcement | 2025-09-15 → 2025-09-16 (+1d) | 2025-09-19 → 2025-09-20 (+1d) |
| PG-11870 | Formwork | 2025-09-17 → 2025-09-18 (+1d) | 2025-09-22 → 2025-09-23 (+1d) |
| 1.3.1.3.2.27.2 | **Slab, Beams & Staircase** | 2025-09-20 → 2025-09-22 (+2d) | 2025-09-27 → 2025-09-29 (+2d) |
| PG-11871 | Formwork | 2025-09-20 → 2025-09-22 (+2d) | 2025-09-24 → 2025-09-25 (+1d) |
| PG-11872 | Reinforcement | 2025-09-23 → 2025-09-24 (+1d) | 2025-09-26 → 2025-09-27 (+1d) |
| PG-11873 | Concrete | 2025-09-26 → 2025-09-27 (+1d) | 2025-09-27 → 2025-09-29 (+2d) |
| 1.3.1.3.2.28 | **Floor 25** | 2025-09-27 → 2025-09-29 (+2d) | 2025-10-11 → 2025-10-13 (+2d) |
| 1.3.1.3.2.28.1 | **Columns / shear walls** | 2025-09-27 → 2025-09-29 (+2d) | 2025-10-06 → 2025-10-07 (+1d) |
| PG-11874 | Reinforcement | 2025-09-27 → 2025-09-29 (+2d) | 2025-10-03 → 2025-10-04 (+1d) |
| PG-11875 | Formwork | 2025-09-30 → 2025-10-01 (+1d) | 2025-10-06 → 2025-10-07 (+1d) |
| 1.3.1.3.2.28.2 | **Slab, Beams & Staircase** | 2025-10-04 → 2025-10-06 (+2d) | 2025-10-11 → 2025-10-13 (+2d) |
| PG-11876 | Formwork | 2025-10-04 → 2025-10-06 (+2d) | 2025-10-08 → 2025-10-09 (+1d) |
| PG-11877 | Reinforcement | 2025-10-07 → 2025-10-08 (+1d) | 2025-10-10 → 2025-10-11 (+1d) |
| PG-11878 | Concrete | 2025-10-10 → 2025-10-11 (+1d) | 2025-10-11 → 2025-10-13 (+2d) |
| 1.3.1.3.2.29 | **Floor 26** | 2025-10-11 → 2025-10-13 (+2d) | 2025-10-24 → 2025-10-25 (+1d) |
| 1.3.1.3.2.29.1 | **Columns / shear walls** | 2025-10-11 → 2025-10-13 (+2d) | 2025-10-18 → 2025-10-20 (+2d) |
| PG-11879 | Reinforcement | 2025-10-11 → 2025-10-13 (+2d) | 2025-10-16 → 2025-10-17 (+1d) |
| PG-11880 | Formwork | 2025-10-14 → 2025-10-15 (+1d) | 2025-10-18 → 2025-10-20 (+2d) |
| 1.3.1.3.2.29.2 | **Slab, Beams & Staircase** | 2025-10-17 → 2025-10-18 (+1d) | 2025-10-24 → 2025-10-25 (+1d) |
| PG-11881 | Formwork | 2025-10-17 → 2025-10-18 (+1d) | 2025-10-21 → 2025-10-22 (+1d) |
| PG-11882 | Reinforcement | 2025-10-20 → 2025-10-21 (+1d) | 2025-10-23 → 2025-10-24 (+1d) |
| PG-11883 | Concrete | 2025-10-23 → 2025-10-24 (+1d) | 2025-10-24 → 2025-10-25 (+1d) |
| 1.3.1.3.2.30 | **Floor 27** | 2025-10-24 → 2025-10-25 (+1d) | 2025-11-07 → 2025-11-08 (+1d) |
| 1.3.1.3.2.30.1 | **Columns / shear walls** | 2025-10-24 → 2025-10-25 (+1d) | 2025-10-31 → 2025-11-03 (+3d) |
| PG-11884 | Reinforcement | 2025-10-24 → 2025-10-25 (+1d) | 2025-10-29 → 2025-10-30 (+1d) |
| PG-11885 | Formwork | 2025-10-27 → 2025-10-28 (+1d) | 2025-10-31 → 2025-11-03 (+3d) |
| 1.3.1.3.2.30.2 | **Slab, Beams & Staircase** | 2025-10-30 → 2025-10-31 (+1d) | 2025-11-07 → 2025-11-08 (+1d) |
| PG-11886 | Formwork | 2025-10-30 → 2025-10-31 (+1d) | 2025-11-04 → 2025-11-05 (+1d) |

| ID | Task | Start | Finish | Complete | Total float |
| --- | --- | --- | --- | --- | --- |
| PG-11887 | Reinforcement | 2025-11-03 → 2025-11-04 (+1d) | 2025-11-06 → 2025-11-07 (+1d) |  |  |
| PG-11888 | Concrete | 2025-11-06 → 2025-11-07 (+1d) | 2025-11-07 → 2025-11-08 (+1d) |  |  |
| 1.3.1.3.2.31 | **Floor 28** | 2025-11-07 → 2025-11-08 (+1d) | 2025-11-20 → 2025-11-21 (+1d) |  |  |
| 1.3.1.3.2.31.1 | **Columns / shear walls** | 2025-11-07 → 2025-11-08 (+1d) | 2025-11-14 → 2025-11-15 (+1d) |  |  |
| PG-11889 | Reinforcement | 2025-11-07 → 2025-11-08 (+1d) | 2025-11-12 → 2025-11-13 (+1d) |  |  |
| PG-11890 | Formwork | 2025-11-10 → 2025-11-11 (+1d) | 2025-11-14 → 2025-11-15 (+1d) |  |  |
| 1.3.1.3.2.31.2 | **Slab, Beams & Staircase** | 2025-11-13 → 2025-11-14 (+1d) | 2025-11-20 → 2025-11-21 (+1d) |  |  |
| PG-11891 | Formwork | 2025-11-13 → 2025-11-14 (+1d) | 2025-11-17 → 2025-11-18 (+1d) |  |  |
| PG-11892 | Reinforcement | 2025-11-15 → 2025-11-17 (+2d) | 2025-11-19 → 2025-11-20 (+1d) |  |  |
| PG-11893 | Concrete | 2025-11-19 → 2025-11-20 (+1d) | 2025-11-20 → 2025-11-21 (+1d) |  |  |
| 1.3.1.3.2.32 | **Floor 29** | 2025-11-20 → 2025-11-21 (+1d) | 2025-12-03 → 2025-12-04 (+1d) |  |  |
| 1.3.1.3.2.32.1 | **Columns / shear walls** | 2025-11-20 → 2025-11-21 (+1d) | 2025-11-27 → 2025-11-28 (+1d) |  |  |
| PG-11894 | Reinforcement | 2025-11-20 → 2025-11-21 (+1d) | 2025-11-25 → 2025-11-26 (+1d) |  |  |
| PG-11895 | Formwork | 2025-11-22 → 2025-11-24 (+2d) | 2025-11-27 → 2025-11-28 (+1d) |  |  |
| 1.3.1.3.2.32.2 | **Slab, Beams & Staircase** | 2025-11-26 → 2025-11-27 (+1d) | 2025-12-03 → 2025-12-04 (+1d) |  |  |
| PG-11896 | Formwork | 2025-11-26 → 2025-11-27 (+1d) | 2025-11-29 → 2025-12-01 (+2d) |  |  |
| PG-11897 | Reinforcement | 2025-11-28 → 2025-11-29 (+1d) | 2025-12-02 → 2025-12-03 (+1d) |  |  |
| PG-11898 | Concrete | 2025-12-02 → 2025-12-03 (+1d) | 2025-12-03 → 2025-12-04 (+1d) |  |  |
| 1.3.1.3.2.33 | **Above Terrace Floor** | 2025-12-03 → 2025-12-04 (+1d) | 2026-01-10 → 2026-01-12 (+2d) |  |  |
| 1.3.1.3.2.33.1 | **Columns / shear walls/Parapet Walls** | 2025-12-03 → 2025-12-04 (+1d) | 2025-12-16 → 2025-12-17 (+1d) |  |  |
| PG-11899 | Reinforcement | 2025-12-03 → 2025-12-04 (+1d) | 2025-12-08 → 2025-12-09 (+1d) |  |  |
| PG-11900 | Formwork | 2025-12-05 → 2025-12-06 (+1d) | 2025-12-11 → 2025-12-12 (+1d) |  |  |
| PG-11901 | Concrete | 2025-12-11 → 2025-12-12 (+1d) | 2025-12-16 → 2025-12-17 (+1d) |  |  |
| 1.3.1.3.2.33.2 | **Slab, Beams & Staircase Head rooms, Lift headroom** | 2025-12-08 → 2025-12-09 (+1d) | 2026-01-10 → 2026-01-12 (+2d) |  |  |
| PG-11905 | Terrace Waterproofing and Protective finishing. | 2025-12-08 → 2025-12-09 (+1d) | 2026-01-10 → 2026-01-12 (+2d) |  |  |
| PG-11902 | Formwork | 2025-12-16 → 2025-12-17 (+1d) | 2025-12-22 → 2025-12-23 (+1d) |  |  |
| PG-11903 | Reinforcement | 2025-12-22 → 2025-12-23 (+1d) | 2025-12-27 → 2025-12-29 (+2d) |  |  |
| PG-11904 | Concrete | 2025-12-27 → 2025-12-29 (+2d) | 2025-12-30 → 2025-12-31 (+1d) |  |  |
| 1.3.1.3.3 | **MEP Internal works** |  | 2026-06-11 → 2026-06-12 (+1d) |  |  |
| 1.3.1.3.3.9 | **Floor 6** |  | 2025-06-20 → 2025-06-25 (+5d) |  |  |
| 1.3.1.3.3.9.1 | **PHE Works** |  | 2025-06-20 → 2025-06-25 (+5d) |  |  |
| PG-11969 | Final Fix - CP & Sanitary fixtures | 2025-06-10 → 2025-06-14 (+4d) | 2025-06-20 → 2025-06-25 (+5d) |  | 364.28d → 361.57d |
| 1.3.1.3.3.9.2 | **Fire Fighting Works** |  | 2025-06-20 → 2025-06-25 (+5d) |  |  |
| PG-11971 | 2nd Fix - Sprinkler fixing & Pressure testing |  | 2025-05-29 A | 55% → 100% | 374.44d → none |
| PG-11972 | Final Fix - Smoke & heat detectors, FHC , FAS Etc. | 2025-06-10 → 2025-06-14 (+4d) | 2025-06-20 → 2025-06-25 (+5d) |  | 364.28d → 361.57d |
| 1.3.1.3.3.9.3 | **Electrical Works** |  | 2025-06-20 → 2025-06-25 (+5d) |  |  |
| PG-11974 | 2nd Fix - Wiring works |  | 2025-05-28 A | 73% → 100% | 379.44d → none |
| PG-11975 | Final Fix - Electrical Fixtures | 2025-06-14 → 2025-06-19 (+5d) | 2025-06-20 → 2025-06-25 (+5d) |  | 364.28d → 361.57d |
| 1.3.1.3.3.10 | **Floor 7** |  | 2025-07-05 → 2025-07-07 (+2d) |  |  |
| 1.3.1.3.3.10.1 | **PHE Works** |  | 2025-07-05 → 2025-07-07 (+2d) |  |  |
| PG-11978 | Final Fix - CP & Sanitary fixtures |  | 2025-07-05 → 2025-07-07 (+2d) |  | 352.52d → 353.17d |
| 1.3.1.3.3.10.2 | **Fire Fighting Works** |  | 2025-07-05 → 2025-07-07 (+2d) |  |  |
| PG-11981 | Final Fix - Smoke & heat detectors, FHC , FAS Etc. |  | 2025-07-05 → 2025-07-07 (+2d) |  | 352.52d → 353.17d |
| 1.3.1.3.3.10.3 | **Electrical Works** |  | 2025-07-05 → 2025-07-07 (+2d) |  |  |
| PG-11983 | 2nd Fix - Wiring works | 2025-05-27 → 2025-05-30 A (+3d) | 2025-06-13 → 2025-06-14 (+1d) | 0% → 6% | 366.52d → 366.02d |
| PG-11984 | Final Fix - Electrical Fixtures |  | 2025-07-05 → 2025-07-07 (+2d) |  | 352.52d → 353.17d |
| 1.3.1.3.3.11 | **Floor 8** |  | 2025-07-24 → 2025-07-23 (-1d) |  |  |
| 1.3.1.3.3.11.1 | **PHE Works** |  | 2025-07-24 → 2025-07-23 (-1d) |  |  |
| PG-11986 | 2nd Fix - diverter fixing & Pressure testing |  | 2025-05-24 A | 92% → 100% | 335.94d → none |
| PG-11987 | Final Fix - CP & Sanitary fixtures | 2025-07-12 → 2025-07-11 (-1d) | 2025-07-24 → 2025-07-23 (-1d) |  | 335.94d → 337.9d |
| 1.3.1.3.3.11.2 | **Fire Fighting Works** |  | 2025-07-24 → 2025-07-23 (-1d) |  |  |
| PG-11988 | 1st Fix - Piping and Shaft hydrant works |  | 2025-05-27 A | 76% → 100% | 381.86d → none |
| PG-11989 | 2nd Fix - Sprinkler fixing & Pressure testing | 2025-06-19 → 2025-06-18 (-1d) | 2025-07-01 → 2025-06-30 (-1d) |  | 345.94d → 347.9d |
| PG-11990 | Final Fix - Smoke & heat detectors, FHC , FAS Etc. | 2025-07-12 → 2025-07-11 (-1d) | 2025-07-24 → 2025-07-23 (-1d) |  | 335.94d → 337.9d |
| 1.3.1.3.3.11.3 | **Electrical Works** |  | 2025-07-24 → 2025-07-23 (-1d) |  |  |
| PG-11992 | 2nd Fix - Wiring works | 2025-06-14 → 2025-06-13 (-1d) | 2025-06-30 → 2025-06-28 (-2d) |  | 350.94d → 352.9d |
| PG-11993 | Final Fix - Electrical Fixtures | 2025-07-17 → 2025-07-16 (-1d) | 2025-07-24 → 2025-07-23 (-1d) |  | 335.94d → 337.9d |
| 1.3.1.3.3.12 | **Floor 9** |  | 2025-08-06 → 2025-08-07 (+1d) |  |  |
| 1.3.1.3.3.12.1 | **PHE Works** |  | 2025-08-06 → 2025-08-07 (+1d) |  |  |
| PG-11994 | 1st Fix - Piping works |  |  | 27% → 77% | 324.72d → 325.78d |
| PG-11995 | 2nd Fix - diverter fixing & Pressure testing | 2025-05-28 → 2025-05-29 A (+1d) | 2025-06-09 → 2025-06-10 (+1d) | 0% → 3% | 324.72d → 324.88d |
| PG-11996 | Final Fix - CP & Sanitary fixtures | 2025-07-25 → 2025-07-26 (+1d) | 2025-08-06 → 2025-08-07 (+1d) |  | 324.72d → 324.88d |
| 1.3.1.3.3.12.2 | **Fire Fighting Works** | 2025-05-28 → 2025-05-30 (+2d) | 2025-08-06 → 2025-08-07 (+1d) |  |  |
| PG-11997 | 1st Fix - Piping and Shaft hydrant works | 2025-05-28 → 2025-05-30 A (+2d) | 2025-06-11 → 2025-06-12 (+1d) | 0% → 3% | 370.34d → 370.75d |
| PG-11998 | 2nd Fix - Sprinkler fixing & Pressure testing | 2025-07-04 → 2025-07-05 (+1d) | 2025-07-16 → 2025-07-17 (+1d) |  | 332.89d → 333.05d |
| PG-11999 | Final Fix - Smoke & heat detectors, FHC , FAS Etc. | 2025-07-25 → 2025-07-26 (+1d) | 2025-08-06 → 2025-08-07 (+1d) |  | 324.72d → 324.88d |
| 1.3.1.3.3.12.3 | **Electrical Works** |  | 2025-08-06 → 2025-08-07 (+1d) |  |  |
| PG-12000 | 1st Fix - GI wire pulling |  | 2025-05-28 → 2025-05-29 A (+1d) | 38% → 100% | 370.34d → none |
| PG-12001 | 2nd Fix - Wiring works | 2025-06-30 → 2025-07-01 (+1d) | 2025-07-15 → 2025-07-16 (+1d) |  | 337.72d → 337.88d |
| PG-12002 | Final Fix - Electrical Fixtures | 2025-07-30 → 2025-07-31 (+1d) | 2025-08-06 → 2025-08-07 (+1d) |  | 324.72d → 324.88d |

| ID | Task | Start | Finish |
| --- | --- | --- | --- |
| 1.3.1.3.3.13 | **Floor 10** | 2025-06-03 → 2025-06-04 (+1d) | 2025-08-22 → 2025-08-23 (+1d) |
| 1.3.1.3.3.13.1 | **PHE Works** | 2025-06-03 → 2025-06-04 (+1d) | 2025-08-22 → 2025-08-23 (+1d) |
| PG-12003 | 1st Fix - Piping works | 2025-06-03 → 2025-06-04 (+1d) | 2025-06-17 → 2025-06-18 (+1d) |
| PG-12004 | 2nd Fix - diverter fixing & Pressure testing | 2025-06-12 → 2025-06-13 (+1d) | 2025-06-24 → 2025-06-25 (+1d) |
| PG-12005 | Final Fix - CP & Sanitary fixtures | 2025-08-11 → 2025-08-12 (+1d) | 2025-08-22 → 2025-08-23 (+1d) |
| 1.3.1.3.3.13.2 | **Fire Fighting Works** | 2025-06-11 → 2025-06-12 (+1d) | 2025-08-22 → 2025-08-23 (+1d) |
| PG-12006 | 1st Fix - Piping and Shaft hydrant works | 2025-06-11 → 2025-06-12 (+1d) | 2025-06-25 → 2025-06-26 (+1d) |
| PG-12007 | 2nd Fix - Sprinkler fixing & Pressure testing | 2025-07-19 → 2025-07-21 (+2d) | 2025-07-31 → 2025-08-01 (+1d) |
| PG-12008 | Final Fix - Smoke & heat detectors, FHC , FAS Etc. | 2025-08-11 → 2025-08-12 (+1d) | 2025-08-22 → 2025-08-23 (+1d) |
| 1.3.1.3.3.13.3 | **Electrical Works** | 2025-06-03 → 2025-06-04 (+1d) | 2025-08-22 → 2025-08-23 (+1d) |
| PG-12009 | 1st Fix - GI wire pulling | 2025-06-03 → 2025-06-04 (+1d) | 2025-06-11 → 2025-06-12 (+1d) |
| PG-12010 | 2nd Fix - Wiring works | 2025-07-15 → 2025-07-16 (+1d) | 2025-07-30 → 2025-07-31 (+1d) |
| PG-12011 | Final Fix - Electrical Fixtures | 2025-08-16 → 2025-08-18 (+2d) | 2025-08-22 → 2025-08-23 (+1d) |
| 1.3.1.3.3.14 | **Floor 11** | 2025-06-16 → 2025-06-17 (+1d) | 2025-09-04 → 2025-09-05 (+1d) |
| 1.3.1.3.3.14.1 | **PHE Works** | 2025-06-16 → 2025-06-17 (+1d) | 2025-09-04 → 2025-09-05 (+1d) |
| PG-12012 | 1st Fix - Piping works | 2025-06-16 → 2025-06-17 (+1d) | 2025-06-30 → 2025-07-01 (+1d) |
| PG-12013 | 2nd Fix - diverter fixing & Pressure testing | 2025-06-25 → 2025-06-26 (+1d) | 2025-07-07 → 2025-07-08 (+1d) |
| PG-12014 | Final Fix - CP & Sanitary fixtures | 2025-08-25 → 2025-08-26 (+1d) | 2025-09-04 → 2025-09-05 (+1d) |
| 1.3.1.3.3.14.2 | **Fire Fighting Works** | 2025-06-25 → 2025-06-26 (+1d) | 2025-09-04 → 2025-09-05 (+1d) |
| PG-12015 | 1st Fix - Piping and Shaft hydrant works | 2025-06-25 → 2025-06-26 (+1d) | 2025-07-09 → 2025-07-10 (+1d) |
| PG-12016 | 2nd Fix - Sprinkler fixing & Pressure testing | 2025-08-01 → 2025-08-02 (+1d) | 2025-08-13 → 2025-08-14 (+1d) |
| PG-12017 | Final Fix - Smoke & heat detectors, FHC , FAS Etc. | 2025-08-25 → 2025-08-26 (+1d) | 2025-09-04 → 2025-09-05 (+1d) |
| 1.3.1.3.3.14.3 | **Electrical Works** | 2025-06-16 → 2025-06-17 (+1d) | 2025-09-04 → 2025-09-05 (+1d) |
| PG-12018 | 1st Fix - GI wire pulling | 2025-06-16 → 2025-06-17 (+1d) | 2025-06-25 → 2025-06-26 (+1d) |
| PG-12019 | 2nd Fix - Wiring works | 2025-07-28 → 2025-07-29 (+1d) | 2025-08-12 → 2025-08-13 (+1d) |
| PG-12020 | Final Fix - Electrical Fixtures | 2025-08-29 → 2025-08-30 (+1d) | 2025-09-04 → 2025-09-05 (+1d) |
| 1.3.1.3.3.15 | **Floor 12** | 2025-06-28 → 2025-06-30 (+2d) | 2025-09-20 → 2025-09-22 (+2d) |
| 1.3.1.3.3.15.1 | **PHE Works** | 2025-06-28 → 2025-06-30 (+2d) | 2025-09-20 → 2025-09-22 (+2d) |
| PG-12021 | 1st Fix - Piping works | 2025-06-28 → 2025-06-30 (+2d) | 2025-07-12 → 2025-07-14 (+2d) |
| PG-12022 | 2nd Fix - diverter fixing & Pressure testing | 2025-07-08 → 2025-07-09 (+1d) | 2025-07-19 → 2025-07-21 (+2d) |
| PG-12023 | Final Fix - CP & Sanitary fixtures | 2025-09-08 → 2025-09-09 (+1d) | 2025-09-20 → 2025-09-22 (+2d) |
| 1.3.1.3.3.15.2 | **Fire Fighting Works** | 2025-07-07 → 2025-07-08 (+1d) | 2025-09-20 → 2025-09-22 (+2d) |
| PG-12024 | 1st Fix - Piping and Shaft hydrant works | 2025-07-07 → 2025-07-08 (+1d) | 2025-07-21 → 2025-07-22 (+1d) |
| PG-12025 | 2nd Fix - Sprinkler fixing & Pressure testing | 2025-08-14 → 2025-08-16 (+2d) | 2025-08-27 → 2025-08-28 (+1d) |
| PG-12026 | Final Fix - Smoke & heat detectors, FHC , FAS Etc. | 2025-09-08 → 2025-09-09 (+1d) | 2025-09-20 → 2025-09-22 (+2d) |
| 1.3.1.3.3.15.3 | **Electrical Works** | 2025-06-28 → 2025-06-30 (+2d) | 2025-09-20 → 2025-09-22 (+2d) |
| PG-12027 | 1st Fix - GI wire pulling | 2025-06-28 → 2025-06-30 (+2d) | 2025-07-07 → 2025-07-08 (+1d) |
| PG-12028 | 2nd Fix - Wiring works | 2025-08-08 → 2025-08-09 (+1d) | 2025-08-26 → 2025-08-27 (+1d) |
| PG-12029 | Final Fix - Electrical Fixtures | 2025-09-15 → 2025-09-16 (+1d) | 2025-09-20 → 2025-09-22 (+2d) |
| 1.3.1.3.3.16 | **Floor 13** | 2025-07-11 → 2025-07-12 (+1d) | 2025-10-04 → 2025-10-06 (+2d) |
| 1.3.1.3.3.16.1 | **PHE Works** | 2025-07-11 → 2025-07-12 (+1d) | 2025-10-04 → 2025-10-06 (+2d) |
| PG-12030 | 1st Fix - Piping works | 2025-07-11 → 2025-07-12 (+1d) | 2025-07-25 → 2025-07-26 (+1d) |
| PG-12031 | 2nd Fix - diverter fixing & Pressure testing | 2025-07-21 → 2025-07-22 (+1d) | 2025-08-01 → 2025-08-02 (+1d) |
| PG-12032 | Final Fix - CP & Sanitary fixtures | 2025-09-22 → 2025-09-23 (+1d) | 2025-10-04 → 2025-10-06 (+2d) |
| 1.3.1.3.3.16.2 | **Fire Fighting Works** | 2025-07-19 → 2025-07-21 (+2d) | 2025-10-04 → 2025-10-06 (+2d) |
| PG-12033 | 1st Fix - Piping and Shaft hydrant works | 2025-07-19 → 2025-07-21 (+2d) | 2025-08-02 → 2025-08-04 (+2d) |
| PG-12034 | 2nd Fix - Sprinkler fixing & Pressure testing | 2025-08-28 → 2025-08-29 (+1d) | 2025-09-09 → 2025-09-10 (+1d) |
| PG-12035 | Final Fix - Smoke & heat detectors, FHC , FAS Etc. | 2025-09-22 → 2025-09-23 (+1d) | 2025-10-04 → 2025-10-06 (+2d) |
| 1.3.1.3.3.16.3 | **Electrical Works** | 2025-07-11 → 2025-07-12 (+1d) | 2025-10-04 → 2025-10-06 (+2d) |
| PG-12036 | 1st Fix - GI wire pulling | 2025-07-11 → 2025-07-12 (+1d) | 2025-07-19 → 2025-07-21 (+2d) |
| PG-12037 | 2nd Fix - Wiring works | 2025-08-22 → 2025-08-23 (+1d) | 2025-09-08 → 2025-09-09 (+1d) |
| PG-12038 | Final Fix - Electrical Fixtures | 2025-09-27 → 2025-09-29 (+2d) | 2025-10-04 → 2025-10-06 (+2d) |
| 1.3.1.3.3.17 | **Floor 14** | 2025-07-24 → 2025-07-25 (+1d) | 2025-10-15 → 2025-10-16 (+1d) |
| 1.3.1.3.3.17.1 | **PHE Works** | 2025-07-24 → 2025-07-25 (+1d) | 2025-10-15 → 2025-10-16 (+1d) |
| PG-12039 | 1st Fix - Piping works | 2025-07-24 → 2025-07-25 (+1d) | 2025-08-07 → 2025-08-08 (+1d) |
| PG-12040 | 2nd Fix - diverter fixing & Pressure testing | 2025-08-02 → 2025-08-04 (+2d) | 2025-08-14 → 2025-08-16 (+2d) |
| PG-12041 | Final Fix - CP & Sanitary fixtures | 2025-10-04 → 2025-10-06 (+2d) | 2025-10-15 → 2025-10-16 (+1d) |
| 1.3.1.3.3.17.2 | **Fire Fighting Works** | 2025-08-01 → 2025-08-02 (+1d) | 2025-10-15 → 2025-10-16 (+1d) |
| PG-12042 | 1st Fix - Piping and Shaft hydrant works | 2025-08-01 → 2025-08-02 (+1d) | 2025-08-16 → 2025-08-18 (+2d) |
| PG-12043 | 2nd Fix - Sprinkler fixing & Pressure testing | 2025-09-10 → 2025-09-11 (+1d) | 2025-09-22 → 2025-09-23 (+1d) |
| PG-12044 | Final Fix - Smoke & heat detectors, FHC , FAS Etc. | 2025-10-04 → 2025-10-06 (+2d) | 2025-10-15 → 2025-10-16 (+1d) |
| 1.3.1.3.3.17.3 | **Electrical Works** | 2025-07-24 → 2025-07-25 (+1d) | 2025-10-15 → 2025-10-16 (+1d) |
| PG-12045 | 1st Fix - GI wire pulling | 2025-07-24 → 2025-07-25 (+1d) | 2025-08-01 → 2025-08-02 (+1d) |
| PG-12046 | 2nd Fix - Wiring works | 2025-09-03 → 2025-09-04 (+1d) | 2025-09-20 → 2025-09-22 (+2d) |
| PG-12047 | Final Fix - Electrical Fixtures | 2025-10-09 → 2025-10-10 (+1d) | 2025-10-15 → 2025-10-16 (+1d) |
| 1.3.1.3.3.18 | **Floor 15** | 2025-08-06 → 2025-08-07 (+1d) |  |
| 1.3.1.3.3.18.1 | **PHE Works** | 2025-08-06 → 2025-08-07 (+1d) |  |
| PG-12048 | 1st Fix - Piping works | 2025-08-06 → 2025-08-07 (+1d) | 2025-08-21 → 2025-08-22 (+1d) |
| PG-12049 | 2nd Fix - diverter fixing & Pressure testing | 2025-08-16 → 2025-08-18 (+2d) | 2025-08-28 → 2025-08-29 (+1d) |
| 1.3.1.3.3.18.2 | **Fire Fighting Works** | 2025-08-14 → 2025-08-16 (+2d) |  |

| ID | Task | Start | Finish |
| --- | --- | --- | --- |
| PG-12051 | 1st Fix - Piping and Shaft hydrant works | 2025-08-14 → 2025-08-16 (+2d) | 2025-08-29 → 2025-08-30 (+1d) |
| 1.3.1.3.3.18.3 | **Electrical Works** | 2025-08-06 → 2025-08-07 (+1d) |  |
| PG-12054 | 1st Fix - GI wire pulling | 2025-08-06 → 2025-08-07 (+1d) | 2025-08-14 → 2025-08-16 (+2d) |
| 1.3.1.3.3.19 | **Floor 16** | 2025-08-20 → 2025-08-21 (+1d) | 2025-11-11 → 2025-11-12 (+1d) |
| 1.3.1.3.3.19.1 | **PHE Works** | 2025-08-20 → 2025-08-21 (+1d) | 2025-11-11 → 2025-11-12 (+1d) |
| PG-12057 | 1st Fix - Piping works | 2025-08-20 → 2025-08-21 (+1d) | 2025-09-03 → 2025-09-04 (+1d) |
| PG-12058 | 2nd Fix - diverter fixing & Pressure testing | 2025-08-29 → 2025-08-30 (+1d) | 2025-09-10 → 2025-09-11 (+1d) |
| PG-12059 | Final Fix - CP & Sanitary fixtures | 2025-10-29 → 2025-10-30 (+1d) | 2025-11-11 → 2025-11-12 (+1d) |
| 1.3.1.3.3.19.2 | **Fire Fighting Works** | 2025-08-28 → 2025-08-29 (+1d) | 2025-11-11 → 2025-11-12 (+1d) |
| PG-12060 | 1st Fix - Piping and Shaft hydrant works | 2025-08-28 → 2025-08-29 (+1d) | 2025-09-11 → 2025-09-12 (+1d) |
| PG-12061 | 2nd Fix - Sprinkler fixing & Pressure testing | 2025-10-07 → 2025-10-08 (+1d) | 2025-10-18 → 2025-10-20 (+2d) |
| PG-12062 | Final Fix - Smoke & heat detectors, FHC , FAS Etc. | 2025-10-29 → 2025-10-30 (+1d) | 2025-11-11 → 2025-11-12 (+1d) |
| 1.3.1.3.3.19.3 | **Electrical Works** | 2025-08-20 → 2025-08-21 (+1d) | 2025-11-11 → 2025-11-12 (+1d) |
| PG-12063 | 1st Fix - GI wire pulling | 2025-08-20 → 2025-08-21 (+1d) | 2025-08-28 → 2025-08-29 (+1d) |
| PG-12064 | 2nd Fix - Wiring works | 2025-10-01 → 2025-10-03 (+2d) | 2025-10-17 → 2025-10-18 (+1d) |
| PG-12065 | Final Fix - Electrical Fixtures | 2025-11-05 → 2025-11-06 (+1d) | 2025-11-11 → 2025-11-12 (+1d) |
| 1.3.1.3.3.20 | **Floor 17** | 2025-09-02 → 2025-09-03 (+1d) | 2025-11-22 → 2025-11-24 (+2d) |
| 1.3.1.3.3.20.1 | **PHE Works** | 2025-09-02 → 2025-09-03 (+1d) | 2025-11-22 → 2025-11-24 (+2d) |
| PG-12066 | 1st Fix - Piping works | 2025-09-02 → 2025-09-03 (+1d) | 2025-09-16 → 2025-09-17 (+1d) |
| PG-12067 | 2nd Fix - diverter fixing & Pressure testing | 2025-09-11 → 2025-09-12 (+1d) | 2025-09-23 → 2025-09-24 (+1d) |
| PG-12068 | Final Fix - CP & Sanitary fixtures | 2025-11-11 → 2025-11-12 (+1d) | 2025-11-22 → 2025-11-24 (+2d) |
| 1.3.1.3.3.20.2 | **Fire Fighting Works** | 2025-09-10 → 2025-09-11 (+1d) | 2025-11-22 → 2025-11-24 (+2d) |
| PG-12069 | 1st Fix - Piping and Shaft hydrant works | 2025-09-10 → 2025-09-11 (+1d) | 2025-09-24 → 2025-09-25 (+1d) |
| PG-12070 | 2nd Fix - Sprinkler fixing & Pressure testing | 2025-10-20 → 2025-10-21 (+1d) | 2025-10-31 → 2025-11-03 (+3d) |
| PG-12071 | Final Fix - Smoke & heat detectors, FHC , FAS Etc. | 2025-11-11 → 2025-11-12 (+1d) | 2025-11-22 → 2025-11-24 (+2d) |
| 1.3.1.3.3.20.3 | **Electrical Works** | 2025-09-02 → 2025-09-03 (+1d) | 2025-11-22 → 2025-11-24 (+2d) |
| PG-12072 | 1st Fix - GI wire pulling | 2025-09-02 → 2025-09-03 (+1d) | 2025-09-10 → 2025-09-11 (+1d) |
| PG-12073 | 2nd Fix - Wiring works | 2025-10-14 → 2025-10-15 (+1d) | 2025-10-30 → 2025-10-31 (+1d) |
| PG-12074 | Final Fix - Electrical Fixtures | 2025-11-17 → 2025-11-18 (+1d) | 2025-11-22 → 2025-11-24 (+2d) |
| 1.3.1.3.3.21 | **Floor 18** | 2025-09-15 → 2025-09-16 (+1d) | 2025-12-05 → 2025-12-06 (+1d) |
| 1.3.1.3.3.21.1 | **PHE Works** | 2025-09-15 → 2025-09-16 (+1d) | 2025-12-05 → 2025-12-06 (+1d) |
| PG-12075 | 1st Fix - Piping works | 2025-09-15 → 2025-09-16 (+1d) | 2025-09-29 → 2025-09-30 (+1d) |
| PG-12076 | 2nd Fix - diverter fixing & Pressure testing | 2025-09-24 → 2025-09-25 (+1d) | 2025-10-07 → 2025-10-08 (+1d) |
| PG-12077 | Final Fix - CP & Sanitary fixtures | 2025-11-24 → 2025-11-25 (+1d) | 2025-12-05 → 2025-12-06 (+1d) |
| 1.3.1.3.3.21.2 | **Fire Fighting Works** | 2025-09-23 → 2025-09-24 (+1d) | 2025-12-05 → 2025-12-06 (+1d) |
| PG-12078 | 1st Fix - Piping and Shaft hydrant works | 2025-09-23 → 2025-09-24 (+1d) | 2025-10-08 → 2025-10-09 (+1d) |
| PG-12079 | 2nd Fix - Sprinkler fixing & Pressure testing | 2025-11-03 → 2025-11-04 (+1d) | 2025-11-14 → 2025-11-15 (+1d) |
| PG-12080 | Final Fix - Smoke & heat detectors, FHC , FAS Etc. | 2025-11-24 → 2025-11-25 (+1d) | 2025-12-05 → 2025-12-06 (+1d) |
| 1.3.1.3.3.21.3 | **Electrical Works** | 2025-09-15 → 2025-09-16 (+1d) | 2025-12-05 → 2025-12-06 (+1d) |
| PG-12081 | 1st Fix - GI wire pulling | 2025-09-15 → 2025-09-16 (+1d) | 2025-09-23 → 2025-09-24 (+1d) |
| PG-12082 | 2nd Fix - Wiring works | 2025-10-27 → 2025-10-28 (+1d) | 2025-11-13 → 2025-11-14 (+1d) |
| PG-12083 | Final Fix - Electrical Fixtures | 2025-11-29 → 2025-12-01 (+2d) | 2025-12-05 → 2025-12-06 (+1d) |
| 1.3.1.3.3.22 | **Floor 19** | 2025-09-27 → 2025-09-29 (+2d) | 2025-12-18 → 2025-12-19 (+1d) |
| 1.3.1.3.3.22.1 | **PHE Works** | 2025-09-27 → 2025-09-29 (+2d) | 2025-12-18 → 2025-12-19 (+1d) |
| PG-12084 | 1st Fix - Piping works | 2025-09-27 → 2025-09-29 (+2d) | 2025-10-13 → 2025-10-14 (+1d) |
| PG-12085 | 2nd Fix - diverter fixing & Pressure testing | 2025-10-08 → 2025-10-09 (+1d) | 2025-10-20 → 2025-10-21 (+1d) |
| PG-12086 | Final Fix - CP & Sanitary fixtures | 2025-12-06 → 2025-12-08 (+2d) | 2025-12-18 → 2025-12-19 (+1d) |
| 1.3.1.3.3.22.2 | **Fire Fighting Works** | 2025-10-07 → 2025-10-08 (+1d) | 2025-12-18 → 2025-12-19 (+1d) |
| PG-12087 | 1st Fix - Piping and Shaft hydrant works | 2025-10-07 → 2025-10-08 (+1d) | 2025-10-21 → 2025-10-22 (+1d) |
| PG-12088 | 2nd Fix - Sprinkler fixing & Pressure testing | 2025-11-15 → 2025-11-17 (+2d) | 2025-11-27 → 2025-11-28 (+1d) |
| PG-12089 | Final Fix - Smoke & heat detectors, FHC , FAS Etc. | 2025-12-06 → 2025-12-08 (+2d) | 2025-12-18 → 2025-12-19 (+1d) |
| 1.3.1.3.3.22.3 | **Electrical Works** | 2025-09-27 → 2025-09-29 (+2d) | 2025-12-18 → 2025-12-19 (+1d) |
| PG-12090 | 1st Fix - GI wire pulling | 2025-09-27 → 2025-09-29 (+2d) | 2025-10-07 → 2025-10-08 (+1d) |
| PG-12091 | 2nd Fix - Wiring works | 2025-11-10 → 2025-11-11 (+1d) | 2025-11-26 → 2025-11-27 (+1d) |
| PG-12092 | Final Fix - Electrical Fixtures | 2025-12-12 → 2025-12-13 (+1d) | 2025-12-18 → 2025-12-19 (+1d) |
| 1.3.1.3.3.23 | **Floor 20** | 2025-10-11 → 2025-10-13 (+2d) | 2026-01-01 → 2026-01-02 (+1d) |
| 1.3.1.3.3.23.1 | **PHE Works** | 2025-10-11 → 2025-10-13 (+2d) | 2026-01-01 → 2026-01-02 (+1d) |
| PG-12093 | 1st Fix - Piping works | 2025-10-11 → 2025-10-13 (+2d) | 2025-10-25 → 2025-10-27 (+2d) |
| PG-12094 | 2nd Fix - diverter fixing & Pressure testing | 2025-10-21 → 2025-10-22 (+1d) | 2025-11-03 → 2025-11-04 (+1d) |
| PG-12095 | Final Fix - CP & Sanitary fixtures | 2025-12-22 → 2025-12-23 (+1d) | 2026-01-01 → 2026-01-02 (+1d) |
| 1.3.1.3.3.23.2 | **Fire Fighting Works** | 2025-10-21 → 2025-10-22 (+1d) | 2026-01-01 → 2026-01-02 (+1d) |
| PG-12096 | 1st Fix - Piping and Shaft hydrant works | 2025-10-21 → 2025-10-22 (+1d) | 2025-11-05 → 2025-11-06 (+1d) |
| PG-12097 | 2nd Fix - Sprinkler fixing & Pressure testing | 2025-11-28 → 2025-11-29 (+1d) | 2025-12-10 → 2025-12-11 (+1d) |
| PG-12098 | Final Fix - Smoke & heat detectors, FHC , FAS Etc. | 2025-12-22 → 2025-12-23 (+1d) | 2026-01-01 → 2026-01-02 (+1d) |
| 1.3.1.3.3.23.3 | **Electrical Works** | 2025-10-11 → 2025-10-13 (+2d) | 2026-01-01 → 2026-01-02 (+1d) |
| PG-12099 | 1st Fix - GI wire pulling | 2025-10-11 → 2025-10-13 (+2d) | 2025-10-21 → 2025-10-22 (+1d) |
| PG-12100 | 2nd Fix - Wiring works | 2025-11-22 → 2025-11-24 (+2d) | 2025-12-09 → 2025-12-10 (+1d) |
| PG-12101 | Final Fix - Electrical Fixtures | 2025-12-26 → 2025-12-27 (+1d) | 2026-01-01 → 2026-01-02 (+1d) |
| 1.3.1.3.3.24 | **Floor 21** | 2025-10-24 → 2025-10-25 (+1d) | 2026-01-14 → 2026-01-15 (+1d) |
| 1.3.1.3.3.24.1 | **PHE Works** | 2025-10-24 → 2025-10-25 (+1d) | 2026-01-14 → 2026-01-15 (+1d) |

| ID | Task | Start | Finish |
| --- | --- | --- | --- |
| PG-12102 | 1st Fix - Piping works | 2025-10-24 → 2025-10-25 (+1d) | 2025-11-07 → 2025-11-08 (+1d) |
| PG-12103 | 2nd Fix - diverter fixing & Pressure testing | 2025-11-05 → 2025-11-06 (+1d) | 2025-11-14 → 2025-11-15 (+1d) |
| PG-12104 | Final Fix - CP & Sanitary fixtures | 2026-01-01 → 2026-01-02 (+1d) | 2026-01-14 → 2026-01-15 (+1d) |
| 1.3.1.3.3.24.2 | **Fire Fighting Works** | 2025-11-04 → 2025-11-05 (+1d) | 2026-01-14 → 2026-01-15 (+1d) |
| PG-12105 | 1st Fix - Piping and Shaft hydrant works | 2025-11-04 → 2025-11-05 (+1d) | 2025-11-18 → 2025-11-19 (+1d) |
| PG-12106 | 2nd Fix - Sprinkler fixing & Pressure testing | 2025-12-11 → 2025-12-12 (+1d) | 2025-12-22 → 2025-12-23 (+1d) |
| PG-12107 | Final Fix - Smoke & heat detectors, FHC , FAS Etc. | 2026-01-01 → 2026-01-02 (+1d) | 2026-01-14 → 2026-01-15 (+1d) |
| 1.3.1.3.3.24.3 | **Electrical Works** | 2025-10-24 → 2025-10-25 (+1d) | 2026-01-01 → 2026-01-02 (+1d) |
| PG-12108 | 1st Fix - GI wire pulling | 2025-10-24 → 2025-10-25 (+1d) | 2025-11-04 → 2025-11-05 (+1d) |
| PG-12109 | 2nd Fix - Wiring works | 2025-11-22 → 2025-11-24 (+2d) | 2025-12-09 → 2025-12-10 (+1d) |
| PG-12110 | Final Fix - Electrical Fixtures | 2025-12-26 → 2025-12-27 (+1d) | 2026-01-01 → 2026-01-02 (+1d) |
| 1.3.1.3.3.25 | **Floor 22** | 2025-11-07 → 2025-11-08 (+1d) | 2026-01-28 → 2026-01-29 (+1d) |
| 1.3.1.3.3.25.1 | **PHE Works** | 2025-11-07 → 2025-11-08 (+1d) | 2026-01-28 → 2026-01-29 (+1d) |
| PG-12111 | 1st Fix - Piping works | 2025-11-07 → 2025-11-08 (+1d) | 2025-11-20 → 2025-11-21 (+1d) |
| PG-12112 | 2nd Fix - diverter fixing & Pressure testing | 2025-11-18 → 2025-11-19 (+1d) | 2025-11-27 → 2025-11-28 (+1d) |
| PG-12113 | Final Fix - CP & Sanitary fixtures | 2026-01-14 → 2026-01-15 (+1d) | 2026-01-28 → 2026-01-29 (+1d) |
| 1.3.1.3.3.25.2 | **Fire Fighting Works** | 2025-11-17 → 2025-11-18 (+1d) | 2026-01-28 → 2026-01-29 (+1d) |
| PG-12114 | 1st Fix - Piping and Shaft hydrant works | 2025-11-17 → 2025-11-18 (+1d) | 2025-12-01 → 2025-12-02 (+1d) |
| PG-12115 | 2nd Fix - Sprinkler fixing & Pressure testing | 2025-12-24 → 2025-12-25 (+1d) | 2026-01-03 → 2026-01-05 (+2d) |
| PG-12116 | Final Fix - Smoke & heat detectors, FHC , FAS Etc. | 2026-01-14 → 2026-01-15 (+1d) | 2026-01-28 → 2026-01-29 (+1d) |
| 1.3.1.3.3.25.3 | **Electrical Works** | 2025-11-07 → 2025-11-08 (+1d) | 2026-01-28 → 2026-01-29 (+1d) |
| PG-12117 | 1st Fix - GI wire pulling | 2025-11-07 → 2025-11-08 (+1d) | 2025-11-17 → 2025-11-18 (+1d) |
| PG-12118 | 2nd Fix - Wiring works | 2025-12-18 → 2025-12-19 (+1d) | 2026-01-02 → 2026-01-03 (+1d) |
| PG-12119 | Final Fix - Electrical Fixtures | 2026-01-20 → 2026-01-21 (+1d) | 2026-01-28 → 2026-01-29 (+1d) |
| 1.3.1.3.3.26 | **Floor 23** | 2025-11-20 → 2025-11-21 (+1d) | 2026-02-10 → 2026-02-11 (+1d) |
| 1.3.1.3.3.26.1 | **PHE Works** | 2025-11-20 → 2025-11-21 (+1d) | 2026-02-10 → 2026-02-11 (+1d) |
| PG-12120 | 1st Fix - Piping works | 2025-11-20 → 2025-11-21 (+1d) | 2025-12-02 → 2025-12-03 (+1d) |
| PG-12121 | 2nd Fix - diverter fixing & Pressure testing | 2025-11-28 → 2025-11-29 (+1d) | 2025-12-09 → 2025-12-10 (+1d) |
| PG-12122 | Final Fix - CP & Sanitary fixtures | 2026-01-29 → 2026-01-30 (+1d) | 2026-02-10 → 2026-02-11 (+1d) |
| 1.3.1.3.3.26.2 | **Fire Fighting Works** | 2025-11-28 → 2025-11-29 (+1d) | 2026-02-10 → 2026-02-11 (+1d) |
| PG-12123 | 1st Fix - Piping and Shaft hydrant works | 2025-11-28 → 2025-11-29 (+1d) | 2025-12-11 → 2025-12-12 (+1d) |
| PG-12124 | 2nd Fix - Sprinkler fixing & Pressure testing | 2026-01-03 → 2026-01-05 (+2d) | 2026-01-15 → 2026-01-16 (+1d) |
| PG-12125 | Final Fix - Smoke & heat detectors, FHC , FAS Etc. | 2026-01-29 → 2026-01-30 (+1d) | 2026-02-10 → 2026-02-11 (+1d) |
| 1.3.1.3.3.26.3 | **Electrical Works** | 2025-11-20 → 2025-11-21 (+1d) | 2026-02-10 → 2026-02-11 (+1d) |
| PG-12126 | 1st Fix - GI wire pulling | 2025-11-20 → 2025-11-21 (+1d) | 2025-11-27 → 2025-11-28 (+1d) |
| PG-12127 | 2nd Fix - Wiring works | 2025-12-29 → 2025-12-30 (+1d) | 2026-01-14 → 2026-01-15 (+1d) |
| PG-12128 | Final Fix - Electrical Fixtures | 2026-02-03 → 2026-02-04 (+1d) | 2026-02-10 → 2026-02-11 (+1d) |
| 1.3.1.3.3.27 | **Floor 24** | 2025-12-03 → 2025-12-04 (+1d) | 2026-02-23 → 2026-02-24 (+1d) |
| 1.3.1.3.3.27.1 | **PHE Works** | 2025-12-03 → 2025-12-04 (+1d) | 2026-02-23 → 2026-02-24 (+1d) |
| PG-12129 | 1st Fix - Piping works | 2025-12-03 → 2025-12-04 (+1d) | 2025-12-16 → 2025-12-17 (+1d) |
| PG-12130 | 2nd Fix - diverter fixing & Pressure testing | 2025-12-12 → 2025-12-13 (+1d) | 2025-12-23 → 2025-12-24 (+1d) |
| PG-12131 | Final Fix - CP & Sanitary fixtures | 2026-02-11 → 2026-02-12 (+1d) | 2026-02-23 → 2026-02-24 (+1d) |
| 1.3.1.3.3.27.2 | **Fire Fighting Works** | 2025-12-12 → 2025-12-13 (+1d) | 2026-02-23 → 2026-02-24 (+1d) |
| PG-12132 | 1st Fix - Piping and Shaft hydrant works | 2025-12-12 → 2025-12-13 (+1d) | 2025-12-25 → 2025-12-26 (+1d) |
| PG-12133 | 2nd Fix - Sprinkler fixing & Pressure testing | 2026-01-17 → 2026-01-19 (+2d) | 2026-01-30 → 2026-01-31 (+1d) |
| PG-12134 | Final Fix - Smoke & heat detectors, FHC , FAS Etc. | 2026-02-11 → 2026-02-12 (+1d) | 2026-02-23 → 2026-02-24 (+1d) |
| 1.3.1.3.3.27.3 | **Electrical Works** | 2025-12-03 → 2025-12-04 (+1d) | 2026-02-23 → 2026-02-24 (+1d) |
| PG-12135 | 1st Fix - GI wire pulling | 2025-12-03 → 2025-12-04 (+1d) | 2025-12-11 → 2025-12-12 (+1d) |
| PG-12136 | 2nd Fix - Wiring works | 2026-01-12 → 2026-01-13 (+1d) | 2026-01-29 → 2026-01-30 (+1d) |
| PG-12137 | Final Fix - Electrical Fixtures | 2026-02-16 → 2026-02-17 (+1d) | 2026-02-23 → 2026-02-24 (+1d) |
| 1.3.1.3.3.28 | **Floor 25** | 2025-12-24 → 2025-12-25 (+1d) | 2026-03-16 → 2026-03-17 (+1d) |
| 1.3.1.3.3.28.1 | **PHE Works** | 2025-12-24 → 2025-12-25 (+1d) | 2026-03-16 → 2026-03-17 (+1d) |
| PG-12138 | 1st Fix - Piping works | 2025-12-24 → 2025-12-25 (+1d) | 2026-01-06 → 2026-01-07 (+1d) |
| PG-12139 | 2nd Fix - diverter fixing & Pressure testing | 2026-01-02 → 2026-01-03 (+1d) | 2026-01-13 → 2026-01-14 (+1d) |
| PG-12140 | Final Fix - CP & Sanitary fixtures | 2026-03-05 → 2026-03-06 (+1d) | 2026-03-16 → 2026-03-17 (+1d) |
| 1.3.1.3.3.28.2 | **Fire Fighting Works** | 2026-01-02 → 2026-01-03 (+1d) | 2026-03-16 → 2026-03-17 (+1d) |
| PG-12141 | 1st Fix - Piping and Shaft hydrant works | 2026-01-02 → 2026-01-03 (+1d) | 2026-01-16 → 2026-01-17 (+1d) |
| PG-12142 | 2nd Fix - Sprinkler fixing & Pressure testing | 2026-02-10 → 2026-02-11 (+1d) | 2026-02-20 → 2026-02-21 (+1d) |
| PG-12143 | Final Fix - Smoke & heat detectors, FHC , FAS Etc. | 2026-03-05 → 2026-03-06 (+1d) | 2026-03-16 → 2026-03-17 (+1d) |
| 1.3.1.3.3.28.3 | **Electrical Works** | 2025-12-24 → 2025-12-25 (+1d) | 2026-03-16 → 2026-03-17 (+1d) |
| PG-12144 | 1st Fix - GI wire pulling | 2025-12-24 → 2025-12-25 (+1d) | 2026-01-02 → 2026-01-03 (+1d) |
| PG-12145 | 2nd Fix - Wiring works | 2026-02-02 → 2026-02-03 (+1d) | 2026-02-19 → 2026-02-20 (+1d) |
| PG-12146 | Final Fix - Electrical Fixtures | 2026-03-10 → 2026-03-11 (+1d) | 2026-03-16 → 2026-03-17 (+1d) |
| 1.3.1.3.3.29 | **Floor 26** | 2026-01-14 → 2026-01-15 (+1d) | 2026-04-06 → 2026-04-07 (+1d) |
| 1.3.1.3.3.29.1 | **PHE Works** | 2026-01-14 → 2026-01-15 (+1d) | 2026-04-06 → 2026-04-07 (+1d) |
| PG-12147 | 1st Fix - Piping works | 2026-01-14 → 2026-01-15 (+1d) | 2026-01-29 → 2026-01-30 (+1d) |
| PG-12148 | 2nd Fix - diverter fixing & Pressure testing | 2026-01-22 → 2026-01-23 (+1d) | 2026-02-05 → 2026-02-06 (+1d) |
| PG-12149 | Final Fix - CP & Sanitary fixtures | 2026-03-27 → 2026-03-28 (+1d) | 2026-04-06 → 2026-04-07 (+1d) |
| 1.3.1.3.3.29.2 | **Fire Fighting Works** | 2026-01-23 → 2026-01-24 (+1d) | 2026-04-06 → 2026-04-07 (+1d) |
| PG-12150 | 1st Fix - Piping and Shaft hydrant works | 2026-01-23 → 2026-01-24 (+1d) | 2026-02-07 → 2026-02-09 (+2d) |

| ID | Task | Start | Finish | Complete | Total float |
| --- | --- | --- | --- | --- | --- |
| PG-12151 | 2nd Fix - Sprinkler fixing & Pressure testing | 2026-03-03 → 2026-03-04 (+1d) | 2026-03-14 → 2026-03-16 (+2d) |  |  |
| PG-12152 | Final Fix - Smoke & heat detectors, FHC , FAS Etc. | 2026-03-27 → 2026-03-28 (+1d) | 2026-04-06 → 2026-04-07 (+1d) |  |  |
| 1.3.1.3.3.29.3 | **Electrical Works** | 2026-01-14 → 2026-01-15 (+1d) | 2026-04-06 → 2026-04-07 (+1d) |  |  |
| PG-12153 | 1st Fix - GI wire pulling | 2026-01-14 → 2026-01-15 (+1d) | 2026-01-23 → 2026-01-24 (+1d) |  |  |
| PG-12154 | 2nd Fix - Wiring works | 2026-02-24 → 2026-02-25 (+1d) | 2026-03-13 → 2026-03-14 (+1d) |  |  |
| PG-12155 | Final Fix - Electrical Fixtures | 2026-03-31 → 2026-04-01 (+1d) | 2026-04-06 → 2026-04-07 (+1d) |  |  |
| 1.3.1.3.3.30 | **Floor 27** | 2026-02-06 → 2026-02-07 (+1d) | 2026-04-28 → 2026-04-29 (+1d) |  |  |
| 1.3.1.3.3.30.1 | **PHE Works** | 2026-02-06 → 2026-02-07 (+1d) | 2026-04-28 → 2026-04-29 (+1d) |  |  |
| PG-12156 | 1st Fix - Piping works | 2026-02-06 → 2026-02-07 (+1d) | 2026-02-20 → 2026-02-21 (+1d) |  |  |
| PG-12157 | 2nd Fix - diverter fixing & Pressure testing | 2026-02-16 → 2026-02-17 (+1d) | 2026-02-27 → 2026-02-28 (+1d) |  |  |
| PG-12158 | Final Fix - CP & Sanitary fixtures | 2026-04-16 → 2026-04-17 (+1d) | 2026-04-28 → 2026-04-29 (+1d) |  |  |
| 1.3.1.3.3.30.2 | **Fire Fighting Works** | 2026-02-16 → 2026-02-17 (+1d) | 2026-04-28 → 2026-04-29 (+1d) |  |  |
| PG-12159 | 1st Fix - Piping and Shaft hydrant works | 2026-02-16 → 2026-02-17 (+1d) | 2026-03-02 → 2026-03-03 (+1d) |  |  |
| PG-12160 | 2nd Fix - Sprinkler fixing & Pressure testing | 2026-03-26 → 2026-03-27 (+1d) | 2026-04-06 → 2026-04-07 (+1d) |  |  |
| PG-12161 | Final Fix - Smoke & heat detectors, FHC , FAS Etc. | 2026-04-16 → 2026-04-17 (+1d) | 2026-04-28 → 2026-04-29 (+1d) |  |  |
| 1.3.1.3.3.30.3 | **Electrical Works** | 2026-02-06 → 2026-02-07 (+1d) | 2026-04-28 → 2026-04-29 (+1d) |  |  |
| PG-12162 | 1st Fix - GI wire pulling | 2026-02-06 → 2026-02-07 (+1d) | 2026-02-16 → 2026-02-17 (+1d) |  |  |
| PG-12163 | 2nd Fix - Wiring works | 2026-03-19 → 2026-03-20 (+1d) | 2026-04-04 → 2026-04-06 (+2d) |  |  |
| PG-12164 | Final Fix - Electrical Fixtures | 2026-04-22 → 2026-04-23 (+1d) | 2026-04-28 → 2026-04-29 (+1d) |  |  |
| 1.3.1.3.3.31 | **Floor 28** | 2026-02-28 → 2026-03-02 (+2d) | 2026-05-20 → 2026-05-21 (+1d) |  |  |
| 1.3.1.3.3.31.1 | **PHE Works** | 2026-02-28 → 2026-03-02 (+2d) | 2026-05-20 → 2026-05-21 (+1d) |  |  |
| PG-12165 | 1st Fix - Piping works | 2026-02-28 → 2026-03-02 (+2d) | 2026-03-13 → 2026-03-14 (+1d) |  |  |
| PG-12166 | 2nd Fix - diverter fixing & Pressure testing | 2026-03-10 → 2026-03-11 (+1d) | 2026-03-20 → 2026-03-21 (+1d) |  |  |
| PG-12167 | Final Fix - CP & Sanitary fixtures | 2026-05-09 → 2026-05-11 (+2d) | 2026-05-20 → 2026-05-21 (+1d) |  |  |
| 1.3.1.3.3.31.2 | **Fire Fighting Works** | 2026-03-10 → 2026-03-11 (+1d) | 2026-05-20 → 2026-05-21 (+1d) |  |  |
| PG-12168 | 1st Fix - Piping and Shaft hydrant works | 2026-03-10 → 2026-03-11 (+1d) | 2026-03-23 → 2026-03-24 (+1d) |  |  |
| PG-12169 | 2nd Fix - Sprinkler fixing & Pressure testing | 2026-04-16 → 2026-04-17 (+1d) | 2026-04-27 → 2026-04-28 (+1d) |  |  |
| PG-12170 | Final Fix - Smoke & heat detectors, FHC , FAS Etc. | 2026-05-09 → 2026-05-11 (+2d) | 2026-05-20 → 2026-05-21 (+1d) |  |  |
| 1.3.1.3.3.31.3 | **Electrical Works** | 2026-02-28 → 2026-03-02 (+2d) | 2026-05-20 → 2026-05-21 (+1d) |  |  |
| PG-12171 | 1st Fix - GI wire pulling | 2026-02-28 → 2026-03-02 (+2d) | 2026-03-09 → 2026-03-10 (+1d) |  |  |
| PG-12172 | 2nd Fix - Wiring works | 2026-04-09 → 2026-04-10 (+1d) | 2026-04-25 → 2026-04-27 (+2d) |  |  |
| PG-12173 | Final Fix - Electrical Fixtures | 2026-05-14 → 2026-05-15 (+1d) | 2026-05-20 → 2026-05-21 (+1d) |  |  |
| 1.3.1.3.3.32 | **Floor 29** | 2026-03-21 → 2026-03-23 (+2d) | 2026-06-11 → 2026-06-12 (+1d) |  |  |
| 1.3.1.3.3.32.1 | **PHE Works** | 2026-03-21 → 2026-03-23 (+2d) | 2026-06-11 → 2026-06-12 (+1d) |  |  |
| PG-12174 | 1st Fix - Piping works | 2026-03-21 → 2026-03-23 (+2d) | 2026-04-04 → 2026-04-06 (+2d) |  |  |
| PG-12175 | 2nd Fix - diverter fixing & Pressure testing | 2026-03-31 → 2026-04-01 (+1d) | 2026-04-11 → 2026-04-13 (+2d) |  |  |
| PG-12176 | Final Fix - CP & Sanitary fixtures | 2026-05-30 → 2026-06-01 (+2d) | 2026-06-11 → 2026-06-12 (+1d) |  |  |
| 1.3.1.3.3.32.2 | **Fire Fighting Works** | 2026-03-30 → 2026-03-31 (+1d) | 2026-06-11 → 2026-06-12 (+1d) |  |  |
| PG-12177 | 1st Fix - Piping and Shaft hydrant works | 2026-03-30 → 2026-03-31 (+1d) | 2026-04-14 → 2026-04-15 (+1d) |  |  |
| PG-12178 | 2nd Fix - Sprinkler fixing & Pressure testing | 2026-05-07 → 2026-05-08 (+1d) | 2026-05-19 → 2026-05-20 (+1d) |  |  |
| PG-12179 | Final Fix - Smoke & heat detectors, FHC , FAS Etc. | 2026-05-30 → 2026-06-01 (+2d) | 2026-06-11 → 2026-06-12 (+1d) |  |  |
| 1.3.1.3.3.32.3 | **Electrical Works** | 2026-03-21 → 2026-03-23 (+2d) | 2026-06-11 → 2026-06-12 (+1d) |  |  |
| PG-12180 | 1st Fix - GI wire pulling | 2026-03-21 → 2026-03-23 (+2d) | 2026-03-31 → 2026-04-01 (+1d) |  |  |
| PG-12181 | 2nd Fix - Wiring works | 2026-04-28 → 2026-04-29 (+1d) | 2026-05-18 → 2026-05-19 (+1d) |  |  |
| PG-12182 | Final Fix - Electrical Fixtures | 2026-06-04 → 2026-06-05 (+1d) | 2026-06-11 → 2026-06-12 (+1d) |  |  |
| 1.3.1.3.4 | **Civil Finishes - Units** |  | 2026-06-04 → 2026-06-05 (+1d) |  |  |
| 1.3.1.3.4.9 | **Floor 6** |  | 2025-06-14 → 2025-06-18 (+4d) |  |  |
| 1.3.1.3.4.9.1 | **Ceiling Finishing works - Civil** |  | 2025-06-14 → 2025-06-18 (+4d) |  |  |
| PG-12282 | Final Coat Painting |  | 2025-06-14 → 2025-06-18 (+4d) | 3% → 19% | 398.98d → 397.3d |
| 1.3.1.3.4.9.2 | **Wall Finishing works - Civil** |  | 2025-06-13 → 2025-06-18 (+5d) |  |  |
| PG-12287 | Final Coat Painting |  | 2025-06-13 → 2025-06-18 (+5d) | 3% → 14% | 364.28d → 361.57d |
| 1.3.1.3.4.10 | **Floor 7** |  | 2025-06-30 → 2025-07-01 (+1d) |  |  |
| 1.3.1.3.4.10.1 | **Ceiling Finishing works - Civil** |  | 2025-06-30 → 2025-07-01 (+1d) |  |  |
| PG-12295 | Toilet False ceiling |  | 2025-05-26 A | 63% → 100% | 379.52d → none |
| PG-12296 | Final Coat Painting |  | 2025-06-30 → 2025-07-01 (+1d) |  | 386.19d → 386.83d |
| 1.3.1.3.4.10.2 | **Wall Finishing works - Civil** |  | 2025-06-28 → 2025-06-30 (+2d) |  |  |
| PG-12298 | UPVC Windows & Sliding doors | 2025-05-26 A |  | 0% → 80% | 352.52d → 353.17d |
| PG-12301 | Final Coat Painting |  | 2025-06-28 → 2025-06-30 (+2d) |  | 352.52d → 353.17d |
| PG-12304 | Floor Tiling - Dry area |  | 2025-05-26 A | 68% → 100% | 352.52d → none |
| 1.3.1.3.4.11 | **Floor 8** |  | 2025-07-18 → 2025-07-17 (-1d) |  |  |
| 1.3.1.3.4.11.1 | **Ceiling Finishing works - Civil** |  | 2025-07-18 → 2025-07-17 (-1d) |  |  |
| PG-12307 | Cornice fixing | 2025-05-29 A |  | 0% → 17% | 381.86d → 382.67d |
| PG-12309 | Toilet False ceiling | 2025-06-06 → 2025-06-05 (-1d) | 2025-06-11 → 2025-06-10 (-1d) |  | 362.94d → 364.9d |
| PG-12308 | Painting Works - Putty, Primer and 1st | 2025-06-17 → 2025-06-16 (-1d) | 2025-06-24 → 2025-06-23 (-1d) |  | 369.61d → 371.57d |
| PG-12310 | Final Coat Painting | 2025-06-24 → 2025-06-23 (-1d) | 2025-07-18 → 2025-07-17 (-1d) |  | 369.61d → 371.57d |
| 1.3.1.3.4.11.2 | **Wall Finishing works - Civil** |  | 2025-07-17 → 2025-07-16 (-1d) |  |  |
| PG-12313 | Dadoing - Wet area | 2025-05-24 A | 2025-05-30 A | 0% → 100% | 335.94d → none |
| PG-12312 | UPVC Windows & Sliding doors | 2025-06-11 → 2025-06-10 (-1d) | 2025-06-17 → 2025-06-16 (-1d) |  | 335.94d → 337.9d |
| PG-12314 | Painting Works - Putty, Primer and 1st | 2025-06-17 → 2025-06-16 (-1d) | 2025-06-24 → 2025-06-23 (-1d) |  | 335.94d → 337.9d |
| PG-12315 | Final Coat Painting | 2025-06-24 → 2025-06-23 (-1d) | 2025-07-17 → 2025-07-16 (-1d) |  | 335.94d → 337.9d |

| ID | Task | Start | Finish | Complete | Total float |
| --- | --- | --- | --- | --- | --- |
| 1.3.1.3.4.11.3 | **Floor Finishing Works - Civil** |  | 2025-06-24 → 2025-06-23 (-1d) |  |  |
| PG-12317 | Floor Tiling - Wet area | 2025-05-30 A | 2025-06-05 → 2025-06-04 (-1d) | 0% → 3% | 335.94d → 337.9d |
| PG-12318 | Floor Tiling - Dry area | 2025-06-05 → 2025-06-04 (-1d) | 2025-06-11 → 2025-06-10 (-1d) |  | 335.94d → 337.9d |
| PG-12319 | Wooden doors | 2025-06-18 → 2025-06-17 (-1d) | 2025-06-24 → 2025-06-23 (-1d) |  | 335.94d → 337.9d |
| 1.3.1.3.4.12 | **Floor 9** |  | 2025-07-31 → 2025-08-01 (+1d) |  |  |
| 1.3.1.3.4.12.1 | **Ceiling Finishing works - Civil** | 2025-05-28 → 2025-05-29 (+1d) | 2025-07-31 → 2025-08-01 (+1d) |  |  |
| PG-12320 | Gypsum Plastering | 2025-05-28 → 2025-05-29 A (+1d) | 2025-06-04 → 2025-06-05 (+1d) | 0% → 8% | 370.34d → 370.75d |
| PG-12321 | Cornice fixing | 2025-06-13 → 2025-06-14 (+1d) | 2025-06-18 → 2025-06-19 (+1d) |  | 370.34d → 370.75d |
| PG-12323 | Toilet False ceiling | 2025-06-21 → 2025-06-23 (+2d) | 2025-06-26 → 2025-06-27 (+1d) |  | 349.89d → 350.05d |
| PG-12322 | Painting Works - Putty, Primer and 1st | 2025-07-02 → 2025-07-03 (+1d) | 2025-07-09 → 2025-07-10 (+1d) |  | 358.39d → 358.55d |
| PG-12324 | Final Coat Painting | 2025-07-09 → 2025-07-10 (+1d) | 2025-07-31 → 2025-08-01 (+1d) |  | 358.39d → 358.55d |
| 1.3.1.3.4.12.2 | **Wall Finishing works - Civil** |  | 2025-07-30 → 2025-07-31 (+1d) |  |  |
| PG-12325 | Balcony Railing Fixing works |  | 2025-05-23 → 2025-05-24 A (+1d) | 86% → 100% | 353.96d → none |
| PG-12327 | Dadoing - Wet area | 2025-06-09 → 2025-06-10 (+1d) | 2025-06-14 → 2025-06-16 (+2d) |  | 324.72d → 324.88d |
| PG-12326 | UPVC Windows & Sliding doors | 2025-06-26 → 2025-06-27 (+1d) | 2025-07-02 → 2025-07-03 (+1d) |  | 324.72d → 324.88d |
| PG-12328 | Painting Works - Putty, Primer and 1st | 2025-07-02 → 2025-07-03 (+1d) | 2025-07-09 → 2025-07-10 (+1d) |  | 324.72d → 324.88d |
| PG-12329 | Final Coat Painting | 2025-07-09 → 2025-07-10 (+1d) | 2025-07-30 → 2025-07-31 (+1d) |  | 324.72d → 324.88d |
| 1.3.1.3.4.12.3 | **Floor Finishing Works - Civil** |  | 2025-07-09 → 2025-07-10 (+1d) |  |  |
| PG-12331 | Floor Tiling - Wet area | 2025-06-14 → 2025-06-16 (+2d) | 2025-06-20 → 2025-06-21 (+1d) |  | 324.72d → 324.88d |
| PG-12332 | Floor Tiling - Dry area | 2025-06-20 → 2025-06-21 (+1d) | 2025-06-26 → 2025-06-27 (+1d) |  | 324.72d → 324.88d |
| PG-12333 | Wooden doors | 2025-07-03 → 2025-07-04 (+1d) | 2025-07-09 → 2025-07-10 (+1d) |  | 324.72d → 324.88d |
| 1.3.1.3.4.13 | **Floor 10** | 2025-06-03 → 2025-06-04 (+1d) | 2025-08-16 → 2025-08-18 (+2d) |  |  |
| 1.3.1.3.4.13.1 | **Ceiling Finishing works - Civil** | 2025-06-11 → 2025-06-12 (+1d) | 2025-08-16 → 2025-08-18 (+2d) |  |  |
| PG-12334 | Gypsum Plastering | 2025-06-11 → 2025-06-12 (+1d) | 2025-06-18 → 2025-06-19 (+1d) |  |  |
| PG-12335 | Cornice fixing | 2025-06-27 → 2025-06-28 (+1d) | 2025-07-02 → 2025-07-03 (+1d) |  |  |
| PG-12337 | Toilet False ceiling | 2025-07-07 → 2025-07-08 (+1d) | 2025-07-11 → 2025-07-12 (+1d) |  |  |
| PG-12336 | Painting Works - Putty, Primer and 1st | 2025-07-17 → 2025-07-18 (+1d) | 2025-07-24 → 2025-07-25 (+1d) |  |  |
| PG-12338 | Final Coat Painting | 2025-07-24 → 2025-07-25 (+1d) | 2025-08-16 → 2025-08-18 (+2d) |  |  |
| 1.3.1.3.4.13.2 | **Wall Finishing works - Civil** | 2025-06-03 → 2025-06-04 (+1d) | 2025-08-14 → 2025-08-16 (+2d) |  |  |
| PG-12339 | Balcony Railing Fixing works | 2025-06-03 → 2025-06-04 (+1d) | 2025-06-07 → 2025-06-09 (+2d) |  |  |
| PG-12341 | Dadoing - Wet area | 2025-06-24 → 2025-06-25 (+1d) | 2025-06-30 → 2025-07-01 (+1d) |  |  |
| PG-12340 | UPVC Windows & Sliding doors | 2025-07-11 → 2025-07-12 (+1d) | 2025-07-17 → 2025-07-18 (+1d) |  |  |
| PG-12342 | Painting Works - Putty, Primer and 1st | 2025-07-17 → 2025-07-18 (+1d) | 2025-07-24 → 2025-07-25 (+1d) |  |  |
| PG-12343 | Final Coat Painting | 2025-07-24 → 2025-07-25 (+1d) | 2025-08-14 → 2025-08-16 (+2d) |  |  |
| 1.3.1.3.4.13.3 | **Floor Finishing Works - Civil** | 2025-06-03 → 2025-06-04 (+1d) | 2025-07-24 → 2025-07-25 (+1d) |  |  |
| PG-12344 | Waterproofing for sunken areas | 2025-06-03 → 2025-06-04 (+1d) | 2025-06-06 → 2025-06-07 (+1d) |  |  |
| PG-12345 | Floor Tiling - Wet area | 2025-06-30 → 2025-07-01 (+1d) | 2025-07-05 → 2025-07-07 (+2d) |  |  |
| PG-12346 | Floor Tiling - Dry area | 2025-07-05 → 2025-07-07 (+2d) | 2025-07-11 → 2025-07-12 (+1d) |  |  |
| PG-12347 | Wooden doors | 2025-07-18 → 2025-07-19 (+1d) | 2025-07-24 → 2025-07-25 (+1d) |  |  |
| 1.3.1.3.4.14 | **Floor 11** | 2025-06-16 → 2025-06-17 (+1d) | 2025-08-29 → 2025-08-30 (+1d) |  |  |
| 1.3.1.3.4.14.1 | **Ceiling Finishing works - Civil** | 2025-06-25 → 2025-06-26 (+1d) | 2025-08-29 → 2025-08-30 (+1d) |  |  |
| PG-12348 | Gypsum Plastering | 2025-06-25 → 2025-06-26 (+1d) | 2025-07-02 → 2025-07-03 (+1d) |  |  |
| PG-12349 | Cornice fixing | 2025-07-11 → 2025-07-12 (+1d) | 2025-07-16 → 2025-07-17 (+1d) |  |  |
| PG-12351 | Toilet False ceiling | 2025-07-19 → 2025-07-21 (+2d) | 2025-07-24 → 2025-07-25 (+1d) |  |  |
| PG-12350 | Painting Works - Putty, Primer and 1st | 2025-07-30 → 2025-07-31 (+1d) | 2025-08-06 → 2025-08-07 (+1d) |  |  |
| PG-12352 | Final Coat Painting | 2025-08-06 → 2025-08-07 (+1d) | 2025-08-29 → 2025-08-30 (+1d) |  |  |
| 1.3.1.3.4.14.2 | **Wall Finishing works - Civil** | 2025-06-16 → 2025-06-17 (+1d) | 2025-08-28 → 2025-08-29 (+1d) |  |  |
| PG-12353 | Balcony Railing Fixing works | 2025-06-16 → 2025-06-17 (+1d) | 2025-06-20 → 2025-06-21 (+1d) |  |  |
| PG-12355 | Dadoing - Wet area | 2025-07-07 → 2025-07-08 (+1d) | 2025-07-12 → 2025-07-14 (+2d) |  |  |
| PG-12354 | UPVC Windows & Sliding doors | 2025-07-24 → 2025-07-25 (+1d) | 2025-07-30 → 2025-07-31 (+1d) |  |  |
| PG-12356 | Painting Works - Putty, Primer and 1st | 2025-07-30 → 2025-07-31 (+1d) | 2025-08-06 → 2025-08-07 (+1d) |  |  |
| PG-12357 | Final Coat Painting | 2025-08-06 → 2025-08-07 (+1d) | 2025-08-28 → 2025-08-29 (+1d) |  |  |
| 1.3.1.3.4.14.3 | **Floor Finishing Works - Civil** | 2025-06-16 → 2025-06-17 (+1d) | 2025-08-06 → 2025-08-07 (+1d) |  |  |
| PG-12358 | Waterproofing for sunken areas | 2025-06-16 → 2025-06-17 (+1d) | 2025-06-19 → 2025-06-20 (+1d) |  |  |
| PG-12359 | Floor Tiling - Wet area | 2025-07-12 → 2025-07-14 (+2d) | 2025-07-18 → 2025-07-19 (+1d) |  |  |
| PG-12360 | Floor Tiling - Dry area | 2025-07-18 → 2025-07-19 (+1d) | 2025-07-24 → 2025-07-25 (+1d) |  |  |
| PG-12361 | Wooden doors | 2025-07-31 → 2025-08-01 (+1d) | 2025-08-06 → 2025-08-07 (+1d) |  |  |
| 1.3.1.3.4.15 | **Floor 12** | 2025-06-28 → 2025-06-30 (+2d) | 2025-09-13 → 2025-09-15 (+2d) |  |  |
| 1.3.1.3.4.15.1 | **Ceiling Finishing works - Civil** | 2025-07-07 → 2025-07-08 (+1d) | 2025-09-13 → 2025-09-15 (+2d) |  |  |
| PG-12362 | Gypsum Plastering | 2025-07-07 → 2025-07-08 (+1d) | 2025-07-14 → 2025-07-15 (+1d) |  |  |
| PG-12363 | Cornice fixing | 2025-07-23 → 2025-07-24 (+1d) | 2025-07-28 → 2025-07-29 (+1d) |  |  |
| PG-12365 | Toilet False ceiling | 2025-08-01 → 2025-08-02 (+1d) | 2025-08-06 → 2025-08-07 (+1d) |  |  |
| PG-12364 | Painting Works - Putty, Primer and 1st | 2025-08-12 → 2025-08-13 (+1d) | 2025-08-20 → 2025-08-21 (+1d) |  |  |
| PG-12366 | Final Coat Painting | 2025-08-20 → 2025-08-21 (+1d) | 2025-09-13 → 2025-09-15 (+2d) |  |  |
| 1.3.1.3.4.15.2 | **Wall Finishing works - Civil** | 2025-06-28 → 2025-06-30 (+2d) | 2025-09-13 → 2025-09-15 (+2d) |  |  |
| PG-12367 | Balcony Railing Fixing works | 2025-06-28 → 2025-06-30 (+2d) | 2025-07-03 → 2025-07-04 (+1d) |  |  |
| PG-12369 | Dadoing - Wet area | 2025-07-19 → 2025-07-21 (+2d) | 2025-07-25 → 2025-07-26 (+1d) |  |  |
| PG-12368 | UPVC Windows & Sliding doors | 2025-08-06 → 2025-08-07 (+1d) | 2025-08-12 → 2025-08-13 (+1d) |  |  |
| PG-12370 | Painting Works - Putty, Primer and 1st | 2025-08-12 → 2025-08-13 (+1d) | 2025-08-20 → 2025-08-21 (+1d) |  |  |
| PG-12371 | Final Coat Painting | 2025-08-20 → 2025-08-21 (+1d) | 2025-09-13 → 2025-09-15 (+2d) |  |  |

| ID | Task | Start | Finish |
| --- | --- | --- | --- |
| 1.3.1.3.4.15.3 | **Floor Finishing Works - Civil** | 2025-06-28 → 2025-06-30 (+2d) | 2025-08-20 → 2025-08-21 (+1d) |
| PG-12372 | Waterproofing for sunken areas | 2025-06-28 → 2025-06-30 (+2d) | 2025-07-02 → 2025-07-03 (+1d) |
| PG-12373 | Floor Tiling - Wet area | 2025-07-25 → 2025-07-26 (+1d) | 2025-07-31 → 2025-08-01 (+1d) |
| PG-12374 | Floor Tiling - Dry area | 2025-07-31 → 2025-08-01 (+1d) | 2025-08-06 → 2025-08-07 (+1d) |
| PG-12375 | Wooden doors | 2025-08-13 → 2025-08-14 (+1d) | 2025-08-20 → 2025-08-21 (+1d) |
| 1.3.1.3.4.16 | **Floor 13** | 2025-07-11 → 2025-07-12 (+1d) | 2025-09-26 → 2025-09-27 (+1d) |
| 1.3.1.3.4.16.1 | **Ceiling Finishing works - Civil** | 2025-07-19 → 2025-07-21 (+2d) | 2025-09-26 → 2025-09-27 (+1d) |
| PG-12376 | Gypsum Plastering | 2025-07-19 → 2025-07-21 (+2d) | 2025-07-26 → 2025-07-28 (+2d) |
| PG-12377 | Cornice fixing | 2025-08-05 → 2025-08-06 (+1d) | 2025-08-09 → 2025-08-11 (+2d) |
| PG-12379 | Toilet False ceiling | 2025-08-14 → 2025-08-16 (+2d) | 2025-08-20 → 2025-08-21 (+1d) |
| PG-12378 | Painting Works - Putty, Primer and 1st | 2025-08-26 → 2025-08-27 (+1d) | 2025-09-02 → 2025-09-03 (+1d) |
| PG-12380 | Final Coat Painting | 2025-09-02 → 2025-09-03 (+1d) | 2025-09-26 → 2025-09-27 (+1d) |
| 1.3.1.3.4.16.2 | **Wall Finishing works - Civil** | 2025-07-11 → 2025-07-12 (+1d) | 2025-09-26 → 2025-09-27 (+1d) |
| PG-12381 | Balcony Railing Fixing works | 2025-07-11 → 2025-07-12 (+1d) | 2025-07-16 → 2025-07-17 (+1d) |
| PG-12383 | Dadoing - Wet area | 2025-08-01 → 2025-08-02 (+1d) | 2025-08-07 → 2025-08-08 (+1d) |
| PG-12382 | UPVC Windows & Sliding doors | 2025-08-20 → 2025-08-21 (+1d) | 2025-08-26 → 2025-08-27 (+1d) |
| PG-12384 | Painting Works - Putty, Primer and 1st | 2025-08-26 → 2025-08-27 (+1d) | 2025-09-02 → 2025-09-03 (+1d) |
| PG-12385 | Final Coat Painting | 2025-09-02 → 2025-09-03 (+1d) | 2025-09-26 → 2025-09-27 (+1d) |
| 1.3.1.3.4.16.3 | **Floor Finishing Works - Civil** | 2025-07-11 → 2025-07-12 (+1d) | 2025-09-02 → 2025-09-03 (+1d) |
| PG-12386 | Waterproofing for sunken areas | 2025-07-11 → 2025-07-12 (+1d) | 2025-07-15 → 2025-07-16 (+1d) |
| PG-12387 | Floor Tiling - Wet area | 2025-08-07 → 2025-08-08 (+1d) | 2025-08-13 → 2025-08-14 (+1d) |
| PG-12388 | Floor Tiling - Dry area | 2025-08-13 → 2025-08-14 (+1d) | 2025-08-20 → 2025-08-21 (+1d) |
| PG-12389 | Wooden doors | 2025-08-27 → 2025-08-28 (+1d) | 2025-09-02 → 2025-09-03 (+1d) |
| 1.3.1.3.4.17 | **Floor 14** | 2025-07-24 → 2025-07-25 (+1d) | 2025-10-08 → 2025-10-09 (+1d) |
| 1.3.1.3.4.17.1 | **Ceiling Finishing works - Civil** | 2025-08-01 → 2025-08-02 (+1d) | 2025-10-08 → 2025-10-09 (+1d) |
| PG-12390 | Gypsum Plastering | 2025-08-01 → 2025-08-02 (+1d) | 2025-08-08 → 2025-08-09 (+1d) |
| PG-12391 | Cornice fixing | 2025-08-19 → 2025-08-20 (+1d) | 2025-08-23 → 2025-08-25 (+2d) |
| PG-12393 | Toilet False ceiling | 2025-08-28 → 2025-08-29 (+1d) | 2025-09-02 → 2025-09-03 (+1d) |
| PG-12392 | Painting Works - Putty, Primer and 1st | 2025-09-08 → 2025-09-09 (+1d) | 2025-09-15 → 2025-09-16 (+1d) |
| PG-12394 | Final Coat Painting | 2025-09-15 → 2025-09-16 (+1d) | 2025-10-08 → 2025-10-09 (+1d) |
| 1.3.1.3.4.17.2 | **Wall Finishing works - Civil** | 2025-07-24 → 2025-07-25 (+1d) | 2025-10-08 → 2025-10-09 (+1d) |
| PG-12395 | Balcony Railing Fixing works | 2025-07-24 → 2025-07-25 (+1d) | 2025-07-29 → 2025-07-30 (+1d) |
| PG-12397 | Dadoing - Wet area | 2025-08-14 → 2025-08-16 (+2d) | 2025-08-21 → 2025-08-22 (+1d) |
| PG-12396 | UPVC Windows & Sliding doors | 2025-09-02 → 2025-09-03 (+1d) | 2025-09-08 → 2025-09-09 (+1d) |
| PG-12398 | Painting Works - Putty, Primer and 1st | 2025-09-08 → 2025-09-09 (+1d) | 2025-09-15 → 2025-09-16 (+1d) |
| PG-12399 | Final Coat Painting | 2025-09-15 → 2025-09-16 (+1d) | 2025-10-08 → 2025-10-09 (+1d) |
| 1.3.1.3.4.17.3 | **Floor Finishing Works - Civil** | 2025-07-24 → 2025-07-25 (+1d) | 2025-09-15 → 2025-09-16 (+1d) |
| PG-12400 | Waterproofing for sunken areas | 2025-07-24 → 2025-07-25 (+1d) | 2025-07-28 → 2025-07-29 (+1d) |
| PG-12401 | Floor Tiling - Wet area | 2025-08-21 → 2025-08-22 (+1d) | 2025-08-27 → 2025-08-28 (+1d) |
| PG-12402 | Floor Tiling - Dry area | 2025-08-27 → 2025-08-28 (+1d) | 2025-09-02 → 2025-09-03 (+1d) |
| PG-12403 | Wooden doors | 2025-09-09 → 2025-09-10 (+1d) | 2025-09-15 → 2025-09-16 (+1d) |
| 1.3.1.3.4.18 | **Floor 15** | 2025-08-06 → 2025-08-07 (+1d) |  |
| 1.3.1.3.4.18.1 | **Ceiling Finishing works - Civil** | 2025-08-14 → 2025-08-16 (+2d) |  |
| PG-12404 | Gypsum Plastering | 2025-08-14 → 2025-08-16 (+2d) | 2025-08-22 → 2025-08-23 (+1d) |
| PG-12405 | Cornice fixing | 2025-09-01 → 2025-09-02 (+1d) | 2025-09-05 → 2025-09-06 (+1d) |
| 1.3.1.3.4.18.2 | **Wall Finishing works - Civil** | 2025-08-06 → 2025-08-07 (+1d) |  |
| PG-12409 | Balcony Railing Fixing works | 2025-08-06 → 2025-08-07 (+1d) | 2025-08-11 → 2025-08-12 (+1d) |
| 1.3.1.3.4.18.3 | **Floor Finishing Works - Civil** | 2025-08-06 → 2025-08-07 (+1d) |  |
| PG-12414 | Waterproofing for sunken areas | 2025-08-06 → 2025-08-07 (+1d) | 2025-08-09 → 2025-08-11 (+2d) |
| 1.3.1.3.4.19 | **Floor 16** | 2025-08-20 → 2025-08-21 (+1d) | 2025-11-04 → 2025-11-05 (+1d) |
| 1.3.1.3.4.19.1 | **Ceiling Finishing works - Civil** | 2025-08-28 → 2025-08-29 (+1d) | 2025-11-04 → 2025-11-05 (+1d) |
| PG-12418 | Gypsum Plastering | 2025-08-28 → 2025-08-29 (+1d) | 2025-09-04 → 2025-09-05 (+1d) |
| PG-12419 | Cornice fixing | 2025-09-13 → 2025-09-15 (+2d) | 2025-09-18 → 2025-09-19 (+1d) |
| PG-12421 | Toilet False ceiling | 2025-09-23 → 2025-09-24 (+1d) | 2025-09-27 → 2025-09-29 (+2d) |
| PG-12420 | Painting Works - Putty, Primer and 1st | 2025-10-04 → 2025-10-06 (+2d) | 2025-10-11 → 2025-10-13 (+2d) |
| PG-12422 | Final Coat Painting | 2025-10-11 → 2025-10-13 (+2d) | 2025-11-04 → 2025-11-05 (+1d) |
| 1.3.1.3.4.19.2 | **Wall Finishing works - Civil** | 2025-08-20 → 2025-08-21 (+1d) | 2025-11-04 → 2025-11-05 (+1d) |
| PG-12423 | Balcony Railing Fixing works | 2025-08-20 → 2025-08-21 (+1d) | 2025-08-25 → 2025-08-26 (+1d) |
| PG-12425 | Dadoing - Wet area | 2025-09-10 → 2025-09-11 (+1d) | 2025-09-16 → 2025-09-17 (+1d) |
| PG-12424 | UPVC Windows & Sliding doors | 2025-09-27 → 2025-09-29 (+2d) | 2025-10-04 → 2025-10-06 (+2d) |
| PG-12426 | Painting Works - Putty, Primer and 1st | 2025-10-04 → 2025-10-06 (+2d) | 2025-10-11 → 2025-10-13 (+2d) |
| PG-12427 | Final Coat Painting | 2025-10-11 → 2025-10-13 (+2d) | 2025-11-04 → 2025-11-05 (+1d) |
| 1.3.1.3.4.19.3 | **Floor Finishing Works - Civil** | 2025-08-20 → 2025-08-21 (+1d) | 2025-10-11 → 2025-10-13 (+2d) |
| PG-12428 | Waterproofing for sunken areas | 2025-08-20 → 2025-08-21 (+1d) | 2025-08-23 → 2025-08-25 (+2d) |
| PG-12429 | Floor Tiling - Wet area | 2025-09-16 → 2025-09-17 (+1d) | 2025-09-22 → 2025-09-23 (+1d) |
| PG-12430 | Floor Tiling - Dry area | 2025-09-22 → 2025-09-23 (+1d) | 2025-09-27 → 2025-09-29 (+2d) |
| PG-12431 | Wooden doors | 2025-10-06 → 2025-10-07 (+1d) | 2025-10-11 → 2025-10-13 (+2d) |
| 1.3.1.3.4.20 | **Floor 17** | 2025-09-02 → 2025-09-03 (+1d) | 2025-11-15 → 2025-11-17 (+2d) |
| 1.3.1.3.4.20.1 | **Ceiling Finishing works - Civil** | 2025-09-10 → 2025-09-11 (+1d) | 2025-11-15 → 2025-11-17 (+2d) |
| PG-12432 | Gypsum Plastering | 2025-09-10 → 2025-09-11 (+1d) | 2025-09-17 → 2025-09-18 (+1d) |

| ID | Task | Start | Finish |
| --- | --- | --- | --- |
| PG-12433 | Cornice fixing | 2025-09-26 → 2025-09-27 (+1d) | 2025-10-01 → 2025-10-03 (+2d) |
| PG-12435 | Toilet False ceiling | 2025-10-07 → 2025-10-08 (+1d) | 2025-10-11 → 2025-10-13 (+2d) |
| PG-12434 | Painting Works - Putty, Primer and 1st | 2025-10-17 → 2025-10-18 (+1d) | 2025-10-24 → 2025-10-25 (+1d) |
| PG-12436 | Final Coat Painting | 2025-10-24 → 2025-10-25 (+1d) | 2025-11-15 → 2025-11-17 (+2d) |
| 1.3.1.3.4.20.2 | **Wall Finishing works - Civil** | 2025-09-02 → 2025-09-03 (+1d) | 2025-11-15 → 2025-11-17 (+2d) |
| PG-12437 | Balcony Railing Fixing works | 2025-09-02 → 2025-09-03 (+1d) | 2025-09-06 → 2025-09-08 (+2d) |
| PG-12439 | Dadoing - Wet area | 2025-09-23 → 2025-09-24 (+1d) | 2025-09-29 → 2025-09-30 (+1d) |
| PG-12438 | UPVC Windows & Sliding doors | 2025-10-11 → 2025-10-13 (+2d) | 2025-10-17 → 2025-10-18 (+1d) |
| PG-12440 | Painting Works - Putty, Primer and 1st | 2025-10-17 → 2025-10-18 (+1d) | 2025-10-24 → 2025-10-25 (+1d) |
| PG-12441 | Final Coat Painting | 2025-10-24 → 2025-10-25 (+1d) | 2025-11-15 → 2025-11-17 (+2d) |
| 1.3.1.3.4.20.3 | **Floor Finishing Works - Civil** | 2025-09-02 → 2025-09-03 (+1d) | 2025-10-24 → 2025-10-25 (+1d) |
| PG-12442 | Waterproofing for sunken areas | 2025-09-02 → 2025-09-03 (+1d) | 2025-09-05 → 2025-09-06 (+1d) |
| PG-12443 | Floor Tiling - Wet area | 2025-09-29 → 2025-09-30 (+1d) | 2025-10-06 → 2025-10-07 (+1d) |
| PG-12444 | Floor Tiling - Dry area | 2025-10-06 → 2025-10-07 (+1d) | 2025-10-11 → 2025-10-13 (+2d) |
| PG-12445 | Wooden doors | 2025-10-18 → 2025-10-20 (+2d) | 2025-10-24 → 2025-10-25 (+1d) |
| 1.3.1.3.4.21 | **Floor 18** | 2025-09-15 → 2025-09-16 (+1d) | 2025-11-28 → 2025-11-29 (+1d) |
| 1.3.1.3.4.21.1 | **Ceiling Finishing works - Civil** | 2025-09-23 → 2025-09-24 (+1d) | 2025-11-28 → 2025-11-29 (+1d) |
| PG-12446 | Gypsum Plastering | 2025-09-23 → 2025-09-24 (+1d) | 2025-09-30 → 2025-10-01 (+1d) |
| PG-12447 | Cornice fixing | 2025-10-10 → 2025-10-11 (+1d) | 2025-10-15 → 2025-10-16 (+1d) |
| PG-12449 | Toilet False ceiling | 2025-10-20 → 2025-10-21 (+1d) | 2025-10-24 → 2025-10-25 (+1d) |
| PG-12448 | Painting Works - Putty, Primer and 1st | 2025-10-30 → 2025-10-31 (+1d) | 2025-11-07 → 2025-11-08 (+1d) |
| PG-12450 | Final Coat Painting | 2025-11-07 → 2025-11-08 (+1d) | 2025-11-28 → 2025-11-29 (+1d) |
| 1.3.1.3.4.21.2 | **Wall Finishing works - Civil** | 2025-09-15 → 2025-09-16 (+1d) | 2025-11-28 → 2025-11-29 (+1d) |
| PG-12451 | Balcony Railing Fixing works | 2025-09-15 → 2025-09-16 (+1d) | 2025-09-19 → 2025-09-20 (+1d) |
| PG-12453 | Dadoing - Wet area | 2025-10-07 → 2025-10-08 (+1d) | 2025-10-13 → 2025-10-14 (+1d) |
| PG-12452 | UPVC Windows & Sliding doors | 2025-10-24 → 2025-10-25 (+1d) | 2025-10-30 → 2025-10-31 (+1d) |
| PG-12454 | Painting Works - Putty, Primer and 1st | 2025-10-30 → 2025-10-31 (+1d) | 2025-11-07 → 2025-11-08 (+1d) |
| PG-12455 | Final Coat Painting | 2025-11-07 → 2025-11-08 (+1d) | 2025-11-28 → 2025-11-29 (+1d) |
| 1.3.1.3.4.21.3 | **Floor Finishing Works - Civil** | 2025-09-15 → 2025-09-16 (+1d) | 2025-11-07 → 2025-11-08 (+1d) |
| PG-12456 | Waterproofing for sunken areas | 2025-09-15 → 2025-09-16 (+1d) | 2025-09-18 → 2025-09-19 (+1d) |
| PG-12457 | Floor Tiling - Wet area | 2025-10-13 → 2025-10-14 (+1d) | 2025-10-18 → 2025-10-20 (+2d) |
| PG-12458 | Floor Tiling - Dry area | 2025-10-18 → 2025-10-20 (+2d) | 2025-10-24 → 2025-10-25 (+1d) |
| PG-12459 | Wooden doors | 2025-10-31 → 2025-11-03 (+3d) | 2025-11-07 → 2025-11-08 (+1d) |
| 1.3.1.3.4.22 | **Floor 19** | 2025-09-27 → 2025-09-29 (+2d) | 2025-12-11 → 2025-12-12 (+1d) |
| 1.3.1.3.4.22.1 | **Ceiling Finishing works - Civil** | 2025-10-07 → 2025-10-08 (+1d) | 2025-12-11 → 2025-12-12 (+1d) |
| PG-12460 | Gypsum Plastering | 2025-10-07 → 2025-10-08 (+1d) | 2025-10-14 → 2025-10-15 (+1d) |
| PG-12461 | Cornice fixing | 2025-10-23 → 2025-10-24 (+1d) | 2025-10-28 → 2025-10-29 (+1d) |
| PG-12463 | Toilet False ceiling | 2025-11-03 → 2025-11-04 (+1d) | 2025-11-07 → 2025-11-08 (+1d) |
| PG-12462 | Painting Works - Putty, Primer and 1st | 2025-11-13 → 2025-11-14 (+1d) | 2025-11-20 → 2025-11-21 (+1d) |
| PG-12464 | Final Coat Painting | 2025-11-20 → 2025-11-21 (+1d) | 2025-12-11 → 2025-12-12 (+1d) |
| 1.3.1.3.4.22.2 | **Wall Finishing works - Civil** | 2025-09-27 → 2025-09-29 (+2d) | 2025-12-11 → 2025-12-12 (+1d) |
| PG-12465 | Balcony Railing Fixing works | 2025-09-27 → 2025-09-29 (+2d) | 2025-10-03 → 2025-10-04 (+1d) |
| PG-12467 | Dadoing - Wet area | 2025-10-20 → 2025-10-21 (+1d) | 2025-10-25 → 2025-10-27 (+2d) |
| PG-12466 | UPVC Windows & Sliding doors | 2025-11-07 → 2025-11-08 (+1d) | 2025-11-13 → 2025-11-14 (+1d) |
| PG-12468 | Painting Works - Putty, Primer and 1st | 2025-11-13 → 2025-11-14 (+1d) | 2025-11-20 → 2025-11-21 (+1d) |
| PG-12469 | Final Coat Painting | 2025-11-20 → 2025-11-21 (+1d) | 2025-12-11 → 2025-12-12 (+1d) |
| 1.3.1.3.4.22.3 | **Floor Finishing Works - Civil** | 2025-09-27 → 2025-09-29 (+2d) | 2025-11-20 → 2025-11-21 (+1d) |
| PG-12470 | Waterproofing for sunken areas | 2025-09-27 → 2025-09-29 (+2d) | 2025-10-01 → 2025-10-03 (+2d) |
| PG-12471 | Floor Tiling - Wet area | 2025-10-25 → 2025-10-27 (+2d) | 2025-10-31 → 2025-11-03 (+3d) |
| PG-12472 | Floor Tiling - Dry area | 2025-10-31 → 2025-11-03 (+3d) | 2025-11-07 → 2025-11-08 (+1d) |
| PG-12473 | Wooden doors | 2025-11-14 → 2025-11-15 (+1d) | 2025-11-20 → 2025-11-21 (+1d) |
| 1.3.1.3.4.23 | **Floor 20** | 2025-10-11 → 2025-10-13 (+2d) | 2025-12-25 → 2025-12-26 (+1d) |
| 1.3.1.3.4.23.1 | **Ceiling Finishing works - Civil** | 2025-10-21 → 2025-10-22 (+1d) | 2025-12-25 → 2025-12-26 (+1d) |
| PG-12474 | Gypsum Plastering | 2025-10-21 → 2025-10-22 (+1d) | 2025-10-28 → 2025-10-29 (+1d) |
| PG-12475 | Cornice fixing | 2025-11-07 → 2025-11-08 (+1d) | 2025-11-12 → 2025-11-13 (+1d) |
| PG-12477 | Toilet False ceiling | 2025-11-15 → 2025-11-17 (+2d) | 2025-11-20 → 2025-11-21 (+1d) |
| PG-12476 | Painting Works - Putty, Primer and 1st | 2025-11-26 → 2025-11-27 (+1d) | 2025-12-03 → 2025-12-04 (+1d) |
| PG-12478 | Final Coat Painting | 2025-12-03 → 2025-12-04 (+1d) | 2025-12-25 → 2025-12-26 (+1d) |
| 1.3.1.3.4.23.2 | **Wall Finishing works - Civil** | 2025-10-11 → 2025-10-13 (+2d) | 2025-12-25 → 2025-12-26 (+1d) |
| PG-12479 | Balcony Railing Fixing works | 2025-10-11 → 2025-10-13 (+2d) | 2025-10-16 → 2025-10-17 (+1d) |
| PG-12481 | Dadoing - Wet area | 2025-11-03 → 2025-11-04 (+1d) | 2025-11-08 → 2025-11-10 (+2d) |
| PG-12480 | UPVC Windows & Sliding doors | 2025-11-20 → 2025-11-21 (+1d) | 2025-11-26 → 2025-11-27 (+1d) |
| PG-12482 | Painting Works - Putty, Primer and 1st | 2025-11-26 → 2025-11-27 (+1d) | 2025-12-03 → 2025-12-04 (+1d) |
| PG-12483 | Final Coat Painting | 2025-12-03 → 2025-12-04 (+1d) | 2025-12-25 → 2025-12-26 (+1d) |
| 1.3.1.3.4.23.3 | **Floor Finishing Works - Civil** | 2025-10-11 → 2025-10-13 (+2d) | 2025-12-03 → 2025-12-04 (+1d) |
| PG-12484 | Waterproofing for sunken areas | 2025-10-11 → 2025-10-13 (+2d) | 2025-10-15 → 2025-10-16 (+1d) |
| PG-12485 | Floor Tiling - Wet area | 2025-11-08 → 2025-11-10 (+2d) | 2025-11-14 → 2025-11-15 (+1d) |
| PG-12486 | Floor Tiling - Dry area | 2025-11-14 → 2025-11-15 (+1d) | 2025-11-20 → 2025-11-21 (+1d) |
| PG-12487 | Wooden doors | 2025-11-27 → 2025-11-28 (+1d) | 2025-12-03 → 2025-12-04 (+1d) |
| 1.3.1.3.4.24 | **Floor 21** | 2025-10-24 → 2025-10-25 (+1d) | 2026-01-07 → 2026-01-08 (+1d) |

| ID | Task | Start | Finish |
| --- | --- | --- | --- |
| 1.3.1.3.4.24.1 | **Ceiling Finishing works - Civil** | 2025-11-04 → 2025-11-05 (+1d) | 2026-01-07 → 2026-01-08 (+1d) |
| PG-12488 | Gypsum Plastering | 2025-11-04 → 2025-11-05 (+1d) | 2025-11-11 → 2025-11-12 (+1d) |
| PG-12489 | Cornice fixing | 2025-11-20 → 2025-11-21 (+1d) | 2025-11-25 → 2025-11-26 (+1d) |
| PG-12491 | Toilet False ceiling | 2025-11-27 → 2025-11-28 (+1d) | 2025-12-02 → 2025-12-03 (+1d) |
| PG-12490 | Painting Works - Putty, Primer and 1st | 2025-12-08 → 2025-12-09 (+1d) | 2025-12-15 → 2025-12-16 (+1d) |
| PG-12492 | Final Coat Painting | 2025-12-15 → 2025-12-16 (+1d) | 2026-01-07 → 2026-01-08 (+1d) |
| 1.3.1.3.4.24.2 | **Wall Finishing works - Civil** | 2025-10-24 → 2025-10-25 (+1d) | 2026-01-07 → 2026-01-08 (+1d) |
| PG-12493 | Balcony Railing Fixing works | 2025-10-24 → 2025-10-25 (+1d) | 2025-10-29 → 2025-10-30 (+1d) |
| PG-12495 | Dadoing - Wet area | 2025-11-14 → 2025-11-15 (+1d) | 2025-11-20 → 2025-11-21 (+1d) |
| PG-12494 | UPVC Windows & Sliding doors | 2025-12-02 → 2025-12-03 (+1d) | 2025-12-08 → 2025-12-09 (+1d) |
| PG-12496 | Painting Works - Putty, Primer and 1st | 2025-12-08 → 2025-12-09 (+1d) | 2025-12-15 → 2025-12-16 (+1d) |
| PG-12497 | Final Coat Painting | 2025-12-15 → 2025-12-16 (+1d) | 2026-01-07 → 2026-01-08 (+1d) |
| 1.3.1.3.4.24.3 | **Floor Finishing Works - Civil** | 2025-10-24 → 2025-10-25 (+1d) | 2025-12-15 → 2025-12-16 (+1d) |
| PG-12498 | Waterproofing for sunken areas | 2025-10-24 → 2025-10-25 (+1d) | 2025-10-28 → 2025-10-29 (+1d) |
| PG-12499 | Floor Tiling - Wet area | 2025-11-20 → 2025-11-21 (+1d) | 2025-11-26 → 2025-11-27 (+1d) |
| PG-12500 | Floor Tiling - Dry area | 2025-11-26 → 2025-11-27 (+1d) | 2025-12-02 → 2025-12-03 (+1d) |
| PG-12501 | Wooden doors | 2025-12-09 → 2025-12-10 (+1d) | 2025-12-15 → 2025-12-16 (+1d) |
| 1.3.1.3.4.25 | **Floor 22** | 2025-11-07 → 2025-11-08 (+1d) | 2026-01-20 → 2026-01-21 (+1d) |
| 1.3.1.3.4.25.1 | **Ceiling Finishing works - Civil** | 2025-11-17 → 2025-11-18 (+1d) | 2026-01-20 → 2026-01-21 (+1d) |
| PG-12502 | Gypsum Plastering | 2025-11-17 → 2025-11-18 (+1d) | 2025-11-24 → 2025-11-25 (+1d) |
| PG-12503 | Cornice fixing | 2025-12-03 → 2025-12-04 (+1d) | 2025-12-08 → 2025-12-09 (+1d) |
| PG-12505 | Toilet False ceiling | 2025-12-10 → 2025-12-11 (+1d) | 2025-12-15 → 2025-12-16 (+1d) |
| PG-12504 | Painting Works - Putty, Primer and 1st | 2025-12-20 → 2025-12-22 (+2d) | 2025-12-27 → 2025-12-29 (+2d) |
| PG-12506 | Final Coat Painting | 2025-12-27 → 2025-12-29 (+2d) | 2026-01-20 → 2026-01-21 (+1d) |
| 1.3.1.3.4.25.2 | **Wall Finishing works - Civil** | 2025-11-07 → 2025-11-08 (+1d) | 2026-01-20 → 2026-01-21 (+1d) |
| PG-12507 | Balcony Railing Fixing works | 2025-11-07 → 2025-11-08 (+1d) | 2025-11-12 → 2025-11-13 (+1d) |
| PG-12509 | Dadoing - Wet area | 2025-11-27 → 2025-11-28 (+1d) | 2025-12-03 → 2025-12-04 (+1d) |
| PG-12508 | UPVC Windows & Sliding doors | 2025-12-15 → 2025-12-16 (+1d) | 2025-12-20 → 2025-12-22 (+2d) |
| PG-12510 | Painting Works - Putty, Primer and 1st | 2025-12-20 → 2025-12-22 (+2d) | 2025-12-27 → 2025-12-29 (+2d) |
| PG-12511 | Final Coat Painting | 2025-12-27 → 2025-12-29 (+2d) | 2026-01-20 → 2026-01-21 (+1d) |
| 1.3.1.3.4.25.3 | **Floor Finishing Works - Civil** | 2025-11-07 → 2025-11-08 (+1d) | 2025-12-27 → 2025-12-29 (+2d) |
| PG-12512 | Waterproofing for sunken areas | 2025-11-07 → 2025-11-08 (+1d) | 2025-11-11 → 2025-11-12 (+1d) |
| PG-12513 | Floor Tiling - Wet area | 2025-12-03 → 2025-12-04 (+1d) | 2025-12-09 → 2025-12-10 (+1d) |
| PG-12514 | Floor Tiling - Dry area | 2025-12-09 → 2025-12-10 (+1d) | 2025-12-15 → 2025-12-16 (+1d) |
| PG-12515 | Wooden doors | 2025-12-22 → 2025-12-23 (+1d) | 2025-12-27 → 2025-12-29 (+2d) |
| 1.3.1.3.4.26 | **Floor 23** | 2025-11-20 → 2025-11-21 (+1d) | 2026-02-03 → 2026-02-04 (+1d) |
| 1.3.1.3.4.26.1 | **Ceiling Finishing works - Civil** | 2025-11-27 → 2025-11-28 (+1d) | 2026-02-03 → 2026-02-04 (+1d) |
| PG-12516 | Gypsum Plastering | 2025-11-27 → 2025-11-28 (+1d) | 2025-12-04 → 2025-12-05 (+1d) |
| PG-12517 | Cornice fixing | 2025-12-13 → 2025-12-15 (+2d) | 2025-12-18 → 2025-12-19 (+1d) |
| PG-12519 | Toilet False ceiling | 2025-12-22 → 2025-12-23 (+1d) | 2025-12-26 → 2025-12-27 (+1d) |
| PG-12518 | Painting Works - Putty, Primer and 1st | 2026-01-01 → 2026-01-02 (+1d) | 2026-01-08 → 2026-01-09 (+1d) |
| PG-12520 | Final Coat Painting | 2026-01-08 → 2026-01-09 (+1d) | 2026-02-03 → 2026-02-04 (+1d) |
| 1.3.1.3.4.26.2 | **Wall Finishing works - Civil** | 2025-11-20 → 2025-11-21 (+1d) | 2026-02-03 → 2026-02-04 (+1d) |
| PG-12521 | Balcony Railing Fixing works | 2025-11-20 → 2025-11-21 (+1d) | 2025-11-25 → 2025-11-26 (+1d) |
| PG-12523 | Dadoing - Wet area | 2025-12-09 → 2025-12-10 (+1d) | 2025-12-15 → 2025-12-16 (+1d) |
| PG-12522 | UPVC Windows & Sliding doors | 2025-12-26 → 2025-12-27 (+1d) | 2026-01-01 → 2026-01-02 (+1d) |
| PG-12524 | Painting Works - Putty, Primer and 1st | 2026-01-01 → 2026-01-02 (+1d) | 2026-01-08 → 2026-01-09 (+1d) |
| PG-12525 | Final Coat Painting | 2026-01-08 → 2026-01-09 (+1d) | 2026-02-03 → 2026-02-04 (+1d) |
| 1.3.1.3.4.26.3 | **Floor Finishing Works - Civil** | 2025-11-20 → 2025-11-21 (+1d) | 2026-01-08 → 2026-01-09 (+1d) |
| PG-12526 | Waterproofing for sunken areas | 2025-11-20 → 2025-11-21 (+1d) | 2025-11-24 → 2025-11-25 (+1d) |
| PG-12527 | Floor Tiling - Wet area | 2025-12-15 → 2025-12-16 (+1d) | 2025-12-20 → 2025-12-22 (+2d) |
| PG-12528 | Floor Tiling - Dry area | 2025-12-20 → 2025-12-22 (+2d) | 2025-12-26 → 2025-12-27 (+1d) |
| PG-12529 | Wooden doors | 2026-01-02 → 2026-01-03 (+1d) | 2026-01-08 → 2026-01-09 (+1d) |
| 1.3.1.3.4.27 | **Floor 24** | 2025-12-03 → 2025-12-04 (+1d) | 2026-02-16 → 2026-02-17 (+1d) |
| 1.3.1.3.4.27.1 | **Ceiling Finishing works - Civil** | 2025-12-11 → 2025-12-12 (+1d) | 2026-02-16 → 2026-02-17 (+1d) |
| PG-12530 | Gypsum Plastering | 2025-12-11 → 2025-12-12 (+1d) | 2025-12-18 → 2025-12-19 (+1d) |
| PG-12531 | Cornice fixing | 2025-12-27 → 2025-12-29 (+2d) | 2026-01-01 → 2026-01-02 (+1d) |
| PG-12533 | Toilet False ceiling | 2026-01-05 → 2026-01-06 (+1d) | 2026-01-09 → 2026-01-10 (+1d) |
| PG-12532 | Painting Works - Putty, Primer and 1st | 2026-01-15 → 2026-01-16 (+1d) | 2026-01-22 → 2026-01-23 (+1d) |
| PG-12534 | Final Coat Painting | 2026-01-22 → 2026-01-23 (+1d) | 2026-02-16 → 2026-02-17 (+1d) |
| 1.3.1.3.4.27.2 | **Wall Finishing works - Civil** | 2025-12-03 → 2025-12-04 (+1d) | 2026-02-16 → 2026-02-17 (+1d) |
| PG-12535 | Balcony Railing Fixing works | 2025-12-03 → 2025-12-04 (+1d) | 2025-12-08 → 2025-12-09 (+1d) |
| PG-12537 | Dadoing - Wet area | 2025-12-23 → 2025-12-24 (+1d) | 2025-12-29 → 2025-12-30 (+1d) |
| PG-12536 | UPVC Windows & Sliding doors | 2026-01-09 → 2026-01-10 (+1d) | 2026-01-15 → 2026-01-16 (+1d) |
| PG-12538 | Painting Works - Putty, Primer and 1st | 2026-01-15 → 2026-01-16 (+1d) | 2026-01-22 → 2026-01-23 (+1d) |
| PG-12539 | Final Coat Painting | 2026-01-22 → 2026-01-23 (+1d) | 2026-02-16 → 2026-02-17 (+1d) |
| 1.3.1.3.4.27.3 | **Floor Finishing Works - Civil** | 2025-12-03 → 2025-12-04 (+1d) | 2026-01-22 → 2026-01-23 (+1d) |
| PG-12540 | Waterproofing for sunken areas | 2025-12-03 → 2025-12-04 (+1d) | 2025-12-06 → 2025-12-08 (+2d) |
| PG-12541 | Floor Tiling - Wet area | 2025-12-29 → 2025-12-30 (+1d) | 2026-01-03 → 2026-01-05 (+2d) |
| PG-12542 | Floor Tiling - Dry area | 2026-01-03 → 2026-01-05 (+2d) | 2026-01-09 → 2026-01-10 (+1d) |

| ID | Task | Start | Finish |
| --- | --- | --- | --- |
| PG-12543 | Wooden doors | 2026-01-16 → 2026-01-17 (+1d) | 2026-01-22 → 2026-01-23 (+1d) |
| 1.3.1.3.4.28 | **Floor 25** | 2025-12-24 → 2025-12-25 (+1d) | 2026-03-09 → 2026-03-10 (+1d) |
| 1.3.1.3.4.28.1 | **Ceiling Finishing works - Civil** | 2026-01-02 → 2026-01-03 (+1d) | 2026-03-09 → 2026-03-10 (+1d) |
| PG-12544 | Gypsum Plastering | 2026-01-02 → 2026-01-03 (+1d) | 2026-01-09 → 2026-01-10 (+1d) |
| PG-12545 | Cornice fixing | 2026-01-19 → 2026-01-20 (+1d) | 2026-01-23 → 2026-01-24 (+1d) |
| PG-12547 | Toilet False ceiling | 2026-01-27 → 2026-01-28 (+1d) | 2026-01-31 → 2026-02-02 (+2d) |
| PG-12546 | Painting Works - Putty, Primer and 1st | 2026-02-06 → 2026-02-07 (+1d) | 2026-02-13 → 2026-02-14 (+1d) |
| PG-12548 | Final Coat Painting | 2026-02-13 → 2026-02-14 (+1d) | 2026-03-09 → 2026-03-10 (+1d) |
| 1.3.1.3.4.28.2 | **Wall Finishing works - Civil** | 2025-12-24 → 2025-12-25 (+1d) | 2026-03-09 → 2026-03-10 (+1d) |
| PG-12549 | Balcony Railing Fixing works | 2025-12-24 → 2025-12-25 (+1d) | 2025-12-29 → 2025-12-30 (+1d) |
| PG-12551 | Dadoing - Wet area | 2026-01-13 → 2026-01-14 (+1d) | 2026-01-19 → 2026-01-20 (+1d) |
| PG-12550 | UPVC Windows & Sliding doors | 2026-01-31 → 2026-02-02 (+2d) | 2026-02-06 → 2026-02-07 (+1d) |
| PG-12552 | Painting Works - Putty, Primer and 1st | 2026-02-06 → 2026-02-07 (+1d) | 2026-02-13 → 2026-02-14 (+1d) |
| PG-12553 | Final Coat Painting | 2026-02-13 → 2026-02-14 (+1d) | 2026-03-09 → 2026-03-10 (+1d) |
| 1.3.1.3.4.28.3 | **Floor Finishing Works - Civil** | 2025-12-24 → 2025-12-25 (+1d) | 2026-02-13 → 2026-02-14 (+1d) |
| PG-12554 | Waterproofing for sunken areas | 2025-12-24 → 2025-12-25 (+1d) | 2025-12-27 → 2025-12-29 (+2d) |
| PG-12555 | Floor Tiling - Wet area | 2026-01-19 → 2026-01-20 (+1d) | 2026-01-24 → 2026-01-27 (+3d) |
| PG-12556 | Floor Tiling - Dry area | 2026-01-24 → 2026-01-27 (+3d) | 2026-01-31 → 2026-02-02 (+2d) |
| PG-12557 | Wooden doors | 2026-02-07 → 2026-02-09 (+2d) | 2026-02-13 → 2026-02-14 (+1d) |
| 1.3.1.3.4.29 | **Floor 26** | 2026-01-14 → 2026-01-15 (+1d) | 2026-03-31 → 2026-04-01 (+1d) |
| 1.3.1.3.4.29.1 | **Ceiling Finishing works - Civil** | 2026-01-23 → 2026-01-24 (+1d) | 2026-03-31 → 2026-04-01 (+1d) |
| PG-12558 | Gypsum Plastering | 2026-01-23 → 2026-01-24 (+1d) | 2026-01-31 → 2026-02-02 (+2d) |
| PG-12559 | Cornice fixing | 2026-02-10 → 2026-02-11 (+1d) | 2026-02-14 → 2026-02-16 (+2d) |
| PG-12561 | Toilet False ceiling | 2026-02-18 → 2026-02-19 (+1d) | 2026-02-23 → 2026-02-24 (+1d) |
| PG-12560 | Painting Works - Putty, Primer and 1st | 2026-02-28 → 2026-03-02 (+2d) | 2026-03-07 → 2026-03-09 (+2d) |
| PG-12562 | Final Coat Painting | 2026-03-07 → 2026-03-09 (+2d) | 2026-03-31 → 2026-04-01 (+1d) |
| 1.3.1.3.4.29.2 | **Wall Finishing works - Civil** | 2026-01-14 → 2026-01-15 (+1d) | 2026-03-30 → 2026-03-31 (+1d) |
| PG-12563 | Balcony Railing Fixing works | 2026-01-14 → 2026-01-15 (+1d) | 2026-01-19 → 2026-01-20 (+1d) |
| PG-12565 | Dadoing - Wet area | 2026-02-05 → 2026-02-06 (+1d) | 2026-02-11 → 2026-02-12 (+1d) |
| PG-12564 | UPVC Windows & Sliding doors | 2026-02-23 → 2026-02-24 (+1d) | 2026-02-28 → 2026-03-02 (+2d) |
| PG-12566 | Painting Works - Putty, Primer and 1st | 2026-02-28 → 2026-03-02 (+2d) | 2026-03-07 → 2026-03-09 (+2d) |
| PG-12567 | Final Coat Painting | 2026-03-07 → 2026-03-09 (+2d) | 2026-03-30 → 2026-03-31 (+1d) |
| 1.3.1.3.4.29.3 | **Floor Finishing Works - Civil** | 2026-01-14 → 2026-01-15 (+1d) | 2026-03-07 → 2026-03-09 (+2d) |
| PG-12568 | Waterproofing for sunken areas | 2026-01-14 → 2026-01-15 (+1d) | 2026-01-17 → 2026-01-19 (+2d) |
| PG-12569 | Floor Tiling - Wet area | 2026-02-11 → 2026-02-12 (+1d) | 2026-02-17 → 2026-02-18 (+1d) |
| PG-12570 | Floor Tiling - Dry area | 2026-02-17 → 2026-02-18 (+1d) | 2026-02-23 → 2026-02-24 (+1d) |
| PG-12571 | Wooden doors | 2026-03-02 → 2026-03-03 (+1d) | 2026-03-07 → 2026-03-09 (+2d) |
| 1.3.1.3.4.30 | **Floor 27** | 2026-02-06 → 2026-02-07 (+1d) | 2026-04-21 → 2026-04-22 (+1d) |
| 1.3.1.3.4.30.1 | **Ceiling Finishing works - Civil** | 2026-02-16 → 2026-02-17 (+1d) | 2026-04-21 → 2026-04-22 (+1d) |
| PG-12572 | Gypsum Plastering | 2026-02-16 → 2026-02-17 (+1d) | 2026-02-23 → 2026-02-24 (+1d) |
| PG-12573 | Cornice fixing | 2026-03-04 → 2026-03-05 (+1d) | 2026-03-09 → 2026-03-10 (+1d) |
| PG-12575 | Toilet False ceiling | 2026-03-12 → 2026-03-13 (+1d) | 2026-03-17 → 2026-03-18 (+1d) |
| PG-12574 | Painting Works - Putty, Primer and 1st | 2026-03-23 → 2026-03-24 (+1d) | 2026-03-30 → 2026-03-31 (+1d) |
| PG-12576 | Final Coat Painting | 2026-03-30 → 2026-03-31 (+1d) | 2026-04-21 → 2026-04-22 (+1d) |
| 1.3.1.3.4.30.2 | **Wall Finishing works - Civil** | 2026-02-06 → 2026-02-07 (+1d) | 2026-04-21 → 2026-04-22 (+1d) |
| PG-12577 | Balcony Railing Fixing works | 2026-02-06 → 2026-02-07 (+1d) | 2026-02-11 → 2026-02-12 (+1d) |
| PG-12579 | Dadoing - Wet area | 2026-02-27 → 2026-02-28 (+1d) | 2026-03-05 → 2026-03-06 (+1d) |
| PG-12578 | UPVC Windows & Sliding doors | 2026-03-17 → 2026-03-18 (+1d) | 2026-03-23 → 2026-03-24 (+1d) |
| PG-12580 | Painting Works - Putty, Primer and 1st | 2026-03-23 → 2026-03-24 (+1d) | 2026-03-30 → 2026-03-31 (+1d) |
| PG-12581 | Final Coat Painting | 2026-03-30 → 2026-03-31 (+1d) | 2026-04-21 → 2026-04-22 (+1d) |
| 1.3.1.3.4.30.3 | **Floor Finishing Works - Civil** | 2026-02-06 → 2026-02-07 (+1d) | 2026-03-30 → 2026-03-31 (+1d) |
| PG-12582 | Waterproofing for sunken areas | 2026-02-06 → 2026-02-07 (+1d) | 2026-02-10 → 2026-02-11 (+1d) |
| PG-12583 | Floor Tiling - Wet area | 2026-03-05 → 2026-03-06 (+1d) | 2026-03-11 → 2026-03-12 (+1d) |
| PG-12584 | Floor Tiling - Dry area | 2026-03-11 → 2026-03-12 (+1d) | 2026-03-17 → 2026-03-18 (+1d) |
| PG-12585 | Wooden doors | 2026-03-24 → 2026-03-25 (+1d) | 2026-03-30 → 2026-03-31 (+1d) |
| 1.3.1.3.4.31 | **Floor 28** | 2026-02-28 → 2026-03-02 (+2d) | 2026-05-13 → 2026-05-14 (+1d) |
| 1.3.1.3.4.31.1 | **Ceiling Finishing works - Civil** | 2026-03-09 → 2026-03-10 (+1d) | 2026-05-13 → 2026-05-14 (+1d) |
| PG-12586 | Gypsum Plastering | 2026-03-09 → 2026-03-10 (+1d) | 2026-03-16 → 2026-03-17 (+1d) |
| PG-12587 | Cornice fixing | 2026-03-26 → 2026-03-27 (+1d) | 2026-03-30 → 2026-03-31 (+1d) |
| PG-12589 | Toilet False ceiling | 2026-04-02 → 2026-04-03 (+1d) | 2026-04-07 → 2026-04-08 (+1d) |
| PG-12588 | Painting Works - Putty, Primer and 1st | 2026-04-13 → 2026-04-14 (+1d) | 2026-04-20 → 2026-04-21 (+1d) |
| PG-12590 | Final Coat Painting | 2026-04-20 → 2026-04-21 (+1d) | 2026-05-13 → 2026-05-14 (+1d) |
| 1.3.1.3.4.31.2 | **Wall Finishing works - Civil** | 2026-02-28 → 2026-03-02 (+2d) | 2026-05-13 → 2026-05-14 (+1d) |
| PG-12591 | Balcony Railing Fixing works | 2026-02-28 → 2026-03-02 (+2d) | 2026-03-05 → 2026-03-06 (+1d) |
| PG-12593 | Dadoing - Wet area | 2026-03-20 → 2026-03-21 (+1d) | 2026-03-26 → 2026-03-27 (+1d) |
| PG-12592 | UPVC Windows & Sliding doors | 2026-04-07 → 2026-04-08 (+1d) | 2026-04-13 → 2026-04-14 (+1d) |
| PG-12594 | Painting Works - Putty, Primer and 1st | 2026-04-13 → 2026-04-14 (+1d) | 2026-04-20 → 2026-04-21 (+1d) |
| PG-12595 | Final Coat Painting | 2026-04-20 → 2026-04-21 (+1d) | 2026-05-13 → 2026-05-14 (+1d) |
| 1.3.1.3.4.31.3 | **Floor Finishing Works - Civil** | 2026-02-28 → 2026-03-02 (+2d) | 2026-04-20 → 2026-04-21 (+1d) |
| PG-12596 | Waterproofing for sunken areas | 2026-02-28 → 2026-03-02 (+2d) | 2026-03-04 → 2026-03-05 (+1d) |

| ID | Task | Start | Finish |
| --- | --- | --- | --- |
| PG-12597 | Floor Tiling - Wet area | 2026-03-26 → 2026-03-27 (+1d) | 2026-04-01 → 2026-04-02 (+1d) |
| PG-12598 | Floor Tiling - Dry area | 2026-04-01 → 2026-04-02 (+1d) | 2026-04-07 → 2026-04-08 (+1d) |
| PG-12599 | Wooden doors | 2026-04-14 → 2026-04-15 (+1d) | 2026-04-20 → 2026-04-21 (+1d) |
| 1.3.1.3.4.32 | **Floor 29** | 2026-03-21 → 2026-03-23 (+2d) | 2026-06-04 → 2026-06-05 (+1d) |
| 1.3.1.3.4.32.1 | **Ceiling Finishing works - Civil** | 2026-03-31 → 2026-04-01 (+1d) | 2026-06-04 → 2026-06-05 (+1d) |
| PG-12600 | Gypsum Plastering | 2026-03-31 → 2026-04-01 (+1d) | 2026-04-07 → 2026-04-08 (+1d) |
| PG-12601 | Cornice fixing | 2026-04-23 → 2026-04-24 (+1d) | 2026-04-28 → 2026-04-29 (+1d) |
| PG-12603 | Toilet False ceiling | 2026-04-24 → 2026-04-25 (+1d) | 2026-04-29 → 2026-04-30 (+1d) |
| PG-12602 | Painting Works - Putty, Primer and 1st | 2026-05-05 → 2026-05-06 (+1d) | 2026-05-12 → 2026-05-13 (+1d) |
| PG-12604 | Final Coat Painting | 2026-05-12 → 2026-05-13 (+1d) | 2026-06-04 → 2026-06-05 (+1d) |
| 1.3.1.3.4.32.2 | **Wall Finishing works - Civil** | 2026-03-21 → 2026-03-23 (+2d) | 2026-06-04 → 2026-06-05 (+1d) |
| PG-12605 | Balcony Railing Fixing works | 2026-03-21 → 2026-03-23 (+2d) | 2026-03-26 → 2026-03-27 (+1d) |
| PG-12607 | Dadoing - Wet area | 2026-04-11 → 2026-04-13 (+2d) | 2026-04-17 → 2026-04-18 (+1d) |
| PG-12606 | UPVC Windows & Sliding doors | 2026-04-29 → 2026-04-30 (+1d) | 2026-05-05 → 2026-05-06 (+1d) |
| PG-12608 | Painting Works - Putty, Primer and 1st | 2026-05-05 → 2026-05-06 (+1d) | 2026-05-12 → 2026-05-13 (+1d) |
| PG-12609 | Final Coat Painting | 2026-05-12 → 2026-05-13 (+1d) | 2026-06-04 → 2026-06-05 (+1d) |
| 1.3.1.3.4.32.3 | **Floor Finishing Works - Civil** | 2026-03-21 → 2026-03-23 (+2d) | 2026-05-12 → 2026-05-13 (+1d) |
| PG-12610 | Waterproofing for sunken areas | 2026-03-21 → 2026-03-23 (+2d) | 2026-03-25 → 2026-03-26 (+1d) |
| PG-12611 | Floor Tiling - Wet area | 2026-04-17 → 2026-04-18 (+1d) | 2026-04-23 → 2026-04-24 (+1d) |
| PG-12612 | Floor Tiling - Dry area | 2026-04-23 → 2026-04-24 (+1d) | 2026-04-29 → 2026-04-30 (+1d) |
| PG-12613 | Wooden doors | 2026-05-06 → 2026-05-07 (+1d) | 2026-05-12 → 2026-05-13 (+1d) |
| 1.3.1.3.4.33 | **External Finishing works** | 2025-12-30 → 2025-12-31 (+1d) | 2026-04-27 → 2026-04-28 (+1d) |
| PG-12614 | External walls tie rod hole plugging with GP2 | 2025-12-30 → 2025-12-31 (+1d) | 2026-02-04 → 2026-02-05 (+1d) |
| PG-12615 | External walls grinding works | 2026-01-22 → 2026-01-23 (+1d) | 2026-03-11 → 2026-03-12 (+1d) |
| PG-12616 | Texture and painting works | 2026-03-05 → 2026-03-06 (+1d) | 2026-04-27 → 2026-04-28 (+1d) |
| 1.3.1.3.5 | **Corridor & Fire Staircase Finishing works** | 2026-03-07 → 2026-03-09 (+2d) | 2026-07-03 → 2026-07-04 (+1d) |
| 1.3.1.3.5.1 | **Ceiling Finishing works - Civil** | 2026-03-07 → 2026-03-09 (+2d) | 2026-05-29 → 2026-05-30 (+1d) |
| PG-12617 | Gypsum Plastering | 2026-03-07 → 2026-03-09 (+2d) | 2026-03-14 → 2026-03-16 (+2d) |
| PG-12618 | Cornice fixing | 2026-03-13 → 2026-03-14 (+1d) | 2026-03-18 → 2026-03-19 (+1d) |
| PG-12619 | Painting Works - Putty, Primer and 1st | 2026-03-31 → 2026-04-01 (+1d) | 2026-04-07 → 2026-04-08 (+1d) |
| PG-12620 | False ceiling | 2026-04-07 → 2026-04-08 (+1d) | 2026-05-12 → 2026-05-13 (+1d) |
| PG-12621 | Final Coat Painting | 2026-04-23 → 2026-04-24 (+1d) | 2026-05-29 → 2026-05-30 (+1d) |
| 1.3.1.3.5.2 | **Wall Finishing works - Civil** | 2026-04-11 → 2026-04-13 (+2d) | 2026-07-03 → 2026-07-04 (+1d) |
| PG-12622 | UPVC Windows & Sliding doors | 2026-04-11 → 2026-04-13 (+2d) | 2026-04-17 → 2026-04-18 (+1d) |
| PG-12623 | Wall Cladding Upto 1.2 Mts | 2026-04-29 → 2026-04-30 (+1d) | 2026-05-22 → 2026-05-23 (+1d) |
| PG-12624 | Painting Works - Texture & one coat Painting works | 2026-05-29 → 2026-05-30 (+1d) | 2026-06-16 → 2026-06-17 (+1d) |
| PG-12625 | Final Coat Painting | 2026-06-10 → 2026-06-11 (+1d) | 2026-07-03 → 2026-07-04 (+1d) |
| 1.3.1.3.5.3 | **Floor Finishing Works - Civil** | 2026-03-14 → 2026-03-16 (+2d) | 2026-04-13 → 2026-04-14 (+1d) |
| PG-12626 | Fire Doors installation | 2026-03-14 → 2026-03-16 (+2d) | 2026-03-26 → 2026-03-27 (+1d) |
| PG-12627 | Vitrified tile flooring works | 2026-03-26 → 2026-03-27 (+1d) | 2026-04-13 → 2026-04-14 (+1d) |
| 1.3.1.3.5.4 | **Fire Staircase Finishing Works - Civil** | 2026-03-14 → 2026-03-16 (+2d) | 2026-07-03 → 2026-07-04 (+1d) |
| PG-12628 | Staircase Railing Fixing works | 2026-03-14 → 2026-03-16 (+2d) | 2026-04-07 → 2026-04-08 (+1d) |
| PG-12629 | Wall and ceiling Gypsum plastering | 2026-03-24 → 2026-03-25 (+1d) | 2026-04-30 → 2026-05-01 (+1d) |
| PG-12630 | Staircase Flooring and Skirting Works | 2026-04-13 → 2026-04-14 (+1d) | 2026-05-29 → 2026-05-30 (+1d) |
| PG-12631 | UPVC Window fixing works | 2026-05-28 → 2026-05-29 (+1d) | 2026-06-16 → 2026-06-17 (+1d) |
| PG-12632 | Staircase Painting works | 2026-06-10 → 2026-06-11 (+1d) | 2026-07-03 → 2026-07-04 (+1d) |
| 1.3.1.3.6 | **MEP Civil Works (Shaft, Lift Shaft & OHT )** | 2025-12-16 → 2025-12-17 (+1d) | 2026-05-15 → 2026-05-16 (+1d) |
| 1.3.1.3.6.1 | **Lift Shaft Works** | 2025-12-16 → 2025-12-17 (+1d) | 2026-05-15 → 2026-05-16 (+1d) |
| PG-12633 | Tie rod hole packing | 2025-12-16 → 2025-12-17 (+1d) | 2025-12-25 → 2025-12-26 (+1d) |
| PG-12634 | Grinding works | 2025-12-25 → 2025-12-26 (+1d) | 2025-12-31 → 2026-01-01 (+1d) |
| PG-12635 | Lift pit water proofing works | 2025-12-31 → 2026-01-01 (+1d) | 2026-01-24 → 2026-01-27 (+3d) |
| PG-12636 | Shaft door opening finishing | 2026-01-24 → 2026-01-27 (+3d) | 2026-02-03 → 2026-02-04 (+1d) |
| PG-12637 | Painting works | 2026-02-03 → 2026-02-04 (+1d) | 2026-02-12 → 2026-02-13 (+1d) |
| PG-12638 | Lift Wall Cladding Works | 2026-04-28 → 2026-04-29 (+1d) | 2026-05-15 → 2026-05-16 (+1d) |
| 1.3.1.3.6.2 | **Electrical Shaft works** | 2025-12-16 → 2025-12-17 (+1d) | 2026-01-17 → 2026-01-19 (+2d) |
| PG-12639 | Tie rod hole packing | 2025-12-16 → 2025-12-17 (+1d) | 2025-12-25 → 2025-12-26 (+1d) |
| PG-12640 | Grinding works | 2025-12-25 → 2025-12-26 (+1d) | 2025-12-31 → 2026-01-01 (+1d) |
| PG-12641 | Shaft door opening finishing | 2025-12-31 → 2026-01-01 (+1d) | 2026-01-08 → 2026-01-09 (+1d) |
| PG-12642 | Painting works | 2026-01-08 → 2026-01-09 (+1d) | 2026-01-17 → 2026-01-19 (+2d) |
| 1.3.1.3.6.3 | **FPS Shaft works** | 2025-12-16 → 2025-12-17 (+1d) | 2026-01-17 → 2026-01-19 (+2d) |
| PG-12643 | Tie rod hole packing | 2025-12-16 → 2025-12-17 (+1d) | 2025-12-25 → 2025-12-26 (+1d) |
| PG-12644 | Grinding works | 2025-12-25 → 2025-12-26 (+1d) | 2025-12-31 → 2026-01-01 (+1d) |
| PG-12645 | Shaft door opening finishing | 2025-12-31 → 2026-01-01 (+1d) | 2026-01-08 → 2026-01-09 (+1d) |
| PG-12646 | Painting works | 2026-01-08 → 2026-01-09 (+1d) | 2026-01-17 → 2026-01-19 (+2d) |
| 1.3.1.3.6.4 | **PHE Shaft works** | 2025-12-16 → 2025-12-17 (+1d) | 2026-01-17 → 2026-01-19 (+2d) |
| PG-12647 | Tie rod hole packing | 2025-12-16 → 2025-12-17 (+1d) | 2025-12-25 → 2025-12-26 (+1d) |
| PG-12648 | Grinding works | 2025-12-25 → 2025-12-26 (+1d) | 2025-12-31 → 2026-01-01 (+1d) |
| PG-12649 | Shaft door opening finishing | 2025-12-31 → 2026-01-01 (+1d) | 2026-01-08 → 2026-01-09 (+1d) |
| PG-12650 | Painting works | 2026-01-08 → 2026-01-09 (+1d) | 2026-01-17 → 2026-01-19 (+2d) |
| 1.3.1.3.6.5 | **Data & Communication Shaft** | 2025-12-16 → 2025-12-17 (+1d) | 2026-01-15 → 2026-01-16 (+1d) |

| ID | Task | Start | Finish | Complete | Total float |
| --- | --- | --- | --- | --- | --- |
| PG-12651 | Tie rod hole packing | 2025-12-16 → 2025-12-17 (+1d) | 2025-12-25 → 2025-12-26 (+1d) |  |  |
| PG-12652 | Grinding works | 2025-12-25 → 2025-12-26 (+1d) | 2025-12-31 → 2026-01-01 (+1d) |  |  |
| PG-12653 | Shaft door opening finishing | 2025-12-31 → 2026-01-01 (+1d) | 2026-01-06 → 2026-01-07 (+1d) |  |  |
| PG-12654 | Painting works | 2026-01-06 → 2026-01-07 (+1d) | 2026-01-15 → 2026-01-16 (+1d) |  |  |
| 1.3.1.3.6.6 | **OHT Works** | 2025-12-16 → 2025-12-17 (+1d) | 2026-02-04 → 2026-02-05 (+1d) |  |  |
| PG-12655 | Tank materials Supply & Shifting | 2025-12-16 → 2025-12-17 (+1d) | 2025-12-27 → 2025-12-29 (+2d) |  |  |
| PG-12656 | Assembling OHT FRP Tank | 2025-12-27 → 2025-12-29 (+2d) | 2026-01-08 → 2026-01-09 (+1d) |  |  |
| PG-12657 | Installation of OHT Tank | 2026-01-08 → 2026-01-09 (+1d) | 2026-01-27 → 2026-01-28 (+1d) |  |  |
| PG-12658 | Water tightness works and checking | 2026-01-27 → 2026-01-28 (+1d) | 2026-02-04 → 2026-02-05 (+1d) |  |  |
| 1.3.1.3.7 | **MEP Shaft works** | 2026-01-15 → 2026-01-16 (+1d) | 2026-04-08 → 2026-04-09 (+1d) |  |  |
| 1.3.1.3.7.1 | **Electrical** | 2026-01-17 → 2026-01-19 (+2d) | 2026-02-27 → 2026-02-28 (+1d) |  |  |
| PG-12659 | Tray Works | 2026-01-17 → 2026-01-19 (+2d) | 2026-01-30 → 2026-01-31 (+1d) |  |  |
| PG-12660 | Cable & Conducting works | 2026-01-30 → 2026-01-31 (+1d) | 2026-02-10 → 2026-02-11 (+1d) |  |  |
| PG-12661 | Wiring/DB/connector box installation and termination works | 2026-02-10 → 2026-02-11 (+1d) | 2026-02-27 → 2026-02-28 (+1d) |  |  |
| 1.3.1.3.7.2 | **FPS** | 2026-01-17 → 2026-01-19 (+2d) | 2026-02-27 → 2026-02-28 (+1d) |  |  |
| PG-12662 | Shaft MS Piping & fixtures installation | 2026-01-17 → 2026-01-19 (+2d) | 2026-02-11 → 2026-02-12 (+1d) |  |  |
| PG-12663 | Tray / cabling / conducting & wiring works | 2026-02-11 → 2026-02-12 (+1d) | 2026-02-27 → 2026-02-28 (+1d) |  |  |
| 1.3.1.3.7.3 | **Data & Communication** | 2026-01-15 → 2026-01-16 (+1d) | 2026-03-05 → 2026-03-06 (+1d) |  |  |
| PG-12664 | Tray Works | 2026-01-15 → 2026-01-16 (+1d) | 2026-01-30 → 2026-01-31 (+1d) |  |  |
| PG-12665 | Tray / cabling / conducting & wiring works | 2026-01-30 → 2026-01-31 (+1d) | 2026-02-17 → 2026-02-18 (+1d) |  |  |
| PG-12666 | Wiring/DB/connector box installation and termination works | 2026-02-17 → 2026-02-18 (+1d) | 2026-03-05 → 2026-03-06 (+1d) |  |  |
| 1.3.1.3.7.4 | **PHE** | 2026-01-17 → 2026-01-19 (+2d) | 2026-04-08 → 2026-04-09 (+1d) |  |  |
| PG-12667 | Bracket fixing works | 2026-01-17 → 2026-01-19 (+2d) | 2026-01-27 → 2026-01-28 (+1d) |  |  |
| PG-12668 | Piping Works | 2026-01-27 → 2026-01-28 (+1d) | 2026-02-12 → 2026-02-13 (+1d) |  |  |
| PG-12669 | Terrace Ring main & OHT Connection works | 2026-02-12 → 2026-02-13 (+1d) | 2026-03-31 → 2026-04-01 (+1d) |  |  |
| PG-12670 | Commissioning | 2026-03-31 → 2026-04-01 (+1d) | 2026-04-08 → 2026-04-09 (+1d) |  |  |
| 1.3.1.3.8 | **Lift Installation and Testing works** | 2025-12-31 → 2026-01-01 (+1d) | 2026-07-29 → 2026-07-30 (+1d) |  |  |
| PG-12671 | Lift Shaft Survey works | 2025-12-31 → 2026-01-01 (+1d) | 2026-01-12 → 2026-01-13 (+1d) |  |  |
| PG-12672 | Guide Rails fixing works | 2026-02-12 → 2026-02-13 (+1d) | 2026-03-31 → 2026-04-01 (+1d) |  |  |
| PG-12673 | Lift Frame fixing works | 2026-03-31 → 2026-04-01 (+1d) | 2026-04-28 → 2026-04-29 (+1d) |  |  |
| PG-12674 | CAR Assembly works | 2026-04-28 → 2026-04-29 (+1d) | 2026-05-21 → 2026-05-22 (+1d) |  |  |
| PG-12675 | Lift Machine Room Works | 2026-05-21 → 2026-05-22 (+1d) | 2026-06-25 → 2026-06-26 (+1d) |  |  |
| PG-12676 | Slow Speed & High Speed Testing works | 2026-06-25 → 2026-06-26 (+1d) | 2026-07-29 → 2026-07-30 (+1d) |  |  |
| 1.3.1.3.10 | **Entrance Lobby works** | 2026-07-03 → 2026-07-04 (+1d) | 2026-10-17 → 2026-10-19 (+2d) |  |  |
| PG-12684 | Flooring Works | 2026-07-03 → 2026-07-04 (+1d) | 2026-07-20 → 2026-07-21 (+1d) |  |  |
| PG-12685 | Glass Door and installation Works | 2026-07-20 → 2026-07-21 (+1d) | 2026-08-12 → 2026-08-13 (+1d) |  |  |
| PG-12687 | Canopy Works | 2026-07-20 → 2026-07-21 (+1d) | 2026-08-19 → 2026-08-20 (+1d) |  |  |
| PG-12686 | Painting Works | 2026-08-12 → 2026-08-13 (+1d) | 2026-08-25 → 2026-08-26 (+1d) |  |  |
| PG-12688 | Interior Works | 2026-08-25 → 2026-08-26 (+1d) | 2026-10-17 → 2026-10-19 (+2d) |  |  |
| 1.3.1.3.11 | **Lightening Arrester works** | 2026-04-27 → 2026-04-28 (+1d) | 2026-05-08 → 2026-05-09 (+1d) |  |  |
| PG-12689 | Conductor will be lifted with RCC Works, But Terrace works will be done once Parapet Painting done | 2026-04-27 → 2026-04-28 (+1d) | 2026-05-08 → 2026-05-09 (+1d) |  |  |
| 1.3.1.5 | **Landscape and Hardscape works** | 2026-04-27 → 2026-04-28 (+1d) | 2026-08-10 → 2026-08-11 (+1d) |  |  |
| PG-12715 | Hardscape ( Granite, Planter, Walkways Etc..) | 2026-04-27 → 2026-04-28 (+1d) | 2026-06-18 → 2026-06-19 (+1d) |  |  |
| PG-12716 | Filter media and soil filling works | 2026-06-12 → 2026-06-13 (+1d) | 2026-07-06 → 2026-07-07 (+1d) |  |  |
| PG-12717 | Irrigation piping works | 2026-06-24 → 2026-06-25 (+1d) | 2026-07-17 → 2026-07-18 (+1d) |  |  |
| PG-12718 | Planting works | 2026-07-17 → 2026-07-18 (+1d) | 2026-08-10 → 2026-08-11 (+1d) |  |  |
| 1.3.9 | **Project Infrastructure Works ( Services/MEP )** |  | 2026-09-26 → 2026-09-28 (+2d) |  |  |
| 1.3.9.1 | **Civil & Services Works ( Transformer, DG,STP )** |  | 2026-09-26 → 2026-09-28 (+2d) |  |  |
| 1.3.9.1.1 | **Transformer Yard Civil Works** | 2026-03-21 → 2026-03-23 (+2d) | 2026-06-01 → 2026-06-02 (+1d) |  |  |
| 1.3.9.1.1.1 | **Transformer 01** | 2026-03-21 → 2026-03-23 (+2d) | 2026-06-01 → 2026-06-02 (+1d) |  |  |
| PG-30428 | Footing and Pedestal Excavation Works | 2026-03-21 → 2026-03-23 (+2d) | 2026-04-03 → 2026-04-04 (+1d) |  |  |
| PG-30429 | Footing and Pedestal Reinforcement works | 2026-04-06 → 2026-04-07 (+1d) | 2026-04-09 → 2026-04-10 (+1d) |  |  |
| PG-30430 | Footing and Pedestal Concrete works | 2026-04-09 → 2026-04-10 (+1d) | 2026-04-21 → 2026-04-22 (+1d) |  |  |
| PG-30431 | Fencing Retaining wall footing reinforcement works | 2026-04-21 → 2026-04-22 (+1d) | 2026-04-28 → 2026-04-29 (+1d) |  |  |
| PG-30432 | Fencing Retaining wall footing formwork and concrete works | 2026-04-28 → 2026-04-29 (+1d) | 2026-05-05 → 2026-05-06 (+1d) |  |  |
| PG-30434 | Fencing works MS/GRC | 2026-05-02 → 2026-05-04 (+2d) | 2026-05-27 → 2026-05-28 (+1d) |  |  |
| PG-30433 | Retaining wall upto low level concrete works | 2026-05-05 → 2026-05-06 (+1d) | 2026-05-09 → 2026-05-11 (+2d) |  |  |
| PG-30435 | Floor Aggregates spreading works | 2026-05-27 → 2026-05-28 (+1d) | 2026-06-01 → 2026-06-02 (+1d) |  |  |
| 1.3.9.1.2 | **Transformer Yard Electrical works** | 2026-08-10 → 2026-08-11 (+1d) | 2026-09-26 → 2026-09-28 (+2d) |  |  |
| 1.3.9.1.2.1 | **Transformer 01** | 2026-08-10 → 2026-08-11 (+1d) | 2026-09-26 → 2026-09-28 (+2d) |  |  |
| PG-30460 | Cable Trench works | 2026-08-10 → 2026-08-11 (+1d) | 2026-08-21 → 2026-08-22 (+1d) |  |  |
| PG-30461 | LTQS Installation Works | 2026-08-21 → 2026-08-22 (+1d) | 2026-08-31 → 2026-09-01 (+1d) |  |  |
| PG-30462 | Cable laying works | 2026-08-31 → 2026-09-01 (+1d) | 2026-09-15 → 2026-09-16 (+1d) |  |  |
| PG-30463 | Cable Termination works | 2026-09-15 → 2026-09-16 (+1d) | 2026-09-19 → 2026-09-21 (+2d) |  |  |
| PG-30464 | Testing and commissioning works | 2026-09-19 → 2026-09-21 (+2d) | 2026-09-26 → 2026-09-28 (+2d) |  |  |
| PG-30697 | CP and Sanitary fixture works |  |  | 28% → 87% | 545.97d → 547.03d |
| PG-30700 | Sprinkler fixing and Testing Works |  |  | 3% → 26% | 304.77d → 305.83d |
| 1.6 | **Testing And Commissioning Works** |  | 2026-10-31 → 2026-11-02 (+2d) |  |  |
| 1.6.1.1.1 | **Units** |  | 2026-02-21 → 2026-02-20 (-1d) |  |  |
| PG-30738 | T&C - Floor 7 |  |  | 57% → 78% | 406.52d → 407.58d |

| ID | Task | Start | Finish | Complete | Total float |
| --- | --- | --- | --- | --- | --- |
| PG-30739 | T&C - Floor 8 |  |  | 16% → 37% | 392.67d → 393.73d |
| PG-30740 | T&C - Floor 9 | 2025-05-31 → 2025-06-02 (+2d) | 2025-07-04 → 2025-07-05 (+1d) |  | 381.63d → 381.83d |
| PG-30742 | T&C - Floor 11 |  | 2025-08-04 → 2025-08-02 (-2d) |  | 356.52d → 357.93d |
| PG-30743 | T&C - Floor 12 | 2025-07-11 → 2025-07-12 (+1d) | 2025-08-13 → 2025-08-14 (+1d) |  | 347.75d → 347.83d |
| PG-30744 | T&C - Floor 13 | 2025-07-24 → 2025-07-23 (-1d) | 2025-08-28 → 2025-08-27 (-1d) |  | 336.27d → 338.71d |
| PG-30746 | T&C - Floor 15 |  | 2025-09-23 → 2025-09-22 (-1d) |  | 314.69d → 316.14d |
| PG-30747 | T&C - Floor 16 |  | 2025-10-07 → 2025-10-06 (-1d) |  | 303.69d → 305.14d |
| PG-30748 | T&C - Floor 17 |  | 2025-10-20 → 2025-10-18 (-2d) |  | 292.69d → 294.14d |
| PG-30749 | T&C - Floor 18 |  | 2025-11-03 → 2025-10-31 (-3d) |  | 281.69d → 283.14d |
| PG-30750 | T&C - Floor 19 |  | 2025-11-27 → 2025-11-26 (-1d) |  | 260.69d → 262.14d |
| PG-30751 | T&C - Floor 20 |  | 2025-12-18 → 2025-12-17 (-1d) |  | 241.52d → 242.97d |
| PG-30752 | T&C - Floor 21 |  | 2026-01-09 → 2026-01-08 (-1d) |  | 222.52d → 223.97d |
| PG-30753 | T&C - Floor 22 |  | 2026-02-03 → 2026-02-02 (-1d) |  | 202.52d → 203.97d |
| PG-30754 | T&C - Floor 23 |  | 2026-02-21 → 2026-02-20 (-1d) |  | 186.52d → 187.97d |
| 1.6.1.1.2 | **Common Areas** | 2025-10-07 → 2025-10-06 (-1d) |  |  |  |
| PG-30755 | T&C - Internal Electrical Works | 2025-10-07 → 2025-10-06 (-1d) |  |  | 262.19d → 263.64d |
| PG-30756 | T&C - Internal FPS Works | 2025-10-07 → 2025-10-06 (-1d) |  |  | 261.86d → 263.31d |
| PG-30757 | T&C - Data & Communication Works | 2025-10-13 → 2025-10-11 (-2d) |  |  | 256.86d → 258.31d |
| PG-30761 | T&C - Lightining Arrestor works |  | 2025-12-24 → 2025-12-23 (-1d) |  | 250.69d → 252.14d |
| PG-30760 | T&C - Electrical Panel Works | 2026-02-27 → 2026-02-26 (-1d) |  |  | 132.19d → 133.64d |
| 1.6.1.2 | **Tower 2** |  | 2026-05-11 → 2026-05-12 (+1d) |  |  |
| 1.6.1.2.1 | **Units** |  | 2026-04-02 → 2026-04-03 (+1d) |  |  |
| PG-30768 | T&C - Floor 6 |  | 2025-05-24 → 2025-05-26 A (+2d) | 96% → 100% | 417.59d → none |
| PG-30769 | T&C - Floor 7 |  |  | 65% → 85% | 408.35d → 409.41d |
| PG-30770 | T&C - Floor 8 |  |  | 13% → 33% | 392.79d → 393.85d |
| PG-30771 | T&C - Floor 9 | 2025-05-30 → 2025-05-31 (+1d) | 2025-07-02 → 2025-07-03 (+1d) |  | 382.74d → 383.08d |
| PG-30774 | T&C - Floor 12 | 2025-07-11 → 2025-07-12 (+1d) | 2025-08-14 → 2025-08-16 (+2d) |  | 347.12d → 347.17d |
| PG-30775 | T&C - Floor 13 | 2025-07-26 → 2025-07-25 (-1d) |  |  | 335.19d → 336.74d |
| PG-30777 | T&C - Floor 15 | 2025-08-21 → 2025-08-22 (+1d) | 2025-09-24 → 2025-09-25 (+1d) |  | 313.76d → 313.75d |
| PG-30778 | T&C - Floor 16 | 2025-09-02 → 2025-09-03 (+1d) | 2025-10-07 → 2025-10-08 (+1d) |  | 303.43d → 303.42d |
| PG-30779 | T&C - Floor 17 | 2025-09-15 → 2025-09-16 (+1d) | 2025-10-20 → 2025-10-21 (+1d) |  | 292.43d → 292.42d |
| PG-30780 | T&C - Floor 18 | 2025-09-29 → 2025-09-30 (+1d) | 2025-11-05 → 2025-11-06 (+1d) |  | 280.59d → 280.58d |
| PG-30781 | T&C - Floor 19 | 2025-10-13 → 2025-10-14 (+1d) | 2025-11-18 → 2025-11-19 (+1d) |  | 269.59d → 269.58d |
| PG-30782 | T&C - Floor 20 | 2025-10-27 → 2025-10-28 (+1d) | 2025-12-02 → 2025-12-03 (+1d) |  | 257.59d → 257.58d |
| PG-30783 | T&C - Floor 21 | 2025-11-08 → 2025-11-10 (+2d) | 2025-12-12 → 2025-12-13 (+1d) |  | 247.93d → 247.92d |
| PG-30784 | T&C - Floor 22 | 2025-12-01 → 2025-12-02 (+1d) | 2026-01-02 → 2026-01-03 (+1d) |  | 228.09d → 228.08d |
| PG-30785 | T&C - Floor 23 | 2025-12-20 → 2025-12-22 (+2d) | 2026-01-24 → 2026-01-27 (+3d) |  | 210.09d → 210.08d |
| PG-30786 | T&C - Floor 24 | 2026-01-10 → 2026-01-12 (+2d) | 2026-02-16 → 2026-02-17 (+1d) |  | 190.93d → 190.92d |
| PG-30787 | T&C - Floor 25 | 2026-02-04 → 2026-02-05 (+1d) | 2026-03-11 → 2026-03-12 (+1d) |  | 171.43d → 171.42d |
| PG-30788 | T&C - Floor 26 | 2026-02-25 → 2026-02-26 (+1d) | 2026-04-02 → 2026-04-03 (+1d) |  | 123.93d → 123.92d |
| 1.6.1.2.2 | **Common Areas** | 2025-11-14 → 2025-11-15 (+1d) | 2026-05-11 → 2026-05-12 (+1d) |  |  |
| PG-30790 | T&C - Internal FPS Works | 2025-11-14 → 2025-11-15 (+1d) | 2025-12-01 → 2025-12-02 (+1d) |  | 227.09d → 227.08d |
| PG-30789 | T&C - Internal Electrical Works | 2025-11-14 → 2025-11-15 (+1d) | 2025-12-01 → 2025-12-02 (+1d) |  | 227.26d → 227.25d |
| PG-30791 | T&C - Data & Communication Works | 2025-11-20 → 2025-11-21 (+1d) | 2025-12-08 → 2025-12-09 (+1d) |  | 221.76d → 221.75d |
| PG-30792 | T&C - Internal PHE Works including OHT | 2025-12-24 → 2025-12-25 (+1d) | 2026-01-17 → 2026-01-19 (+2d) |  | 185.93d → 185.92d |
| PG-30795 | T&C - Lightining Arrestor works | 2026-01-23 → 2026-01-27 (+4d) | 2026-02-02 → 2026-02-03 (+1d) |  | 220.09d → 220.08d |
| PG-30794 | T&C - Electrical Panel Works | 2026-02-26 → 2026-02-27 (+1d) | 2026-03-23 → 2026-03-24 (+1d) |  | 162.76d → 162.75d |
| PG-30793 | T&C - Lift Works | 2026-04-17 → 2026-04-20 (+3d) | 2026-05-11 → 2026-05-12 (+1d) |  | 120.59d → 120.58d |
| 1.6.1.3.1 | **Units** |  | 2026-07-15 → 2026-07-16 (+1d) |  |  |
| PG-30799 | T&C - Floor 3 |  |  | 32% → 53% | 397.82d → 398.88d |
| PG-30800 | T&C - Floor 4 |  |  | 9% → 28% | 389.9d → 390.96d |
| PG-30802 | T&C - Floor 6 | 2025-06-20 → 2025-06-25 (+5d) | 2025-07-25 → 2025-07-30 (+5d) |  | 364.28d → 361.57d |
| PG-30803 | T&C - Floor 7 | 2025-07-05 → 2025-07-07 (+2d) |  |  | 352.52d → 353.17d |
| PG-30804 | T&C - Floor 8 | 2025-07-24 → 2025-07-23 (-1d) |  |  | 335.94d → 337.9d |
| PG-30805 | T&C - Floor 9 | 2025-08-06 → 2025-08-07 (+1d) | 2025-09-10 → 2025-09-11 (+1d) |  | 324.72d → 324.88d |
| PG-30806 | T&C - Floor 10 | 2025-08-22 → 2025-08-23 (+1d) | 2025-09-26 → 2025-09-27 (+1d) |  |  |
| PG-30807 | T&C - Floor 11 | 2025-09-04 → 2025-09-05 (+1d) | 2025-10-10 → 2025-10-11 (+1d) |  |  |
| PG-30808 | T&C - Floor 12 | 2025-09-20 → 2025-09-22 (+2d) | 2025-10-25 → 2025-10-27 (+2d) |  |  |
| PG-30809 | T&C - Floor 13 | 2025-10-04 → 2025-10-06 (+2d) | 2025-11-08 → 2025-11-10 (+2d) |  |  |
| PG-30810 | T&C - Floor 14 | 2025-10-15 → 2025-10-16 (+1d) | 2025-11-19 → 2025-11-20 (+1d) |  |  |
| PG-30812 | T&C - Floor 16 | 2025-11-11 → 2025-11-12 (+1d) | 2025-12-15 → 2025-12-16 (+1d) |  |  |
| PG-30813 | T&C - Floor 17 | 2025-11-22 → 2025-11-24 (+2d) | 2025-12-27 → 2025-12-29 (+2d) |  |  |
| PG-30814 | T&C - Floor 18 | 2025-12-05 → 2025-12-06 (+1d) | 2026-01-09 → 2026-01-10 (+1d) |  |  |
| PG-30815 | T&C - Floor 19 | 2025-12-18 → 2025-12-19 (+1d) | 2026-01-22 → 2026-01-23 (+1d) |  |  |
| PG-30816 | T&C - Floor 20 | 2026-01-01 → 2026-01-02 (+1d) | 2026-02-06 → 2026-02-07 (+1d) |  |  |
| PG-30817 | T&C - Floor 21 | 2026-01-14 → 2026-01-15 (+1d) | 2026-02-19 → 2026-02-20 (+1d) |  |  |
| PG-30818 | T&C - Floor 22 | 2026-01-28 → 2026-01-29 (+1d) | 2026-03-04 → 2026-03-05 (+1d) |  |  |
| PG-30819 | T&C - Floor 23 | 2026-02-10 → 2026-02-11 (+1d) | 2026-03-16 → 2026-03-17 (+1d) |  |  |
| PG-30820 | T&C - Floor 24 | 2026-02-23 → 2026-02-24 (+1d) | 2026-03-30 → 2026-03-31 (+1d) |  |  |
| PG-30821 | T&C - Floor 25 | 2026-03-16 → 2026-03-17 (+1d) | 2026-04-20 → 2026-04-21 (+1d) |  |  |

| ID | Task | Start | Finish | Complete | Total float |
| --- | --- | --- | --- | --- | --- |
| PG-30822 | T&C - Floor 26 | 2026-04-06 → 2026-04-07 (+1d) | 2026-05-13 → 2026-05-14 (+1d) |  |  |
| PG-30823 | T&C - Floor 27 | 2026-04-28 → 2026-04-29 (+1d) | 2026-06-03 → 2026-06-04 (+1d) |  |  |
| PG-30824 | T&C - Floor 28 | 2026-05-20 → 2026-05-21 (+1d) | 2026-06-24 → 2026-06-25 (+1d) |  |  |
| PG-30825 | T&C - Floor 29 | 2026-06-11 → 2026-06-12 (+1d) | 2026-07-15 → 2026-07-16 (+1d) |  |  |
| 1.6.1.3.2 | **Common Areas** | 2026-02-27 → 2026-02-28 (+1d) |  |  |  |
| PG-30826 | T&C - Internal Electrical Works | 2026-02-27 → 2026-02-28 (+1d) | 2026-03-17 → 2026-03-18 (+1d) |  |  |
| PG-30827 | T&C - Internal FPS Works | 2026-02-27 → 2026-02-28 (+1d) | 2026-03-17 → 2026-03-18 (+1d) |  |  |
| PG-30828 | T&C - Data & Communication Works | 2026-03-05 → 2026-03-06 (+1d) | 2026-03-23 → 2026-03-24 (+1d) |  |  |
| PG-30829 | T&C - Internal PHE Works including OHT | 2026-04-08 → 2026-04-09 (+1d) | 2026-05-01 → 2026-05-02 (+1d) |  |  |
| PG-30832 | T&C - Lightining Arrestor works | 2026-05-08 → 2026-05-09 (+1d) | 2026-05-15 → 2026-05-16 (+1d) |  |  |
| PG-30830 | T&C - Lift Works | 2026-07-29 → 2026-07-30 (+1d) | 2026-08-10 → 2026-08-11 (+1d) |  |  |
| 1.6.9 | **Project InfraStructure Works ( Services & MEP )** |  | 2026-10-31 → 2026-11-02 (+2d) |  |  |
| PG-31526 | T&C - FPS & FA works ( External & Plant Room ) |  | 2025-10-01 → 2025-10-03 (+2d) |  | 412.09d → 412.86d |
| 1.6.9.1 | **Transformer Works** | 2026-09-26 → 2026-09-28 (+2d) | 2026-10-31 → 2026-11-02 (+2d) |  |  |
| PG-31514 | T&C - Transformer 01 ( Building 01 & 02 ) | 2026-09-26 → 2026-09-28 (+2d) | 2026-10-31 → 2026-11-02 (+2d) |  |  |
| 1.7 | **Snagging De Snagging** |  | 2026-12-04 → 2026-12-05 (+1d) |  |  |
| 1.7.1 | **Building 1** |  | 2026-11-04 → 2026-11-05 (+1d) |  |  |
| PG-31538 | Floor 4 |  | 2025-05-23 → 2025-05-24 A (+1d) | 98% → 100% | 447.94d → none |
| PG-31539 | Floor 5 |  |  | 43% → 63% | 431.52d → 432.58d |
| PG-31540 | Floor 6 |  | 2025-06-25 → 2025-06-27 (+2d) | 3% → 19% | 419.58d → 419.35d |
| PG-31543 | Floor 9 | 2025-07-04 → 2025-07-05 (+1d) | 2025-08-08 → 2025-08-09 (+1d) |  | 381.63d → 381.83d |
| PG-31545 | Floor 11 | 2025-08-04 → 2025-08-02 (-2d) |  |  | 356.52d → 357.93d |
| PG-31546 | Floor 12 | 2025-08-13 → 2025-08-14 (+1d) | 2025-09-18 → 2025-09-19 (+1d) |  | 347.75d → 347.83d |
| PG-31547 | Floor 13 | 2025-08-28 → 2025-08-27 (-1d) | 2025-10-03 → 2025-09-30 (-3d) |  | 336.27d → 338.71d |
| PG-31549 | Floor 15 | 2025-09-23 → 2025-09-22 (-1d) |  |  | 314.69d → 316.14d |
| PG-31550 | Floor 16 | 2025-10-07 → 2025-10-06 (-1d) |  |  | 303.69d → 305.14d |
| PG-31551 | Floor 17 | 2025-10-20 → 2025-10-18 (-2d) |  |  | 292.69d → 294.14d |
| PG-31552 | Floor 18 | 2025-11-03 → 2025-10-31 (-3d) |  |  | 281.69d → 283.14d |
| PG-31553 | Floor 19 | 2025-11-27 → 2025-11-26 (-1d) |  |  | 260.69d → 262.14d |
| PG-31554 | Floor 20 | 2025-12-18 → 2025-12-17 (-1d) |  |  | 241.52d → 242.97d |
| PG-31555 | Floor 21 | 2026-01-09 → 2026-01-08 (-1d) |  |  | 222.52d → 223.97d |
| PG-31556 | Floor 22 | 2026-02-03 → 2026-02-02 (-1d) |  |  | 202.52d → 203.97d |
| PG-31557 | Floor 23 | 2026-02-21 → 2026-02-20 (-1d) |  |  | 186.52d → 187.97d |
| PG-31559 | Internal Electrical Works |  | 2025-12-30 → 2025-12-29 (-1d) |  | 262.19d → 263.64d |
| PG-31565 | Lightining Arrestor works | 2025-12-24 → 2025-12-23 (-1d) |  |  | 250.69d → 252.14d |
| PG-31564 | Electrical Panel Works |  | 2026-06-01 → 2026-05-30 (-2d) |  | 132.19d → 133.64d |
| 1.7.1.2 | **Tower 2** |  | 2026-10-17 → 2026-10-19 (+2d) |  |  |
| 1.7.1.2.1 | **Units** |  | 2026-05-06 → 2026-05-07 (+1d) |  |  |
| PG-31570 | Floor 4 |  |  | 77% → 97% | 441.52d → 442.58d |
| PG-31571 | Floor 5 |  |  | 46% → 66% | 432.11d → 433.17d |
| PG-31572 | Floor 6 | 2025-05-24 → 2025-05-26 A (+2d) | 2025-06-27 → 2025-06-30 (+3d) | 0% → 10% | 417.59d → 416.64d |
| PG-31575 | Floor 9 | 2025-07-02 → 2025-07-03 (+1d) | 2025-08-07 → 2025-08-08 (+1d) |  | 382.74d → 383.08d |
| PG-31577 | Floor 11 |  | 2025-09-08 → 2025-09-06 (-2d) |  | 357.36d → 358.6d |
| PG-31578 | Floor 12 | 2025-08-14 → 2025-08-16 (+2d) | 2025-09-19 → 2025-09-20 (+1d) |  | 347.12d → 347.17d |
| PG-31579 | Floor 13 |  | 2025-10-04 → 2025-10-03 (-1d) |  | 335.19d → 336.74d |
| PG-31580 | Floor 14 |  | 2025-10-17 → 2025-10-18 (+1d) |  | 323.64d → 324.28d |
| PG-31581 | Floor 15 | 2025-09-24 → 2025-09-25 (+1d) | 2025-10-29 → 2025-10-30 (+1d) |  | 313.76d → 313.75d |
| PG-31582 | Floor 16 | 2025-10-07 → 2025-10-08 (+1d) | 2025-11-12 → 2025-11-13 (+1d) |  | 303.43d → 303.42d |
| PG-31583 | Floor 17 | 2025-10-20 → 2025-10-21 (+1d) | 2025-11-25 → 2025-11-26 (+1d) |  | 292.43d → 292.42d |
| PG-31584 | Floor 18 | 2025-11-05 → 2025-11-06 (+1d) | 2025-12-08 → 2025-12-09 (+1d) |  | 280.59d → 280.58d |
| PG-31585 | Floor 19 | 2025-11-18 → 2025-11-19 (+1d) | 2025-12-20 → 2025-12-22 (+2d) |  | 269.59d → 269.58d |
| PG-31586 | Floor 20 | 2025-12-02 → 2025-12-03 (+1d) | 2026-01-03 → 2026-01-05 (+2d) |  | 257.59d → 257.58d |
| PG-31587 | Floor 21 | 2025-12-12 → 2025-12-15 (+3d) | 2026-01-15 → 2026-01-16 (+1d) |  | 247.93d → 247.92d |
| PG-31588 | Floor 22 | 2026-01-02 → 2026-01-03 (+1d) | 2026-02-09 → 2026-02-10 (+1d) |  | 228.09d → 228.08d |
| PG-31589 | Floor 23 | 2026-01-24 → 2026-01-27 (+3d) | 2026-03-02 → 2026-03-03 (+1d) |  | 210.09d → 210.08d |
| PG-31590 | Floor 24 | 2026-02-16 → 2026-02-18 (+2d) | 2026-03-24 → 2026-03-25 (+1d) |  | 190.93d → 190.92d |
| PG-31591 | Floor 25 | 2026-03-11 → 2026-03-12 (+1d) | 2026-04-16 → 2026-04-17 (+1d) |  | 171.43d → 171.42d |
| PG-31592 | Floor 26 | 2026-04-02 → 2026-04-03 (+1d) | 2026-05-06 → 2026-05-07 (+1d) |  | 153.59d → 153.58d |
| 1.7.1.2.2 | **Comman Areas** | 2025-12-01 → 2025-12-02 (+1d) | 2026-10-17 → 2026-10-19 (+2d) |  |  |
| PG-31595 | Internal FPS Works | 2025-12-01 → 2025-12-02 (+1d) | 2026-02-10 → 2026-02-11 (+1d) |  | 227.09d → 227.08d |
| PG-31596 | Data & Communication Works | 2025-12-08 → 2025-12-09 (+1d) | 2026-02-16 → 2026-02-17 (+1d) |  | 221.76d → 221.75d |
| PG-31597 | Internal PHE Works including OHT | 2026-01-17 → 2026-01-19 (+2d) | 2026-03-30 → 2026-03-31 (+1d) |  | 185.93d → 185.92d |
| PG-31600 | Lightining Arrestor works | 2026-02-02 → 2026-02-03 (+1d) | 2026-02-18 → 2026-02-19 (+1d) |  | 220.09d → 220.08d |
| PG-31599 | Electrical Panel Works | 2026-03-23 → 2026-03-24 (+1d) | 2026-04-25 → 2026-04-27 (+2d) |  | 162.76d → 162.75d |
| PG-31594 | Internal Electrical Works | 2026-04-02 → 2026-04-03 (+1d) | 2026-06-10 → 2026-06-11 (+1d) |  | 123.93d → 123.92d |
| PG-31598 | Lift Works | 2026-05-11 → 2026-05-12 (+1d) | 2026-06-13 → 2026-06-15 (+2d) |  | 120.59d → 120.58d |
| PG-31593 | Common Area Civil Works | 2026-08-06 → 2026-08-07 (+1d) | 2026-10-17 → 2026-10-19 (+2d) |  | 15.09d → 15.08d |
| 1.7.1.3 | **Tower 3** |  | 2026-11-04 → 2026-11-05 (+1d) |  |  |
| 1.7.1.3.1 | **Units** |  | 2026-08-20 → 2026-08-21 (+1d) |  |  |
| PG-31601 | Ground Floor |  |  | 80% → 100% | 442.5d → 443.56d |

| ID | Task | Start | Finish | Complete | Total float |
| --- | --- | --- | --- | --- | --- |
| PG-31602 | Floor 1 |  |  | 32% → 51% | 427.53d → 428.59d |
| PG-31603 | Floor 2 |  | 2025-06-27 → 2025-07-01 (+4d) | 3% → 14% | 417.8d → 416.31d |
| PG-31607 | Floor 6 | 2025-07-25 → 2025-07-30 (+5d) | 2025-08-30 → 2025-09-04 (+5d) |  | 364.28d → 361.57d |
| PG-31608 | Floor 7 |  | 2025-09-12 → 2025-09-13 (+1d) |  | 352.52d → 353.17d |
| PG-31609 | Floor 8 |  | 2025-10-03 → 2025-10-01 (-2d) |  | 335.94d → 337.9d |
| PG-31610 | Floor 9 | 2025-09-10 → 2025-09-11 (+1d) | 2025-10-16 → 2025-10-17 (+1d) |  | 324.72d → 324.88d |
| PG-31611 | Floor 10 | 2025-09-26 → 2025-09-27 (+1d) | 2025-11-03 → 2025-11-04 (+1d) |  |  |
| PG-31612 | Floor 11 | 2025-10-10 → 2025-10-11 (+1d) | 2025-11-15 → 2025-11-17 (+2d) |  |  |
| PG-31613 | Floor 12 | 2025-10-25 → 2025-10-27 (+2d) | 2025-12-01 → 2025-12-02 (+1d) |  |  |
| PG-31614 | Floor 13 | 2025-11-08 → 2025-11-10 (+2d) | 2025-12-13 → 2025-12-15 (+2d) |  |  |
| PG-31615 | Floor 14 | 2025-11-19 → 2025-11-20 (+1d) | 2025-12-24 → 2025-12-25 (+1d) |  |  |
| PG-31617 | Floor 16 | 2025-12-15 → 2025-12-16 (+1d) | 2026-01-19 → 2026-01-20 (+1d) |  |  |
| PG-31618 | Floor 17 | 2025-12-27 → 2025-12-29 (+2d) | 2026-02-02 → 2026-02-03 (+1d) |  |  |
| PG-31619 | Floor 18 | 2026-01-09 → 2026-01-10 (+1d) | 2026-02-14 → 2026-02-16 (+2d) |  |  |
| PG-31620 | Floor 19 | 2026-01-22 → 2026-01-23 (+1d) | 2026-02-27 → 2026-02-28 (+1d) |  |  |
| PG-31621 | Floor 20 | 2026-02-06 → 2026-02-07 (+1d) | 2026-03-12 → 2026-03-13 (+1d) |  |  |
| PG-31622 | Floor 21 | 2026-02-19 → 2026-02-20 (+1d) | 2026-03-25 → 2026-03-26 (+1d) |  |  |
| PG-31623 | Floor 22 | 2026-03-04 → 2026-03-05 (+1d) | 2026-04-07 → 2026-04-08 (+1d) |  |  |
| PG-31624 | Floor 23 | 2026-03-16 → 2026-03-17 (+1d) | 2026-04-20 → 2026-04-21 (+1d) |  |  |
| PG-31625 | Floor 24 | 2026-03-30 → 2026-03-31 (+1d) | 2026-05-02 → 2026-05-04 (+2d) |  |  |
| PG-31626 | Floor 25 | 2026-04-20 → 2026-04-21 (+1d) | 2026-05-25 → 2026-05-26 (+1d) |  |  |
| PG-31627 | Floor 26 | 2026-05-13 → 2026-05-14 (+1d) | 2026-06-17 → 2026-06-18 (+1d) |  |  |
| PG-31628 | Floor 27 | 2026-06-03 → 2026-06-04 (+1d) | 2026-07-08 → 2026-07-09 (+1d) |  |  |
| PG-31629 | Floor 28 | 2026-06-24 → 2026-06-25 (+1d) | 2026-07-29 → 2026-07-30 (+1d) |  |  |
| PG-31630 | Floor 29 | 2026-07-15 → 2026-07-16 (+1d) | 2026-08-20 → 2026-08-21 (+1d) |  |  |
| 1.7.1.3.2 | **Common Areas** | 2026-03-17 → 2026-03-18 (+1d) | 2026-11-04 → 2026-11-05 (+1d) |  |  |
| PG-31632 | Internal Electrical Works | 2026-03-17 → 2026-03-18 (+1d) | 2026-04-03 → 2026-04-04 (+1d) |  |  |
| PG-31633 | Internal FPS Works | 2026-03-17 → 2026-03-18 (+1d) | 2026-04-04 → 2026-04-06 (+2d) |  |  |
| PG-31634 | Data & Communication Works | 2026-03-23 → 2026-03-24 (+1d) | 2026-04-08 → 2026-04-09 (+1d) |  |  |
| PG-31635 | Internal PHE Works including OHT | 2026-05-01 → 2026-05-02 (+1d) | 2026-05-25 → 2026-05-26 (+1d) |  |  |
| PG-31638 | Lightining Arrestor works | 2026-05-15 → 2026-05-16 (+1d) | 2026-05-23 → 2026-05-25 (+2d) |  |  |
| PG-31636 | Lift Works | 2026-08-10 → 2026-08-11 (+1d) | 2026-09-03 → 2026-09-04 (+1d) |  |  |
| PG-31631 | Common Area Civil Works | 2026-10-17 → 2026-10-19 (+2d) | 2026-11-04 → 2026-11-05 (+1d) |  |  |
| 1.7.9 | **Project InfraStructure Works ( Services & MEP )** |  | 2026-12-04 → 2026-12-05 (+1d) |  |  |
| PG-32348 | FPS & FA works ( External & Plant Room ) | 2025-10-01 → 2025-10-03 (+2d) |  |  | 412.09d → 412.86d |
| 1.7.9.1 | **Transformer Works** | 2026-10-31 → 2026-11-02 (+2d) | 2026-12-04 → 2026-12-05 (+1d) |  |  |
| PG-32336 | Transformer 01 ( Building 01 & 02 ) | 2026-10-31 → 2026-11-02 (+2d) | 2026-12-04 → 2026-12-05 (+1d) |  |  |
| 1.8 | **Handing Over** |  | 2027-02-12 → 2027-02-13 (+1d) |  |  |
| PG-32378 | Building 1 | 2026-11-04 → 2026-11-05 (+1d) | 2026-11-16 → 2026-11-17 (+1d) |  |  |
| PG-32386 | Project InfraStructure Works ( Services & MEP ) | 2027-01-25 → 2027-01-27 (+2d) | 2027-02-12 → 2027-02-13 (+1d) |  |  |
| 1.10 | **Post Construction Statutory Approvals** |  | 2027-03-02 → 2027-03-03 (+1d) |  |  |
| PG-32394 | CEIG Approval - Lift | 2026-11-16 → 2026-11-17 (+1d) | 2026-12-19 → 2026-12-21 (+2d) |  |  |
| PG-32395 | Pollution Control board CFO | 2026-12-19 → 2026-12-21 (+2d) | 2027-01-25 → 2027-01-27 (+2d) |  |  |
| PG-32397 | Occupation Certificate | 2026-12-19 → 2026-12-21 (+2d) | 2027-03-02 → 2027-03-03 (+1d) |  |  |
| 2 | **Milestone** |  | 2027-03-02 → 2027-03-03 (+1d) |  |  |
| MS-2001 | Tower 2 - Structure Complete | 2025-09-26 → 2025-09-27 (+1d) | 2025-09-26 → 2025-09-27 (+1d) |  | 445.76d → 445.75d |
| MS-2002 | Tower 2 - MEP 1st Fix Complete | 2025-12-29 → 2025-12-30 (+1d) | 2025-12-29 → 2025-12-30 (+1d) |  | 368.09d → 368.08d |
| MS-3001 | Tower 3 - Structure Complete | 2026-01-10 → 2026-01-12 (+2d) | 2026-01-10 → 2026-01-12 (+2d) |  |  |
| MS-2003 | Tower 2 - MEP 2nd Fix Complete | 2026-02-03 → 2026-02-04 (+1d) | 2026-02-03 → 2026-02-04 (+1d) |  | 338.26d → 338.25d |
| MS-2005 | Tower 2 - MEP Final Fix Complete | 2026-02-25 → 2026-02-26 (+1d) | 2026-02-25 → 2026-02-26 (+1d) |  | 318.93d → 318.92d |
| MS-2004 | Tower 2 - Internal Finishes Complete | 2026-03-21 → 2026-03-23 (+2d) | 2026-03-21 → 2026-03-23 (+2d) |  | 297.93d → 297.92d |
| MS-3002 | Tower 3 - MEP 1st Fix Complete | 2026-04-14 → 2026-04-15 (+1d) | 2026-04-14 → 2026-04-15 (+1d) |  |  |
| MS-2006 | Tower 2 - Lifts Commissioned | 2026-04-17 → 2026-04-18 (+1d) | 2026-04-17 → 2026-04-18 (+1d) |  | 274.43d → 274.42d |
| MS-2007 | Tower 2 - T&C Complete | 2026-05-11 → 2026-05-12 (+1d) | 2026-05-11 → 2026-05-12 (+1d) |  | 254.93d → 254.92d |
| MS-3003 | Tower 3 - MEP 2nd Fix Complete | 2026-05-19 → 2026-05-20 (+1d) | 2026-05-19 → 2026-05-20 (+1d) |  |  |
| MS-3005 | Tower 3 - MEP Final Fix Complete | 2026-06-11 → 2026-06-12 (+1d) | 2026-06-11 → 2026-06-12 (+1d) |  |  |
| MS-3004 | Tower 3 - Internal Finishes Complete | 2026-07-03 → 2026-07-04 (+1d) | 2026-07-03 → 2026-07-04 (+1d) |  |  |
| MS-0103 | Transformer Delivered to Site | 2026-07-29 → 2026-07-30 (+1d) | 2026-07-29 → 2026-07-30 (+1d) |  |  |
| MS-3006 | Tower 3 - Lifts Commissioned | 2026-07-29 → 2026-07-30 (+1d) | 2026-07-29 → 2026-07-30 (+1d) |  |  |
| MS-9007 | Landscape Complete | 2026-08-10 → 2026-08-11 (+1d) | 2026-08-10 → 2026-08-11 (+1d) |  |  |
| MS-9002 | Transformer Charged | 2026-10-31 → 2026-11-02 (+2d) | 2026-10-31 → 2026-11-02 (+2d) |  |  |
| MS-9990 | Snagging Complete | 2026-12-04 → 2026-12-05 (+1d) | 2026-12-04 → 2026-12-05 (+1d) |  |  |
| MS-9999 | Project Finish / Handover | 2027-02-12 → 2027-02-13 (+1d) | 2027-02-12 → 2027-02-13 (+1d) |  |  |
| MS-9991 | Statutory Approvals Obtained | 2027-03-02 → 2027-03-03 (+1d) | 2027-03-02 → 2027-03-03 (+1d) |  |  |

## Version 13 (data date 2025-06-06, saved 2026-09-20, file APX_2025-06-06.xer)

Last finish stays 2027-03-09. Complete tasks 1305 → 1350.

Changed:

| ID | Task | Start | Finish | Complete | Total float |
| --- | --- | --- | --- | --- | --- |
| 1.2 | **Procurement and Materials requirement to Site** |  | 2026-07-30 → 2026-07-29 (-1d) |  |  |
| 1.2.2.1 | **Toilet dado and Floor tiles** |  | 2026-04-17 → 2026-04-16 (-1d) |  |  |
| PG-10006 | Second Consignment Supply to site ( 5th to 14th Floor ) | 2025-06-02 A | 2025-06-13 → 2025-06-12 (-1d) | 0% → 44% | 48.42d → 49.12d |
| PG-10007 | Third Consignment Supply to site ( 15th to 29th Floor ) | 2025-11-04 → 2025-11-03 (-1d) | 2025-11-15 → 2025-11-14 (-1d) |  | 48.42d → 49.12d |
| PG-10008 | Fourth Consignment Supply to site ( Balance Floor wise - 30th to 41st Floor ) | 2026-04-06 → 2026-04-04 (-2d) | 2026-04-17 → 2026-04-16 (-1d) |  | 275.42d → 276.12d |
| PG-10011 | Second Consignment Supply to site ( 5th to 14th Floor ) |  |  | 24% → 84% | 24.35d → 23.98d |
| 1.2.6 | **Electrical Panel Supply** |  | 2025-08-25 → 2025-08-22 (-3d) |  |  |
| PG-10032 | Materials Supply to site | 2025-07-21 → 2025-07-18 (-3d) | 2025-08-25 → 2025-08-22 (-3d) |  | 142.31d → 143.57d |
| 1.2.8 | **Transformer Supply** |  | 2026-07-30 → 2026-07-29 (-1d) |  |  |
| PG-10035 | Purchase Order works |  | 2026-03-12 → 2026-03-11 (-1d) |  |  |
| PG-10036 | Materials Supply to site |  | 2026-07-30 → 2026-07-29 (-1d) |  |  |
| 1.3.1.1.2 | **Structure works** |  | 2025-08-18 → 2025-08-19 (+1d) |  |  |
| 1.3.1.1.2.23 | **Floor 20** |  | 2025-05-30 → 2025-05-31 (+1d) |  |  |
| 1.3.1.1.2.23.2 | **Slab, Beams & Staircase** |  | 2025-05-30 → 2025-05-31 (+1d) |  |  |
| PG-10175 | Concrete |  | 2025-05-30 → 2025-05-31 A (+1d) | 39% → 100% | 47.31d → none |
| 1.3.1.1.2.24 | **Floor 21** | 2025-05-30 → 2025-05-31 (+1d) | 2025-06-12 → 2025-06-13 (+1d) |  |  |
| 1.3.1.1.2.24.1 | **Columns / shear walls** | 2025-05-30 → 2025-05-31 (+1d) | 2025-06-06 → 2025-06-07 (+1d) |  |  |
| PG-10176 | Reinforcement | 2025-05-30 → 2025-05-31 A (+1d) | 2025-06-04 → 2025-06-05 A (+1d) | 0% → 100% | 47.31d → none |
| PG-10177 | Formwork | 2025-06-02 → 2025-06-03 A (+1d) | 2025-06-06 → 2025-06-07 (+1d) | 0% → 82% | 47.31d → 45.96d |
| 1.3.1.1.2.24.2 | **Slab, Beams & Staircase** | 2025-06-05 → 2025-06-06 (+1d) | 2025-06-12 → 2025-06-13 (+1d) |  |  |
| PG-10178 | Formwork | 2025-06-05 → 2025-06-06 A (+1d) | 2025-06-09 → 2025-06-10 (+1d) | 0% → 13% | 47.31d → 45.96d |
| PG-10179 | Reinforcement | 2025-06-07 → 2025-06-09 (+2d) | 2025-06-11 → 2025-06-12 (+1d) |  | 47.31d → 45.96d |
| PG-10180 | Concrete | 2025-06-11 → 2025-06-12 (+1d) | 2025-06-12 → 2025-06-13 (+1d) |  | 47.31d → 45.96d |
| 1.3.1.1.2.25 | **Floor 22** | 2025-06-12 → 2025-06-13 (+1d) | 2025-06-25 → 2025-06-26 (+1d) |  |  |
| 1.3.1.1.2.25.1 | **Columns / shear walls** | 2025-06-12 → 2025-06-13 (+1d) | 2025-06-19 → 2025-06-20 (+1d) |  |  |
| PG-10181 | Reinforcement | 2025-06-12 → 2025-06-13 (+1d) | 2025-06-17 → 2025-06-18 (+1d) |  | 47.31d → 45.96d |
| PG-10182 | Formwork | 2025-06-14 → 2025-06-16 (+2d) | 2025-06-19 → 2025-06-20 (+1d) |  | 47.31d → 45.96d |
| 1.3.1.1.2.25.2 | **Slab, Beams & Staircase** | 2025-06-18 → 2025-06-19 (+1d) | 2025-06-25 → 2025-06-26 (+1d) |  |  |
| PG-10183 | Formwork | 2025-06-18 → 2025-06-19 (+1d) | 2025-06-21 → 2025-06-23 (+2d) |  | 47.31d → 45.96d |
| PG-10184 | Reinforcement | 2025-06-20 → 2025-06-21 (+1d) | 2025-06-24 → 2025-06-25 (+1d) |  | 47.31d → 45.96d |
| PG-10185 | Concrete | 2025-06-24 → 2025-06-25 (+1d) | 2025-06-25 → 2025-06-26 (+1d) |  | 47.31d → 45.96d |
| 1.3.1.1.2.26 | **Floor 23** | 2025-06-25 → 2025-06-26 (+1d) | 2025-07-08 → 2025-07-09 (+1d) |  |  |
| 1.3.1.1.2.26.1 | **Columns / shear walls** | 2025-06-25 → 2025-06-26 (+1d) | 2025-07-02 → 2025-07-03 (+1d) |  |  |
| PG-10186 | Reinforcement | 2025-06-25 → 2025-06-26 (+1d) | 2025-06-30 → 2025-07-01 (+1d) |  | 47.31d → 45.96d |
| PG-10187 | Formwork | 2025-06-27 → 2025-06-28 (+1d) | 2025-07-02 → 2025-07-03 (+1d) |  | 47.31d → 45.96d |
| 1.3.1.1.2.26.2 | **Slab, Beams & Staircase** | 2025-07-01 → 2025-07-02 (+1d) | 2025-07-08 → 2025-07-09 (+1d) |  |  |
| PG-10188 | Formwork | 2025-07-01 → 2025-07-02 (+1d) | 2025-07-04 → 2025-07-05 (+1d) |  | 47.31d → 45.96d |
| PG-10189 | Reinforcement | 2025-07-03 → 2025-07-04 (+1d) | 2025-07-07 → 2025-07-08 (+1d) |  | 47.31d → 45.96d |
| PG-10190 | Concrete | 2025-07-07 → 2025-07-08 (+1d) | 2025-07-08 → 2025-07-09 (+1d) |  | 47.31d → 45.96d |
| 1.3.1.1.2.27 | **Above Terrace Floor** | 2025-07-08 → 2025-07-09 (+1d) | 2025-08-18 → 2025-08-19 (+1d) |  |  |
| 1.3.1.1.2.27.1 | **Columns / shear walls/Parapet Walls** | 2025-07-08 → 2025-07-09 (+1d) | 2025-07-22 → 2025-07-23 (+1d) |  |  |
| PG-10191 | Reinforcement | 2025-07-08 → 2025-07-09 (+1d) | 2025-07-12 → 2025-07-14 (+2d) |  | 124.81d → 123.46d |
| PG-10192 | Formwork | 2025-07-10 → 2025-07-11 (+1d) | 2025-07-16 → 2025-07-17 (+1d) |  | 124.81d → 123.46d |
| PG-10193 | Concrete | 2025-07-16 → 2025-07-17 (+1d) | 2025-07-22 → 2025-07-23 (+1d) |  | 124.81d → 123.46d |
| 1.3.1.1.2.27.2 | **Slab, Beams & Staircase Head rooms, Lift headroom** | 2025-07-12 → 2025-07-14 (+2d) | 2025-08-18 → 2025-08-19 (+1d) |  |  |
| PG-10197 | Terrace Waterproofing and Protective finishing. | 2025-07-12 → 2025-07-14 (+2d) | 2025-08-18 → 2025-08-19 (+1d) |  | 249.97d → 248.63d |
| PG-10194 | Formwork | 2025-07-22 → 2025-07-23 (+1d) | 2025-07-28 → 2025-07-29 (+1d) |  | 249.97d → 248.63d |
| PG-10195 | Reinforcement | 2025-07-28 → 2025-07-29 (+1d) | 2025-08-02 → 2025-08-04 (+2d) |  | 249.97d → 248.63d |
| PG-10196 | Concrete | 2025-08-02 → 2025-08-04 (+2d) | 2025-08-05 → 2025-08-06 (+1d) |  | 249.97d → 248.63d |
| 1.3.1.1.3 | **MEP Internal works** |  | 2026-01-17 → 2026-01-19 (+2d) |  |  |
| PG-10288 | Final Fix - CP & Sanitary fixtures |  | 2025-06-02 A | 84% → 100% | 381.83d → none |
| 1.3.1.1.3.12.2 | **Fire Fighting Works** |  | 2025-06-02 → 2025-05-31 (-2d) |  |  |
| PG-10291 | Final Fix - Smoke & heat detectors, FHC , FAS Etc. |  | 2025-06-02 → 2025-05-31 A (-2d) | 92% → 100% | 381.83d → none |
| 1.3.1.1.3.12.3 | **Electrical Works** |  | 2025-06-02 → 2025-05-31 (-2d) |  |  |
| PG-10294 | Final Fix - Electrical Fixtures |  | 2025-06-02 → 2025-05-31 A (-2d) | 90% → 100% | 381.83d → none |
| PG-10297 | Final Fix - CP & Sanitary fixtures | 2025-06-04 → 2025-06-05 A (+1d) |  | 0% → 32% | 369.03d → 368.66d |
| PG-10300 | Final Fix - Smoke & heat detectors, FHC , FAS Etc. | 2025-06-04 → 2025-06-05 A (+1d) |  | 0% → 41% | 369.03d → 368.66d |
| 1.3.1.1.3.14 | **Floor 11** |  | 2025-06-28 → 2025-07-02 (+4d) |  |  |
| 1.3.1.1.3.14.1 | **PHE Works** |  | 2025-06-28 → 2025-07-02 (+4d) |  |  |
| PG-10306 | Final Fix - CP & Sanitary fixtures | 2025-06-17 → 2025-06-21 (+4d) | 2025-06-28 → 2025-07-02 (+4d) |  | 357.93d → 353.91d |
| 1.3.1.1.3.14.2 | **Fire Fighting Works** |  | 2025-06-28 → 2025-07-02 (+4d) |  |  |
| PG-10308 | 2nd Fix - Sprinkler fixing & Pressure testing |  | 2025-06-07 → 2025-06-06 A (-1d) | 43% → 100% | 366.26d → none |
| PG-10309 | Final Fix - Smoke & heat detectors, FHC , FAS Etc. | 2025-06-17 → 2025-06-21 (+4d) | 2025-06-28 → 2025-07-02 (+4d) |  | 357.93d → 353.91d |
| 1.3.1.1.3.14.3 | **Electrical Works** |  | 2025-06-28 → 2025-07-02 (+4d) |  |  |
| PG-10311 | 2nd Fix - Wiring works |  | 2025-06-06 → 2025-06-07 (+1d) | 60% → 100% | 371.09d → 369.71d |
| PG-10312 | Final Fix - Electrical Fixtures | 2025-06-21 → 2025-06-26 (+5d) | 2025-06-28 → 2025-07-02 (+4d) |  | 357.93d → 353.91d |
| PG-10320 | 2nd Fix - Wiring works | 2025-06-03 → 2025-06-05 A (+2d) |  | 0% → 25% | 360.5d → 359.71d |
| 1.3.1.1.3.16 | **Floor 13** |  | 2025-07-23 → 2025-07-24 (+1d) |  |  |
| 1.3.1.1.3.16.1 | **PHE Works** |  | 2025-07-23 → 2025-07-24 (+1d) |  |  |
| PG-10324 | Final Fix - CP & Sanitary fixtures | 2025-07-11 → 2025-07-12 (+1d) | 2025-07-23 → 2025-07-24 (+1d) |  | 338.71d → 337.38d |

| ID | Task | Start | Finish | Complete | Total float |
| --- | --- | --- | --- | --- | --- |
| 1.3.1.1.3.16.2 | **Fire Fighting Works** |  | 2025-07-23 → 2025-07-24 (+1d) |  |  |
| PG-10326 | 2nd Fix - Sprinkler fixing & Pressure testing | 2025-06-19 → 2025-06-20 (+1d) |  |  | 348.71d → 347.38d |
| PG-10327 | Final Fix - Smoke & heat detectors, FHC , FAS Etc. | 2025-07-12 → 2025-07-14 (+2d) | 2025-07-23 → 2025-07-24 (+1d) |  | 338.71d → 337.38d |
| 1.3.1.1.3.16.3 | **Electrical Works** |  | 2025-07-23 → 2025-07-24 (+1d) |  |  |
| PG-10329 | 2nd Fix - Wiring works | 2025-06-12 → 2025-06-13 (+1d) |  |  | 353.71d → 352.38d |
| PG-10330 | Final Fix - Electrical Fixtures | 2025-07-17 → 2025-07-18 (+1d) | 2025-07-23 → 2025-07-24 (+1d) |  | 338.71d → 337.38d |
| 1.3.1.1.3.17 | **Floor 14** |  | 2025-08-07 → 2025-08-08 (+1d) |  |  |
| 1.3.1.1.3.17.1 | **PHE Works** |  | 2025-08-07 → 2025-08-08 (+1d) |  |  |
| PG-10331 | 1st Fix - Piping works |  | 2025-05-31 → 2025-06-02 A (+2d) | 86% → 100% | 326.05d → none |
| PG-10332 | 2nd Fix - diverter fixing & Pressure testing |  | 2025-06-07 → 2025-06-09 (+2d) | 34% → 94% | 326.05d → 324.71d |
| PG-10333 | Final Fix - CP & Sanitary fixtures | 2025-07-26 → 2025-07-28 (+2d) | 2025-08-07 → 2025-08-08 (+1d) |  | 326.05d → 324.71d |
| 1.3.1.1.3.17.2 | **Fire Fighting Works** |  | 2025-08-07 → 2025-08-08 (+1d) |  |  |
| PG-10334 | 1st Fix - Piping and Shaft hydrant works |  |  | 38% → 88% | 373.39d → 372.05d |
| PG-10335 | 2nd Fix - Sprinkler fixing & Pressure testing | 2025-07-03 → 2025-07-04 (+1d) | 2025-07-15 → 2025-07-16 (+1d) |  | 336.05d → 334.71d |
| PG-10336 | Final Fix - Smoke & heat detectors, FHC , FAS Etc. | 2025-07-26 → 2025-07-28 (+2d) | 2025-08-07 → 2025-08-08 (+1d) |  | 326.05d → 324.71d |
| 1.3.1.1.3.17.3 | **Electrical Works** |  | 2025-08-07 → 2025-08-08 (+1d) |  |  |
| PG-10338 | 2nd Fix - Wiring works | 2025-06-26 → 2025-06-27 (+1d) | 2025-07-14 → 2025-07-15 (+1d) |  | 341.05d → 339.71d |
| PG-10339 | Final Fix - Electrical Fixtures | 2025-07-31 → 2025-08-01 (+1d) | 2025-08-07 → 2025-08-08 (+1d) |  | 326.05d → 324.71d |
| 1.3.1.1.3.18 | **Floor 15** | 2025-05-30 → 2025-05-31 (+1d) | 2025-08-20 → 2025-08-18 (-2d) |  |  |
| 1.3.1.1.3.18.1 | **PHE Works** | 2025-05-30 → 2025-05-31 (+1d) | 2025-08-20 → 2025-08-18 (-2d) |  |  |
| PG-10340 | 1st Fix - Piping works | 2025-05-30 → 2025-05-31 A (+1d) | 2025-06-13 → 2025-06-11 (-2d) | 0% → 58% | 133.64d → 134.9d |
| PG-10341 | 2nd Fix - diverter fixing & Pressure testing | 2025-06-09 → 2025-06-06 (-3d) | 2025-06-20 → 2025-06-18 (-2d) |  | 133.64d → 134.9d |
| PG-10342 | Final Fix - CP & Sanitary fixtures | 2025-08-07 → 2025-08-05 (-2d) | 2025-08-20 → 2025-08-18 (-2d) |  | 316.14d → 317.4d |
| 1.3.1.1.3.18.2 | **Fire Fighting Works** | 2025-06-09 → 2025-06-07 (-2d) | 2025-08-20 → 2025-08-18 (-2d) |  |  |
| PG-10343 | 1st Fix - Piping and Shaft hydrant works | 2025-06-09 → 2025-06-07 (-2d) | 2025-06-23 → 2025-06-21 (-2d) |  | 362.81d → 363.61d |
| PG-10344 | 2nd Fix - Sprinkler fixing & Pressure testing | 2025-07-16 → 2025-07-14 (-2d) | 2025-07-28 → 2025-07-25 (-3d) |  | 325.14d → 326.4d |
| PG-10345 | Final Fix - Smoke & heat detectors, FHC , FAS Etc. | 2025-08-07 → 2025-08-05 (-2d) | 2025-08-20 → 2025-08-18 (-2d) |  | 316.14d → 317.4d |
| 1.3.1.1.3.18.3 | **Electrical Works** | 2025-05-30 → 2025-05-31 (+1d) | 2025-08-20 → 2025-08-18 (-2d) |  |  |
| PG-10346 | 1st Fix - GI wire pulling | 2025-05-30 → 2025-05-31 A (+1d) | 2025-06-09 → 2025-06-07 (-2d) | 0% → 82% | 362.81d → 363.61d |
| PG-10347 | 2nd Fix - Wiring works | 2025-07-09 → 2025-07-07 (-2d) | 2025-07-26 → 2025-07-24 (-2d) |  | 330.14d → 331.4d |
| PG-10348 | Final Fix - Electrical Fixtures | 2025-08-12 → 2025-08-09 (-3d) | 2025-08-20 → 2025-08-18 (-2d) |  | 316.14d → 317.4d |
| 1.3.1.1.3.19 | **Floor 16** | 2025-06-12 → 2025-06-13 (+1d) | 2025-09-02 → 2025-09-03 (+1d) |  |  |
| 1.3.1.1.3.19.1 | **PHE Works** | 2025-06-12 → 2025-06-13 (+1d) | 2025-09-02 → 2025-09-03 (+1d) |  |  |
| PG-10349 | 1st Fix - Piping works | 2025-06-12 → 2025-06-13 (+1d) | 2025-06-26 → 2025-06-27 (+1d) |  | 305.14d → 303.8d |
| PG-10350 | 2nd Fix - diverter fixing & Pressure testing | 2025-06-21 → 2025-06-23 (+2d) | 2025-07-03 → 2025-07-04 (+1d) |  | 305.14d → 303.8d |
| PG-10351 | Final Fix - CP & Sanitary fixtures | 2025-08-21 → 2025-08-22 (+1d) | 2025-09-02 → 2025-09-03 (+1d) |  | 305.14d → 303.8d |
| 1.3.1.1.3.19.2 | **Fire Fighting Works** | 2025-06-21 → 2025-06-23 (+2d) | 2025-09-02 → 2025-09-03 (+1d) |  |  |
| PG-10352 | 1st Fix - Piping and Shaft hydrant works | 2025-06-21 → 2025-06-23 (+2d) | 2025-07-05 → 2025-07-07 (+2d) |  | 351.81d → 350.46d |
| PG-10353 | 2nd Fix - Sprinkler fixing & Pressure testing | 2025-07-29 → 2025-07-30 (+1d) | 2025-08-09 → 2025-08-11 (+2d) |  | 314.14d → 312.8d |
| PG-10354 | Final Fix - Smoke & heat detectors, FHC , FAS Etc. | 2025-08-21 → 2025-08-22 (+1d) | 2025-09-02 → 2025-09-03 (+1d) |  | 305.14d → 303.8d |
| 1.3.1.1.3.19.3 | **Electrical Works** | 2025-06-12 → 2025-06-13 (+1d) | 2025-09-02 → 2025-09-03 (+1d) |  |  |
| PG-10355 | 1st Fix - GI wire pulling | 2025-06-12 → 2025-06-13 (+1d) | 2025-06-21 → 2025-06-23 (+2d) |  | 351.81d → 350.46d |
| PG-10356 | 2nd Fix - Wiring works | 2025-07-22 → 2025-07-23 (+1d) | 2025-08-08 → 2025-08-09 (+1d) |  | 319.14d → 317.8d |
| PG-10357 | Final Fix - Electrical Fixtures | 2025-08-26 → 2025-08-27 (+1d) | 2025-09-02 → 2025-09-03 (+1d) |  | 305.14d → 303.8d |
| 1.3.1.1.3.20 | **Floor 17** | 2025-06-25 → 2025-06-26 (+1d) | 2025-09-15 → 2025-09-16 (+1d) |  |  |
| 1.3.1.1.3.20.1 | **PHE Works** | 2025-06-25 → 2025-06-26 (+1d) | 2025-09-15 → 2025-09-16 (+1d) |  |  |
| PG-10358 | 1st Fix - Piping works | 2025-06-25 → 2025-06-26 (+1d) | 2025-07-09 → 2025-07-10 (+1d) |  | 294.14d → 292.8d |
| PG-10359 | 2nd Fix - diverter fixing & Pressure testing | 2025-07-04 → 2025-07-05 (+1d) | 2025-07-16 → 2025-07-17 (+1d) |  | 294.14d → 292.8d |
| PG-10360 | Final Fix - CP & Sanitary fixtures | 2025-09-03 → 2025-09-04 (+1d) | 2025-09-15 → 2025-09-16 (+1d) |  | 294.14d → 292.8d |
| 1.3.1.1.3.20.2 | **Fire Fighting Works** | 2025-07-04 → 2025-07-05 (+1d) | 2025-09-15 → 2025-09-16 (+1d) |  |  |
| PG-10361 | 1st Fix - Piping and Shaft hydrant works | 2025-07-04 → 2025-07-05 (+1d) | 2025-07-18 → 2025-07-19 (+1d) |  | 340.81d → 339.46d |
| PG-10362 | 2nd Fix - Sprinkler fixing & Pressure testing | 2025-08-11 → 2025-08-12 (+1d) | 2025-08-23 → 2025-08-25 (+2d) |  | 303.14d → 301.8d |
| PG-10363 | Final Fix - Smoke & heat detectors, FHC , FAS Etc. | 2025-09-03 → 2025-09-04 (+1d) | 2025-09-15 → 2025-09-16 (+1d) |  | 294.14d → 292.8d |
| 1.3.1.1.3.20.3 | **Electrical Works** | 2025-06-25 → 2025-06-26 (+1d) | 2025-09-15 → 2025-09-16 (+1d) |  |  |
| PG-10364 | 1st Fix - GI wire pulling | 2025-06-25 → 2025-06-26 (+1d) | 2025-07-04 → 2025-07-05 (+1d) |  | 340.81d → 339.46d |
| PG-10365 | 2nd Fix - Wiring works | 2025-08-04 → 2025-08-05 (+1d) | 2025-08-22 → 2025-08-23 (+1d) |  | 308.14d → 306.8d |
| PG-10366 | Final Fix - Electrical Fixtures | 2025-09-08 → 2025-09-09 (+1d) | 2025-09-15 → 2025-09-16 (+1d) |  | 294.14d → 292.8d |
| 1.3.1.1.3.21 | **Floor 18** | 2025-07-08 → 2025-07-09 (+1d) | 2025-09-27 → 2025-09-29 (+2d) |  |  |
| 1.3.1.1.3.21.1 | **PHE Works** | 2025-07-08 → 2025-07-09 (+1d) | 2025-09-27 → 2025-09-29 (+2d) |  |  |
| PG-10367 | 1st Fix - Piping works | 2025-07-08 → 2025-07-09 (+1d) | 2025-07-22 → 2025-07-23 (+1d) |  | 47.31d → 45.96d |
| PG-10368 | 2nd Fix - diverter fixing & Pressure testing | 2025-07-17 → 2025-07-18 (+1d) | 2025-07-29 → 2025-07-30 (+1d) |  | 283.14d → 281.8d |
| PG-10369 | Final Fix - CP & Sanitary fixtures | 2025-09-16 → 2025-09-17 (+1d) | 2025-09-27 → 2025-09-29 (+2d) |  | 283.14d → 281.8d |
| 1.3.1.1.3.21.2 | **Fire Fighting Works** | 2025-07-17 → 2025-07-18 (+1d) | 2025-09-27 → 2025-09-29 (+2d) |  |  |
| PG-10370 | 1st Fix - Piping and Shaft hydrant works | 2025-07-17 → 2025-07-18 (+1d) | 2025-07-31 → 2025-08-01 (+1d) |  | 329.81d → 328.46d |
| PG-10371 | 2nd Fix - Sprinkler fixing & Pressure testing | 2025-08-25 → 2025-08-26 (+1d) | 2025-09-05 → 2025-09-06 (+1d) |  | 292.14d → 290.8d |
| PG-10372 | Final Fix - Smoke & heat detectors, FHC , FAS Etc. | 2025-09-16 → 2025-09-17 (+1d) | 2025-09-27 → 2025-09-29 (+2d) |  | 283.14d → 281.8d |
| 1.3.1.1.3.21.3 | **Electrical Works** | 2025-07-08 → 2025-07-09 (+1d) | 2025-09-27 → 2025-09-29 (+2d) |  |  |
| PG-10373 | 1st Fix - GI wire pulling | 2025-07-08 → 2025-07-09 (+1d) | 2025-07-17 → 2025-07-18 (+1d) |  | 329.81d → 328.46d |
| PG-10374 | 2nd Fix - Wiring works | 2025-08-18 → 2025-08-19 (+1d) | 2025-09-04 → 2025-09-05 (+1d) |  | 297.14d → 295.8d |
| PG-10375 | Final Fix - Electrical Fixtures | 2025-09-20 → 2025-09-22 (+2d) | 2025-09-27 → 2025-09-29 (+2d) |  | 283.14d → 281.8d |

| ID | Task | Start | Finish | Complete | Total float |
| --- | --- | --- | --- | --- | --- |
| 1.3.1.1.3.22 | **Floor 19** | 2025-07-30 → 2025-07-31 (+1d) | 2025-10-23 → 2025-10-24 (+1d) |  |  |
| 1.3.1.1.3.22.1 | **PHE Works** | 2025-07-30 → 2025-07-31 (+1d) | 2025-10-23 → 2025-10-24 (+1d) |  |  |
| PG-10376 | 1st Fix - Piping works | 2025-07-30 → 2025-07-31 (+1d) | 2025-08-13 → 2025-08-14 (+1d) |  | 166.31d → 164.96d |
| PG-10377 | 2nd Fix - diverter fixing & Pressure testing | 2025-08-08 → 2025-08-09 (+1d) | 2025-08-21 → 2025-08-22 (+1d) |  | 166.31d → 164.96d |
| PG-10378 | Final Fix - CP & Sanitary fixtures | 2025-10-11 → 2025-10-13 (+2d) | 2025-10-23 → 2025-10-24 (+1d) |  | 262.14d → 260.8d |
| 1.3.1.1.3.22.2 | **Fire Fighting Works** | 2025-08-08 → 2025-08-09 (+1d) | 2025-10-23 → 2025-10-24 (+1d) |  |  |
| PG-10379 | 1st Fix - Piping and Shaft hydrant works | 2025-08-08 → 2025-08-09 (+1d) | 2025-08-23 → 2025-08-25 (+2d) |  | 178.31d → 176.96d |
| PG-10380 | 2nd Fix - Sprinkler fixing & Pressure testing | 2025-09-16 → 2025-09-17 (+1d) | 2025-09-27 → 2025-09-29 (+2d) |  | 273.14d → 271.8d |
| PG-10381 | Final Fix - Smoke & heat detectors, FHC , FAS Etc. | 2025-10-11 → 2025-10-13 (+2d) | 2025-10-23 → 2025-10-24 (+1d) |  | 262.14d → 260.8d |
| 1.3.1.1.3.22.3 | **Electrical Works** | 2025-07-30 → 2025-07-31 (+1d) | 2025-10-23 → 2025-10-24 (+1d) |  |  |
| PG-10382 | 1st Fix - GI wire pulling | 2025-07-30 → 2025-07-31 (+1d) | 2025-08-08 → 2025-08-09 (+1d) |  | 47.31d → 45.96d |
| PG-10383 | 2nd Fix - Wiring works | 2025-09-09 → 2025-09-10 (+1d) | 2025-09-26 → 2025-09-27 (+1d) |  | 278.14d → 276.8d |
| PG-10384 | Final Fix - Electrical Fixtures | 2025-10-16 → 2025-10-17 (+1d) | 2025-10-23 → 2025-10-24 (+1d) |  | 262.14d → 260.8d |
| 1.3.1.1.3.23 | **Floor 20** | 2025-08-22 → 2025-08-23 (+1d) | 2025-11-14 → 2025-11-15 (+1d) |  |  |
| 1.3.1.1.3.23.1 | **PHE Works** | 2025-08-22 → 2025-08-23 (+1d) | 2025-11-14 → 2025-11-15 (+1d) |  |  |
| PG-10385 | 1st Fix - Piping works | 2025-08-22 → 2025-08-23 (+1d) | 2025-09-05 → 2025-09-06 (+1d) |  | 187.97d → 186.63d |
| PG-10386 | 2nd Fix - diverter fixing & Pressure testing | 2025-09-01 → 2025-09-02 (+1d) | 2025-09-12 → 2025-09-13 (+1d) |  | 242.97d → 241.63d |
| PG-10387 | Final Fix - CP & Sanitary fixtures | 2025-11-03 → 2025-11-04 (+1d) | 2025-11-14 → 2025-11-15 (+1d) |  | 242.97d → 241.63d |
| 1.3.1.1.3.23.2 | **Fire Fighting Works** | 2025-09-01 → 2025-09-02 (+1d) | 2025-11-14 → 2025-11-15 (+1d) |  |  |
| PG-10388 | 1st Fix - Piping and Shaft hydrant works | 2025-09-01 → 2025-09-02 (+1d) | 2025-09-15 → 2025-09-16 (+1d) |  | 289.64d → 288.3d |
| PG-10389 | 2nd Fix - Sprinkler fixing & Pressure testing | 2025-10-09 → 2025-10-10 (+1d) | 2025-10-21 → 2025-10-22 (+1d) |  | 252.64d → 251.3d |
| PG-10390 | Final Fix - Smoke & heat detectors, FHC , FAS Etc. | 2025-11-03 → 2025-11-04 (+1d) | 2025-11-14 → 2025-11-15 (+1d) |  | 242.97d → 241.63d |
| 1.3.1.1.3.23.3 | **Electrical Works** | 2025-08-22 → 2025-08-23 (+1d) | 2025-11-14 → 2025-11-15 (+1d) |  |  |
| PG-10391 | 1st Fix - GI wire pulling | 2025-08-22 → 2025-08-23 (+1d) | 2025-09-01 → 2025-09-02 (+1d) |  | 289.64d → 288.3d |
| PG-10392 | 2nd Fix - Wiring works | 2025-10-01 → 2025-10-03 (+2d) | 2025-10-20 → 2025-10-21 (+1d) |  | 257.97d → 256.63d |
| PG-10393 | Final Fix - Electrical Fixtures | 2025-11-07 → 2025-11-08 (+1d) | 2025-11-14 → 2025-11-15 (+1d) |  | 242.97d → 241.63d |
| 1.3.1.1.3.24 | **Floor 21** | 2025-09-13 → 2025-09-15 (+2d) | 2025-12-06 → 2025-12-08 (+2d) |  |  |
| 1.3.1.1.3.24.1 | **PHE Works** | 2025-09-13 → 2025-09-15 (+2d) | 2025-12-06 → 2025-12-08 (+2d) |  |  |
| PG-10394 | 1st Fix - Piping works | 2025-09-13 → 2025-09-15 (+2d) | 2025-09-27 → 2025-09-29 (+2d) |  | 187.97d → 186.63d |
| PG-10395 | 2nd Fix - diverter fixing & Pressure testing | 2025-09-23 → 2025-09-24 (+1d) | 2025-10-06 → 2025-10-07 (+1d) |  | 223.97d → 222.63d |
| PG-10396 | Final Fix - CP & Sanitary fixtures | 2025-11-25 → 2025-11-26 (+1d) | 2025-12-06 → 2025-12-08 (+2d) |  | 223.97d → 222.63d |
| 1.3.1.1.3.24.2 | **Fire Fighting Works** | 2025-09-23 → 2025-09-24 (+1d) | 2025-12-06 → 2025-12-08 (+2d) |  |  |
| PG-10397 | 1st Fix - Piping and Shaft hydrant works | 2025-09-23 → 2025-09-24 (+1d) | 2025-10-08 → 2025-10-09 (+1d) |  | 270.64d → 269.3d |
| PG-10398 | 2nd Fix - Sprinkler fixing & Pressure testing | 2025-10-31 → 2025-11-03 (+3d) | 2025-11-13 → 2025-11-14 (+1d) |  | 233.97d → 232.63d |
| PG-10399 | Final Fix - Smoke & heat detectors, FHC , FAS Etc. | 2025-11-25 → 2025-11-26 (+1d) | 2025-12-06 → 2025-12-08 (+2d) |  | 223.97d → 222.63d |
| 1.3.1.1.3.24.3 | **Electrical Works** | 2025-09-13 → 2025-09-15 (+2d) | 2025-12-06 → 2025-12-08 (+2d) |  |  |
| PG-10400 | 1st Fix - GI wire pulling | 2025-09-13 → 2025-09-15 (+2d) | 2025-09-23 → 2025-09-24 (+1d) |  | 270.64d → 269.3d |
| PG-10401 | 2nd Fix - Wiring works | 2025-10-24 → 2025-10-25 (+1d) | 2025-11-12 → 2025-11-13 (+1d) |  | 238.97d → 237.63d |
| PG-10402 | Final Fix - Electrical Fixtures | 2025-11-29 → 2025-12-01 (+2d) | 2025-12-06 → 2025-12-08 (+2d) |  | 223.97d → 222.63d |
| 1.3.1.1.3.25 | **Floor 22** | 2025-10-07 → 2025-10-08 (+1d) | 2025-12-29 → 2025-12-30 (+1d) |  |  |
| 1.3.1.1.3.25.1 | **PHE Works** | 2025-10-07 → 2025-10-08 (+1d) | 2025-12-29 → 2025-12-30 (+1d) |  |  |
| PG-10403 | 1st Fix - Piping works | 2025-10-07 → 2025-10-08 (+1d) | 2025-10-21 → 2025-10-22 (+1d) |  | 187.97d → 186.63d |
| PG-10404 | 2nd Fix - diverter fixing & Pressure testing | 2025-10-16 → 2025-10-17 (+1d) | 2025-10-28 → 2025-10-29 (+1d) |  | 203.97d → 202.63d |
| PG-10405 | Final Fix - CP & Sanitary fixtures | 2025-12-17 → 2025-12-18 (+1d) | 2025-12-29 → 2025-12-30 (+1d) |  | 203.97d → 202.63d |
| 1.3.1.1.3.25.2 | **Fire Fighting Works** | 2025-10-16 → 2025-10-17 (+1d) | 2025-12-29 → 2025-12-30 (+1d) |  |  |
| PG-10406 | 1st Fix - Piping and Shaft hydrant works | 2025-10-16 → 2025-10-17 (+1d) | 2025-10-30 → 2025-10-31 (+1d) |  | 251.64d → 250.3d |
| PG-10407 | 2nd Fix - Sprinkler fixing & Pressure testing | 2025-11-24 → 2025-11-25 (+1d) | 2025-12-05 → 2025-12-06 (+1d) |  | 213.97d → 212.63d |
| PG-10408 | Final Fix - Smoke & heat detectors, FHC , FAS Etc. | 2025-12-17 → 2025-12-18 (+1d) | 2025-12-29 → 2025-12-30 (+1d) |  | 203.97d → 202.63d |
| 1.3.1.1.3.25.3 | **Electrical Works** | 2025-10-07 → 2025-10-08 (+1d) | 2025-12-29 → 2025-12-30 (+1d) |  |  |
| PG-10409 | 1st Fix - GI wire pulling | 2025-10-07 → 2025-10-08 (+1d) | 2025-10-16 → 2025-10-17 (+1d) |  | 251.64d → 250.3d |
| PG-10410 | 2nd Fix - Wiring works | 2025-11-17 → 2025-11-18 (+1d) | 2025-12-04 → 2025-12-05 (+1d) |  | 218.97d → 217.63d |
| PG-10411 | Final Fix - Electrical Fixtures | 2025-12-22 → 2025-12-23 (+1d) | 2025-12-29 → 2025-12-30 (+1d) |  | 203.97d → 202.63d |
| 1.3.1.1.3.26 | **Floor 23** | 2025-10-29 → 2025-10-30 (+1d) | 2026-01-17 → 2026-01-19 (+2d) |  |  |
| 1.3.1.1.3.26.1 | **PHE Works** | 2025-10-29 → 2025-10-30 (+1d) | 2026-01-17 → 2026-01-19 (+2d) |  |  |
| PG-10412 | 1st Fix - Piping works | 2025-10-29 → 2025-10-30 (+1d) | 2025-11-13 → 2025-11-14 (+1d) |  | 187.97d → 186.63d |
| PG-10413 | 2nd Fix - diverter fixing & Pressure testing | 2025-11-08 → 2025-11-10 (+2d) | 2025-11-20 → 2025-11-21 (+1d) |  | 187.97d → 186.63d |
| PG-10414 | Final Fix - CP & Sanitary fixtures | 2026-01-06 → 2026-01-07 (+1d) | 2026-01-17 → 2026-01-19 (+2d) |  | 187.97d → 186.63d |
| 1.3.1.1.3.26.2 | **Fire Fighting Works** | 2025-11-08 → 2025-11-10 (+2d) | 2026-01-17 → 2026-01-19 (+2d) |  |  |
| PG-10415 | 1st Fix - Piping and Shaft hydrant works | 2025-11-08 → 2025-11-10 (+2d) | 2025-11-22 → 2025-11-24 (+2d) |  | 232.81d → 231.46d |
| PG-10416 | 2nd Fix - Sprinkler fixing & Pressure testing | 2025-12-16 → 2025-12-17 (+1d) | 2025-12-27 → 2025-12-29 (+2d) |  | 195.47d → 194.13d |
| PG-10417 | Final Fix - Smoke & heat detectors, FHC , FAS Etc. | 2026-01-06 → 2026-01-07 (+1d) | 2026-01-17 → 2026-01-19 (+2d) |  | 187.97d → 186.63d |
| 1.3.1.1.3.26.3 | **Electrical Works** | 2025-10-29 → 2025-10-30 (+1d) | 2026-01-17 → 2026-01-19 (+2d) |  |  |
| PG-10418 | 1st Fix - GI wire pulling | 2025-10-29 → 2025-10-30 (+1d) | 2025-11-08 → 2025-11-10 (+2d) |  | 232.81d → 231.46d |
| PG-10419 | 2nd Fix - Wiring works | 2025-12-09 → 2025-12-10 (+1d) | 2025-12-26 → 2025-12-27 (+1d) |  | 200.47d → 199.13d |
| PG-10420 | Final Fix - Electrical Fixtures | 2026-01-10 → 2026-01-12 (+2d) | 2026-01-17 → 2026-01-19 (+2d) |  | 187.97d → 186.63d |
| 1.3.1.1.4 | **Civil Finishes - Units** |  | 2026-01-13 → 2026-01-14 (+1d) |  |  |
| PG-10576 | Final Coat Painting |  |  | 58% → 92% | 406.61d → 406.24d |
| PG-10581 | Final Coat Painting |  |  | 53% → 87% | 369.03d → 368.66d |
| 1.3.1.1.4.14 | **Floor 11** |  | 2025-06-21 → 2025-06-25 (+4d) |  |  |
| 1.3.1.1.4.14.1 | **Ceiling Finishing works - Civil** |  | 2025-06-21 → 2025-06-25 (+4d) |  |  |

| ID | Task | Start | Finish | Complete | Total float |
| --- | --- | --- | --- | --- | --- |
| PG-10588 | Painting Works - Putty, Primer and 1st |  | 2025-05-31 → 2025-06-02 A (+2d) | 73% → 100% | 394.8d → none |
| PG-10590 | Final Coat Painting | 2025-05-31 → 2025-06-02 A (+2d) | 2025-06-21 → 2025-06-25 (+4d) | 0% → 3% | 394.6d → 390.58d |
| 1.3.1.1.4.14.2 | **Wall Finishing works - Civil** |  | 2025-06-21 → 2025-06-25 (+4d) |  |  |
| PG-10594 | Painting Works - Putty, Primer and 1st |  | 2025-05-31 → 2025-06-02 A (+2d) | 75% → 100% | 358.26d → none |
| PG-10595 | Final Coat Painting | 2025-05-31 → 2025-06-02 A (+2d) | 2025-06-21 → 2025-06-25 (+4d) | 0% → 3% | 357.93d → 353.91d |
| 1.3.1.1.4.14.3 | **Floor Finishing Works - Civil** |  | 2025-05-31 → 2025-06-02 (+2d) |  |  |
| PG-10599 | Wooden doors |  | 2025-05-31 → 2025-06-02 A (+2d) | 64% → 100% | 357.93d → none |
| PG-10603 | Toilet False ceiling |  | 2025-06-02 A | 63% → 100% | 372.5d → none |
| PG-10606 | UPVC Windows & Sliding doors | 2025-06-02 A |  | 0% → 84% | 347.83d → 347.05d |
| PG-10612 | Floor Tiling - Dry area |  | 2025-06-02 A | 64% → 100% | 347.83d → none |
| 1.3.1.1.4.16 | **Floor 13** |  | 2025-07-18 → 2025-07-19 (+1d) |  |  |
| 1.3.1.1.4.16.1 | **Ceiling Finishing works - Civil** |  | 2025-07-18 → 2025-07-19 (+1d) |  |  |
| PG-10615 | Cornice fixing | 2025-05-31 A | 2025-06-05 A | 0% → 100% | 380.83d → none |
| PG-10617 | Toilet False ceiling | 2025-06-06 → 2025-06-07 (+1d) |  |  | 365.21d → 363.88d |
| PG-10616 | Painting Works - Putty, Primer and 1st | 2025-06-17 → 2025-06-18 (+1d) |  |  | 371.38d → 370.05d |
| PG-10618 | Final Coat Painting | 2025-06-24 → 2025-06-25 (+1d) | 2025-07-18 → 2025-07-19 (+1d) |  | 371.38d → 370.05d |
| 1.3.1.1.4.16.2 | **Wall Finishing works - Civil** |  | 2025-07-16 → 2025-07-17 (+1d) |  |  |
| PG-10621 | Dadoing - Wet area |  | 2025-05-30 → 2025-05-31 A (+1d) | 99% → 100% | 338.71d → none |
| PG-10620 | UPVC Windows & Sliding doors | 2025-06-11 → 2025-06-12 (+1d) |  |  | 338.71d → 337.38d |
| PG-10622 | Painting Works - Putty, Primer and 1st | 2025-06-17 → 2025-06-18 (+1d) |  |  | 338.71d → 337.38d |
| PG-10623 | Final Coat Painting | 2025-06-24 → 2025-06-25 (+1d) | 2025-07-16 → 2025-07-17 (+1d) |  | 338.71d → 337.38d |
| PG-10625 | Floor Tiling - Wet area | 2025-05-30 → 2025-05-31 A (+1d) | 2025-06-05 → 2025-06-06 A (+1d) | 0% → 100% | 338.71d → none |
| PG-10626 | Floor Tiling - Dry area | 2025-06-05 → 2025-06-06 A (+1d) |  | 0% → 19% | 338.71d → 337.38d |
| PG-10627 | Wooden doors | 2025-06-18 → 2025-06-19 (+1d) |  |  | 338.71d → 337.38d |
| 1.3.1.1.4.17 | **Floor 14** |  | 2025-07-31 → 2025-08-01 (+1d) |  |  |
| 1.3.1.1.4.17.1 | **Ceiling Finishing works - Civil** |  | 2025-07-31 → 2025-08-01 (+1d) |  |  |
| PG-10628 | Gypsum Plastering |  | 2025-06-03 → 2025-06-04 A (+1d) | 49% → 100% | 373.39d → none |
| PG-10629 | Cornice fixing | 2025-06-12 → 2025-06-13 (+1d) |  |  | 373.39d → 372.05d |
| PG-10631 | Toilet False ceiling | 2025-06-20 → 2025-06-21 (+1d) | 2025-06-25 → 2025-06-26 (+1d) |  | 353.05d → 351.71d |
| PG-10630 | Painting Works - Putty, Primer and 1st | 2025-07-01 → 2025-07-02 (+1d) | 2025-07-08 → 2025-07-09 (+1d) |  | 360.72d → 359.38d |
| PG-10632 | Final Coat Painting | 2025-07-08 → 2025-07-09 (+1d) | 2025-07-31 → 2025-08-01 (+1d) |  | 360.72d → 359.38d |
| 1.3.1.1.4.17.2 | **Wall Finishing works - Civil** |  | 2025-07-31 → 2025-08-01 (+1d) |  |  |
| PG-10635 | Dadoing - Wet area | 2025-06-07 → 2025-06-09 (+2d) | 2025-06-13 → 2025-06-14 (+1d) |  | 326.05d → 324.71d |
| PG-10634 | UPVC Windows & Sliding doors | 2025-06-25 → 2025-06-26 (+1d) | 2025-07-01 → 2025-07-02 (+1d) |  | 326.05d → 324.71d |
| PG-10636 | Painting Works - Putty, Primer and 1st | 2025-07-01 → 2025-07-02 (+1d) | 2025-07-08 → 2025-07-09 (+1d) |  | 326.05d → 324.71d |
| PG-10637 | Final Coat Painting | 2025-07-08 → 2025-07-09 (+1d) | 2025-07-31 → 2025-08-01 (+1d) |  | 326.05d → 324.71d |
| 1.3.1.1.4.17.3 | **Floor Finishing Works - Civil** |  | 2025-07-08 → 2025-07-09 (+1d) |  |  |
| PG-10639 | Floor Tiling - Wet area | 2025-06-13 → 2025-06-14 (+1d) | 2025-06-19 → 2025-06-20 (+1d) |  | 326.05d → 324.71d |
| PG-10640 | Floor Tiling - Dry area | 2025-06-19 → 2025-06-20 (+1d) | 2025-06-25 → 2025-06-26 (+1d) |  | 326.05d → 324.71d |
| PG-10641 | Wooden doors | 2025-07-02 → 2025-07-03 (+1d) | 2025-07-08 → 2025-07-09 (+1d) |  | 326.05d → 324.71d |
| 1.3.1.1.4.18 | **Floor 15** | 2025-05-30 → 2025-05-31 (+1d) | 2025-08-12 → 2025-08-09 (-3d) |  |  |
| 1.3.1.1.4.18.1 | **Ceiling Finishing works - Civil** | 2025-06-09 → 2025-06-07 (-2d) | 2025-08-12 → 2025-08-09 (-3d) |  |  |
| PG-10642 | Gypsum Plastering | 2025-06-09 → 2025-06-07 (-2d) | 2025-06-16 → 2025-06-14 (-2d) |  | 362.81d → 363.61d |
| PG-10643 | Cornice fixing | 2025-06-25 → 2025-06-24 (-1d) | 2025-06-30 → 2025-06-28 (-2d) |  | 362.81d → 363.61d |
| PG-10645 | Toilet False ceiling | 2025-07-03 → 2025-07-01 (-2d) | 2025-07-08 → 2025-07-05 (-3d) |  | 342.14d → 343.4d |
| PG-10644 | Painting Works - Putty, Primer and 1st | 2025-07-14 → 2025-07-11 (-3d) | 2025-07-21 → 2025-07-18 (-3d) |  | 350.81d → 352.07d |
| PG-10646 | Final Coat Painting | 2025-07-21 → 2025-07-18 (-3d) | 2025-08-12 → 2025-08-09 (-3d) |  | 350.81d → 352.07d |
| 1.3.1.1.4.18.2 | **Wall Finishing works - Civil** | 2025-05-30 → 2025-05-31 (+1d) | 2025-08-12 → 2025-08-09 (-3d) |  |  |
| PG-10647 | Balcony Railing Fixing works | 2025-05-30 → 2025-05-31 A (+1d) | 2025-06-04 → 2025-06-05 A (+1d) | 0% → 100% | 162.64d → none |
| PG-10649 | Dadoing - Wet area | 2025-06-20 → 2025-06-18 (-2d) | 2025-06-26 → 2025-06-24 (-2d) |  | 133.64d → 134.9d |
| PG-10648 | UPVC Windows & Sliding doors | 2025-07-08 → 2025-07-05 (-3d) | 2025-07-14 → 2025-07-11 (-3d) |  | 133.64d → 134.9d |
| PG-10650 | Painting Works - Putty, Primer and 1st | 2025-07-14 → 2025-07-11 (-3d) | 2025-07-21 → 2025-07-18 (-3d) |  | 133.64d → 134.9d |
| PG-10651 | Final Coat Painting | 2025-07-21 → 2025-07-18 (-3d) | 2025-08-12 → 2025-08-09 (-3d) |  | 316.14d → 317.4d |
| 1.3.1.1.4.18.3 | **Floor Finishing Works - Civil** | 2025-05-30 → 2025-05-31 (+1d) | 2025-07-21 → 2025-07-18 (-3d) |  |  |
| PG-10652 | Waterproofing for sunken areas | 2025-05-30 → 2025-05-31 A (+1d) | 2025-06-03 → 2025-06-04 A (+1d) | 0% → 100% | 153.64d → none |
| PG-10653 | Floor Tiling - Wet area | 2025-06-26 → 2025-06-24 (-2d) | 2025-07-02 → 2025-06-30 (-2d) |  | 133.64d → 134.9d |
| PG-10654 | Floor Tiling - Dry area | 2025-07-02 → 2025-06-30 (-2d) | 2025-07-08 → 2025-07-05 (-3d) |  | 133.64d → 134.9d |
| PG-10655 | Wooden doors | 2025-07-15 → 2025-07-12 (-3d) | 2025-07-21 → 2025-07-18 (-3d) |  | 133.64d → 134.9d |
| 1.3.1.1.4.19 | **Floor 16** | 2025-06-12 → 2025-06-13 (+1d) | 2025-08-26 → 2025-08-27 (+1d) |  |  |
| 1.3.1.1.4.19.1 | **Ceiling Finishing works - Civil** | 2025-06-21 → 2025-06-23 (+2d) | 2025-08-26 → 2025-08-27 (+1d) |  |  |
| PG-10656 | Gypsum Plastering | 2025-06-21 → 2025-06-23 (+2d) | 2025-06-28 → 2025-06-30 (+2d) |  | 351.81d → 350.46d |
| PG-10657 | Cornice fixing | 2025-07-08 → 2025-07-09 (+1d) | 2025-07-12 → 2025-07-14 (+2d) |  | 351.81d → 350.46d |
| PG-10659 | Toilet False ceiling | 2025-07-16 → 2025-07-17 (+1d) | 2025-07-21 → 2025-07-22 (+1d) |  | 331.14d → 329.8d |
| PG-10658 | Painting Works - Putty, Primer and 1st | 2025-07-26 → 2025-07-28 (+2d) | 2025-08-02 → 2025-08-04 (+2d) |  | 339.81d → 338.46d |
| PG-10660 | Final Coat Painting | 2025-08-02 → 2025-08-04 (+2d) | 2025-08-26 → 2025-08-27 (+1d) |  | 339.81d → 338.46d |
| 1.3.1.1.4.19.2 | **Wall Finishing works - Civil** | 2025-06-12 → 2025-06-13 (+1d) | 2025-08-26 → 2025-08-27 (+1d) |  |  |
| PG-10661 | Balcony Railing Fixing works | 2025-06-12 → 2025-06-13 (+1d) | 2025-06-17 → 2025-06-18 (+1d) |  | 334.14d → 332.8d |
| PG-10663 | Dadoing - Wet area | 2025-07-03 → 2025-07-04 (+1d) | 2025-07-09 → 2025-07-10 (+1d) |  | 305.14d → 303.8d |
| PG-10662 | UPVC Windows & Sliding doors | 2025-07-21 → 2025-07-22 (+1d) | 2025-07-26 → 2025-07-28 (+2d) |  | 305.14d → 303.8d |
| PG-10664 | Painting Works - Putty, Primer and 1st | 2025-07-26 → 2025-07-28 (+2d) | 2025-08-02 → 2025-08-04 (+2d) |  | 305.14d → 303.8d |

| ID | Task | Start | Finish | Total float |
| --- | --- | --- | --- | --- |
| PG-10665 | Final Coat Painting | 2025-08-02 → 2025-08-04 (+2d) | 2025-08-26 → 2025-08-27 (+1d) | 305.14d → 303.8d |
| 1.3.1.1.4.19.3 | **Floor Finishing Works - Civil** | 2025-06-12 → 2025-06-13 (+1d) | 2025-08-02 → 2025-08-04 (+2d) |  |
| PG-10666 | Waterproofing for sunken areas | 2025-06-12 → 2025-06-13 (+1d) | 2025-06-16 → 2025-06-17 (+1d) | 325.14d → 323.8d |
| PG-10667 | Floor Tiling - Wet area | 2025-07-09 → 2025-07-10 (+1d) | 2025-07-15 → 2025-07-16 (+1d) | 305.14d → 303.8d |
| PG-10668 | Floor Tiling - Dry area | 2025-07-15 → 2025-07-16 (+1d) | 2025-07-21 → 2025-07-22 (+1d) | 305.14d → 303.8d |
| PG-10669 | Wooden doors | 2025-07-28 → 2025-07-29 (+1d) | 2025-08-02 → 2025-08-04 (+2d) | 305.14d → 303.8d |
| 1.3.1.1.4.20 | **Floor 17** | 2025-06-25 → 2025-06-26 (+1d) | 2025-09-08 → 2025-09-09 (+1d) |  |
| 1.3.1.1.4.20.1 | **Ceiling Finishing works - Civil** | 2025-07-04 → 2025-07-05 (+1d) | 2025-09-08 → 2025-09-09 (+1d) |  |
| PG-10670 | Gypsum Plastering | 2025-07-04 → 2025-07-05 (+1d) | 2025-07-11 → 2025-07-12 (+1d) | 340.81d → 339.46d |
| PG-10671 | Cornice fixing | 2025-07-21 → 2025-07-22 (+1d) | 2025-07-25 → 2025-07-26 (+1d) | 340.81d → 339.46d |
| PG-10673 | Toilet False ceiling | 2025-07-29 → 2025-07-30 (+1d) | 2025-08-02 → 2025-08-04 (+2d) | 320.14d → 318.8d |
| PG-10672 | Painting Works - Putty, Primer and 1st | 2025-08-08 → 2025-08-09 (+1d) | 2025-08-16 → 2025-08-18 (+2d) | 328.81d → 327.46d |
| PG-10674 | Final Coat Painting | 2025-08-16 → 2025-08-18 (+2d) | 2025-09-08 → 2025-09-09 (+1d) | 328.81d → 327.46d |
| 1.3.1.1.4.20.2 | **Wall Finishing works - Civil** | 2025-06-25 → 2025-06-26 (+1d) | 2025-09-08 → 2025-09-09 (+1d) |  |
| PG-10675 | Balcony Railing Fixing works | 2025-06-25 → 2025-06-26 (+1d) | 2025-06-30 → 2025-07-01 (+1d) | 323.14d → 321.8d |
| PG-10677 | Dadoing - Wet area | 2025-07-16 → 2025-07-17 (+1d) | 2025-07-22 → 2025-07-23 (+1d) | 294.14d → 292.8d |
| PG-10676 | UPVC Windows & Sliding doors | 2025-08-02 → 2025-08-04 (+2d) | 2025-08-08 → 2025-08-09 (+1d) | 294.14d → 292.8d |
| PG-10678 | Painting Works - Putty, Primer and 1st | 2025-08-08 → 2025-08-09 (+1d) | 2025-08-16 → 2025-08-18 (+2d) | 294.14d → 292.8d |
| PG-10679 | Final Coat Painting | 2025-08-16 → 2025-08-18 (+2d) | 2025-09-08 → 2025-09-09 (+1d) | 294.14d → 292.8d |
| 1.3.1.1.4.20.3 | **Floor Finishing Works - Civil** | 2025-06-25 → 2025-06-26 (+1d) | 2025-08-16 → 2025-08-18 (+2d) |  |
| PG-10680 | Waterproofing for sunken areas | 2025-06-25 → 2025-06-26 (+1d) | 2025-06-28 → 2025-06-30 (+2d) | 314.14d → 312.8d |
| PG-10681 | Floor Tiling - Wet area | 2025-07-22 → 2025-07-23 (+1d) | 2025-07-28 → 2025-07-29 (+1d) | 294.14d → 292.8d |
| PG-10682 | Floor Tiling - Dry area | 2025-07-28 → 2025-07-29 (+1d) | 2025-08-02 → 2025-08-04 (+2d) | 294.14d → 292.8d |
| PG-10683 | Wooden doors | 2025-08-09 → 2025-08-11 (+2d) | 2025-08-16 → 2025-08-18 (+2d) | 294.14d → 292.8d |
| 1.3.1.1.4.21 | **Floor 18** | 2025-07-08 → 2025-07-09 (+1d) | 2025-09-20 → 2025-09-22 (+2d) |  |
| 1.3.1.1.4.21.1 | **Ceiling Finishing works - Civil** | 2025-07-17 → 2025-07-18 (+1d) | 2025-09-20 → 2025-09-22 (+2d) |  |
| PG-10684 | Gypsum Plastering | 2025-07-17 → 2025-07-18 (+1d) | 2025-07-24 → 2025-07-25 (+1d) | 329.81d → 328.46d |
| PG-10685 | Cornice fixing | 2025-08-02 → 2025-08-04 (+2d) | 2025-08-07 → 2025-08-08 (+1d) | 329.81d → 328.46d |
| PG-10687 | Toilet False ceiling | 2025-08-11 → 2025-08-12 (+1d) | 2025-08-16 → 2025-08-18 (+2d) | 309.14d → 307.8d |
| PG-10686 | Painting Works - Putty, Primer and 1st | 2025-08-22 → 2025-08-23 (+1d) | 2025-08-29 → 2025-08-30 (+1d) | 317.81d → 316.46d |
| PG-10688 | Final Coat Painting | 2025-08-29 → 2025-08-30 (+1d) | 2025-09-20 → 2025-09-22 (+2d) | 317.81d → 316.46d |
| 1.3.1.1.4.21.2 | **Wall Finishing works - Civil** | 2025-07-08 → 2025-07-09 (+1d) | 2025-09-20 → 2025-09-22 (+2d) |  |
| PG-10689 | Balcony Railing Fixing works | 2025-07-08 → 2025-07-09 (+1d) | 2025-07-12 → 2025-07-14 (+2d) | 312.14d → 310.8d |
| PG-10691 | Dadoing - Wet area | 2025-07-29 → 2025-07-30 (+1d) | 2025-08-04 → 2025-08-05 (+1d) | 283.14d → 281.8d |
| PG-10690 | UPVC Windows & Sliding doors | 2025-08-16 → 2025-08-18 (+2d) | 2025-08-22 → 2025-08-23 (+1d) | 283.14d → 281.8d |
| PG-10692 | Painting Works - Putty, Primer and 1st | 2025-08-22 → 2025-08-23 (+1d) | 2025-08-29 → 2025-08-30 (+1d) | 283.14d → 281.8d |
| PG-10693 | Final Coat Painting | 2025-08-29 → 2025-08-30 (+1d) | 2025-09-20 → 2025-09-22 (+2d) | 283.14d → 281.8d |
| 1.3.1.1.4.21.3 | **Floor Finishing Works - Civil** | 2025-07-08 → 2025-07-09 (+1d) | 2025-08-29 → 2025-08-30 (+1d) |  |
| PG-10694 | Waterproofing for sunken areas | 2025-07-08 → 2025-07-09 (+1d) | 2025-07-11 → 2025-07-12 (+1d) | 303.14d → 301.8d |
| PG-10695 | Floor Tiling - Wet area | 2025-08-04 → 2025-08-05 (+1d) | 2025-08-09 → 2025-08-11 (+2d) | 283.14d → 281.8d |
| PG-10696 | Floor Tiling - Dry area | 2025-08-09 → 2025-08-11 (+2d) | 2025-08-16 → 2025-08-18 (+2d) | 283.14d → 281.8d |
| PG-10697 | Wooden doors | 2025-08-23 → 2025-08-25 (+2d) | 2025-08-29 → 2025-08-30 (+1d) | 283.14d → 281.8d |
| 1.3.1.1.4.22 | **Floor 19** | 2025-07-30 → 2025-07-31 (+1d) | 2025-10-16 → 2025-10-17 (+1d) |  |
| 1.3.1.1.4.22.1 | **Ceiling Finishing works - Civil** | 2025-08-08 → 2025-08-09 (+1d) | 2025-10-16 → 2025-10-17 (+1d) |  |
| PG-10698 | Gypsum Plastering | 2025-08-08 → 2025-08-09 (+1d) | 2025-08-16 → 2025-08-18 (+2d) | 178.31d → 176.96d |
| PG-10699 | Cornice fixing | 2025-08-26 → 2025-08-27 (+1d) | 2025-08-30 → 2025-09-01 (+2d) | 178.31d → 176.96d |
| PG-10701 | Toilet False ceiling | 2025-09-03 → 2025-09-04 (+1d) | 2025-09-08 → 2025-09-09 (+1d) | 290.14d → 288.8d |
| PG-10700 | Painting Works - Putty, Primer and 1st | 2025-09-13 → 2025-09-15 (+2d) | 2025-09-20 → 2025-09-22 (+2d) | 166.31d → 164.96d |
| PG-10702 | Final Coat Painting | 2025-09-20 → 2025-09-22 (+2d) | 2025-10-16 → 2025-10-17 (+1d) | 296.81d → 295.46d |
| 1.3.1.1.4.22.2 | **Wall Finishing works - Civil** | 2025-07-30 → 2025-07-31 (+1d) | 2025-10-16 → 2025-10-17 (+1d) |  |
| PG-10703 | Balcony Railing Fixing works | 2025-07-30 → 2025-07-31 (+1d) | 2025-08-04 → 2025-08-05 (+1d) | 195.31d → 193.96d |
| PG-10705 | Dadoing - Wet area | 2025-08-21 → 2025-08-22 (+1d) | 2025-08-27 → 2025-08-28 (+1d) | 166.31d → 164.96d |
| PG-10704 | UPVC Windows & Sliding doors | 2025-09-08 → 2025-09-09 (+1d) | 2025-09-13 → 2025-09-15 (+2d) | 166.31d → 164.96d |
| PG-10706 | Painting Works - Putty, Primer and 1st | 2025-09-13 → 2025-09-15 (+2d) | 2025-09-20 → 2025-09-22 (+2d) | 262.14d → 260.8d |
| PG-10707 | Final Coat Painting | 2025-09-20 → 2025-09-22 (+2d) | 2025-10-16 → 2025-10-17 (+1d) | 262.14d → 260.8d |
| 1.3.1.1.4.22.3 | **Floor Finishing Works - Civil** | 2025-07-30 → 2025-07-31 (+1d) | 2025-09-20 → 2025-09-22 (+2d) |  |
| PG-10708 | Waterproofing for sunken areas | 2025-07-30 → 2025-07-31 (+1d) | 2025-08-02 → 2025-08-04 (+2d) | 186.31d → 184.96d |
| PG-10709 | Floor Tiling - Wet area | 2025-08-27 → 2025-08-28 (+1d) | 2025-09-02 → 2025-09-03 (+1d) | 166.31d → 164.96d |
| PG-10710 | Floor Tiling - Dry area | 2025-09-02 → 2025-09-03 (+1d) | 2025-09-08 → 2025-09-09 (+1d) | 166.31d → 164.96d |
| PG-10711 | Wooden doors | 2025-09-15 → 2025-09-16 (+1d) | 2025-09-20 → 2025-09-22 (+2d) | 262.14d → 260.8d |
| 1.3.1.1.4.23 | **Floor 20** | 2025-08-22 → 2025-08-23 (+1d) | 2025-11-07 → 2025-11-08 (+1d) |  |
| 1.3.1.1.4.23.1 | **Ceiling Finishing works - Civil** | 2025-09-01 → 2025-09-02 (+1d) | 2025-11-07 → 2025-11-08 (+1d) |  |
| PG-10712 | Gypsum Plastering | 2025-09-01 → 2025-09-02 (+1d) | 2025-09-08 → 2025-09-09 (+1d) | 289.64d → 288.3d |
| PG-10713 | Cornice fixing | 2025-09-17 → 2025-09-18 (+1d) | 2025-09-22 → 2025-09-23 (+1d) | 289.64d → 288.3d |
| PG-10715 | Toilet False ceiling | 2025-09-25 → 2025-09-26 (+1d) | 2025-09-30 → 2025-10-01 (+1d) | 269.64d → 268.3d |
| PG-10714 | Painting Works - Putty, Primer and 1st | 2025-10-07 → 2025-10-08 (+1d) | 2025-10-14 → 2025-10-15 (+1d) | 277.64d → 276.3d |
| PG-10716 | Final Coat Painting | 2025-10-14 → 2025-10-15 (+1d) | 2025-11-07 → 2025-11-08 (+1d) | 277.64d → 276.3d |
| 1.3.1.1.4.23.2 | **Wall Finishing works - Civil** | 2025-08-22 → 2025-08-23 (+1d) | 2025-11-07 → 2025-11-08 (+1d) |  |
| PG-10717 | Balcony Railing Fixing works | 2025-08-22 → 2025-08-23 (+1d) | 2025-08-27 → 2025-08-28 (+1d) | 271.97d → 270.63d |
| PG-10719 | Dadoing - Wet area | 2025-09-12 → 2025-09-13 (+1d) | 2025-09-18 → 2025-09-19 (+1d) | 242.97d → 241.63d |

| ID | Task | Start | Finish | Total float |
| --- | --- | --- | --- | --- |
| PG-10718 | UPVC Windows & Sliding doors | 2025-09-30 → 2025-10-01 (+1d) | 2025-10-07 → 2025-10-08 (+1d) | 242.97d → 241.63d |
| PG-10720 | Painting Works - Putty, Primer and 1st | 2025-10-07 → 2025-10-08 (+1d) | 2025-10-14 → 2025-10-15 (+1d) | 242.97d → 241.63d |
| PG-10721 | Final Coat Painting | 2025-10-14 → 2025-10-15 (+1d) | 2025-11-07 → 2025-11-08 (+1d) | 242.97d → 241.63d |
| 1.3.1.1.4.23.3 | **Floor Finishing Works - Civil** | 2025-08-22 → 2025-08-23 (+1d) | 2025-10-14 → 2025-10-15 (+1d) |  |
| PG-10722 | Waterproofing for sunken areas | 2025-08-22 → 2025-08-23 (+1d) | 2025-08-26 → 2025-08-27 (+1d) | 262.97d → 261.63d |
| PG-10723 | Floor Tiling - Wet area | 2025-09-18 → 2025-09-19 (+1d) | 2025-09-24 → 2025-09-25 (+1d) | 242.97d → 241.63d |
| PG-10724 | Floor Tiling - Dry area | 2025-09-24 → 2025-09-25 (+1d) | 2025-09-30 → 2025-10-01 (+1d) | 242.97d → 241.63d |
| PG-10725 | Wooden doors | 2025-10-08 → 2025-10-09 (+1d) | 2025-10-14 → 2025-10-15 (+1d) | 242.97d → 241.63d |
| 1.3.1.1.4.24 | **Floor 21** | 2025-09-13 → 2025-09-15 (+2d) | 2025-11-29 → 2025-12-01 (+2d) |  |
| 1.3.1.1.4.24.1 | **Ceiling Finishing works - Civil** | 2025-09-23 → 2025-09-24 (+1d) | 2025-11-29 → 2025-12-01 (+2d) |  |
| PG-10726 | Gypsum Plastering | 2025-09-23 → 2025-09-24 (+1d) | 2025-09-30 → 2025-10-01 (+1d) | 270.64d → 269.3d |
| PG-10727 | Cornice fixing | 2025-10-10 → 2025-10-11 (+1d) | 2025-10-15 → 2025-10-16 (+1d) | 270.64d → 269.3d |
| PG-10729 | Toilet False ceiling | 2025-10-18 → 2025-10-20 (+2d) | 2025-10-23 → 2025-10-24 (+1d) | 250.97d → 249.63d |
| PG-10728 | Painting Works - Putty, Primer and 1st | 2025-10-29 → 2025-10-30 (+1d) | 2025-11-06 → 2025-11-07 (+1d) | 258.64d → 257.3d |
| PG-10730 | Final Coat Painting | 2025-11-06 → 2025-11-07 (+1d) | 2025-11-29 → 2025-12-01 (+2d) | 258.64d → 257.3d |
| 1.3.1.1.4.24.2 | **Wall Finishing works - Civil** | 2025-09-13 → 2025-09-15 (+2d) | 2025-11-29 → 2025-12-01 (+2d) |  |
| PG-10731 | Balcony Railing Fixing works | 2025-09-13 → 2025-09-15 (+2d) | 2025-09-18 → 2025-09-19 (+1d) | 252.97d → 251.63d |
| PG-10733 | Dadoing - Wet area | 2025-10-06 → 2025-10-07 (+1d) | 2025-10-11 → 2025-10-13 (+2d) | 223.97d → 222.63d |
| PG-10732 | UPVC Windows & Sliding doors | 2025-10-23 → 2025-10-24 (+1d) | 2025-10-29 → 2025-10-30 (+1d) | 223.97d → 222.63d |
| PG-10734 | Painting Works - Putty, Primer and 1st | 2025-10-29 → 2025-10-30 (+1d) | 2025-11-06 → 2025-11-07 (+1d) | 223.97d → 222.63d |
| PG-10735 | Final Coat Painting | 2025-11-06 → 2025-11-07 (+1d) | 2025-11-29 → 2025-12-01 (+2d) | 223.97d → 222.63d |
| 1.3.1.1.4.24.3 | **Floor Finishing Works - Civil** | 2025-09-13 → 2025-09-15 (+2d) | 2025-11-06 → 2025-11-07 (+1d) |  |
| PG-10736 | Waterproofing for sunken areas | 2025-09-13 → 2025-09-15 (+2d) | 2025-09-17 → 2025-09-18 (+1d) | 243.97d → 242.63d |
| PG-10737 | Floor Tiling - Wet area | 2025-10-11 → 2025-10-13 (+2d) | 2025-10-17 → 2025-10-18 (+1d) | 223.97d → 222.63d |
| PG-10738 | Floor Tiling - Dry area | 2025-10-17 → 2025-10-18 (+1d) | 2025-10-23 → 2025-10-24 (+1d) | 223.97d → 222.63d |
| PG-10739 | Wooden doors | 2025-10-30 → 2025-10-31 (+1d) | 2025-11-06 → 2025-11-07 (+1d) | 223.97d → 222.63d |
| 1.3.1.1.4.25 | **Floor 22** | 2025-10-07 → 2025-10-08 (+1d) | 2025-12-22 → 2025-12-23 (+1d) |  |
| 1.3.1.1.4.25.1 | **Ceiling Finishing works - Civil** | 2025-10-16 → 2025-10-17 (+1d) | 2025-12-22 → 2025-12-23 (+1d) |  |
| PG-10740 | Gypsum Plastering | 2025-10-16 → 2025-10-17 (+1d) | 2025-10-23 → 2025-10-24 (+1d) | 251.64d → 250.3d |
| PG-10741 | Cornice fixing | 2025-11-03 → 2025-11-04 (+1d) | 2025-11-07 → 2025-11-08 (+1d) | 251.64d → 250.3d |
| PG-10743 | Toilet False ceiling | 2025-11-11 → 2025-11-12 (+1d) | 2025-11-15 → 2025-11-17 (+2d) | 230.97d → 229.63d |
| PG-10742 | Painting Works - Putty, Primer and 1st | 2025-11-21 → 2025-11-22 (+1d) | 2025-11-28 → 2025-11-29 (+1d) | 239.64d → 238.3d |
| PG-10744 | Final Coat Painting | 2025-11-28 → 2025-11-29 (+1d) | 2025-12-22 → 2025-12-23 (+1d) | 239.64d → 238.3d |
| 1.3.1.1.4.25.2 | **Wall Finishing works - Civil** | 2025-10-07 → 2025-10-08 (+1d) | 2025-12-22 → 2025-12-23 (+1d) |  |
| PG-10745 | Balcony Railing Fixing works | 2025-10-07 → 2025-10-08 (+1d) | 2025-10-11 → 2025-10-13 (+2d) | 232.97d → 231.63d |
| PG-10747 | Dadoing - Wet area | 2025-10-28 → 2025-10-29 (+1d) | 2025-11-04 → 2025-11-05 (+1d) | 203.97d → 202.63d |
| PG-10746 | UPVC Windows & Sliding doors | 2025-11-15 → 2025-11-17 (+2d) | 2025-11-21 → 2025-11-22 (+1d) | 203.97d → 202.63d |
| PG-10748 | Painting Works - Putty, Primer and 1st | 2025-11-21 → 2025-11-22 (+1d) | 2025-11-28 → 2025-11-29 (+1d) | 203.97d → 202.63d |
| PG-10749 | Final Coat Painting | 2025-11-28 → 2025-11-29 (+1d) | 2025-12-22 → 2025-12-23 (+1d) | 203.97d → 202.63d |
| 1.3.1.1.4.25.3 | **Floor Finishing Works - Civil** | 2025-10-07 → 2025-10-08 (+1d) | 2025-11-28 → 2025-11-29 (+1d) |  |
| PG-10750 | Waterproofing for sunken areas | 2025-10-07 → 2025-10-08 (+1d) | 2025-10-10 → 2025-10-11 (+1d) | 223.97d → 222.63d |
| PG-10751 | Floor Tiling - Wet area | 2025-11-04 → 2025-11-05 (+1d) | 2025-11-10 → 2025-11-11 (+1d) | 203.97d → 202.63d |
| PG-10752 | Floor Tiling - Dry area | 2025-11-10 → 2025-11-11 (+1d) | 2025-11-15 → 2025-11-17 (+2d) | 203.97d → 202.63d |
| PG-10753 | Wooden doors | 2025-11-22 → 2025-11-24 (+2d) | 2025-11-28 → 2025-11-29 (+1d) | 203.97d → 202.63d |
| 1.3.1.1.4.26 | **Floor 23** | 2025-10-29 → 2025-10-30 (+1d) | 2026-01-13 → 2026-01-14 (+1d) |  |
| 1.3.1.1.4.26.1 | **Ceiling Finishing works - Civil** | 2025-11-08 → 2025-11-10 (+2d) | 2026-01-13 → 2026-01-14 (+1d) |  |
| PG-10754 | Gypsum Plastering | 2025-11-08 → 2025-11-10 (+2d) | 2025-11-15 → 2025-11-17 (+2d) | 232.81d → 231.46d |
| PG-10755 | Cornice fixing | 2025-11-25 → 2025-11-26 (+1d) | 2025-11-29 → 2025-12-01 (+2d) | 232.81d → 231.46d |
| PG-10757 | Toilet False ceiling | 2025-12-03 → 2025-12-04 (+1d) | 2025-12-08 → 2025-12-09 (+1d) | 212.47d → 211.13d |
| PG-10756 | Painting Works - Putty, Primer and 1st | 2025-12-13 → 2025-12-15 (+2d) | 2025-12-20 → 2025-12-22 (+2d) | 220.81d → 219.46d |
| PG-10758 | Final Coat Painting | 2025-12-20 → 2025-12-22 (+2d) | 2026-01-13 → 2026-01-14 (+1d) | 220.81d → 219.46d |
| 1.3.1.1.4.26.2 | **Wall Finishing works - Civil** | 2025-10-29 → 2025-10-30 (+1d) | 2026-01-10 → 2026-01-12 (+2d) |  |
| PG-10759 | Balcony Railing Fixing works | 2025-10-29 → 2025-10-30 (+1d) | 2025-11-04 → 2025-11-05 (+1d) | 216.97d → 215.63d |
| PG-10761 | Dadoing - Wet area | 2025-11-20 → 2025-11-21 (+1d) | 2025-11-26 → 2025-11-27 (+1d) | 187.97d → 186.63d |
| PG-10760 | UPVC Windows & Sliding doors | 2025-12-08 → 2025-12-09 (+1d) | 2025-12-13 → 2025-12-15 (+2d) | 187.97d → 186.63d |
| PG-10762 | Painting Works - Putty, Primer and 1st | 2025-12-13 → 2025-12-15 (+2d) | 2025-12-20 → 2025-12-22 (+2d) | 187.97d → 186.63d |
| PG-10763 | Final Coat Painting | 2025-12-20 → 2025-12-22 (+2d) | 2026-01-10 → 2026-01-12 (+2d) | 187.97d → 186.63d |
| 1.3.1.1.4.26.3 | **Floor Finishing Works - Civil** | 2025-10-29 → 2025-10-30 (+1d) | 2025-12-20 → 2025-12-22 (+2d) |  |
| PG-10764 | Waterproofing for sunken areas | 2025-10-29 → 2025-10-30 (+1d) | 2025-11-03 → 2025-11-04 (+1d) | 207.97d → 206.63d |
| PG-10765 | Floor Tiling - Wet area | 2025-11-26 → 2025-11-27 (+1d) | 2025-12-02 → 2025-12-03 (+1d) | 187.97d → 186.63d |
| PG-10766 | Floor Tiling - Dry area | 2025-12-02 → 2025-12-03 (+1d) | 2025-12-08 → 2025-12-09 (+1d) | 187.97d → 186.63d |
| PG-10767 | Wooden doors | 2025-12-15 → 2025-12-16 (+1d) | 2025-12-20 → 2025-12-22 (+2d) | 187.97d → 186.63d |
| 1.3.1.1.4.27 | **External Finishing works** | 2025-08-05 → 2025-08-06 (+1d) | 2025-12-03 → 2025-12-04 (+1d) |  |
| PG-10768 | External walls tie rod hole plugging with GP2 | 2025-08-05 → 2025-08-06 (+1d) | 2025-09-10 → 2025-09-11 (+1d) | 252.14d → 250.8d |
| PG-10769 | External walls grinding works | 2025-08-29 → 2025-08-30 (+1d) | 2025-10-16 → 2025-10-17 (+1d) | 252.14d → 250.8d |
| PG-10770 | Texture and painting works | 2025-10-10 → 2025-10-11 (+1d) | 2025-12-03 → 2025-12-04 (+1d) | 252.14d → 250.8d |
| 1.3.1.1.5 | **Corridor & Fire Staircase Finishing works** | 2025-10-13 → 2025-10-14 (+1d) |  |  |
| 1.3.1.1.5.1 | **Ceiling Finishing works - Civil** | 2025-10-13 → 2025-10-14 (+1d) | 2026-01-23 → 2026-01-24 (+1d) |  |
| PG-10771 | Gypsum Plastering | 2025-10-13 → 2025-10-14 (+1d) | 2025-10-20 → 2025-10-21 (+1d) | 47.31d → 45.96d |
| PG-10772 | Cornice fixing | 2025-10-18 → 2025-10-20 (+2d) | 2025-10-23 → 2025-10-24 (+1d) | 178.31d → 176.96d |

| ID | Task | Start | Finish | Total float |
| --- | --- | --- | --- | --- |
| PG-10773 | Painting Works - Putty, Primer and 1st | 2025-11-07 → 2025-11-08 (+1d) | 2025-11-14 → 2025-11-15 (+1d) | 166.31d → 164.96d |
| PG-10774 | False ceiling | 2025-11-14 → 2025-11-15 (+1d) | 2025-12-19 → 2025-12-20 (+1d) | 166.31d → 164.96d |
| PG-10775 | Final Coat Painting | 2025-12-19 → 2025-12-20 (+1d) | 2026-01-23 → 2026-01-24 (+1d) | 181.31d → 179.96d |
| 1.3.1.1.5.2 | **Wall Finishing works - Civil** | 2025-11-19 → 2025-11-20 (+1d) |  |  |
| PG-10776 | UPVC Windows & Sliding doors | 2025-11-19 → 2025-11-20 (+1d) | 2025-11-25 → 2025-11-26 (+1d) | 172.31d → 170.96d |
| PG-10777 | Wall Cladding Upto 1.2 Mts | 2025-12-06 → 2025-12-08 (+2d) | 2025-12-30 → 2025-12-31 (+1d) | 172.31d → 170.96d |
| PG-10778 | Painting Works - Texture & one coat Painting works | 2026-01-06 → 2026-01-07 (+1d) | 2026-01-23 → 2026-01-24 (+1d) | 166.31d → 164.96d |
| 1.3.1.1.5.3 | **Floor Finishing Works - Civil** | 2025-10-20 → 2025-10-21 (+1d) | 2025-11-19 → 2025-11-20 (+1d) |  |
| PG-10780 | Fire Doors installation | 2025-10-20 → 2025-10-21 (+1d) | 2025-10-31 → 2025-11-03 (+3d) | 216.97d → 215.63d |
| PG-10781 | Verified tile flooring works | 2025-10-31 → 2025-11-03 (+3d) | 2025-11-19 → 2025-11-20 (+1d) | 216.97d → 215.63d |
| 1.3.1.1.5.4 | **Fire Staircase Finishing Works - Civil** | 2025-10-20 → 2025-10-21 (+1d) | 2026-02-10 → 2026-02-11 (+1d) |  |
| PG-10782 | Staircase Railing Fixing works | 2025-10-20 → 2025-10-21 (+1d) | 2025-11-13 → 2025-11-14 (+1d) | 47.31d → 45.96d |
| PG-10783 | Wall and ceiling Gypsum plastering | 2025-10-31 → 2025-11-03 (+3d) | 2025-12-06 → 2025-12-08 (+2d) | 47.31d → 45.96d |
| PG-10784 | Staircase Flooring and Skirting Works | 2025-11-19 → 2025-11-20 (+1d) | 2026-01-05 → 2026-01-06 (+1d) | 47.31d → 45.96d |
| PG-10785 | UPVC Window fixing works | 2026-01-05 → 2026-01-06 (+1d) | 2026-01-22 → 2026-01-23 (+1d) | 47.31d → 45.96d |
| PG-10786 | Staircase Painting works | 2026-01-16 → 2026-01-17 (+1d) | 2026-02-10 → 2026-02-11 (+1d) | 47.31d → 45.96d |
| 1.3.1.1.6 | **MEP Civil Works (Shaft, Lift Shaft & OHT )** | 2025-07-22 → 2025-07-23 (+1d) |  |  |
| 1.3.1.1.6.1 | **Lift Shaft Works** | 2025-07-22 → 2025-07-23 (+1d) |  |  |
| PG-10787 | Tie rod hole packing | 2025-07-22 → 2025-07-23 (+1d) | 2025-07-31 → 2025-08-01 (+1d) | 124.81d → 123.46d |
| PG-10788 | Grinding works | 2025-07-31 → 2025-08-01 (+1d) | 2025-08-06 → 2025-08-07 (+1d) | 124.81d → 123.46d |
| PG-10789 | Lift pit waterproofing works | 2025-08-06 → 2025-08-07 (+1d) | 2025-09-01 → 2025-09-02 (+1d) | 124.81d → 123.46d |
| PG-10790 | Shaft door opening finishing | 2025-09-01 → 2025-09-02 (+1d) | 2025-09-09 → 2025-09-10 (+1d) | 124.81d → 123.46d |
| PG-10791 | Painting works | 2025-09-09 → 2025-09-10 (+1d) | 2025-09-18 → 2025-09-19 (+1d) | 124.81d → 123.46d |
| 1.3.1.1.6.2 | **Electrical Shaft works** | 2025-07-22 → 2025-07-23 (+1d) | 2025-08-25 → 2025-08-26 (+1d) |  |
| PG-10793 | Tie rod hole packing | 2025-07-22 → 2025-07-23 (+1d) | 2025-07-31 → 2025-08-01 (+1d) | 263.64d → 262.3d |
| PG-10794 | Grinding works | 2025-07-31 → 2025-08-01 (+1d) | 2025-08-06 → 2025-08-07 (+1d) | 263.64d → 262.3d |
| PG-10795 | Shaft door opening finishing | 2025-08-06 → 2025-08-07 (+1d) | 2025-08-14 → 2025-08-16 (+2d) | 263.64d → 262.3d |
| PG-10796 | Painting works | 2025-08-14 → 2025-08-16 (+2d) | 2025-08-25 → 2025-08-26 (+1d) | 263.64d → 262.3d |
| 1.3.1.1.6.3 | **FPS Shaft works** | 2025-07-22 → 2025-07-23 (+1d) | 2025-08-25 → 2025-08-26 (+1d) |  |
| PG-10797 | Tie rod hole packing | 2025-07-22 → 2025-07-23 (+1d) | 2025-07-31 → 2025-08-01 (+1d) | 263.31d → 261.96d |
| PG-10798 | Grinding works | 2025-07-31 → 2025-08-01 (+1d) | 2025-08-06 → 2025-08-07 (+1d) | 263.31d → 261.96d |
| PG-10799 | Shaft door opening finishing | 2025-08-06 → 2025-08-07 (+1d) | 2025-08-14 → 2025-08-16 (+2d) | 263.31d → 261.96d |
| PG-10800 | Painting works | 2025-08-14 → 2025-08-16 (+2d) | 2025-08-25 → 2025-08-26 (+1d) | 263.31d → 261.96d |
| 1.3.1.1.6.4 | **PHE Shaft works** | 2025-07-22 → 2025-07-23 (+1d) | 2025-08-25 → 2025-08-26 (+1d) |  |
| PG-10801 | Tie rod hole packing | 2025-07-22 → 2025-07-23 (+1d) | 2025-07-31 → 2025-08-01 (+1d) | 221.97d → 220.63d |
| PG-10802 | Grinding works | 2025-07-31 → 2025-08-01 (+1d) | 2025-08-06 → 2025-08-07 (+1d) | 221.97d → 220.63d |
| PG-10803 | Shaft door opening finishing | 2025-08-06 → 2025-08-07 (+1d) | 2025-08-14 → 2025-08-16 (+2d) | 221.97d → 220.63d |
| PG-10804 | Painting works | 2025-08-14 → 2025-08-16 (+2d) | 2025-08-25 → 2025-08-26 (+1d) | 221.97d → 220.63d |
| 1.3.1.1.6.5 | **Data & Communication Shaft** | 2025-07-22 → 2025-07-23 (+1d) | 2025-08-22 → 2025-08-23 (+1d) |  |
| PG-10805 | Tie rod hole packing | 2025-07-22 → 2025-07-23 (+1d) | 2025-07-31 → 2025-08-01 (+1d) | 258.31d → 256.96d |
| PG-10806 | Grinding works | 2025-07-31 → 2025-08-01 (+1d) | 2025-08-06 → 2025-08-07 (+1d) | 258.31d → 256.96d |
| PG-10807 | Shaft door opening finishing | 2025-08-06 → 2025-08-07 (+1d) | 2025-08-12 → 2025-08-13 (+1d) | 258.31d → 256.96d |
| PG-10808 | Painting works | 2025-08-12 → 2025-08-13 (+1d) | 2025-08-22 → 2025-08-23 (+1d) | 258.31d → 256.96d |
| 1.3.1.1.7 | **MEP Shaft works** | 2025-08-22 → 2025-08-23 (+1d) |  |  |
| 1.3.1.1.7.1 | **Electrical** | 2025-08-25 → 2025-08-26 (+1d) | 2025-10-06 → 2025-10-07 (+1d) |  |
| PG-10813 | Tray Works | 2025-08-25 → 2025-08-26 (+1d) | 2025-09-05 → 2025-09-06 (+1d) | 263.64d → 262.3d |
| PG-10814 | Cable & Conducting works | 2025-09-05 → 2025-09-06 (+1d) | 2025-09-17 → 2025-09-18 (+1d) | 263.64d → 262.3d |
| PG-10815 | Wiring/DB/connector box installation and termination works | 2025-09-17 → 2025-09-18 (+1d) | 2025-10-06 → 2025-10-07 (+1d) | 263.64d → 262.3d |
| 1.3.1.1.7.2 | **FPS** | 2025-08-25 → 2025-08-26 (+1d) | 2025-10-06 → 2025-10-07 (+1d) |  |
| PG-10816 | Shaft MS Piping & fixtures installation | 2025-08-25 → 2025-08-26 (+1d) | 2025-09-17 → 2025-09-18 (+1d) | 263.31d → 261.96d |
| PG-10817 | Tray / cabling / conducting & wiring works | 2025-09-17 → 2025-09-18 (+1d) | 2025-10-06 → 2025-10-07 (+1d) | 263.31d → 261.96d |
| 1.3.1.1.7.3 | **Data & Communication** | 2025-08-22 → 2025-08-23 (+1d) | 2025-10-11 → 2025-10-13 (+2d) |  |
| PG-10818 | Tray Works | 2025-08-22 → 2025-08-23 (+1d) | 2025-09-05 → 2025-09-06 (+1d) | 258.31d → 256.96d |
| PG-10819 | Tray / cabling / conducting & wiring works | 2025-09-05 → 2025-09-06 (+1d) | 2025-09-23 → 2025-09-24 (+1d) | 258.31d → 256.96d |
| PG-10820 | Wiring/DB/connector box installation and termination works | 2025-09-23 → 2025-09-24 (+1d) | 2025-10-11 → 2025-10-13 (+2d) | 258.31d → 256.96d |
| 1.3.1.1.7.4 | **PHE** | 2025-08-25 → 2025-08-26 (+1d) |  |  |
| PG-10821 | Bracket fixing works | 2025-08-25 → 2025-08-26 (+1d) | 2025-09-02 → 2025-09-03 (+1d) | 221.97d → 220.63d |
| PG-10822 | Piping Works | 2025-09-02 → 2025-09-03 (+1d) | 2025-09-19 → 2025-09-20 (+1d) | 221.97d → 220.63d |
| 1.3.1.1.8 | **Lift Installation and Testing works** | 2025-08-06 → 2025-08-07 (+1d) |  |  |
| PG-10825 | Lift Shaft Survey works | 2025-08-06 → 2025-08-07 (+1d) | 2025-08-19 → 2025-08-20 (+1d) | 151.31d → 149.96d |
| PG-10826 | Guide Rails fixing works | 2025-09-18 → 2025-09-19 (+1d) | 2025-11-06 → 2025-11-07 (+1d) | 124.81d → 123.46d |
| 1.3.1.1.9 | **Electrical Panel Works** | 2025-07-21 → 2025-07-18 (-3d) | 2026-02-26 → 2026-02-24 (-2d) |  |
| 1.3.1.1.9.1 | **Civil Finishing Works** | 2025-07-21 → 2025-07-18 (-3d) | 2025-09-03 → 2025-09-02 (-1d) |  |
| PG-10831 | Wall Tie rod hole packing & Grinding works. | 2025-07-21 → 2025-07-18 (-3d) | 2025-08-07 → 2025-08-05 (-2d) | 133.64d → 134.9d |
| PG-10832 | Window, Louver and Door fixing works | 2025-08-07 → 2025-08-05 (-2d) | 2025-08-16 → 2025-08-13 (-3d) | 133.64d → 134.9d |
| PG-10833 | Pedestal works | 2025-08-16 → 2025-08-13 (-3d) | 2025-08-27 → 2025-08-26 (-1d) | 133.64d → 134.9d |
| PG-10834 | Painting works | 2025-08-27 → 2025-08-26 (-1d) | 2025-09-03 → 2025-09-02 (-1d) | 133.64d → 134.9d |
| 1.3.1.1.9.2 | **Electrical Panel works** | 2025-09-03 → 2025-09-02 (-1d) | 2026-02-26 → 2026-02-24 (-2d) |  |
| PG-10835 | Electrical Panel assembly works | 2025-09-03 → 2025-09-02 (-1d) | 2025-11-13 → 2025-11-11 (-2d) | 133.64d → 134.9d |
| PG-10836 | Electrical Panel installation and cable termination. | 2025-11-13 → 2025-11-11 (-2d) | 2026-01-22 → 2026-01-20 (-2d) | 133.64d → 134.9d |

| ID | Task | Start | Finish | Complete | Total float |
| --- | --- | --- | --- | --- | --- |
| PG-10837 | Electrical Panel Testing and commissioning works | 2026-01-22 → 2026-01-20 (-2d) | 2026-02-26 → 2026-02-24 (-2d) |  | 133.64d → 134.9d |
| 1.3.1.1.10 | **Entrance Lobby works** | 2026-02-10 → 2026-02-11 (+1d) | 2026-06-30 → 2026-07-01 (+1d) |  |  |
| PG-10838 | Flooring Works | 2026-02-10 → 2026-02-11 (+1d) | 2026-03-18 → 2026-03-19 (+1d) |  | 47.31d → 45.96d |
| PG-10839 | Glass Door and False ceiling Works | 2026-03-18 → 2026-03-19 (+1d) | 2026-04-22 → 2026-04-23 (+1d) |  | 47.31d → 45.96d |
| PG-10841 | Canopy Works | 2026-03-18 → 2026-03-19 (+1d) | 2026-04-16 → 2026-04-17 (+1d) |  | 66.14d → 64.8d |
| PG-10840 | Painting Works | 2026-04-22 → 2026-04-23 (+1d) | 2026-05-08 → 2026-05-09 (+1d) |  | 47.31d → 45.96d |
| PG-10842 | Interior Works | 2026-05-08 → 2026-05-09 (+1d) | 2026-06-30 → 2026-07-01 (+1d) |  | 47.31d → 45.96d |
| 1.3.1.1.11 | **Lightening Arrester works** | 2025-12-03 → 2025-12-04 (+1d) | 2025-12-16 → 2025-12-17 (+1d) |  |  |
| PG-10843 | Conductor will be lifted with RCC Works, But Terrace works will be done once Parapet Painting done | 2025-12-03 → 2025-12-04 (+1d) | 2025-12-16 → 2025-12-17 (+1d) |  | 252.14d → 250.8d |
| 1.3.1.2.2 | **Structure works** |  | 2025-09-27 → 2025-09-26 (-1d) |  |  |
| 1.3.1.2.2.23 | **Floor 20** |  | 2025-06-02 → 2025-06-03 (+1d) |  |  |
| 1.3.1.2.2.23.2 | **Slab, Beams & Staircase** |  | 2025-06-02 → 2025-06-03 (+1d) |  |  |
| PG-10971 | Reinforcement |  | 2025-05-31 → 2025-06-02 A (+2d) | 63% → 100% | 15.08d → none |
| PG-10972 | Concrete | 2025-06-02 A | 2025-06-02 → 2025-06-03 A (+1d) | 0% → 100% | 15.08d → none |
| PG-10973 | Reinforcement | 2025-06-03 A |  | 0% → 94% | 15.08d → 15.46d |
| PG-10974 | Formwork | 2025-06-05 A |  | 0% → 45% | 15.08d → 15.46d |
| 1.3.1.2.2.24.2 | **Slab, Beams & Staircase** | 2025-06-09 → 2025-06-07 (-2d) |  |  |  |
| PG-10975 | Formwork | 2025-06-09 → 2025-06-07 (-2d) |  |  | 15.08d → 15.46d |
| PG-10976 | Reinforcement | 2025-06-11 → 2025-06-10 (-1d) |  |  | 15.08d → 15.46d |
| PG-10977 | Concrete | 2025-06-14 → 2025-06-13 (-1d) |  |  | 15.08d → 15.46d |
| 1.3.1.2.2.25 | **Floor 22** | 2025-06-16 → 2025-06-14 (-2d) |  |  |  |
| 1.3.1.2.2.25.1 | **Columns / shear walls** | 2025-06-16 → 2025-06-14 (-2d) |  |  |  |
| PG-10978 | Reinforcement | 2025-06-16 → 2025-06-14 (-2d) |  |  | 15.08d → 15.46d |
| PG-10979 | Formwork | 2025-06-18 → 2025-06-17 (-1d) |  |  | 15.08d → 15.46d |
| 1.3.1.2.2.25.2 | **Slab, Beams & Staircase** | 2025-06-21 → 2025-06-20 (-1d) |  |  |  |
| PG-10980 | Formwork | 2025-06-21 → 2025-06-20 (-1d) |  |  | 15.08d → 15.46d |
| PG-10981 | Reinforcement | 2025-06-24 → 2025-06-23 (-1d) |  |  | 15.08d → 15.46d |
| PG-10982 | Concrete | 2025-06-27 → 2025-06-26 (-1d) |  |  | 15.08d → 15.46d |
| 1.3.1.2.2.26 | **Floor 23** | 2025-06-28 → 2025-06-27 (-1d) |  |  |  |
| 1.3.1.2.2.26.1 | **Columns / shear walls** | 2025-06-28 → 2025-06-27 (-1d) |  |  |  |
| PG-10983 | Reinforcement | 2025-06-28 → 2025-06-27 (-1d) |  |  | 15.08d → 15.46d |
| PG-10984 | Formwork | 2025-07-01 → 2025-06-30 (-1d) |  |  | 15.08d → 15.46d |
| 1.3.1.2.2.26.2 | **Slab, Beams & Staircase** | 2025-07-04 → 2025-07-03 (-1d) |  |  |  |
| PG-10985 | Formwork | 2025-07-04 → 2025-07-03 (-1d) |  |  | 15.08d → 15.46d |
| PG-10986 | Reinforcement | 2025-07-07 → 2025-07-05 (-2d) |  |  | 15.08d → 15.46d |
| PG-10987 | Concrete | 2025-07-10 → 2025-07-09 (-1d) |  |  | 15.08d → 15.46d |
| 1.3.1.2.2.27 | **Floor 24** | 2025-07-11 → 2025-07-10 (-1d) |  |  |  |
| 1.3.1.2.2.27.1 | **Columns / shear walls** | 2025-07-11 → 2025-07-10 (-1d) |  |  |  |
| PG-10988 | Reinforcement | 2025-07-11 → 2025-07-10 (-1d) |  |  | 15.08d → 15.46d |
| PG-10989 | Formwork | 2025-07-14 → 2025-07-12 (-2d) |  |  | 15.08d → 15.46d |
| 1.3.1.2.2.27.2 | **Slab, Beams & Staircase** | 2025-07-17 → 2025-07-16 (-1d) |  |  |  |
| PG-10990 | Formwork | 2025-07-17 → 2025-07-16 (-1d) |  |  | 15.08d → 15.46d |
| PG-10991 | Reinforcement | 2025-07-19 → 2025-07-18 (-1d) |  |  | 15.08d → 15.46d |
| PG-10992 | Concrete | 2025-07-23 → 2025-07-22 (-1d) |  |  | 15.08d → 15.46d |
| 1.3.1.2.2.28 | **Floor 25** | 2025-07-24 → 2025-07-23 (-1d) |  |  |  |
| 1.3.1.2.2.28.1 | **Columns / shear walls** | 2025-07-24 → 2025-07-23 (-1d) |  |  |  |
| PG-10993 | Reinforcement | 2025-07-24 → 2025-07-23 (-1d) |  |  | 15.08d → 15.46d |
| PG-10994 | Formwork | 2025-07-26 → 2025-07-25 (-1d) |  |  | 15.08d → 15.46d |
| 1.3.1.2.2.28.2 | **Slab, Beams & Staircase** | 2025-07-30 → 2025-07-29 (-1d) |  |  |  |
| PG-10995 | Formwork | 2025-07-30 → 2025-07-29 (-1d) |  |  | 15.08d → 15.46d |
| PG-10996 | Reinforcement | 2025-08-01 → 2025-07-31 (-1d) |  |  | 15.08d → 15.46d |
| PG-10997 | Concrete | 2025-08-05 → 2025-08-04 (-1d) |  |  | 15.08d → 15.46d |
| 1.3.1.2.2.29 | **Floor 26** | 2025-08-06 → 2025-08-05 (-1d) |  |  |  |
| 1.3.1.2.2.29.1 | **Columns / shear walls** | 2025-08-06 → 2025-08-05 (-1d) |  |  |  |
| PG-10998 | Reinforcement | 2025-08-06 → 2025-08-05 (-1d) |  |  | 15.08d → 15.46d |
| PG-10999 | Formwork | 2025-08-08 → 2025-08-07 (-1d) |  |  | 15.08d → 15.46d |
| 1.3.1.2.2.29.2 | **Slab, Beams & Staircase** | 2025-08-12 → 2025-08-11 (-1d) |  |  |  |
| PG-11000 | Formwork | 2025-08-12 → 2025-08-11 (-1d) |  |  | 15.08d → 15.46d |
| PG-11001 | Reinforcement | 2025-08-14 → 2025-08-13 (-1d) |  |  | 15.08d → 15.46d |
| PG-11002 | Concrete | 2025-08-19 → 2025-08-18 (-1d) |  |  | 15.08d → 15.46d |
| 1.3.1.2.2.30 | **Above Terrace Floor** | 2025-08-20 → 2025-08-19 (-1d) | 2025-09-27 → 2025-09-26 (-1d) |  |  |
| 1.3.1.2.2.30.1 | **Columns / shear walls/Parapet Walls** | 2025-08-20 → 2025-08-19 (-1d) | 2025-09-02 → 2025-09-01 (-1d) |  |  |
| PG-11003 | Reinforcement | 2025-08-20 → 2025-08-19 (-1d) |  |  | 120.58d → 120.96d |
| PG-11004 | Formwork | 2025-08-22 → 2025-08-21 (-1d) |  |  | 120.58d → 120.96d |
| PG-11005 | Concrete | 2025-08-28 → 2025-08-27 (-1d) | 2025-09-02 → 2025-09-01 (-1d) |  | 120.58d → 120.96d |
| 1.3.1.2.2.30.2 | **Slab, Beams & Staircase Head rooms, Lift headroom** | 2025-08-26 → 2025-08-25 (-1d) | 2025-09-27 → 2025-09-26 (-1d) |  |  |
| PG-11009 | Terrace Waterproofing and Protective finishing. | 2025-08-26 → 2025-08-25 (-1d) | 2025-09-27 → 2025-09-26 (-1d) |  | 213.25d → 213.63d |
| PG-11006 | Formwork | 2025-09-02 → 2025-09-01 (-1d) | 2025-09-08 → 2025-09-06 (-2d) |  | 213.25d → 213.63d |
| PG-11007 | Reinforcement | 2025-09-08 → 2025-09-06 (-2d) | 2025-09-13 → 2025-09-12 (-1d) |  | 213.25d → 213.63d |
| PG-11008 | Concrete | 2025-09-13 → 2025-09-12 (-1d) | 2025-09-16 → 2025-09-15 (-1d) |  | 213.25d → 213.63d |

| ID | Task | Start | Finish | Complete | Total float |
| --- | --- | --- | --- | --- | --- |
| 1.3.1.2.3 | **MEP Internal works** |  | 2026-02-26 → 2026-02-25 (-1d) |  |  |
| 1.3.1.2.3.12 | **Floor 9** |  | 2025-05-30 → 2025-05-31 (+1d) |  |  |
| 1.3.1.2.3.12.1 | **PHE Works** |  | 2025-05-30 → 2025-05-31 (+1d) |  |  |
| PG-11100 | Final Fix - CP & Sanitary fixtures |  | 2025-05-30 → 2025-05-31 A (+1d) | 97% → 100% | 383.08d → none |
| 1.3.1.2.3.12.3 | **Electrical Works** |  | 2025-05-30 → 2025-05-31 (+1d) |  |  |
| PG-11106 | Final Fix - Electrical Fixtures |  | 2025-05-30 → 2025-05-31 A (+1d) | 94% → 100% | 383.08d → none |
| 1.3.1.2.3.14 | **Floor 11** |  | 2025-06-28 → 2025-07-02 (+4d) |  |  |
| 1.3.1.2.3.14.1 | **PHE Works** |  | 2025-06-28 → 2025-07-02 (+4d) |  |  |
| PG-11118 | Final Fix - CP & Sanitary fixtures | 2025-06-16 → 2025-06-20 (+4d) | 2025-06-28 → 2025-07-02 (+4d) |  | 358.6d → 355.01d |
| 1.3.1.2.3.14.2 | **Fire Fighting Works** |  | 2025-06-28 → 2025-07-02 (+4d) |  |  |
| PG-11120 | 2nd Fix - Sprinkler fixing & Pressure testing |  |  | 21% → 81% | 365.65d → 365.21d |
| PG-11121 | Final Fix - Smoke & heat detectors, FHC , FAS Etc. | 2025-06-16 → 2025-06-20 (+4d) | 2025-06-28 → 2025-07-02 (+4d) |  | 358.6d → 355.01d |
| 1.3.1.2.3.14.3 | **Electrical Works** |  | 2025-06-28 → 2025-07-02 (+4d) |  |  |
| PG-11123 | 2nd Fix - Wiring works |  |  | 45% → 93% | 371.51d → 371.05d |
| PG-11124 | Final Fix - Electrical Fixtures | 2025-06-21 → 2025-06-26 (+5d) | 2025-06-28 → 2025-07-02 (+4d) |  | 358.6d → 355.01d |
| 1.3.1.2.3.15 | **Floor 12** |  | 2025-07-12 → 2025-07-11 (-1d) |  |  |
| 1.3.1.2.3.15.1 | **PHE Works** |  | 2025-07-12 → 2025-07-11 (-1d) |  |  |
| PG-11127 | Final Fix - CP & Sanitary fixtures | 2025-07-01 → 2025-06-30 (-1d) | 2025-07-12 → 2025-07-11 (-1d) |  | 347.17d → 347.56d |
| 1.3.1.2.3.15.2 | **Fire Fighting Works** |  | 2025-07-12 → 2025-07-11 (-1d) |  |  |
| PG-11129 | 2nd Fix - Sprinkler fixing & Pressure testing | 2025-06-09 → 2025-06-07 (-2d) | 2025-06-20 → 2025-06-19 (-1d) |  | 356.17d → 356.56d |
| PG-11130 | Final Fix - Smoke & heat detectors, FHC , FAS Etc. | 2025-07-01 → 2025-06-30 (-1d) | 2025-07-12 → 2025-07-11 (-1d) |  | 347.17d → 347.56d |
| 1.3.1.2.3.15.3 | **Electrical Works** |  | 2025-07-12 → 2025-07-11 (-1d) |  |  |
| PG-11132 | 2nd Fix - Wiring works | 2025-06-04 → 2025-06-06 A (+2d) | 2025-06-19 → 2025-06-20 (+1d) | 0% → 3% | 361.17d → 359.93d |
| PG-11133 | Final Fix - Electrical Fixtures | 2025-07-05 → 2025-07-04 (-1d) | 2025-07-12 → 2025-07-11 (-1d) |  | 347.17d → 347.56d |
| 1.3.1.2.3.17 | **Floor 14** |  | 2025-08-08 → 2025-08-09 (+1d) |  |  |
| 1.3.1.2.3.17.1 | **PHE Works** |  | 2025-08-08 → 2025-08-09 (+1d) |  |  |
| PG-11143 | 1st Fix - Piping works |  | 2025-06-03 → 2025-06-04 A (+1d) | 75% → 100% | 324.7d → none |
| PG-11144 | 2nd Fix - diverter fixing & Pressure testing |  | 2025-06-10 → 2025-06-11 (+1d) | 5% → 65% | 324.28d → 323.3d |
| PG-11145 | Final Fix - CP & Sanitary fixtures | 2025-07-29 → 2025-07-30 (+1d) | 2025-08-08 → 2025-08-09 (+1d) |  | 324.28d → 323.3d |
| 1.3.1.2.3.17.2 | **Fire Fighting Works** |  | 2025-08-08 → 2025-08-09 (+1d) |  |  |
| PG-11146 | 1st Fix - Piping and Shaft hydrant works |  | 2025-06-11 → 2025-06-12 (+1d) | 12% → 63% | 371.49d → 370.13d |
| PG-11147 | 2nd Fix - Sprinkler fixing & Pressure testing | 2025-07-05 → 2025-07-07 (+2d) | 2025-07-17 → 2025-07-18 (+1d) |  | 334.28d → 333.3d |
| PG-11148 | Final Fix - Smoke & heat detectors, FHC , FAS Etc. | 2025-07-29 → 2025-07-30 (+1d) | 2025-08-08 → 2025-08-09 (+1d) |  | 324.28d → 323.3d |
| 1.3.1.2.3.17.3 | **Electrical Works** |  | 2025-08-08 → 2025-08-09 (+1d) |  |  |
| PG-11150 | 2nd Fix - Wiring works | 2025-07-01 → 2025-07-02 (+1d) | 2025-07-16 → 2025-07-17 (+1d) |  | 339.28d → 338.3d |
| PG-11151 | Final Fix - Electrical Fixtures | 2025-08-02 → 2025-08-04 (+2d) | 2025-08-08 → 2025-08-09 (+1d) |  | 324.28d → 323.3d |
| PG-11152 | 1st Fix - Piping works | 2025-06-03 A | 2025-06-16 → 2025-06-17 (+1d) | 0% → 25% | 162.75d → 162.33d |
| PG-11153 | 2nd Fix - diverter fixing & Pressure testing |  | 2025-06-23 → 2025-06-24 (+1d) |  | 162.75d → 162.33d |
| PG-11156 | 2nd Fix - Sprinkler fixing & Pressure testing |  | 2025-07-30 → 2025-07-31 (+1d) |  | 322.75d → 322.33d |
| PG-11158 | 1st Fix - GI wire pulling | 2025-06-03 A |  | 0% → 46% | 360.42d → 360.65d |
| PG-11159 | 2nd Fix - Wiring works |  | 2025-07-29 → 2025-07-30 (+1d) |  | 327.75d → 327.33d |
| 1.3.1.2.3.19 | **Floor 16** | 2025-06-16 → 2025-06-14 (-2d) | 2025-09-03 → 2025-09-02 (-1d) |  |  |
| 1.3.1.2.3.19.1 | **PHE Works** | 2025-06-16 → 2025-06-14 (-2d) | 2025-09-03 → 2025-09-02 (-1d) |  |  |
| PG-11161 | 1st Fix - Piping works | 2025-06-16 → 2025-06-14 (-2d) |  |  | 303.42d → 303.8d |
| PG-11162 | 2nd Fix - diverter fixing & Pressure testing | 2025-06-25 → 2025-06-24 (-1d) |  |  | 303.42d → 303.8d |
| PG-11163 | Final Fix - CP & Sanitary fixtures | 2025-08-22 → 2025-08-21 (-1d) | 2025-09-03 → 2025-09-02 (-1d) |  | 303.42d → 303.8d |
| 1.3.1.2.3.19.2 | **Fire Fighting Works** |  | 2025-09-03 → 2025-09-02 (-1d) |  |  |
| PG-11165 | 2nd Fix - Sprinkler fixing & Pressure testing | 2025-08-01 → 2025-07-31 (-1d) |  |  | 310.58d → 310.96d |
| PG-11166 | Final Fix - Smoke & heat detectors, FHC , FAS Etc. | 2025-08-22 → 2025-08-21 (-1d) | 2025-09-03 → 2025-09-02 (-1d) |  | 303.42d → 303.8d |
| 1.3.1.2.3.19.3 | **Electrical Works** | 2025-06-16 → 2025-06-14 (-2d) | 2025-09-03 → 2025-09-02 (-1d) |  |  |
| PG-11167 | 1st Fix - GI wire pulling | 2025-06-16 → 2025-06-14 (-2d) |  |  | 349.25d → 349.63d |
| PG-11168 | 2nd Fix - Wiring works | 2025-07-26 → 2025-07-25 (-1d) |  |  | 316.42d → 316.8d |
| PG-11169 | Final Fix - Electrical Fixtures | 2025-08-28 → 2025-08-27 (-1d) | 2025-09-03 → 2025-09-02 (-1d) |  | 303.42d → 303.8d |
| 1.3.1.2.3.20 | **Floor 17** | 2025-06-28 → 2025-06-27 (-1d) | 2025-09-16 → 2025-09-15 (-1d) |  |  |
| 1.3.1.2.3.20.1 | **PHE Works** | 2025-06-28 → 2025-06-27 (-1d) | 2025-09-16 → 2025-09-15 (-1d) |  |  |
| PG-11170 | 1st Fix - Piping works | 2025-06-28 → 2025-06-27 (-1d) |  |  | 292.42d → 292.8d |
| PG-11171 | 2nd Fix - diverter fixing & Pressure testing | 2025-07-08 → 2025-07-07 (-1d) |  |  | 292.42d → 292.8d |
| PG-11172 | Final Fix - CP & Sanitary fixtures | 2025-09-04 → 2025-09-03 (-1d) | 2025-09-16 → 2025-09-15 (-1d) |  | 292.42d → 292.8d |
| 1.3.1.2.3.20.2 | **Fire Fighting Works** |  | 2025-09-16 → 2025-09-15 (-1d) |  |  |
| PG-11174 | 2nd Fix - Sprinkler fixing & Pressure testing | 2025-08-14 → 2025-08-13 (-1d) |  |  | 299.58d → 299.96d |
| PG-11175 | Final Fix - Smoke & heat detectors, FHC , FAS Etc. | 2025-09-04 → 2025-09-03 (-1d) | 2025-09-16 → 2025-09-15 (-1d) |  | 292.42d → 292.8d |
| 1.3.1.2.3.20.3 | **Electrical Works** | 2025-06-28 → 2025-06-27 (-1d) | 2025-09-16 → 2025-09-15 (-1d) |  |  |
| PG-11176 | 1st Fix - GI wire pulling | 2025-06-28 → 2025-06-27 (-1d) |  |  | 338.25d → 338.63d |
| PG-11177 | 2nd Fix - Wiring works | 2025-08-08 → 2025-08-07 (-1d) |  |  | 305.42d → 305.8d |
| PG-11178 | Final Fix - Electrical Fixtures | 2025-09-10 → 2025-09-09 (-1d) | 2025-09-16 → 2025-09-15 (-1d) |  | 292.42d → 292.8d |
| 1.3.1.2.3.21 | **Floor 18** | 2025-07-11 → 2025-07-10 (-1d) | 2025-09-30 → 2025-09-29 (-1d) |  |  |
| 1.3.1.2.3.21.1 | **PHE Works** | 2025-07-11 → 2025-07-10 (-1d) | 2025-09-30 → 2025-09-29 (-1d) |  |  |
| PG-11179 | 1st Fix - Piping works | 2025-07-11 → 2025-07-10 (-1d) | 2025-07-24 → 2025-07-23 (-1d) |  | 280.58d → 280.96d |
| PG-11180 | 2nd Fix - diverter fixing & Pressure testing | 2025-07-22 → 2025-07-21 (-1d) | 2025-07-31 → 2025-07-30 (-1d) |  | 280.58d → 280.96d |
| PG-11181 | Final Fix - CP & Sanitary fixtures | 2025-09-17 → 2025-09-16 (-1d) | 2025-09-30 → 2025-09-29 (-1d) |  | 280.58d → 280.96d |

| ID | Task | Start | Finish | Total float |
| --- | --- | --- | --- | --- |
| 1.3.1.2.3.21.2 | **Fire Fighting Works** | 2025-07-21 → 2025-07-19 (-2d) | 2025-09-30 → 2025-09-29 (-1d) |  |
| PG-11182 | 1st Fix - Piping and Shaft hydrant works | 2025-07-21 → 2025-07-19 (-2d) |  | 328.25d → 328.63d |
| PG-11183 | 2nd Fix - Sprinkler fixing & Pressure testing | 2025-08-27 → 2025-08-26 (-1d) | 2025-09-08 → 2025-09-06 (-2d) | 288.58d → 288.96d |
| PG-11184 | Final Fix - Smoke & heat detectors, FHC , FAS Etc. | 2025-09-17 → 2025-09-16 (-1d) | 2025-09-30 → 2025-09-29 (-1d) | 280.58d → 280.96d |
| 1.3.1.2.3.21.3 | **Electrical Works** | 2025-07-11 → 2025-07-10 (-1d) | 2025-09-30 → 2025-09-29 (-1d) |  |
| PG-11185 | 1st Fix - GI wire pulling | 2025-07-11 → 2025-07-10 (-1d) |  | 328.25d → 328.63d |
| PG-11186 | 2nd Fix - Wiring works | 2025-08-20 → 2025-08-19 (-1d) | 2025-09-06 → 2025-09-05 (-1d) | 294.58d → 294.96d |
| PG-11187 | Final Fix - Electrical Fixtures | 2025-09-23 → 2025-09-22 (-1d) | 2025-09-30 → 2025-09-29 (-1d) | 280.58d → 280.96d |
| 1.3.1.2.3.22 | **Floor 19** | 2025-07-24 → 2025-07-23 (-1d) | 2025-10-14 → 2025-10-13 (-1d) |  |
| 1.3.1.2.3.22.1 | **PHE Works** | 2025-07-24 → 2025-07-23 (-1d) | 2025-10-14 → 2025-10-13 (-1d) |  |
| PG-11188 | 1st Fix - Piping works | 2025-07-24 → 2025-07-23 (-1d) | 2025-08-06 → 2025-08-05 (-1d) | 269.58d → 269.96d |
| PG-11189 | 2nd Fix - diverter fixing & Pressure testing | 2025-08-04 → 2025-08-02 (-2d) | 2025-08-13 → 2025-08-12 (-1d) | 269.58d → 269.96d |
| PG-11190 | Final Fix - CP & Sanitary fixtures | 2025-09-30 → 2025-09-29 (-1d) | 2025-10-14 → 2025-10-13 (-1d) | 269.58d → 269.96d |
| 1.3.1.2.3.22.2 | **Fire Fighting Works** | 2025-08-01 → 2025-07-31 (-1d) | 2025-10-14 → 2025-10-13 (-1d) |  |
| PG-11191 | 1st Fix - Piping and Shaft hydrant works | 2025-08-01 → 2025-07-31 (-1d) |  | 317.25d → 317.63d |
| PG-11192 | 2nd Fix - Sprinkler fixing & Pressure testing | 2025-09-09 → 2025-09-08 (-1d) | 2025-09-20 → 2025-09-19 (-1d) | 277.58d → 277.96d |
| PG-11193 | Final Fix - Smoke & heat detectors, FHC , FAS Etc. | 2025-09-30 → 2025-09-29 (-1d) | 2025-10-14 → 2025-10-13 (-1d) | 269.58d → 269.96d |
| 1.3.1.2.3.22.3 | **Electrical Works** | 2025-07-24 → 2025-07-23 (-1d) | 2025-10-14 → 2025-10-13 (-1d) |  |
| PG-11194 | 1st Fix - GI wire pulling | 2025-07-24 → 2025-07-23 (-1d) |  | 317.25d → 317.63d |
| PG-11195 | 2nd Fix - Wiring works | 2025-09-02 → 2025-09-01 (-1d) | 2025-09-19 → 2025-09-18 (-1d) | 283.58d → 283.96d |
| PG-11196 | Final Fix - Electrical Fixtures | 2025-10-07 → 2025-10-06 (-1d) | 2025-10-14 → 2025-10-13 (-1d) | 269.58d → 269.96d |
| 1.3.1.2.3.23 | **Floor 20** | 2025-08-06 → 2025-08-05 (-1d) | 2025-10-28 → 2025-10-27 (-1d) |  |
| 1.3.1.2.3.23.1 | **PHE Works** | 2025-08-06 → 2025-08-05 (-1d) | 2025-10-28 → 2025-10-27 (-1d) |  |
| PG-11197 | 1st Fix - Piping works | 2025-08-06 → 2025-08-05 (-1d) | 2025-08-21 → 2025-08-20 (-1d) | 257.58d → 257.96d |
| PG-11198 | 2nd Fix - diverter fixing & Pressure testing | 2025-08-19 → 2025-08-18 (-1d) | 2025-08-28 → 2025-08-27 (-1d) | 257.58d → 257.96d |
| PG-11199 | Final Fix - CP & Sanitary fixtures | 2025-10-15 → 2025-10-14 (-1d) | 2025-10-28 → 2025-10-27 (-1d) | 257.58d → 257.96d |
| 1.3.1.2.3.23.2 | **Fire Fighting Works** | 2025-08-18 → 2025-08-16 (-2d) | 2025-10-28 → 2025-10-27 (-1d) |  |
| PG-11200 | 1st Fix - Piping and Shaft hydrant works | 2025-08-18 → 2025-08-16 (-2d) | 2025-08-30 → 2025-08-29 (-1d) | 305.42d → 305.8d |
| PG-11201 | 2nd Fix - Sprinkler fixing & Pressure testing | 2025-09-23 → 2025-09-22 (-1d) | 2025-10-06 → 2025-10-04 (-2d) | 265.58d → 265.96d |
| PG-11202 | Final Fix - Smoke & heat detectors, FHC , FAS Etc. | 2025-10-15 → 2025-10-14 (-1d) | 2025-10-28 → 2025-10-27 (-1d) | 257.58d → 257.96d |
| 1.3.1.2.3.23.3 | **Electrical Works** | 2025-08-06 → 2025-08-05 (-1d) | 2025-10-28 → 2025-10-27 (-1d) |  |
| PG-11203 | 1st Fix - GI wire pulling | 2025-08-06 → 2025-08-05 (-1d) | 2025-08-16 → 2025-08-14 (-2d) | 305.42d → 305.8d |
| PG-11204 | 2nd Fix - Wiring works | 2025-09-16 → 2025-09-15 (-1d) | 2025-10-04 → 2025-10-03 (-1d) | 271.58d → 271.96d |
| PG-11205 | Final Fix - Electrical Fixtures | 2025-10-21 → 2025-10-20 (-1d) | 2025-10-28 → 2025-10-27 (-1d) | 257.58d → 257.96d |
| 1.3.1.2.3.24 | **Floor 21** | 2025-08-20 → 2025-08-19 (-1d) | 2025-11-10 → 2025-11-08 (-2d) |  |
| 1.3.1.2.3.24.1 | **PHE Works** | 2025-08-20 → 2025-08-19 (-1d) | 2025-11-10 → 2025-11-08 (-2d) |  |
| PG-11206 | 1st Fix - Piping works | 2025-08-20 → 2025-08-19 (-1d) | 2025-09-01 → 2025-08-30 (-2d) | 15.08d → 15.46d |
| PG-11207 | 2nd Fix - diverter fixing & Pressure testing | 2025-08-28 → 2025-08-27 (-1d) | 2025-09-08 → 2025-09-06 (-2d) | 247.92d → 248.3d |
| PG-11208 | Final Fix - CP & Sanitary fixtures | 2025-10-27 → 2025-10-25 (-2d) | 2025-11-10 → 2025-11-08 (-2d) | 247.92d → 248.3d |
| 1.3.1.2.3.24.2 | **Fire Fighting Works** | 2025-08-28 → 2025-08-27 (-1d) | 2025-11-10 → 2025-11-08 (-2d) |  |
| PG-11209 | 1st Fix - Piping and Shaft hydrant works | 2025-08-28 → 2025-08-27 (-1d) | 2025-09-10 → 2025-09-09 (-1d) | 295.58d → 295.96d |
| PG-11210 | 2nd Fix - Sprinkler fixing & Pressure testing | 2025-10-06 → 2025-10-04 (-2d) | 2025-10-16 → 2025-10-15 (-1d) | 256.92d → 257.3d |
| PG-11211 | Final Fix - Smoke & heat detectors, FHC , FAS Etc. | 2025-10-27 → 2025-10-25 (-2d) | 2025-11-10 → 2025-11-08 (-2d) | 247.92d → 248.3d |
| 1.3.1.2.3.24.3 | **Electrical Works** | 2025-08-20 → 2025-08-19 (-1d) | 2025-10-28 → 2025-10-27 (-1d) |  |
| PG-11212 | 1st Fix - GI wire pulling | 2025-08-20 → 2025-08-19 (-1d) | 2025-08-27 → 2025-08-26 (-1d) | 295.58d → 295.96d |
| PG-11213 | 2nd Fix - Wiring works | 2025-09-16 → 2025-09-15 (-1d) | 2025-10-04 → 2025-10-03 (-1d) | 271.92d → 272.3d |
| PG-11214 | Final Fix - Electrical Fixtures | 2025-10-21 → 2025-10-20 (-1d) | 2025-10-28 → 2025-10-27 (-1d) | 257.92d → 258.3d |
| 1.3.1.2.3.25 | **Floor 22** | 2025-09-09 → 2025-09-08 (-1d) | 2025-12-02 → 2025-12-01 (-1d) |  |
| 1.3.1.2.3.25.1 | **PHE Works** | 2025-09-09 → 2025-09-08 (-1d) | 2025-12-02 → 2025-12-01 (-1d) |  |
| PG-11215 | 1st Fix - Piping works | 2025-09-09 → 2025-09-08 (-1d) | 2025-09-23 → 2025-09-22 (-1d) | 123.92d → 124.3d |
| PG-11216 | 2nd Fix - diverter fixing & Pressure testing |  | 2025-09-30 → 2025-09-29 (-1d) | 133.42d → 133.8d |
| PG-11217 | Final Fix - CP & Sanitary fixtures | 2025-11-20 → 2025-11-19 (-1d) | 2025-12-02 → 2025-12-01 (-1d) | 228.08d → 228.46d |
| 1.3.1.2.3.25.2 | **Fire Fighting Works** |  | 2025-12-02 → 2025-12-01 (-1d) |  |
| PG-11218 | 1st Fix - Piping and Shaft hydrant works |  | 2025-10-03 → 2025-10-01 (-2d) | 145.58d → 145.96d |
| PG-11219 | 2nd Fix - Sprinkler fixing & Pressure testing | 2025-10-27 → 2025-10-25 (-2d) | 2025-11-08 → 2025-11-07 (-1d) | 238.08d → 238.46d |
| PG-11220 | Final Fix - Smoke & heat detectors, FHC , FAS Etc. | 2025-11-20 → 2025-11-19 (-1d) | 2025-12-02 → 2025-12-01 (-1d) | 228.08d → 228.46d |
| 1.3.1.2.3.25.3 | **Electrical Works** | 2025-09-09 → 2025-09-08 (-1d) | 2025-12-02 → 2025-12-01 (-1d) |  |
| PG-11221 | 1st Fix - GI wire pulling | 2025-09-09 → 2025-09-08 (-1d) | 2025-09-18 → 2025-09-17 (-1d) | 15.08d → 15.46d |
| PG-11222 | 2nd Fix - Wiring works | 2025-10-20 → 2025-10-18 (-2d) | 2025-11-07 → 2025-11-06 (-1d) | 243.08d → 243.46d |
| PG-11223 | Final Fix - Electrical Fixtures | 2025-11-25 → 2025-11-24 (-1d) | 2025-12-02 → 2025-12-01 (-1d) | 228.08d → 228.46d |
| 1.3.1.2.3.26 | **Floor 23** | 2025-10-01 → 2025-09-30 (-1d) |  |  |
| 1.3.1.2.3.26.1 | **PHE Works** | 2025-10-01 → 2025-09-30 (-1d) |  |  |
| PG-11224 | 1st Fix - Piping works | 2025-10-01 → 2025-09-30 (-1d) | 2025-10-15 → 2025-10-14 (-1d) | 123.92d → 124.3d |
| PG-11225 | 2nd Fix - diverter fixing & Pressure testing | 2025-10-11 → 2025-10-10 (-1d) | 2025-10-22 → 2025-10-21 (-1d) | 210.08d → 210.46d |
| PG-11226 | Final Fix - CP & Sanitary fixtures | 2025-12-11 → 2025-12-10 (-1d) |  | 210.08d → 210.46d |
| 1.3.1.2.3.26.2 | **Fire Fighting Works** | 2025-10-11 → 2025-10-10 (-1d) |  |  |
| PG-11227 | 1st Fix - Piping and Shaft hydrant works | 2025-10-11 → 2025-10-10 (-1d) | 2025-10-25 → 2025-10-24 (-1d) | 256.92d → 257.3d |
| PG-11228 | 2nd Fix - Sprinkler fixing & Pressure testing |  | 2025-11-29 → 2025-11-28 (-1d) | 220.08d → 220.46d |
| PG-11229 | Final Fix - Smoke & heat detectors, FHC , FAS Etc. | 2025-12-11 → 2025-12-10 (-1d) |  | 210.08d → 210.46d |
| 1.3.1.2.3.26.3 | **Electrical Works** | 2025-10-01 → 2025-09-30 (-1d) |  |  |

| ID | Task | Start | Finish | Complete | Total float |
| --- | --- | --- | --- | --- | --- |
| PG-11230 | 1st Fix - GI wire pulling | 2025-10-01 → 2025-09-30 (-1d) | 2025-10-11 → 2025-10-10 (-1d) |  | 256.92d → 257.3d |
| PG-11231 | 2nd Fix - Wiring works |  | 2025-11-28 → 2025-11-27 (-1d) |  | 225.08d → 225.46d |
| PG-11232 | Final Fix - Electrical Fixtures | 2025-12-16 → 2025-12-15 (-1d) |  |  | 210.08d → 210.46d |
| 1.3.1.2.3.27 | **Floor 24** | 2025-10-23 → 2025-10-22 (-1d) | 2026-01-12 → 2026-01-10 (-2d) |  |  |
| 1.3.1.2.3.27.1 | **PHE Works** | 2025-10-23 → 2025-10-22 (-1d) | 2026-01-12 → 2026-01-10 (-2d) |  |  |
| PG-11233 | 1st Fix - Piping works | 2025-10-23 → 2025-10-22 (-1d) |  |  | 123.92d → 124.3d |
| PG-11234 | 2nd Fix - diverter fixing & Pressure testing | 2025-11-03 → 2025-10-31 (-3d) |  |  | 190.92d → 191.3d |
| PG-11235 | Final Fix - CP & Sanitary fixtures | 2025-12-31 → 2025-12-30 (-1d) | 2026-01-12 → 2026-01-10 (-2d) |  | 190.92d → 191.3d |
| 1.3.1.2.3.27.2 | **Fire Fighting Works** | 2025-11-03 → 2025-10-31 (-3d) | 2026-01-12 → 2026-01-10 (-2d) |  |  |
| PG-11236 | 1st Fix - Piping and Shaft hydrant works | 2025-11-03 → 2025-10-31 (-3d) |  |  | 239.58d → 239.96d |
| PG-11237 | 2nd Fix - Sprinkler fixing & Pressure testing | 2025-12-10 → 2025-12-09 (-1d) |  |  | 199.42d → 199.8d |
| PG-11238 | Final Fix - Smoke & heat detectors, FHC , FAS Etc. | 2025-12-31 → 2025-12-30 (-1d) | 2026-01-12 → 2026-01-10 (-2d) |  | 190.92d → 191.3d |
| 1.3.1.2.3.27.3 | **Electrical Works** | 2025-10-23 → 2025-10-22 (-1d) | 2026-01-12 → 2026-01-10 (-2d) |  |  |
| PG-11239 | 1st Fix - GI wire pulling | 2025-10-23 → 2025-10-22 (-1d) |  |  | 239.58d → 239.96d |
| PG-11240 | 2nd Fix - Wiring works | 2025-12-03 → 2025-12-02 (-1d) |  |  | 204.92d → 205.3d |
| PG-11241 | Final Fix - Electrical Fixtures |  | 2026-01-12 → 2026-01-10 (-2d) |  | 190.92d → 191.3d |
| PG-11242 | 1st Fix - Piping works |  | 2025-11-28 → 2025-11-27 (-1d) |  | 123.92d → 124.3d |
| PG-11243 | 2nd Fix - diverter fixing & Pressure testing |  | 2025-12-05 → 2025-12-04 (-1d) |  | 171.42d → 171.8d |
| PG-11244 | Final Fix - CP & Sanitary fixtures | 2026-01-23 → 2026-01-22 (-1d) |  |  | 171.42d → 171.8d |
| 1.3.1.2.3.28.2 | **Fire Fighting Works** | 2025-11-25 → 2025-11-24 (-1d) |  |  |  |
| PG-11245 | 1st Fix - Piping and Shaft hydrant works | 2025-11-25 → 2025-11-24 (-1d) | 2025-12-08 → 2025-12-06 (-2d) |  | 219.08d → 219.46d |
| PG-11246 | 2nd Fix - Sprinkler fixing & Pressure testing | 2026-01-01 → 2025-12-31 (-1d) | 2026-01-12 → 2026-01-10 (-2d) |  | 181.42d → 181.8d |
| PG-11247 | Final Fix - Smoke & heat detectors, FHC , FAS Etc. | 2026-01-23 → 2026-01-22 (-1d) |  |  | 171.42d → 171.8d |
| PG-11248 | 1st Fix - GI wire pulling |  | 2025-11-24 → 2025-11-22 (-2d) |  | 219.08d → 219.46d |
| PG-11249 | 2nd Fix - Wiring works | 2025-12-25 → 2025-12-24 (-1d) | 2026-01-10 → 2026-01-09 (-1d) |  | 187.42d → 187.8d |
| PG-11250 | Final Fix - Electrical Fixtures | 2026-01-30 → 2026-01-29 (-1d) |  |  | 171.42d → 171.8d |
| 1.3.1.2.3.29 | **Floor 26** | 2025-12-06 → 2025-12-05 (-1d) | 2026-02-26 → 2026-02-25 (-1d) |  |  |
| 1.3.1.2.3.29.1 | **PHE Works** | 2025-12-06 → 2025-12-05 (-1d) | 2026-02-26 → 2026-02-25 (-1d) |  |  |
| PG-11251 | 1st Fix - Piping works | 2025-12-06 → 2025-12-05 (-1d) | 2025-12-20 → 2025-12-19 (-1d) |  | 123.92d → 124.3d |
| PG-11252 | 2nd Fix - diverter fixing & Pressure testing | 2025-12-16 → 2025-12-15 (-1d) | 2025-12-27 → 2025-12-26 (-1d) |  | 123.92d → 124.3d |
| PG-11253 | Final Fix - CP & Sanitary fixtures | 2026-02-14 → 2026-02-13 (-1d) | 2026-02-26 → 2026-02-25 (-1d) |  | 123.92d → 124.3d |
| 1.3.1.2.3.29.2 | **Fire Fighting Works** |  | 2026-02-26 → 2026-02-25 (-1d) |  |  |
| PG-11254 | 1st Fix - Piping and Shaft hydrant works |  | 2025-12-30 → 2025-12-29 (-1d) |  | 202.08d → 202.46d |
| PG-11255 | 2nd Fix - Sprinkler fixing & Pressure testing |  | 2026-02-04 → 2026-02-03 (-1d) |  | 132.92d → 133.3d |
| PG-11256 | Final Fix - Smoke & heat detectors, FHC , FAS Etc. | 2026-02-14 → 2026-02-13 (-1d) | 2026-02-26 → 2026-02-25 (-1d) |  | 123.92d → 124.3d |
| 1.3.1.2.3.29.3 | **Electrical Works** | 2025-12-06 → 2025-12-05 (-1d) | 2026-02-26 → 2026-02-25 (-1d) |  |  |
| PG-11257 | 1st Fix - GI wire pulling | 2025-12-06 → 2025-12-05 (-1d) | 2025-12-16 → 2025-12-15 (-1d) |  | 202.08d → 202.46d |
| PG-11258 | 2nd Fix - Wiring works |  | 2026-02-03 → 2026-02-02 (-1d) |  | 138.92d → 139.3d |
| PG-11259 | Final Fix - Electrical Fixtures | 2026-02-20 → 2026-02-19 (-1d) | 2026-02-26 → 2026-02-25 (-1d) |  | 123.92d → 124.3d |
| 1.3.1.2.4 | **Civil Finishes - Units** |  | 2026-02-19 → 2026-02-18 (-1d) |  |  |
| PG-11415 | Final Coat Painting |  |  | 32% → 64% | 401.05d → 400.68d |
| PG-11420 | Final Coat Painting |  |  | 41% → 73% | 367.2d → 366.83d |
| 1.3.1.2.4.14 | **Floor 11** |  | 2025-06-21 → 2025-06-27 (+6d) |  |  |
| 1.3.1.2.4.14.1 | **Ceiling Finishing works - Civil** |  | 2025-06-21 → 2025-06-27 (+6d) |  |  |
| PG-11427 | Painting Works - Putty, Primer and 1st |  | 2025-05-31 → 2025-06-02 A (+2d) | 78% → 100% | 393.76d → none |
| PG-11429 | Final Coat Painting | 2025-05-31 → 2025-06-02 A (+2d) | 2025-06-21 → 2025-06-27 (+6d) | 0% → 3% | 393.76d → 389.27d |
| 1.3.1.2.4.14.2 | **Wall Finishing works - Civil** |  | 2025-06-21 → 2025-06-25 (+4d) |  |  |
| PG-11433 | Painting Works - Putty, Primer and 1st |  | 2025-05-31 → 2025-06-02 A (+2d) | 83% → 100% | 358.73d → none |
| PG-11434 | Final Coat Painting | 2025-05-31 → 2025-06-02 A (+2d) | 2025-06-21 → 2025-06-25 (+4d) | 0% → 9% | 358.6d → 355.01d |
| 1.3.1.2.4.14.3 | **Floor Finishing Works - Civil** |  | 2025-05-31 → 2025-06-02 (+2d) |  |  |
| PG-11438 | Wooden doors |  | 2025-05-31 → 2025-06-02 A (+2d) | 77% → 100% | 358.6d → none |
| 1.3.1.2.4.15 | **Floor 12** |  | 2025-07-05 → 2025-07-04 (-1d) |  |  |
| 1.3.1.2.4.15.1 | **Ceiling Finishing works - Civil** |  | 2025-07-05 → 2025-07-04 (-1d) |  |  |
| PG-11442 | Toilet False ceiling |  | 2025-05-31 A | 78% → 100% | 373.17d → none |
| PG-11441 | Painting Works - Putty, Primer and 1st | 2025-06-06 A | 2025-06-13 → 2025-06-12 (-1d) | 0% → 3% | 382.67d → 383.06d |
| PG-11443 | Final Coat Painting | 2025-06-13 → 2025-06-12 (-1d) | 2025-07-05 → 2025-07-04 (-1d) |  | 382.67d → 383.06d |
| 1.3.1.2.4.15.2 | **Wall Finishing works - Civil** |  | 2025-07-05 → 2025-07-04 (-1d) |  |  |
| PG-11445 | UPVC Windows & Sliding doors | 2025-05-31 → 2025-06-02 A (+2d) | 2025-06-06 A | 0% → 100% | 347.17d → none |
| PG-11447 | Painting Works - Putty, Primer and 1st | 2025-06-06 A | 2025-06-13 → 2025-06-12 (-1d) | 0% → 3% | 347.17d → 347.56d |
| PG-11448 | Final Coat Painting | 2025-06-13 → 2025-06-12 (-1d) | 2025-07-05 → 2025-07-04 (-1d) |  | 347.17d → 347.56d |
| 1.3.1.2.4.15.3 | **Floor Finishing Works - Civil** |  | 2025-06-13 → 2025-06-12 (-1d) |  |  |
| PG-11451 | Floor Tiling - Dry area |  | 2025-05-31 → 2025-06-02 A (+2d) | 80% → 100% | 347.17d → none |
| PG-11452 | Wooden doors | 2025-06-07 → 2025-06-06 (-1d) | 2025-06-13 → 2025-06-12 (-1d) |  | 347.17d → 347.56d |
| PG-11454 | Cornice fixing | 2025-06-02 A | 2025-06-05 → 2025-06-06 A (+1d) | 0% → 100% | 382.42d → none |
| PG-11460 | Dadoing - Wet area |  | 2025-06-02 → 2025-06-03 A (+1d) | 60% → 100% | 336.74d → none |
| PG-11464 | Floor Tiling - Wet area | 2025-06-02 → 2025-06-03 A (+1d) |  | 0% → 75% | 336.74d → 336.15d |
| 1.3.1.2.4.17 | **Floor 14** |  | 2025-08-01 → 2025-08-02 (+1d) |  |  |
| 1.3.1.2.4.17.1 | **Ceiling Finishing works - Civil** |  | 2025-08-01 → 2025-08-02 (+1d) |  |  |
| PG-11467 | Gypsum Plastering |  | 2025-06-04 → 2025-06-05 A (+1d) | 18% → 100% | 371.49d → none |
| PG-11468 | Cornice fixing | 2025-06-13 → 2025-06-14 (+1d) | 2025-06-18 → 2025-06-19 (+1d) |  | 371.49d → 370.13d |

| ID | Task | Start | Finish | Complete | Total float |
| --- | --- | --- | --- | --- | --- |
| PG-11470 | Toilet False ceiling | 2025-06-23 → 2025-06-24 (+1d) | 2025-06-27 → 2025-06-28 (+1d) |  | 351.28d → 350.3d |
| PG-11469 | Painting Works - Putty, Primer and 1st | 2025-07-03 → 2025-07-04 (+1d) | 2025-07-10 → 2025-07-11 (+1d) |  | 358.95d → 357.96d |
| PG-11471 | Final Coat Painting | 2025-07-10 → 2025-07-11 (+1d) | 2025-08-01 → 2025-08-02 (+1d) |  | 358.95d → 357.96d |
| 1.3.1.2.4.17.2 | **Wall Finishing works - Civil** |  | 2025-08-01 → 2025-08-02 (+1d) |  |  |
| PG-11474 | Dadoing - Wet area | 2025-06-10 → 2025-06-11 (+1d) | 2025-06-16 → 2025-06-17 (+1d) |  | 324.28d → 323.3d |
| PG-11473 | UPVC Windows & Sliding doors | 2025-06-27 → 2025-06-28 (+1d) | 2025-07-03 → 2025-07-04 (+1d) |  | 324.28d → 323.3d |
| PG-11475 | Painting Works - Putty, Primer and 1st | 2025-07-03 → 2025-07-04 (+1d) | 2025-07-10 → 2025-07-11 (+1d) |  | 324.28d → 323.3d |
| PG-11476 | Final Coat Painting | 2025-07-10 → 2025-07-11 (+1d) | 2025-08-01 → 2025-08-02 (+1d) |  | 324.28d → 323.3d |
| 1.3.1.2.4.17.3 | **Floor Finishing Works - Civil** |  | 2025-07-10 → 2025-07-11 (+1d) |  |  |
| PG-11478 | Floor Tiling - Wet area | 2025-06-16 → 2025-06-17 (+1d) | 2025-06-21 → 2025-06-23 (+2d) |  | 324.28d → 323.3d |
| PG-11479 | Floor Tiling - Dry area | 2025-06-21 → 2025-06-23 (+2d) | 2025-06-27 → 2025-06-28 (+1d) |  | 324.28d → 323.3d |
| PG-11480 | Wooden doors | 2025-07-04 → 2025-07-05 (+1d) | 2025-07-10 → 2025-07-11 (+1d) |  | 324.28d → 323.3d |
| PG-11484 | Toilet False ceiling |  | 2025-07-10 → 2025-07-11 (+1d) |  | 339.75d → 339.33d |
| PG-11483 | Painting Works - Putty, Primer and 1st |  | 2025-07-23 → 2025-07-24 (+1d) |  | 348.25d → 347.83d |
| PG-11486 | Balcony Railing Fixing works | 2025-06-03 A |  | 0% → 97% | 191.75d → 192.25d |
| PG-11488 | Dadoing - Wet area |  | 2025-06-28 → 2025-06-30 (+2d) |  | 162.75d → 162.33d |
| PG-11487 | UPVC Windows & Sliding doors |  | 2025-07-16 → 2025-07-17 (+1d) |  | 162.75d → 162.33d |
| PG-11489 | Painting Works - Putty, Primer and 1st |  | 2025-07-23 → 2025-07-24 (+1d) |  | 162.75d → 162.33d |
| 1.3.1.2.4.18.3 | **Floor Finishing Works - Civil** |  | 2025-07-23 → 2025-07-24 (+1d) |  |  |
| PG-11491 | Waterproofing for sunken areas | 2025-06-03 A | 2025-06-05 → 2025-06-06 A (+1d) | 0% → 100% | 182.75d → none |
| PG-11492 | Floor Tiling - Wet area |  | 2025-07-04 → 2025-07-05 (+1d) |  | 162.75d → 162.33d |
| PG-11493 | Floor Tiling - Dry area |  | 2025-07-10 → 2025-07-11 (+1d) |  | 162.75d → 162.33d |
| PG-11494 | Wooden doors |  | 2025-07-23 → 2025-07-24 (+1d) |  | 162.75d → 162.33d |
| 1.3.1.2.4.19 | **Floor 16** | 2025-06-16 → 2025-06-14 (-2d) | 2025-08-28 → 2025-08-27 (-1d) |  |  |
| 1.3.1.2.4.19.1 | **Ceiling Finishing works - Civil** |  | 2025-08-28 → 2025-08-27 (-1d) |  |  |
| PG-11498 | Toilet False ceiling | 2025-07-19 → 2025-07-18 (-1d) |  |  | 327.58d → 327.96d |
| PG-11497 | Painting Works - Putty, Primer and 1st | 2025-07-30 → 2025-07-29 (-1d) |  |  | 337.08d → 337.46d |
| PG-11499 | Final Coat Painting | 2025-08-06 → 2025-08-05 (-1d) | 2025-08-28 → 2025-08-27 (-1d) |  | 337.08d → 337.46d |
| 1.3.1.2.4.19.2 | **Wall Finishing works - Civil** | 2025-06-16 → 2025-06-14 (-2d) | 2025-08-27 → 2025-08-26 (-1d) |  |  |
| PG-11500 | Balcony Railing Fixing works | 2025-06-16 → 2025-06-14 (-2d) |  |  | 332.42d → 332.8d |
| PG-11502 | Dadoing - Wet area | 2025-07-07 → 2025-07-05 (-2d) |  |  | 303.42d → 303.8d |
| PG-11501 | UPVC Windows & Sliding doors | 2025-07-24 → 2025-07-23 (-1d) |  |  | 303.42d → 303.8d |
| PG-11503 | Painting Works - Putty, Primer and 1st | 2025-07-30 → 2025-07-29 (-1d) |  |  | 303.42d → 303.8d |
| PG-11504 | Final Coat Painting | 2025-08-06 → 2025-08-05 (-1d) | 2025-08-27 → 2025-08-26 (-1d) |  | 303.42d → 303.8d |
| 1.3.1.2.4.19.3 | **Floor Finishing Works - Civil** | 2025-06-16 → 2025-06-14 (-2d) |  |  |  |
| PG-11505 | Waterproofing for sunken areas | 2025-06-16 → 2025-06-14 (-2d) |  |  | 323.42d → 323.8d |
| PG-11506 | Floor Tiling - Wet area | 2025-07-12 → 2025-07-11 (-1d) |  |  | 303.42d → 303.8d |
| PG-11507 | Floor Tiling - Dry area | 2025-07-18 → 2025-07-17 (-1d) |  |  | 303.42d → 303.8d |
| PG-11508 | Wooden doors | 2025-07-31 → 2025-07-30 (-1d) |  |  | 303.42d → 303.8d |
| 1.3.1.2.4.20 | **Floor 17** | 2025-06-28 → 2025-06-27 (-1d) | 2025-09-10 → 2025-09-09 (-1d) |  |  |
| 1.3.1.2.4.20.1 | **Ceiling Finishing works - Civil** |  | 2025-09-10 → 2025-09-09 (-1d) |  |  |
| PG-11512 | Toilet False ceiling | 2025-08-01 → 2025-07-31 (-1d) |  |  | 316.58d → 316.96d |
| PG-11511 | Painting Works - Putty, Primer and 1st | 2025-08-12 → 2025-08-11 (-1d) |  |  | 326.08d → 326.46d |
| PG-11513 | Final Coat Painting | 2025-08-20 → 2025-08-19 (-1d) | 2025-09-10 → 2025-09-09 (-1d) |  | 326.08d → 326.46d |
| 1.3.1.2.4.20.2 | **Wall Finishing works - Civil** | 2025-06-28 → 2025-06-27 (-1d) | 2025-09-09 → 2025-09-08 (-1d) |  |  |
| PG-11514 | Balcony Railing Fixing works | 2025-06-28 → 2025-06-27 (-1d) |  |  | 321.42d → 321.8d |
| PG-11516 | Dadoing - Wet area | 2025-07-19 → 2025-07-18 (-1d) |  |  | 292.42d → 292.8d |
| PG-11515 | UPVC Windows & Sliding doors | 2025-08-06 → 2025-08-05 (-1d) |  |  | 292.42d → 292.8d |
| PG-11517 | Painting Works - Putty, Primer and 1st | 2025-08-12 → 2025-08-11 (-1d) |  |  | 292.42d → 292.8d |
| PG-11518 | Final Coat Painting | 2025-08-20 → 2025-08-19 (-1d) | 2025-09-09 → 2025-09-08 (-1d) |  | 292.42d → 292.8d |
| 1.3.1.2.4.20.3 | **Floor Finishing Works - Civil** | 2025-06-28 → 2025-06-27 (-1d) |  |  |  |
| PG-11519 | Waterproofing for sunken areas | 2025-06-28 → 2025-06-27 (-1d) |  |  | 312.42d → 312.8d |
| PG-11520 | Floor Tiling - Wet area | 2025-07-25 → 2025-07-24 (-1d) |  |  | 292.42d → 292.8d |
| PG-11521 | Floor Tiling - Dry area | 2025-07-31 → 2025-07-30 (-1d) |  |  | 292.42d → 292.8d |
| PG-11522 | Wooden doors | 2025-08-13 → 2025-08-12 (-1d) |  |  | 292.42d → 292.8d |
| 1.3.1.2.4.21 | **Floor 18** | 2025-07-11 → 2025-07-10 (-1d) | 2025-09-23 → 2025-09-22 (-1d) |  |  |
| 1.3.1.2.4.21.1 | **Ceiling Finishing works - Civil** |  | 2025-09-23 → 2025-09-22 (-1d) |  |  |
| PG-11526 | Toilet False ceiling | 2025-08-13 → 2025-08-12 (-1d) | 2025-08-19 → 2025-08-18 (-1d) |  | 305.58d → 305.96d |
| PG-11525 | Painting Works - Putty, Primer and 1st | 2025-08-25 → 2025-08-23 (-2d) | 2025-09-01 → 2025-08-30 (-2d) |  | 316.42d → 316.8d |
| PG-11527 | Final Coat Painting | 2025-09-01 → 2025-08-30 (-2d) | 2025-09-23 → 2025-09-22 (-1d) |  | 316.42d → 316.8d |
| 1.3.1.2.4.21.2 | **Wall Finishing works - Civil** | 2025-07-11 → 2025-07-10 (-1d) | 2025-09-23 → 2025-09-22 (-1d) |  |  |
| PG-11528 | Balcony Railing Fixing works | 2025-07-11 → 2025-07-10 (-1d) |  |  | 309.25d → 309.63d |
| PG-11530 | Dadoing - Wet area | 2025-07-31 → 2025-07-30 (-1d) | 2025-08-06 → 2025-08-05 (-1d) |  | 280.58d → 280.96d |
| PG-11529 | UPVC Windows & Sliding doors | 2025-08-19 → 2025-08-18 (-1d) | 2025-08-25 → 2025-08-23 (-2d) |  | 280.58d → 280.96d |
| PG-11531 | Painting Works - Putty, Primer and 1st | 2025-08-25 → 2025-08-23 (-2d) | 2025-09-01 → 2025-08-30 (-2d) |  | 280.58d → 280.96d |
| PG-11532 | Final Coat Painting | 2025-09-01 → 2025-08-30 (-2d) | 2025-09-23 → 2025-09-22 (-1d) |  | 280.58d → 280.96d |
| 1.3.1.2.4.21.3 | **Floor Finishing Works - Civil** | 2025-07-11 → 2025-07-10 (-1d) | 2025-09-01 → 2025-08-30 (-2d) |  |  |
| PG-11533 | Waterproofing for sunken areas | 2025-07-11 → 2025-07-10 (-1d) |  |  | 300.25d → 300.63d |
| PG-11534 | Floor Tiling - Wet area | 2025-08-06 → 2025-08-05 (-1d) | 2025-08-12 → 2025-08-11 (-1d) |  | 280.58d → 280.96d |
| PG-11535 | Floor Tiling - Dry area | 2025-08-12 → 2025-08-11 (-1d) | 2025-08-19 → 2025-08-18 (-1d) |  | 280.58d → 280.96d |

| ID | Task | Start | Finish | Total float |
| --- | --- | --- | --- | --- |
| PG-11536 | Wooden doors | 2025-08-26 → 2025-08-25 (-1d) | 2025-09-01 → 2025-08-30 (-2d) | 280.58d → 280.96d |
| 1.3.1.2.4.22 | **Floor 19** | 2025-07-24 → 2025-07-23 (-1d) | 2025-10-07 → 2025-10-06 (-1d) |  |
| 1.3.1.2.4.22.1 | **Ceiling Finishing works - Civil** |  | 2025-10-07 → 2025-10-06 (-1d) |  |
| PG-11538 | Cornice fixing | 2025-08-20 → 2025-08-19 (-1d) |  | 317.25d → 317.63d |
| PG-11540 | Toilet False ceiling | 2025-08-27 → 2025-08-26 (-1d) | 2025-09-01 → 2025-08-30 (-2d) | 294.58d → 294.96d |
| PG-11539 | Painting Works - Putty, Primer and 1st | 2025-09-06 → 2025-09-05 (-1d) | 2025-09-13 → 2025-09-12 (-1d) | 305.42d → 305.8d |
| PG-11541 | Final Coat Painting | 2025-09-13 → 2025-09-12 (-1d) | 2025-10-07 → 2025-10-06 (-1d) | 305.42d → 305.8d |
| 1.3.1.2.4.22.2 | **Wall Finishing works - Civil** | 2025-07-24 → 2025-07-23 (-1d) | 2025-10-07 → 2025-10-06 (-1d) |  |
| PG-11542 | Balcony Railing Fixing works | 2025-07-24 → 2025-07-23 (-1d) |  | 298.25d → 298.63d |
| PG-11544 | Dadoing - Wet area | 2025-08-13 → 2025-08-12 (-1d) | 2025-08-20 → 2025-08-19 (-1d) | 269.58d → 269.96d |
| PG-11543 | UPVC Windows & Sliding doors | 2025-09-01 → 2025-08-30 (-2d) | 2025-09-06 → 2025-09-05 (-1d) | 269.58d → 269.96d |
| PG-11545 | Painting Works - Putty, Primer and 1st | 2025-09-06 → 2025-09-05 (-1d) | 2025-09-13 → 2025-09-12 (-1d) | 269.58d → 269.96d |
| PG-11546 | Final Coat Painting | 2025-09-13 → 2025-09-12 (-1d) | 2025-10-07 → 2025-10-06 (-1d) | 269.58d → 269.96d |
| 1.3.1.2.4.22.3 | **Floor Finishing Works - Civil** | 2025-07-24 → 2025-07-23 (-1d) | 2025-09-13 → 2025-09-12 (-1d) |  |
| PG-11547 | Waterproofing for sunken areas | 2025-07-24 → 2025-07-23 (-1d) |  | 289.25d → 289.63d |
| PG-11548 | Floor Tiling - Wet area | 2025-08-20 → 2025-08-19 (-1d) | 2025-08-26 → 2025-08-25 (-1d) | 269.58d → 269.96d |
| PG-11549 | Floor Tiling - Dry area | 2025-08-26 → 2025-08-25 (-1d) | 2025-09-01 → 2025-08-30 (-2d) | 269.58d → 269.96d |
| PG-11550 | Wooden doors | 2025-09-08 → 2025-09-06 (-2d) | 2025-09-13 → 2025-09-12 (-1d) | 269.58d → 269.96d |
| 1.3.1.2.4.23 | **Floor 20** | 2025-08-06 → 2025-08-05 (-1d) | 2025-10-21 → 2025-10-20 (-1d) |  |
| 1.3.1.2.4.23.1 | **Ceiling Finishing works - Civil** | 2025-08-16 → 2025-08-14 (-2d) | 2025-10-21 → 2025-10-20 (-1d) |  |
| PG-11551 | Gypsum Plastering | 2025-08-16 → 2025-08-14 (-2d) | 2025-08-23 → 2025-08-22 (-1d) | 305.42d → 305.8d |
| PG-11552 | Cornice fixing | 2025-09-03 → 2025-09-02 (-1d) | 2025-09-06 → 2025-09-05 (-1d) | 305.42d → 305.8d |
| PG-11554 | Toilet False ceiling | 2025-09-10 → 2025-09-09 (-1d) | 2025-09-15 → 2025-09-13 (-2d) | 282.58d → 282.96d |
| PG-11553 | Painting Works - Putty, Primer and 1st | 2025-09-20 → 2025-09-19 (-1d) | 2025-09-27 → 2025-09-26 (-1d) | 293.42d → 293.8d |
| PG-11555 | Final Coat Painting | 2025-09-27 → 2025-09-26 (-1d) | 2025-10-21 → 2025-10-20 (-1d) | 293.42d → 293.8d |
| 1.3.1.2.4.23.2 | **Wall Finishing works - Civil** | 2025-08-06 → 2025-08-05 (-1d) | 2025-10-21 → 2025-10-20 (-1d) |  |
| PG-11556 | Balcony Railing Fixing works | 2025-08-06 → 2025-08-05 (-1d) |  | 287.25d → 287.63d |
| PG-11558 | Dadoing - Wet area | 2025-08-28 → 2025-08-27 (-1d) | 2025-09-03 → 2025-09-02 (-1d) | 257.58d → 257.96d |
| PG-11557 | UPVC Windows & Sliding doors | 2025-09-15 → 2025-09-13 (-2d) | 2025-09-20 → 2025-09-19 (-1d) | 257.58d → 257.96d |
| PG-11559 | Painting Works - Putty, Primer and 1st | 2025-09-20 → 2025-09-19 (-1d) | 2025-09-27 → 2025-09-26 (-1d) | 257.58d → 257.96d |
| PG-11560 | Final Coat Painting | 2025-09-27 → 2025-09-26 (-1d) | 2025-10-21 → 2025-10-20 (-1d) | 257.58d → 257.96d |
| 1.3.1.2.4.23.3 | **Floor Finishing Works - Civil** | 2025-08-06 → 2025-08-05 (-1d) | 2025-09-27 → 2025-09-26 (-1d) |  |
| PG-11561 | Waterproofing for sunken areas | 2025-08-06 → 2025-08-05 (-1d) |  | 278.25d → 278.63d |
| PG-11562 | Floor Tiling - Wet area | 2025-09-03 → 2025-09-02 (-1d) | 2025-09-09 → 2025-09-08 (-1d) | 257.58d → 257.96d |
| PG-11563 | Floor Tiling - Dry area | 2025-09-09 → 2025-09-08 (-1d) | 2025-09-15 → 2025-09-13 (-2d) | 257.58d → 257.96d |
| PG-11564 | Wooden doors | 2025-09-22 → 2025-09-20 (-2d) | 2025-09-27 → 2025-09-26 (-1d) | 257.58d → 257.96d |
| 1.3.1.2.4.24 | **Floor 21** | 2025-08-20 → 2025-08-19 (-1d) | 2025-11-03 → 2025-10-31 (-3d) |  |
| 1.3.1.2.4.24.1 | **Ceiling Finishing works - Civil** | 2025-08-27 → 2025-08-26 (-1d) | 2025-11-03 → 2025-10-31 (-3d) |  |
| PG-11565 | Gypsum Plastering | 2025-08-27 → 2025-08-26 (-1d) | 2025-09-03 → 2025-09-02 (-1d) | 295.58d → 295.96d |
| PG-11566 | Cornice fixing | 2025-09-13 → 2025-09-12 (-1d) | 2025-09-17 → 2025-09-16 (-1d) | 295.58d → 295.96d |
| PG-11568 | Toilet False ceiling | 2025-09-20 → 2025-09-19 (-1d) | 2025-09-25 → 2025-09-24 (-1d) | 273.92d → 274.3d |
| PG-11567 | Painting Works - Putty, Primer and 1st | 2025-10-01 → 2025-09-30 (-1d) | 2025-10-09 → 2025-10-08 (-1d) | 283.58d → 283.96d |
| PG-11569 | Final Coat Painting | 2025-10-09 → 2025-10-08 (-1d) | 2025-11-03 → 2025-10-31 (-3d) | 283.58d → 283.96d |
| 1.3.1.2.4.24.2 | **Wall Finishing works - Civil** | 2025-08-20 → 2025-08-19 (-1d) | 2025-11-03 → 2025-10-31 (-3d) |  |
| PG-11570 | Balcony Railing Fixing works | 2025-08-20 → 2025-08-19 (-1d) |  | 275.58d → 275.96d |
| PG-11572 | Dadoing - Wet area | 2025-09-08 → 2025-09-06 (-2d) | 2025-09-13 → 2025-09-12 (-1d) | 247.92d → 248.3d |
| PG-11571 | UPVC Windows & Sliding doors | 2025-09-25 → 2025-09-24 (-1d) | 2025-10-01 → 2025-09-30 (-1d) | 247.92d → 248.3d |
| PG-11573 | Painting Works - Putty, Primer and 1st | 2025-10-01 → 2025-09-30 (-1d) | 2025-10-09 → 2025-10-08 (-1d) | 247.92d → 248.3d |
| PG-11574 | Final Coat Painting | 2025-10-09 → 2025-10-08 (-1d) | 2025-11-03 → 2025-10-31 (-3d) | 247.92d → 248.3d |
| 1.3.1.2.4.24.3 | **Floor Finishing Works - Civil** | 2025-08-20 → 2025-08-19 (-1d) | 2025-10-09 → 2025-10-08 (-1d) |  |
| PG-11575 | Waterproofing for sunken areas | 2025-08-20 → 2025-08-19 (-1d) |  | 266.58d → 266.96d |
| PG-11576 | Floor Tiling - Wet area | 2025-09-13 → 2025-09-12 (-1d) | 2025-09-19 → 2025-09-18 (-1d) | 247.92d → 248.3d |
| PG-11577 | Floor Tiling - Dry area | 2025-09-19 → 2025-09-18 (-1d) | 2025-09-25 → 2025-09-24 (-1d) | 247.92d → 248.3d |
| PG-11578 | Wooden doors | 2025-10-03 → 2025-10-01 (-2d) | 2025-10-09 → 2025-10-08 (-1d) | 247.92d → 248.3d |
| 1.3.1.2.4.25 | **Floor 22** | 2025-09-09 → 2025-09-08 (-1d) | 2025-11-25 → 2025-11-24 (-1d) |  |
| 1.3.1.2.4.25.1 | **Ceiling Finishing works - Civil** | 2025-09-18 → 2025-09-17 (-1d) | 2025-11-25 → 2025-11-24 (-1d) |  |
| PG-11579 | Gypsum Plastering | 2025-09-18 → 2025-09-17 (-1d) | 2025-09-25 → 2025-09-24 (-1d) | 145.58d → 145.96d |
| PG-11580 | Cornice fixing | 2025-10-06 → 2025-10-04 (-2d) | 2025-10-10 → 2025-10-09 (-1d) | 145.58d → 145.96d |
| PG-11582 | Toilet False ceiling | 2025-10-14 → 2025-10-13 (-1d) | 2025-10-18 → 2025-10-17 (-1d) | 255.08d → 255.46d |
| PG-11581 | Painting Works - Putty, Primer and 1st | 2025-10-24 → 2025-10-23 (-1d) | 2025-10-31 → 2025-10-30 (-1d) | 133.42d → 133.8d |
| PG-11583 | Final Coat Painting | 2025-10-31 → 2025-10-30 (-1d) | 2025-11-25 → 2025-11-24 (-1d) | 262.75d → 263.13d |
| 1.3.1.2.4.25.2 | **Wall Finishing works - Civil** | 2025-09-09 → 2025-09-08 (-1d) | 2025-11-25 → 2025-11-24 (-1d) |  |
| PG-11584 | Balcony Railing Fixing works | 2025-09-09 → 2025-09-08 (-1d) | 2025-09-13 → 2025-09-12 (-1d) | 162.25d → 162.63d |
| PG-11586 | Dadoing - Wet area | 2025-09-30 → 2025-09-29 (-1d) | 2025-10-07 → 2025-10-06 (-1d) | 133.42d → 133.8d |
| PG-11585 | UPVC Windows & Sliding doors | 2025-10-18 → 2025-10-17 (-1d) | 2025-10-24 → 2025-10-23 (-1d) | 133.42d → 133.8d |
| PG-11587 | Painting Works - Putty, Primer and 1st | 2025-10-24 → 2025-10-23 (-1d) | 2025-10-31 → 2025-10-30 (-1d) | 228.08d → 228.46d |
| PG-11588 | Final Coat Painting | 2025-10-31 → 2025-10-30 (-1d) | 2025-11-25 → 2025-11-24 (-1d) | 228.08d → 228.46d |
| 1.3.1.2.4.25.3 | **Floor Finishing Works - Civil** | 2025-09-09 → 2025-09-08 (-1d) | 2025-10-31 → 2025-10-30 (-1d) |  |
| PG-11589 | Waterproofing for sunken areas | 2025-09-09 → 2025-09-08 (-1d) | 2025-09-12 → 2025-09-11 (-1d) | 153.25d → 153.63d |
| PG-11590 | Floor Tiling - Wet area | 2025-10-07 → 2025-10-06 (-1d) | 2025-10-13 → 2025-10-11 (-2d) | 133.42d → 133.8d |

| ID | Task | Start | Finish | Total float |
| --- | --- | --- | --- | --- |
| PG-11591 | Floor Tiling - Dry area | 2025-10-13 → 2025-10-11 (-2d) | 2025-10-18 → 2025-10-17 (-1d) | 133.42d → 133.8d |
| PG-11592 | Wooden doors | 2025-10-25 → 2025-10-24 (-1d) | 2025-10-31 → 2025-10-30 (-1d) | 228.08d → 228.46d |
| 1.3.1.2.4.26 | **Floor 23** | 2025-10-01 → 2025-09-30 (-1d) |  |  |
| 1.3.1.2.4.26.1 | **Ceiling Finishing works - Civil** | 2025-10-11 → 2025-10-10 (-1d) |  |  |
| PG-11593 | Gypsum Plastering | 2025-10-11 → 2025-10-10 (-1d) | 2025-10-18 → 2025-10-17 (-1d) | 256.92d → 257.3d |
| PG-11594 | Cornice fixing | 2025-10-28 → 2025-10-27 (-1d) | 2025-11-03 → 2025-10-31 (-3d) | 256.92d → 257.3d |
| PG-11596 | Toilet False ceiling | 2025-11-05 → 2025-11-04 (-1d) | 2025-11-10 → 2025-11-08 (-2d) | 237.08d → 237.46d |
| PG-11595 | Painting Works - Putty, Primer and 1st | 2025-11-15 → 2025-11-14 (-1d) | 2025-11-22 → 2025-11-21 (-1d) | 245.92d → 246.3d |
| PG-11597 | Final Coat Painting | 2025-11-22 → 2025-11-21 (-1d) |  | 245.92d → 246.3d |
| 1.3.1.2.4.26.2 | **Wall Finishing works - Civil** | 2025-10-01 → 2025-09-30 (-1d) |  |  |
| PG-11598 | Balcony Railing Fixing works | 2025-10-01 → 2025-09-30 (-1d) | 2025-10-07 → 2025-10-06 (-1d) | 237.75d → 238.13d |
| PG-11600 | Dadoing - Wet area | 2025-10-22 → 2025-10-21 (-1d) | 2025-10-28 → 2025-10-27 (-1d) | 210.08d → 210.46d |
| PG-11599 | UPVC Windows & Sliding doors | 2025-11-10 → 2025-11-08 (-2d) | 2025-11-15 → 2025-11-14 (-1d) | 210.08d → 210.46d |
| PG-11601 | Painting Works - Putty, Primer and 1st | 2025-11-15 → 2025-11-14 (-1d) | 2025-11-22 → 2025-11-21 (-1d) | 210.08d → 210.46d |
| PG-11602 | Final Coat Painting | 2025-11-22 → 2025-11-21 (-1d) |  | 210.08d → 210.46d |
| 1.3.1.2.4.26.3 | **Floor Finishing Works - Civil** | 2025-10-01 → 2025-09-30 (-1d) | 2025-11-22 → 2025-11-21 (-1d) |  |
| PG-11603 | Waterproofing for sunken areas | 2025-10-01 → 2025-09-30 (-1d) | 2025-10-06 → 2025-10-04 (-2d) | 228.75d → 229.13d |
| PG-11604 | Floor Tiling - Wet area | 2025-10-28 → 2025-10-27 (-1d) | 2025-11-04 → 2025-11-03 (-1d) | 210.08d → 210.46d |
| PG-11605 | Floor Tiling - Dry area | 2025-11-04 → 2025-11-03 (-1d) | 2025-11-10 → 2025-11-08 (-2d) | 210.08d → 210.46d |
| PG-11606 | Wooden doors | 2025-11-17 → 2025-11-15 (-2d) | 2025-11-22 → 2025-11-21 (-1d) | 210.08d → 210.46d |
| 1.3.1.2.4.27 | **Floor 24** | 2025-10-23 → 2025-10-22 (-1d) | 2026-01-05 → 2026-01-03 (-2d) |  |
| 1.3.1.2.4.27.1 | **Ceiling Finishing works - Civil** |  | 2026-01-05 → 2026-01-03 (-2d) |  |
| PG-11608 | Cornice fixing | 2025-11-19 → 2025-11-18 (-1d) |  | 239.58d → 239.96d |
| PG-11611 | Final Coat Painting |  | 2026-01-05 → 2026-01-03 (-2d) | 227.58d → 227.96d |
| 1.3.1.2.4.27.2 | **Wall Finishing works - Civil** | 2025-10-23 → 2025-10-22 (-1d) | 2026-01-05 → 2026-01-03 (-2d) |  |
| PG-11612 | Balcony Railing Fixing works | 2025-10-23 → 2025-10-22 (-1d) | 2025-10-28 → 2025-10-27 (-1d) | 219.58d → 219.96d |
| PG-11616 | Final Coat Painting |  | 2026-01-05 → 2026-01-03 (-2d) | 190.92d → 191.3d |
| 1.3.1.2.4.27.3 | **Floor Finishing Works - Civil** | 2025-10-23 → 2025-10-22 (-1d) |  |  |
| PG-11617 | Waterproofing for sunken areas | 2025-10-23 → 2025-10-22 (-1d) | 2025-10-27 → 2025-10-25 (-2d) | 210.58d → 210.96d |
| 1.3.1.2.4.28.1 | **Ceiling Finishing works - Civil** | 2025-11-24 → 2025-11-22 (-2d) |  |  |
| PG-11621 | Gypsum Plastering | 2025-11-24 → 2025-11-22 (-2d) | 2025-12-01 → 2025-11-29 (-2d) | 219.08d → 219.46d |
| PG-11622 | Cornice fixing |  | 2025-12-15 → 2025-12-13 (-2d) | 219.08d → 219.46d |
| PG-11624 | Toilet False ceiling | 2025-12-18 → 2025-12-17 (-1d) | 2025-12-23 → 2025-12-22 (-1d) | 198.42d → 198.8d |
| PG-11623 | Painting Works - Putty, Primer and 1st | 2025-12-29 → 2025-12-27 (-2d) | 2026-01-05 → 2026-01-03 (-2d) | 207.08d → 207.46d |
| PG-11625 | Final Coat Painting | 2026-01-05 → 2026-01-03 (-2d) |  | 207.08d → 207.46d |
| PG-11628 | Dadoing - Wet area | 2025-12-05 → 2025-12-04 (-1d) | 2025-12-11 → 2025-12-10 (-1d) | 171.42d → 171.8d |
| PG-11627 | UPVC Windows & Sliding doors | 2025-12-23 → 2025-12-22 (-1d) | 2025-12-29 → 2025-12-27 (-2d) | 171.42d → 171.8d |
| PG-11629 | Painting Works - Putty, Primer and 1st | 2025-12-29 → 2025-12-27 (-2d) | 2026-01-05 → 2026-01-03 (-2d) | 171.42d → 171.8d |
| PG-11630 | Final Coat Painting | 2026-01-05 → 2026-01-03 (-2d) |  | 171.42d → 171.8d |
| 1.3.1.2.4.28.3 | **Floor Finishing Works - Civil** |  | 2026-01-05 → 2026-01-03 (-2d) |  |
| PG-11632 | Floor Tiling - Wet area | 2025-12-11 → 2025-12-10 (-1d) | 2025-12-17 → 2025-12-16 (-1d) | 171.42d → 171.8d |
| PG-11633 | Floor Tiling - Dry area | 2025-12-17 → 2025-12-16 (-1d) | 2025-12-23 → 2025-12-22 (-1d) | 171.42d → 171.8d |
| PG-11634 | Wooden doors | 2025-12-30 → 2025-12-29 (-1d) | 2026-01-05 → 2026-01-03 (-2d) | 171.42d → 171.8d |
| 1.3.1.2.4.29 | **Floor 26** | 2025-12-06 → 2025-12-05 (-1d) | 2026-02-19 → 2026-02-18 (-1d) |  |
| 1.3.1.2.4.29.1 | **Ceiling Finishing works - Civil** | 2025-12-16 → 2025-12-15 (-1d) | 2026-02-19 → 2026-02-18 (-1d) |  |
| PG-11635 | Gypsum Plastering | 2025-12-16 → 2025-12-15 (-1d) | 2025-12-23 → 2025-12-22 (-1d) | 202.08d → 202.46d |
| PG-11636 | Cornice fixing | 2026-01-01 → 2025-12-31 (-1d) | 2026-01-06 → 2026-01-05 (-1d) | 202.08d → 202.46d |
| PG-11638 | Toilet False ceiling | 2026-01-09 → 2026-01-08 (-1d) | 2026-01-14 → 2026-01-13 (-1d) | 149.92d → 150.3d |
| PG-11637 | Painting Works - Putty, Primer and 1st | 2026-01-20 → 2026-01-19 (-1d) | 2026-01-28 → 2026-01-27 (-1d) | 190.25d → 190.63d |
| PG-11639 | Final Coat Painting | 2026-01-28 → 2026-01-27 (-1d) | 2026-02-19 → 2026-02-18 (-1d) | 190.25d → 190.63d |
| 1.3.1.2.4.29.2 | **Wall Finishing works - Civil** | 2025-12-06 → 2025-12-05 (-1d) | 2026-02-19 → 2026-02-18 (-1d) |  |
| PG-11640 | Balcony Railing Fixing works | 2025-12-06 → 2025-12-05 (-1d) | 2025-12-11 → 2025-12-10 (-1d) | 152.58d → 152.96d |
| PG-11642 | Dadoing - Wet area | 2025-12-27 → 2025-12-26 (-1d) | 2026-01-02 → 2026-01-01 (-1d) | 123.92d → 124.3d |
| PG-11641 | UPVC Windows & Sliding doors | 2026-01-14 → 2026-01-13 (-1d) | 2026-01-20 → 2026-01-19 (-1d) | 123.92d → 124.3d |
| PG-11643 | Painting Works - Putty, Primer and 1st | 2026-01-20 → 2026-01-19 (-1d) | 2026-01-28 → 2026-01-27 (-1d) | 123.92d → 124.3d |
| PG-11644 | Final Coat Painting | 2026-01-28 → 2026-01-27 (-1d) | 2026-02-19 → 2026-02-18 (-1d) | 123.92d → 124.3d |
| 1.3.1.2.4.29.3 | **Floor Finishing Works - Civil** | 2025-12-06 → 2025-12-05 (-1d) | 2026-01-28 → 2026-01-27 (-1d) |  |
| PG-11645 | Waterproofing for sunken areas | 2025-12-06 → 2025-12-05 (-1d) | 2025-12-10 → 2025-12-09 (-1d) | 143.58d → 143.96d |
| PG-11646 | Floor Tiling - Wet area | 2026-01-02 → 2026-01-01 (-1d) | 2026-01-08 → 2026-01-07 (-1d) | 123.92d → 124.3d |
| PG-11647 | Floor Tiling - Dry area | 2026-01-08 → 2026-01-07 (-1d) | 2026-01-14 → 2026-01-13 (-1d) | 123.92d → 124.3d |
| PG-11648 | Wooden doors | 2026-01-21 → 2026-01-20 (-1d) | 2026-01-28 → 2026-01-27 (-1d) | 123.92d → 124.3d |
| 1.3.1.2.4.30 | **External Finishing works** | 2025-09-16 → 2025-09-15 (-1d) | 2026-01-13 → 2026-01-12 (-1d) |  |
| PG-11649 | External walls tie rod hole plugging with GP2 | 2025-09-16 → 2025-09-15 (-1d) | 2025-10-22 → 2025-10-21 (-1d) | 220.08d → 220.46d |
| PG-11650 | External walls grinding works | 2025-10-10 → 2025-10-09 (-1d) | 2025-11-27 → 2025-11-26 (-1d) | 220.08d → 220.46d |
| PG-11651 | Texture and painting works | 2025-11-21 → 2025-11-20 (-1d) | 2026-01-13 → 2026-01-12 (-1d) | 220.08d → 220.46d |
| 1.3.1.2.5 | **Corridor & Fire Staircase Finishing works** | 2025-11-22 → 2025-11-21 (-1d) | 2026-03-23 → 2026-03-21 (-2d) |  |
| 1.3.1.2.5.1 | **Ceiling Finishing works - Civil** | 2025-11-22 → 2025-11-21 (-1d) | 2026-02-16 → 2026-02-14 (-2d) |  |
| PG-11652 | Gypsum Plastering | 2025-11-22 → 2025-11-21 (-1d) | 2025-11-29 → 2025-11-28 (-1d) | 15.08d → 15.46d |
| PG-11653 | Cornice fixing | 2025-11-28 → 2025-11-27 (-1d) | 2025-12-03 → 2025-12-02 (-1d) | 145.58d → 145.96d |
| PG-11654 | Painting Works - Putty, Primer and 1st | 2025-12-17 → 2025-12-16 (-1d) | 2025-12-24 → 2025-12-23 (-1d) | 133.42d → 133.8d |

| ID | Task | Start | Finish | Total float |
| --- | --- | --- | --- | --- |
| PG-11655 | False ceiling | 2025-12-24 → 2025-12-23 (-1d) | 2026-01-29 → 2026-01-28 (-1d) | 133.42d → 133.8d |
| PG-11656 | Final Coat Painting |  | 2026-02-16 → 2026-02-14 (-2d) | 163.42d → 163.8d |
| 1.3.1.2.5.2 | **Wall Finishing works - Civil** | 2025-12-29 → 2025-12-27 (-2d) | 2026-03-23 → 2026-03-21 (-2d) |  |
| PG-11657 | UPVC Windows & Sliding doors | 2025-12-29 → 2025-12-27 (-2d) | 2026-01-03 → 2026-01-02 (-1d) | 139.42d → 139.8d |
| PG-11658 | Wall Cladding Upto 1.2 Mts | 2026-01-15 → 2026-01-14 (-1d) | 2026-02-09 → 2026-02-07 (-2d) | 139.42d → 139.8d |
| PG-11659 | Painting Works - Texture & one coat Painting works | 2026-02-16 → 2026-02-14 (-2d) | 2026-03-05 → 2026-03-04 (-1d) | 133.42d → 133.8d |
| PG-11660 | Final Coat Painting |  | 2026-03-23 → 2026-03-21 (-2d) | 133.42d → 133.8d |
| 1.3.1.2.5.3 | **Floor Finishing Works - Civil** | 2025-11-29 → 2025-11-28 (-1d) | 2025-12-29 → 2025-12-27 (-2d) |  |
| PG-11661 | Fire Doors installation | 2025-11-29 → 2025-11-28 (-1d) | 2025-12-11 → 2025-12-10 (-1d) | 183.92d → 184.3d |
| PG-11662 | Vitrified tile flooring works | 2025-12-11 → 2025-12-10 (-1d) | 2025-12-29 → 2025-12-27 (-2d) | 183.92d → 184.3d |
| 1.3.1.2.5.4 | **Fire Staircase Finishing Works - Civil** | 2025-11-29 → 2025-11-28 (-1d) | 2026-03-21 → 2026-03-20 (-1d) |  |
| PG-11663 | Staircase Railing Fixing works | 2025-11-29 → 2025-11-28 (-1d) | 2025-12-23 → 2025-12-22 (-1d) | 15.08d → 15.46d |
| PG-11664 | Wall and ceiling Gypsum plastering | 2025-12-11 → 2025-12-10 (-1d) | 2026-01-15 → 2026-01-14 (-1d) | 15.08d → 15.46d |
| PG-11665 | Staircase Flooring and Skirting Works | 2025-12-29 → 2025-12-27 (-2d) | 2026-02-14 → 2026-02-13 (-1d) | 15.08d → 15.46d |
| PG-11666 | UPVC Window fixing works | 2026-02-16 → 2026-02-14 (-2d) | 2026-03-04 → 2026-03-03 (-1d) | 15.08d → 15.46d |
| PG-11667 | Staircase Painting works | 2026-02-26 → 2026-02-25 (-1d) | 2026-03-21 → 2026-03-20 (-1d) | 15.08d → 15.46d |
| 1.3.1.2.6 | **MEP Civil Works (Shaft, Lift Shaft & OHT )** | 2025-09-02 → 2025-09-01 (-1d) | 2026-01-31 → 2026-01-30 (-1d) |  |
| 1.3.1.2.6.1 | **Lift Shaft Works** | 2025-09-02 → 2025-09-01 (-1d) | 2026-01-31 → 2026-01-30 (-1d) |  |
| PG-11668 | Tie rod hole packing | 2025-09-02 → 2025-09-01 (-1d) | 2025-09-11 → 2025-09-10 (-1d) | 120.58d → 120.96d |
| PG-11669 | Grinding works | 2025-09-11 → 2025-09-10 (-1d) | 2025-09-17 → 2025-09-16 (-1d) | 120.58d → 120.96d |
| PG-11670 | Lift pit water proofing works | 2025-09-17 → 2025-09-16 (-1d) |  | 120.58d → 120.96d |
| PG-11671 | Shaft door opening finishing | 2025-10-13 → 2025-10-11 (-2d) | 2025-10-20 → 2025-10-18 (-2d) | 120.58d → 120.96d |
| PG-11672 | Painting works | 2025-10-20 → 2025-10-18 (-2d) | 2025-10-29 → 2025-10-28 (-1d) | 120.58d → 120.96d |
| PG-11673 | Lift Wall Cladding Works | 2026-01-14 → 2026-01-13 (-1d) | 2026-01-31 → 2026-01-30 (-1d) | 156.25d → 156.63d |
| 1.3.1.2.6.2 | **Electrical Shaft works** | 2025-09-02 → 2025-09-01 (-1d) | 2025-10-06 → 2025-10-04 (-2d) |  |
| PG-11674 | Tie rod hole packing | 2025-09-02 → 2025-09-01 (-1d) | 2025-09-11 → 2025-09-10 (-1d) | 227.25d → 227.63d |
| PG-11675 | Grinding works | 2025-09-11 → 2025-09-10 (-1d) | 2025-09-17 → 2025-09-16 (-1d) | 227.25d → 227.63d |
| PG-11676 | Shaft door opening finishing | 2025-09-17 → 2025-09-16 (-1d) | 2025-09-25 → 2025-09-24 (-1d) | 227.25d → 227.63d |
| PG-11677 | Painting works | 2025-09-25 → 2025-09-24 (-1d) | 2025-10-06 → 2025-10-04 (-2d) | 227.25d → 227.63d |
| 1.3.1.2.6.3 | **FPS Shaft works** | 2025-09-02 → 2025-09-01 (-1d) | 2025-10-06 → 2025-10-04 (-2d) |  |
| PG-11678 | Tie rod hole packing | 2025-09-02 → 2025-09-01 (-1d) | 2025-09-11 → 2025-09-10 (-1d) | 227.08d → 227.46d |
| PG-11679 | Grinding works | 2025-09-11 → 2025-09-10 (-1d) | 2025-09-17 → 2025-09-16 (-1d) | 227.08d → 227.46d |
| PG-11680 | Shaft door opening finishing | 2025-09-17 → 2025-09-16 (-1d) | 2025-09-25 → 2025-09-24 (-1d) | 227.08d → 227.46d |
| PG-11681 | Painting works | 2025-09-25 → 2025-09-24 (-1d) | 2025-10-06 → 2025-10-04 (-2d) | 227.08d → 227.46d |
| 1.3.1.2.6.4 | **PHE Shaft works** | 2025-09-02 → 2025-09-01 (-1d) | 2025-10-06 → 2025-10-04 (-2d) |  |
| PG-11682 | Tie rod hole packing | 2025-09-02 → 2025-09-01 (-1d) | 2025-09-11 → 2025-09-10 (-1d) | 185.92d → 186.3d |
| PG-11683 | Grinding works | 2025-09-11 → 2025-09-10 (-1d) | 2025-09-17 → 2025-09-16 (-1d) | 185.92d → 186.3d |
| PG-11684 | Shaft door opening finishing | 2025-09-17 → 2025-09-16 (-1d) | 2025-09-25 → 2025-09-24 (-1d) | 185.92d → 186.3d |
| PG-11685 | Painting works | 2025-09-25 → 2025-09-24 (-1d) | 2025-10-06 → 2025-10-04 (-2d) | 185.92d → 186.3d |
| 1.3.1.2.6.5 | **Data & Communication Shaft** | 2025-09-02 → 2025-09-01 (-1d) | 2025-10-03 → 2025-10-01 (-2d) |  |
| PG-11686 | Tie rod hole packing | 2025-09-02 → 2025-09-01 (-1d) | 2025-09-11 → 2025-09-10 (-1d) | 221.75d → 222.13d |
| PG-11687 | Grinding works | 2025-09-11 → 2025-09-10 (-1d) | 2025-09-17 → 2025-09-16 (-1d) | 221.75d → 222.13d |
| PG-11688 | Shaft door opening finishing | 2025-09-17 → 2025-09-16 (-1d) | 2025-09-23 → 2025-09-22 (-1d) | 221.75d → 222.13d |
| PG-11689 | Painting works | 2025-09-23 → 2025-09-22 (-1d) | 2025-10-03 → 2025-10-01 (-2d) | 221.75d → 222.13d |
| 1.3.1.2.6.6 | **OHT Works** | 2025-09-02 → 2025-09-01 (-1d) | 2025-10-22 → 2025-10-21 (-1d) |  |
| PG-11690 | Tank materials Supply & Shifting | 2025-09-02 → 2025-09-01 (-1d) | 2025-09-13 → 2025-09-12 (-1d) | 193.25d → 193.63d |
| PG-11691 | Assembling OHT FRP Tank | 2025-09-13 → 2025-09-12 (-1d) | 2025-09-25 → 2025-09-24 (-1d) | 193.25d → 193.63d |
| PG-11692 | Installation of OHT Tank | 2025-09-25 → 2025-09-24 (-1d) | 2025-10-14 → 2025-10-13 (-1d) | 193.25d → 193.63d |
| PG-11693 | Water tightness works and checking | 2025-10-14 → 2025-10-13 (-1d) | 2025-10-22 → 2025-10-21 (-1d) | 193.25d → 193.63d |
| 1.3.1.2.7 | **MEP Shaft works** | 2025-10-03 → 2025-10-01 (-2d) | 2025-12-25 → 2025-12-24 (-1d) |  |
| 1.3.1.2.7.1 | **Electrical** | 2025-10-06 → 2025-10-04 (-2d) | 2025-11-15 → 2025-11-14 (-1d) |  |
| PG-11694 | Tray Works | 2025-10-06 → 2025-10-04 (-2d) | 2025-10-17 → 2025-10-16 (-1d) | 227.25d → 227.63d |
| PG-11695 | Cable & Conducting works | 2025-10-17 → 2025-10-16 (-1d) | 2025-10-28 → 2025-10-27 (-1d) | 227.25d → 227.63d |
| PG-11696 | Wiring/DB/connector box installation and termination works | 2025-10-28 → 2025-10-27 (-1d) | 2025-11-15 → 2025-11-14 (-1d) | 227.25d → 227.63d |
| 1.3.1.2.7.2 | **FPS** | 2025-10-06 → 2025-10-04 (-2d) | 2025-11-15 → 2025-11-14 (-1d) |  |
| PG-11697 | Shaft MS Piping & fixtures installation | 2025-10-06 → 2025-10-04 (-2d) | 2025-10-29 → 2025-10-28 (-1d) | 227.08d → 227.46d |
| PG-11698 | Tray / cabling / conducting & wiring works | 2025-10-29 → 2025-10-28 (-1d) | 2025-11-15 → 2025-11-14 (-1d) | 227.08d → 227.46d |
| 1.3.1.2.7.3 | **Data & Communication** | 2025-10-03 → 2025-10-01 (-2d) | 2025-11-21 → 2025-11-20 (-1d) |  |
| PG-11699 | Tray Works | 2025-10-03 → 2025-10-01 (-2d) | 2025-10-17 → 2025-10-16 (-1d) | 221.75d → 222.13d |
| PG-11700 | Tray / cabling / conducting & wiring works | 2025-10-17 → 2025-10-16 (-1d) |  | 221.75d → 222.13d |
| PG-11701 | Wiring/DB/connector box installation and termination works |  | 2025-11-21 → 2025-11-20 (-1d) | 221.75d → 222.13d |
| 1.3.1.2.7.4 | **PHE** | 2025-10-06 → 2025-10-04 (-2d) | 2025-12-25 → 2025-12-24 (-1d) |  |
| PG-11702 | Bracket fixing works | 2025-10-06 → 2025-10-04 (-2d) | 2025-10-14 → 2025-10-13 (-1d) | 185.92d → 186.3d |
| PG-11703 | Piping Works | 2025-10-14 → 2025-10-13 (-1d) |  | 185.92d → 186.3d |
| PG-11704 | Terrace Ring main & OHT Connection works | 2025-10-31 → 2025-10-30 (-1d) |  | 185.92d → 186.3d |
| PG-11705 | Commissioning | 2025-12-18 → 2025-12-17 (-1d) | 2025-12-25 → 2025-12-24 (-1d) | 185.92d → 186.3d |
| 1.3.1.2.8 | **Lift Installation and Testing works** | 2025-09-17 → 2025-09-16 (-1d) |  |  |
| PG-11706 | Lift Shaft Survey works | 2025-09-17 → 2025-09-16 (-1d) |  | 146.25d → 146.63d |
| PG-11707 | Guide Rails fixing works | 2025-10-29 → 2025-10-28 (-1d) | 2025-12-16 → 2025-12-15 (-1d) | 120.58d → 120.96d |
| PG-11708 | Lift Frame fixing works | 2025-12-16 → 2025-12-15 (-1d) | 2026-01-14 → 2026-01-13 (-1d) | 120.58d → 120.96d |

| ID | Task | Start | Finish | Complete | Total float |
| --- | --- | --- | --- | --- | --- |
| PG-11709 | CAR Assembly works | 2026-01-14 → 2026-01-13 (-1d) |  |  | 120.58d → 120.96d |
| PG-11710 | Lift Machine Room Works |  | 2026-03-14 → 2026-03-13 (-1d) |  | 120.58d → 120.96d |
| PG-11711 | Slow Speed & High Speed Testing works | 2026-03-14 → 2026-03-13 (-1d) |  |  | 120.58d → 120.96d |
| PG-11714 | Pedestal works |  | 2025-08-28 → 2025-08-29 (+1d) |  | 162.75d → 162.33d |
| PG-11716 | Electrical Panel assembly works |  | 2025-11-14 → 2025-11-15 (+1d) |  | 162.75d → 162.33d |
| 1.3.1.2.10 | **Entrance Lobby works** | 2026-03-21 → 2026-03-20 (-1d) |  |  |  |
| PG-11719 | Flooring Works | 2026-03-21 → 2026-03-20 (-1d) |  |  | 15.08d → 15.46d |
| PG-11720 | Glass Door and installation Works |  | 2026-05-30 → 2026-05-29 (-1d) |  | 15.08d → 15.46d |
| PG-11722 | Canopy Works |  | 2026-05-25 → 2026-05-23 (-2d) |  | 34.75d → 35.13d |
| PG-11721 | Painting Works | 2026-05-30 → 2026-05-29 (-1d) | 2026-06-17 → 2026-06-16 (-1d) |  | 15.08d → 15.46d |
| PG-11723 | Interior Works | 2026-06-17 → 2026-06-16 (-1d) |  |  | 15.08d → 15.46d |
| 1.3.1.2.11 | **Lightening Arrester works** | 2026-01-13 → 2026-01-12 (-1d) |  |  |  |
| PG-11724 | Conductor will be lifted with RCC Works, But Terrace works will be done once Parapet Painting done | 2026-01-13 → 2026-01-12 (-1d) |  |  | 220.08d → 220.46d |
| PG-11826 | Formwork |  | 2025-05-31 A | 92% → 100% | 0d → none |
| PG-11827 | Reinforcement |  | 2025-06-03 A | 20% → 100% | 0d → none |
| PG-11828 | Concrete | 2025-06-03 A | 2025-06-04 A | 0% → 100% | 0d → none |
| 1.3.1.3.2.19 | **Floor 16** |  | 2025-06-17 → 2025-06-16 (-1d) |  |  |
| 1.3.1.3.2.19.1 | **Columns / shear walls** |  | 2025-06-11 → 2025-06-10 (-1d) |  |  |
| PG-11829 | Reinforcement | 2025-06-04 A | 2025-06-09 → 2025-06-07 (-2d) | 0% → 56% | 0d → 0.13d |
| PG-11830 | Formwork | 2025-06-06 A | 2025-06-11 → 2025-06-10 (-1d) | 0% → 3% |  |
| 1.3.1.3.2.19.2 | **Slab, Beams & Staircase** | 2025-06-10 → 2025-06-09 (-1d) | 2025-06-17 → 2025-06-16 (-1d) |  |  |
| PG-11831 | Formwork | 2025-06-10 → 2025-06-09 (-1d) | 2025-06-13 → 2025-06-12 (-1d) |  |  |
| PG-11832 | Reinforcement | 2025-06-12 → 2025-06-11 (-1d) | 2025-06-16 → 2025-06-14 (-2d) |  |  |
| PG-11833 | Concrete | 2025-06-16 → 2025-06-14 (-2d) | 2025-06-17 → 2025-06-16 (-1d) |  |  |
| 1.3.1.3.2.20 | **Floor 17** | 2025-06-17 → 2025-06-16 (-1d) | 2025-06-30 → 2025-06-28 (-2d) |  |  |
| 1.3.1.3.2.20.1 | **Columns / shear walls** | 2025-06-17 → 2025-06-16 (-1d) | 2025-06-24 → 2025-06-23 (-1d) |  |  |
| PG-11834 | Reinforcement | 2025-06-17 → 2025-06-16 (-1d) | 2025-06-21 → 2025-06-20 (-1d) |  |  |
| PG-11835 | Formwork | 2025-06-19 → 2025-06-18 (-1d) | 2025-06-24 → 2025-06-23 (-1d) |  |  |
| 1.3.1.3.2.20.2 | **Slab, Beams & Staircase** | 2025-06-23 → 2025-06-21 (-2d) | 2025-06-30 → 2025-06-28 (-2d) |  |  |
| PG-11836 | Formwork | 2025-06-23 → 2025-06-21 (-2d) | 2025-06-26 → 2025-06-25 (-1d) |  |  |
| PG-11837 | Reinforcement | 2025-06-25 → 2025-06-24 (-1d) | 2025-06-28 → 2025-06-27 (-1d) |  |  |
| PG-11838 | Concrete | 2025-06-28 → 2025-06-27 (-1d) | 2025-06-30 → 2025-06-28 (-2d) |  |  |
| 1.3.1.3.2.21 | **Floor 18** | 2025-06-30 → 2025-06-28 (-2d) | 2025-07-12 → 2025-07-11 (-1d) |  |  |
| 1.3.1.3.2.21.1 | **Columns / shear walls** | 2025-06-30 → 2025-06-28 (-2d) | 2025-07-07 → 2025-07-05 (-2d) |  |  |
| PG-11839 | Reinforcement | 2025-06-30 → 2025-06-28 (-2d) | 2025-07-04 → 2025-07-03 (-1d) |  |  |
| PG-11840 | Formwork | 2025-07-02 → 2025-07-01 (-1d) | 2025-07-07 → 2025-07-05 (-2d) |  |  |
| 1.3.1.3.2.21.2 | **Slab, Beams & Staircase** | 2025-07-05 → 2025-07-04 (-1d) | 2025-07-12 → 2025-07-11 (-1d) |  |  |
| PG-11841 | Formwork | 2025-07-05 → 2025-07-04 (-1d) | 2025-07-09 → 2025-07-08 (-1d) |  |  |
| PG-11842 | Reinforcement | 2025-07-08 → 2025-07-07 (-1d) | 2025-07-11 → 2025-07-10 (-1d) |  |  |
| PG-11843 | Concrete | 2025-07-11 → 2025-07-10 (-1d) | 2025-07-12 → 2025-07-11 (-1d) |  |  |
| 1.3.1.3.2.22 | **Floor 19** | 2025-07-12 → 2025-07-11 (-1d) | 2025-07-25 → 2025-07-24 (-1d) |  |  |
| 1.3.1.3.2.22.1 | **Columns / shear walls** | 2025-07-12 → 2025-07-11 (-1d) | 2025-07-19 → 2025-07-18 (-1d) |  |  |
| PG-11844 | Reinforcement | 2025-07-12 → 2025-07-11 (-1d) | 2025-07-17 → 2025-07-16 (-1d) |  |  |
| PG-11845 | Formwork | 2025-07-15 → 2025-07-14 (-1d) | 2025-07-19 → 2025-07-18 (-1d) |  |  |
| 1.3.1.3.2.22.2 | **Slab, Beams & Staircase** | 2025-07-18 → 2025-07-17 (-1d) | 2025-07-25 → 2025-07-24 (-1d) |  |  |
| PG-11846 | Formwork | 2025-07-18 → 2025-07-17 (-1d) | 2025-07-22 → 2025-07-21 (-1d) |  |  |
| PG-11847 | Reinforcement | 2025-07-21 → 2025-07-19 (-2d) | 2025-07-24 → 2025-07-23 (-1d) |  |  |
| PG-11848 | Concrete | 2025-07-24 → 2025-07-23 (-1d) | 2025-07-25 → 2025-07-24 (-1d) |  |  |
| 1.3.1.3.2.23 | **Floor 20** | 2025-07-25 → 2025-07-24 (-1d) | 2025-08-07 → 2025-08-06 (-1d) |  |  |
| 1.3.1.3.2.23.1 | **Columns / shear walls** | 2025-07-25 → 2025-07-24 (-1d) | 2025-08-01 → 2025-07-31 (-1d) |  |  |
| PG-11849 | Reinforcement | 2025-07-25 → 2025-07-24 (-1d) | 2025-07-30 → 2025-07-29 (-1d) |  |  |
| PG-11850 | Formwork | 2025-07-28 → 2025-07-26 (-2d) | 2025-08-01 → 2025-07-31 (-1d) |  |  |
| 1.3.1.3.2.23.2 | **Slab, Beams & Staircase** | 2025-07-31 → 2025-07-30 (-1d) | 2025-08-07 → 2025-08-06 (-1d) |  |  |
| PG-11851 | Formwork | 2025-07-31 → 2025-07-30 (-1d) | 2025-08-04 → 2025-08-02 (-2d) |  |  |
| PG-11852 | Reinforcement | 2025-08-02 → 2025-08-01 (-1d) | 2025-08-06 → 2025-08-05 (-1d) |  |  |
| PG-11853 | Concrete | 2025-08-06 → 2025-08-05 (-1d) | 2025-08-07 → 2025-08-06 (-1d) |  |  |
| 1.3.1.3.2.24 | **Floor 21** | 2025-08-07 → 2025-08-06 (-1d) | 2025-08-21 → 2025-08-20 (-1d) |  |  |
| 1.3.1.3.2.24.1 | **Columns / shear walls** | 2025-08-07 → 2025-08-06 (-1d) | 2025-08-14 → 2025-08-13 (-1d) |  |  |
| PG-11854 | Reinforcement | 2025-08-07 → 2025-08-06 (-1d) | 2025-08-12 → 2025-08-11 (-1d) |  |  |
| PG-11855 | Formwork | 2025-08-09 → 2025-08-08 (-1d) | 2025-08-14 → 2025-08-13 (-1d) |  |  |
| 1.3.1.3.2.24.2 | **Slab, Beams & Staircase** | 2025-08-13 → 2025-08-12 (-1d) | 2025-08-21 → 2025-08-20 (-1d) |  |  |
| PG-11856 | Formwork | 2025-08-13 → 2025-08-12 (-1d) | 2025-08-18 → 2025-08-16 (-2d) |  |  |
| PG-11857 | Reinforcement | 2025-08-16 → 2025-08-14 (-2d) | 2025-08-20 → 2025-08-19 (-1d) |  |  |
| PG-11858 | Concrete | 2025-08-20 → 2025-08-19 (-1d) | 2025-08-21 → 2025-08-20 (-1d) |  |  |
| 1.3.1.3.2.25 | **Floor 22** | 2025-08-21 → 2025-08-20 (-1d) | 2025-09-03 → 2025-09-02 (-1d) |  |  |
| 1.3.1.3.2.25.1 | **Columns / shear walls** | 2025-08-21 → 2025-08-20 (-1d) | 2025-08-28 → 2025-08-27 (-1d) |  |  |
| PG-11859 | Reinforcement | 2025-08-21 → 2025-08-20 (-1d) | 2025-08-26 → 2025-08-25 (-1d) |  |  |
| PG-11860 | Formwork | 2025-08-23 → 2025-08-22 (-1d) | 2025-08-28 → 2025-08-27 (-1d) |  |  |
| 1.3.1.3.2.25.2 | **Slab, Beams & Staircase** | 2025-08-27 → 2025-08-26 (-1d) | 2025-09-03 → 2025-09-02 (-1d) |  |  |
| PG-11861 | Formwork | 2025-08-27 → 2025-08-26 (-1d) | 2025-08-30 → 2025-08-29 (-1d) |  |  |

| ID | Task | Start | Finish | Total float |
| --- | --- | --- | --- | --- |
| PG-11862 | Reinforcement | 2025-08-29 → 2025-08-28 (-1d) | 2025-09-02 → 2025-09-01 (-1d) |  |
| PG-11863 | Concrete | 2025-09-02 → 2025-09-01 (-1d) | 2025-09-03 → 2025-09-02 (-1d) |  |
| 1.3.1.3.2.26 | **Floor 23** | 2025-09-03 → 2025-09-02 (-1d) | 2025-09-16 → 2025-09-15 (-1d) |  |
| 1.3.1.3.2.26.1 | **Columns / shear walls** | 2025-09-03 → 2025-09-02 (-1d) | 2025-09-10 → 2025-09-09 (-1d) |  |
| PG-11864 | Reinforcement | 2025-09-03 → 2025-09-02 (-1d) | 2025-09-08 → 2025-09-06 (-2d) |  |
| PG-11865 | Formwork | 2025-09-05 → 2025-09-04 (-1d) | 2025-09-10 → 2025-09-09 (-1d) |  |
| 1.3.1.3.2.26.2 | **Slab, Beams & Staircase** | 2025-09-09 → 2025-09-08 (-1d) | 2025-09-16 → 2025-09-15 (-1d) |  |
| PG-11866 | Formwork | 2025-09-09 → 2025-09-08 (-1d) | 2025-09-12 → 2025-09-11 (-1d) |  |
| PG-11867 | Reinforcement | 2025-09-11 → 2025-09-10 (-1d) | 2025-09-15 → 2025-09-13 (-2d) |  |
| PG-11868 | Concrete | 2025-09-15 → 2025-09-13 (-2d) | 2025-09-16 → 2025-09-15 (-1d) |  |
| 1.3.1.3.2.27 | **Floor 24** | 2025-09-16 → 2025-09-15 (-1d) | 2025-09-29 → 2025-09-27 (-2d) |  |
| 1.3.1.3.2.27.1 | **Columns / shear walls** | 2025-09-16 → 2025-09-15 (-1d) | 2025-09-23 → 2025-09-22 (-1d) |  |
| PG-11869 | Reinforcement | 2025-09-16 → 2025-09-15 (-1d) | 2025-09-20 → 2025-09-19 (-1d) |  |
| PG-11870 | Formwork | 2025-09-18 → 2025-09-17 (-1d) | 2025-09-23 → 2025-09-22 (-1d) |  |
| 1.3.1.3.2.27.2 | **Slab, Beams & Staircase** | 2025-09-22 → 2025-09-20 (-2d) | 2025-09-29 → 2025-09-27 (-2d) |  |
| PG-11871 | Formwork | 2025-09-22 → 2025-09-20 (-2d) | 2025-09-25 → 2025-09-24 (-1d) |  |
| PG-11872 | Reinforcement | 2025-09-24 → 2025-09-23 (-1d) | 2025-09-27 → 2025-09-26 (-1d) |  |
| PG-11873 | Concrete | 2025-09-27 → 2025-09-26 (-1d) | 2025-09-29 → 2025-09-27 (-2d) |  |
| 1.3.1.3.2.28 | **Floor 25** | 2025-09-29 → 2025-09-27 (-2d) | 2025-10-13 → 2025-10-11 (-2d) |  |
| 1.3.1.3.2.28.1 | **Columns / shear walls** | 2025-09-29 → 2025-09-27 (-2d) | 2025-10-07 → 2025-10-06 (-1d) |  |
| PG-11874 | Reinforcement | 2025-09-29 → 2025-09-27 (-2d) | 2025-10-04 → 2025-10-03 (-1d) |  |
| PG-11875 | Formwork | 2025-10-01 → 2025-09-30 (-1d) | 2025-10-07 → 2025-10-06 (-1d) |  |
| 1.3.1.3.2.28.2 | **Slab, Beams & Staircase** | 2025-10-06 → 2025-10-04 (-2d) | 2025-10-13 → 2025-10-11 (-2d) |  |
| PG-11876 | Formwork | 2025-10-06 → 2025-10-04 (-2d) | 2025-10-09 → 2025-10-08 (-1d) |  |
| PG-11877 | Reinforcement | 2025-10-08 → 2025-10-07 (-1d) | 2025-10-11 → 2025-10-10 (-1d) |  |
| PG-11878 | Concrete | 2025-10-11 → 2025-10-10 (-1d) | 2025-10-13 → 2025-10-11 (-2d) |  |
| 1.3.1.3.2.29 | **Floor 26** | 2025-10-13 → 2025-10-11 (-2d) | 2025-10-25 → 2025-10-24 (-1d) |  |
| 1.3.1.3.2.29.1 | **Columns / shear walls** | 2025-10-13 → 2025-10-11 (-2d) | 2025-10-20 → 2025-10-18 (-2d) |  |
| PG-11879 | Reinforcement | 2025-10-13 → 2025-10-11 (-2d) | 2025-10-17 → 2025-10-16 (-1d) |  |
| PG-11880 | Formwork | 2025-10-15 → 2025-10-14 (-1d) | 2025-10-20 → 2025-10-18 (-2d) |  |
| 1.3.1.3.2.29.2 | **Slab, Beams & Staircase** | 2025-10-18 → 2025-10-17 (-1d) | 2025-10-25 → 2025-10-24 (-1d) |  |
| PG-11881 | Formwork | 2025-10-18 → 2025-10-17 (-1d) | 2025-10-22 → 2025-10-21 (-1d) |  |
| PG-11882 | Reinforcement | 2025-10-21 → 2025-10-20 (-1d) | 2025-10-24 → 2025-10-23 (-1d) |  |
| PG-11883 | Concrete | 2025-10-24 → 2025-10-23 (-1d) | 2025-10-25 → 2025-10-24 (-1d) |  |
| 1.3.1.3.2.30 | **Floor 27** | 2025-10-25 → 2025-10-24 (-1d) | 2025-11-08 → 2025-11-07 (-1d) |  |
| 1.3.1.3.2.30.1 | **Columns / shear walls** | 2025-10-25 → 2025-10-24 (-1d) | 2025-11-03 → 2025-10-31 (-3d) |  |
| PG-11884 | Reinforcement | 2025-10-25 → 2025-10-24 (-1d) | 2025-10-30 → 2025-10-29 (-1d) |  |
| PG-11885 | Formwork | 2025-10-28 → 2025-10-27 (-1d) | 2025-11-03 → 2025-10-31 (-3d) |  |
| 1.3.1.3.2.30.2 | **Slab, Beams & Staircase** | 2025-10-31 → 2025-10-30 (-1d) | 2025-11-08 → 2025-11-07 (-1d) |  |
| PG-11886 | Formwork | 2025-10-31 → 2025-10-30 (-1d) | 2025-11-05 → 2025-11-04 (-1d) |  |
| PG-11887 | Reinforcement | 2025-11-04 → 2025-11-03 (-1d) | 2025-11-07 → 2025-11-06 (-1d) |  |
| PG-11888 | Concrete | 2025-11-07 → 2025-11-06 (-1d) | 2025-11-08 → 2025-11-07 (-1d) |  |
| 1.3.1.3.2.31 | **Floor 28** | 2025-11-08 → 2025-11-07 (-1d) | 2025-11-21 → 2025-11-20 (-1d) |  |
| 1.3.1.3.2.31.1 | **Columns / shear walls** | 2025-11-08 → 2025-11-07 (-1d) | 2025-11-15 → 2025-11-14 (-1d) |  |
| PG-11889 | Reinforcement | 2025-11-08 → 2025-11-07 (-1d) | 2025-11-13 → 2025-11-12 (-1d) |  |
| PG-11890 | Formwork | 2025-11-11 → 2025-11-10 (-1d) | 2025-11-15 → 2025-11-14 (-1d) |  |
| 1.3.1.3.2.31.2 | **Slab, Beams & Staircase** | 2025-11-14 → 2025-11-13 (-1d) | 2025-11-21 → 2025-11-20 (-1d) |  |
| PG-11891 | Formwork | 2025-11-14 → 2025-11-13 (-1d) | 2025-11-18 → 2025-11-17 (-1d) |  |
| PG-11892 | Reinforcement | 2025-11-17 → 2025-11-15 (-2d) | 2025-11-20 → 2025-11-19 (-1d) |  |
| PG-11893 | Concrete | 2025-11-20 → 2025-11-19 (-1d) | 2025-11-21 → 2025-11-20 (-1d) |  |
| 1.3.1.3.2.32 | **Floor 29** | 2025-11-21 → 2025-11-20 (-1d) | 2025-12-04 → 2025-12-03 (-1d) |  |
| 1.3.1.3.2.32.1 | **Columns / shear walls** | 2025-11-21 → 2025-11-20 (-1d) | 2025-11-28 → 2025-11-27 (-1d) |  |
| PG-11894 | Reinforcement | 2025-11-21 → 2025-11-20 (-1d) | 2025-11-26 → 2025-11-25 (-1d) |  |
| PG-11895 | Formwork | 2025-11-24 → 2025-11-22 (-2d) | 2025-11-28 → 2025-11-27 (-1d) |  |
| 1.3.1.3.2.32.2 | **Slab, Beams & Staircase** | 2025-11-27 → 2025-11-26 (-1d) | 2025-12-04 → 2025-12-03 (-1d) |  |
| PG-11896 | Formwork | 2025-11-27 → 2025-11-26 (-1d) | 2025-12-01 → 2025-11-29 (-2d) |  |
| PG-11897 | Reinforcement | 2025-11-29 → 2025-11-28 (-1d) | 2025-12-03 → 2025-12-02 (-1d) |  |
| PG-11898 | Concrete | 2025-12-03 → 2025-12-02 (-1d) | 2025-12-04 → 2025-12-03 (-1d) |  |
| 1.3.1.3.2.33 | **Above Terrace Floor** | 2025-12-04 → 2025-12-03 (-1d) |  |  |
| 1.3.1.3.2.33.1 | **Columns / shear walls/Parapet Walls** | 2025-12-04 → 2025-12-03 (-1d) |  |  |
| PG-11899 | Reinforcement | 2025-12-04 → 2025-12-03 (-1d) | 2025-12-09 → 2025-12-08 (-1d) |  |
| PG-11900 | Formwork | 2025-12-06 → 2025-12-05 (-1d) | 2025-12-12 → 2025-12-11 (-1d) |  |
| PG-11901 | Concrete | 2025-12-12 → 2025-12-11 (-1d) |  |  |
| 1.3.1.3.2.33.2 | **Slab, Beams & Staircase Head rooms, Lift headroom** | 2025-12-09 → 2025-12-08 (-1d) |  |  |
| PG-11905 | Terrace Waterproofing and Protective finishing. | 2025-12-09 → 2025-12-08 (-1d) |  |  |
| 1.3.1.3.3 | **MEP Internal works** |  | 2026-06-12 → 2026-06-11 (-1d) |  |
| 1.3.1.3.3.8 | **Floor 5** |  | 2025-08-12 → 2025-08-11 (-1d) |  |
| 1.3.1.3.3.8.1 | **PHE Works** |  | 2025-08-12 → 2025-08-11 (-1d) |  |
| PG-11960 | Final Fix - CP & Sanitary fixtures | 2025-07-30 → 2025-07-29 (-1d) | 2025-08-12 → 2025-08-11 (-1d) | 321.08d → 321.79d |
| 1.3.1.3.3.8.2 | **Fire Fighting Works** |  | 2025-08-12 → 2025-08-11 (-1d) |  |

| ID | Task | Start | Finish | Complete | Total float |
| --- | --- | --- | --- | --- | --- |
| PG-11962 | 2nd Fix - Sprinkler fixing & Pressure testing | 2025-07-09 → 2025-07-08 (-1d) | 2025-07-21 → 2025-07-19 (-2d) |  | 329.08d → 329.79d |
| PG-11963 | Final Fix - Smoke & heat detectors, FHC , FAS Etc. | 2025-07-30 → 2025-07-29 (-1d) | 2025-08-12 → 2025-08-11 (-1d) |  | 321.08d → 321.79d |
| 1.3.1.3.3.8.3 | **Electrical Works** |  | 2025-08-12 → 2025-08-11 (-1d) |  |  |
| PG-11965 | 2nd Fix - Wiring works | 2025-07-04 → 2025-07-03 (-1d) | 2025-07-19 → 2025-07-18 (-1d) |  | 334.08d → 334.79d |
| PG-11966 | Final Fix - Electrical Fixtures | 2025-08-04 → 2025-08-02 (-2d) | 2025-08-12 → 2025-08-11 (-1d) |  | 321.08d → 321.79d |
| 1.3.1.3.3.10 | **Floor 7** |  | 2025-07-07 → 2025-07-08 (+1d) |  |  |
| 1.3.1.3.3.10.1 | **PHE Works** |  | 2025-07-07 → 2025-07-08 (+1d) |  |  |
| PG-11978 | Final Fix - CP & Sanitary fixtures | 2025-06-26 → 2025-06-28 (+2d) | 2025-07-07 → 2025-07-08 (+1d) |  | 353.17d → 351.08d |
| 1.3.1.3.3.10.2 | **Fire Fighting Works** |  | 2025-07-07 → 2025-07-08 (+1d) |  |  |
| PG-11980 | 2nd Fix - Sprinkler fixing & Pressure testing | 2025-06-03 → 2025-06-05 A (+2d) | 2025-06-14 → 2025-06-17 (+3d) | 0% → 10% | 363.17d → 361.36d |
| PG-11981 | Final Fix - Smoke & heat detectors, FHC , FAS Etc. | 2025-06-26 → 2025-06-28 (+2d) | 2025-07-07 → 2025-07-08 (+1d) |  | 353.17d → 351.08d |
| 1.3.1.3.3.10.3 | **Electrical Works** |  | 2025-07-07 → 2025-07-08 (+1d) |  |  |
| PG-11983 | 2nd Fix - Wiring works |  |  | 6% → 47% | 366.02d → 365.65d |
| PG-11984 | Final Fix - Electrical Fixtures | 2025-06-30 → 2025-07-02 (+2d) | 2025-07-07 → 2025-07-08 (+1d) |  | 353.17d → 351.08d |
| 1.3.1.3.3.11 | **Floor 8** |  | 2025-07-23 → 2025-07-24 (+1d) |  |  |
| 1.3.1.3.3.11.1 | **PHE Works** |  | 2025-07-23 → 2025-07-24 (+1d) |  |  |
| PG-11987 | Final Fix - CP & Sanitary fixtures | 2025-07-11 → 2025-07-14 (+3d) | 2025-07-23 → 2025-07-24 (+1d) |  | 337.9d → 336.38d |
| 1.3.1.3.3.11.2 | **Fire Fighting Works** |  | 2025-07-23 → 2025-07-24 (+1d) |  |  |
| PG-11989 | 2nd Fix - Sprinkler fixing & Pressure testing | 2025-06-18 → 2025-06-20 (+2d) | 2025-06-30 → 2025-07-01 (+1d) |  | 347.9d → 346.38d |
| PG-11990 | Final Fix - Smoke & heat detectors, FHC , FAS Etc. | 2025-07-11 → 2025-07-14 (+3d) | 2025-07-23 → 2025-07-24 (+1d) |  | 337.9d → 336.38d |
| 1.3.1.3.3.11.3 | **Electrical Works** |  | 2025-07-23 → 2025-07-24 (+1d) |  |  |
| PG-11992 | 2nd Fix - Wiring works | 2025-06-13 → 2025-06-14 (+1d) | 2025-06-28 → 2025-06-30 (+2d) |  | 352.9d → 351.38d |
| PG-11993 | Final Fix - Electrical Fixtures | 2025-07-16 → 2025-07-18 (+2d) | 2025-07-23 → 2025-07-24 (+1d) |  | 337.9d → 336.38d |
| PG-11994 | 1st Fix - Piping works |  | 2025-06-02 → 2025-06-03 A (+1d) | 77% → 100% | 325.78d → none |
| PG-11995 | 2nd Fix - diverter fixing & Pressure testing |  |  | 3% → 62% | 324.88d → 324.38d |
| PG-11996 | Final Fix - CP & Sanitary fixtures | 2025-07-26 → 2025-07-28 (+2d) |  |  | 324.88d → 324.38d |
| PG-11997 | 1st Fix - Piping and Shaft hydrant works |  | 2025-06-12 → 2025-06-14 (+2d) | 3% → 39% | 370.75d → 368.8d |
| PG-11999 | Final Fix - Smoke & heat detectors, FHC , FAS Etc. | 2025-07-26 → 2025-07-28 (+2d) |  |  | 324.88d → 324.38d |
| 1.3.1.3.3.13 | **Floor 10** |  | 2025-08-23 → 2025-08-25 (+2d) |  |  |
| 1.3.1.3.3.13.1 | **PHE Works** |  | 2025-08-23 → 2025-08-25 (+2d) |  |  |
| PG-12003 | 1st Fix - Piping works | 2025-06-04 A |  | 0% → 8% | 311.17d → 310.05d |
| PG-12004 | 2nd Fix - diverter fixing & Pressure testing | 2025-06-13 → 2025-06-14 (+1d) |  |  | 311.17d → 310.05d |
| PG-12005 | Final Fix - CP & Sanitary fixtures | 2025-08-12 → 2025-08-13 (+1d) | 2025-08-23 → 2025-08-25 (+2d) |  | 311.17d → 310.05d |
| 1.3.1.3.3.13.2 | **Fire Fighting Works** |  | 2025-08-23 → 2025-08-25 (+2d) |  |  |
| PG-12007 | 2nd Fix - Sprinkler fixing & Pressure testing | 2025-07-21 → 2025-07-22 (+1d) |  |  | 320.17d → 319.05d |
| PG-12008 | Final Fix - Smoke & heat detectors, FHC , FAS Etc. | 2025-08-12 → 2025-08-13 (+1d) | 2025-08-23 → 2025-08-25 (+2d) |  | 311.17d → 310.05d |
| 1.3.1.3.3.13.3 | **Electrical Works** |  | 2025-08-23 → 2025-08-25 (+2d) |  |  |
| PG-12009 | 1st Fix - GI wire pulling | 2025-06-04 A |  | 0% → 34% | 358.17d → 358.66d |
| PG-12010 | 2nd Fix - Wiring works | 2025-07-16 → 2025-07-17 (+1d) |  |  | 325.17d → 324.05d |
| PG-12011 | Final Fix - Electrical Fixtures | 2025-08-18 → 2025-08-19 (+1d) | 2025-08-23 → 2025-08-25 (+2d) |  | 311.17d → 310.05d |
| 1.3.1.3.3.14 | **Floor 11** | 2025-06-17 → 2025-06-16 (-1d) |  |  |  |
| 1.3.1.3.3.14.1 | **PHE Works** | 2025-06-17 → 2025-06-16 (-1d) |  |  |  |
| PG-12012 | 1st Fix - Piping works | 2025-06-17 → 2025-06-16 (-1d) | 2025-07-01 → 2025-06-30 (-1d) |  |  |
| PG-12013 | 2nd Fix - diverter fixing & Pressure testing | 2025-06-26 → 2025-06-25 (-1d) | 2025-07-08 → 2025-07-07 (-1d) |  |  |
| PG-12014 | Final Fix - CP & Sanitary fixtures | 2025-08-26 → 2025-08-25 (-1d) |  |  |  |
| 1.3.1.3.3.14.2 | **Fire Fighting Works** | 2025-06-26 → 2025-06-25 (-1d) |  |  |  |
| PG-12015 | 1st Fix - Piping and Shaft hydrant works | 2025-06-26 → 2025-06-25 (-1d) | 2025-07-10 → 2025-07-09 (-1d) |  |  |
| PG-12016 | 2nd Fix - Sprinkler fixing & Pressure testing | 2025-08-02 → 2025-08-01 (-1d) | 2025-08-14 → 2025-08-13 (-1d) |  |  |
| PG-12017 | Final Fix - Smoke & heat detectors, FHC , FAS Etc. | 2025-08-26 → 2025-08-25 (-1d) |  |  |  |
| 1.3.1.3.3.14.3 | **Electrical Works** | 2025-06-17 → 2025-06-16 (-1d) |  |  |  |
| PG-12018 | 1st Fix - GI wire pulling | 2025-06-17 → 2025-06-16 (-1d) | 2025-06-26 → 2025-06-25 (-1d) |  |  |
| PG-12019 | 2nd Fix - Wiring works |  | 2025-08-13 → 2025-08-12 (-1d) |  |  |
| PG-12020 | Final Fix - Electrical Fixtures | 2025-08-30 → 2025-08-29 (-1d) |  |  |  |
| 1.3.1.3.3.15 | **Floor 12** | 2025-06-30 → 2025-06-28 (-2d) |  |  |  |
| 1.3.1.3.3.15.1 | **PHE Works** | 2025-06-30 → 2025-06-28 (-2d) |  |  |  |
| PG-12021 | 1st Fix - Piping works | 2025-06-30 → 2025-06-28 (-2d) | 2025-07-14 → 2025-07-12 (-2d) |  |  |
| PG-12022 | 2nd Fix - diverter fixing & Pressure testing | 2025-07-09 → 2025-07-08 (-1d) | 2025-07-21 → 2025-07-19 (-2d) |  |  |
| PG-12023 | Final Fix - CP & Sanitary fixtures | 2025-09-09 → 2025-09-08 (-1d) |  |  |  |
| PG-12025 | 2nd Fix - Sprinkler fixing & Pressure testing | 2025-08-16 → 2025-08-14 (-2d) | 2025-08-28 → 2025-08-27 (-1d) |  |  |
| PG-12026 | Final Fix - Smoke & heat detectors, FHC , FAS Etc. | 2025-09-09 → 2025-09-08 (-1d) |  |  |  |
| 1.3.1.3.3.15.3 | **Electrical Works** | 2025-06-30 → 2025-06-28 (-2d) |  |  |  |
| PG-12027 | 1st Fix - GI wire pulling | 2025-06-30 → 2025-06-28 (-2d) |  |  |  |
| PG-12028 | 2nd Fix - Wiring works |  | 2025-08-27 → 2025-08-26 (-1d) |  |  |
| PG-12029 | Final Fix - Electrical Fixtures | 2025-09-16 → 2025-09-15 (-1d) |  |  |  |
| 1.3.1.3.3.16 | **Floor 13** | 2025-07-12 → 2025-07-11 (-1d) |  |  |  |
| 1.3.1.3.3.16.1 | **PHE Works** | 2025-07-12 → 2025-07-11 (-1d) |  |  |  |
| PG-12030 | 1st Fix - Piping works | 2025-07-12 → 2025-07-11 (-1d) | 2025-07-26 → 2025-07-25 (-1d) |  |  |
| PG-12031 | 2nd Fix - diverter fixing & Pressure testing | 2025-07-22 → 2025-07-21 (-1d) | 2025-08-02 → 2025-08-01 (-1d) |  |  |
| PG-12032 | Final Fix - CP & Sanitary fixtures | 2025-09-23 → 2025-09-22 (-1d) |  |  |  |
| PG-12034 | 2nd Fix - Sprinkler fixing & Pressure testing | 2025-08-29 → 2025-08-28 (-1d) | 2025-09-10 → 2025-09-09 (-1d) |  |  |

| ID | Task | Start | Finish | Total float |
| --- | --- | --- | --- | --- |
| PG-12035 | Final Fix - Smoke & heat detectors, FHC , FAS Etc. | 2025-09-23 → 2025-09-22 (-1d) |  |  |
| 1.3.1.3.3.16.3 | **Electrical Works** | 2025-07-12 → 2025-07-11 (-1d) |  |  |
| PG-12036 | 1st Fix - GI wire pulling | 2025-07-12 → 2025-07-11 (-1d) |  |  |
| PG-12037 | 2nd Fix - Wiring works |  | 2025-09-09 → 2025-09-08 (-1d) |  |
| PG-12038 | Final Fix - Electrical Fixtures | 2025-09-29 → 2025-09-27 (-2d) |  |  |
| 1.3.1.3.3.17 | **Floor 14** | 2025-07-25 → 2025-07-24 (-1d) |  |  |
| 1.3.1.3.3.17.1 | **PHE Works** | 2025-07-25 → 2025-07-24 (-1d) |  |  |
| PG-12039 | 1st Fix - Piping works | 2025-07-25 → 2025-07-24 (-1d) | 2025-08-08 → 2025-08-07 (-1d) |  |
| PG-12040 | 2nd Fix - diverter fixing & Pressure testing | 2025-08-04 → 2025-08-02 (-2d) | 2025-08-16 → 2025-08-14 (-2d) |  |
| PG-12041 | Final Fix - CP & Sanitary fixtures | 2025-10-06 → 2025-10-04 (-2d) |  |  |
| PG-12043 | 2nd Fix - Sprinkler fixing & Pressure testing | 2025-09-11 → 2025-09-10 (-1d) | 2025-09-23 → 2025-09-22 (-1d) |  |
| PG-12044 | Final Fix - Smoke & heat detectors, FHC , FAS Etc. | 2025-10-06 → 2025-10-04 (-2d) |  |  |
| 1.3.1.3.3.17.3 | **Electrical Works** | 2025-07-25 → 2025-07-24 (-1d) |  |  |
| PG-12045 | 1st Fix - GI wire pulling | 2025-07-25 → 2025-07-24 (-1d) |  |  |
| PG-12046 | 2nd Fix - Wiring works |  | 2025-09-22 → 2025-09-20 (-2d) |  |
| PG-12047 | Final Fix - Electrical Fixtures | 2025-10-10 → 2025-10-09 (-1d) |  |  |
| 1.3.1.3.3.18 | **Floor 15** | 2025-08-07 → 2025-08-06 (-1d) | 2026-01-14 → 2026-01-13 (-1d) |  |
| 1.3.1.3.3.18.1 | **PHE Works** | 2025-08-07 → 2025-08-06 (-1d) | 2026-01-14 → 2026-01-13 (-1d) |  |
| PG-12048 | 1st Fix - Piping works | 2025-08-07 → 2025-08-06 (-1d) | 2025-08-22 → 2025-08-21 (-1d) |  |
| PG-12049 | 2nd Fix - diverter fixing & Pressure testing | 2025-08-18 → 2025-08-16 (-2d) | 2025-08-29 → 2025-08-28 (-1d) |  |
| PG-12050 | Final Fix - CP & Sanitary fixtures | 2026-01-02 → 2026-01-01 (-1d) | 2026-01-14 → 2026-01-13 (-1d) | 190.08d → 190.79d |
| 1.3.1.3.3.18.2 | **Fire Fighting Works** |  | 2026-01-14 → 2026-01-13 (-1d) |  |
| PG-12052 | 2nd Fix - Sprinkler fixing & Pressure testing | 2025-12-11 → 2025-12-10 (-1d) | 2025-12-23 → 2025-12-22 (-1d) | 199.08d → 199.79d |
| PG-12053 | Final Fix - Smoke & heat detectors, FHC , FAS Etc. | 2026-01-02 → 2026-01-01 (-1d) | 2026-01-14 → 2026-01-13 (-1d) | 190.08d → 190.79d |
| 1.3.1.3.3.18.3 | **Electrical Works** | 2025-08-07 → 2025-08-06 (-1d) | 2026-01-14 → 2026-01-13 (-1d) |  |
| PG-12054 | 1st Fix - GI wire pulling | 2025-08-07 → 2025-08-06 (-1d) |  |  |
| PG-12055 | 2nd Fix - Wiring works | 2025-12-05 → 2025-12-04 (-1d) | 2025-12-22 → 2025-12-20 (-2d) | 205.08d → 205.79d |
| PG-12056 | Final Fix - Electrical Fixtures | 2026-01-08 → 2026-01-07 (-1d) | 2026-01-14 → 2026-01-13 (-1d) | 190.08d → 190.79d |
| 1.3.1.3.3.19 | **Floor 16** | 2025-08-21 → 2025-08-20 (-1d) |  |  |
| 1.3.1.3.3.19.1 | **PHE Works** | 2025-08-21 → 2025-08-20 (-1d) |  |  |
| PG-12057 | 1st Fix - Piping works | 2025-08-21 → 2025-08-20 (-1d) | 2025-09-04 → 2025-09-03 (-1d) |  |
| PG-12058 | 2nd Fix - diverter fixing & Pressure testing | 2025-08-30 → 2025-08-29 (-1d) | 2025-09-11 → 2025-09-10 (-1d) |  |
| PG-12059 | Final Fix - CP & Sanitary fixtures | 2025-10-30 → 2025-10-29 (-1d) |  |  |
| PG-12061 | 2nd Fix - Sprinkler fixing & Pressure testing | 2025-10-08 → 2025-10-07 (-1d) | 2025-10-20 → 2025-10-18 (-2d) |  |
| PG-12062 | Final Fix - Smoke & heat detectors, FHC , FAS Etc. | 2025-10-30 → 2025-10-29 (-1d) |  |  |
| 1.3.1.3.3.19.3 | **Electrical Works** | 2025-08-21 → 2025-08-20 (-1d) |  |  |
| PG-12063 | 1st Fix - GI wire pulling | 2025-08-21 → 2025-08-20 (-1d) |  |  |
| PG-12064 | 2nd Fix - Wiring works |  | 2025-10-18 → 2025-10-17 (-1d) |  |
| PG-12065 | Final Fix - Electrical Fixtures | 2025-11-06 → 2025-11-05 (-1d) |  |  |
| 1.3.1.3.3.20 | **Floor 17** | 2025-09-03 → 2025-09-02 (-1d) |  |  |
| 1.3.1.3.3.20.1 | **PHE Works** | 2025-09-03 → 2025-09-02 (-1d) |  |  |
| PG-12066 | 1st Fix - Piping works | 2025-09-03 → 2025-09-02 (-1d) | 2025-09-17 → 2025-09-16 (-1d) |  |
| PG-12067 | 2nd Fix - diverter fixing & Pressure testing | 2025-09-12 → 2025-09-11 (-1d) | 2025-09-24 → 2025-09-23 (-1d) |  |
| PG-12068 | Final Fix - CP & Sanitary fixtures | 2025-11-12 → 2025-11-11 (-1d) |  |  |
| PG-12070 | 2nd Fix - Sprinkler fixing & Pressure testing | 2025-10-21 → 2025-10-20 (-1d) | 2025-11-03 → 2025-10-31 (-3d) |  |
| PG-12071 | Final Fix - Smoke & heat detectors, FHC , FAS Etc. | 2025-11-12 → 2025-11-11 (-1d) |  |  |
| 1.3.1.3.3.20.3 | **Electrical Works** | 2025-09-03 → 2025-09-02 (-1d) |  |  |
| PG-12072 | 1st Fix - GI wire pulling | 2025-09-03 → 2025-09-02 (-1d) |  |  |
| PG-12073 | 2nd Fix - Wiring works |  | 2025-10-31 → 2025-10-30 (-1d) |  |
| PG-12074 | Final Fix - Electrical Fixtures | 2025-11-18 → 2025-11-17 (-1d) |  |  |
| 1.3.1.3.3.21 | **Floor 18** | 2025-09-16 → 2025-09-15 (-1d) |  |  |
| 1.3.1.3.3.21.1 | **PHE Works** | 2025-09-16 → 2025-09-15 (-1d) |  |  |
| PG-12075 | 1st Fix - Piping works | 2025-09-16 → 2025-09-15 (-1d) | 2025-09-30 → 2025-09-29 (-1d) |  |
| PG-12076 | 2nd Fix - diverter fixing & Pressure testing | 2025-09-25 → 2025-09-24 (-1d) | 2025-10-08 → 2025-10-07 (-1d) |  |
| PG-12077 | Final Fix - CP & Sanitary fixtures | 2025-11-25 → 2025-11-24 (-1d) |  |  |
| PG-12079 | 2nd Fix - Sprinkler fixing & Pressure testing | 2025-11-04 → 2025-11-03 (-1d) | 2025-11-15 → 2025-11-14 (-1d) |  |
| PG-12080 | Final Fix - Smoke & heat detectors, FHC , FAS Etc. | 2025-11-25 → 2025-11-24 (-1d) |  |  |
| 1.3.1.3.3.21.3 | **Electrical Works** | 2025-09-16 → 2025-09-15 (-1d) |  |  |
| PG-12081 | 1st Fix - GI wire pulling | 2025-09-16 → 2025-09-15 (-1d) |  |  |
| PG-12082 | 2nd Fix - Wiring works |  | 2025-11-14 → 2025-11-13 (-1d) |  |
| PG-12083 | Final Fix - Electrical Fixtures | 2025-12-01 → 2025-11-29 (-2d) |  |  |
| 1.3.1.3.3.22 | **Floor 19** | 2025-09-29 → 2025-09-27 (-2d) |  |  |
| 1.3.1.3.3.22.1 | **PHE Works** | 2025-09-29 → 2025-09-27 (-2d) |  |  |
| PG-12084 | 1st Fix - Piping works | 2025-09-29 → 2025-09-27 (-2d) | 2025-10-14 → 2025-10-13 (-1d) |  |
| PG-12085 | 2nd Fix - diverter fixing & Pressure testing | 2025-10-09 → 2025-10-08 (-1d) | 2025-10-21 → 2025-10-20 (-1d) |  |
| PG-12086 | Final Fix - CP & Sanitary fixtures | 2025-12-08 → 2025-12-06 (-2d) |  |  |
| PG-12088 | 2nd Fix - Sprinkler fixing & Pressure testing | 2025-11-17 → 2025-11-15 (-2d) | 2025-11-28 → 2025-11-27 (-1d) |  |
| PG-12089 | Final Fix - Smoke & heat detectors, FHC , FAS Etc. | 2025-12-08 → 2025-12-06 (-2d) |  |  |
| 1.3.1.3.3.22.3 | **Electrical Works** | 2025-09-29 → 2025-09-27 (-2d) |  |  |
| PG-12090 | 1st Fix - GI wire pulling | 2025-09-29 → 2025-09-27 (-2d) |  |  |

| ID | Task | Start | Finish |
| --- | --- | --- | --- |
| PG-12091 | 2nd Fix - Wiring works |  | 2025-11-27 → 2025-11-26 (-1d) |
| PG-12092 | Final Fix - Electrical Fixtures | 2025-12-13 → 2025-12-12 (-1d) |  |
| 1.3.1.3.3.23 | **Floor 20** | 2025-10-13 → 2025-10-11 (-2d) |  |
| 1.3.1.3.3.23.1 | **PHE Works** | 2025-10-13 → 2025-10-11 (-2d) |  |
| PG-12093 | 1st Fix - Piping works | 2025-10-13 → 2025-10-11 (-2d) | 2025-10-27 → 2025-10-25 (-2d) |
| PG-12094 | 2nd Fix - diverter fixing & Pressure testing | 2025-10-22 → 2025-10-21 (-1d) | 2025-11-04 → 2025-11-03 (-1d) |
| PG-12095 | Final Fix - CP & Sanitary fixtures | 2025-12-23 → 2025-12-22 (-1d) |  |
| 1.3.1.3.3.23.2 | **Fire Fighting Works** | 2025-10-22 → 2025-10-21 (-1d) |  |
| PG-12096 | 1st Fix - Piping and Shaft hydrant works | 2025-10-22 → 2025-10-21 (-1d) | 2025-11-06 → 2025-11-05 (-1d) |
| PG-12097 | 2nd Fix - Sprinkler fixing & Pressure testing | 2025-11-29 → 2025-11-28 (-1d) | 2025-12-11 → 2025-12-10 (-1d) |
| PG-12098 | Final Fix - Smoke & heat detectors, FHC , FAS Etc. | 2025-12-23 → 2025-12-22 (-1d) |  |
| 1.3.1.3.3.23.3 | **Electrical Works** | 2025-10-13 → 2025-10-11 (-2d) |  |
| PG-12099 | 1st Fix - GI wire pulling | 2025-10-13 → 2025-10-11 (-2d) | 2025-10-22 → 2025-10-21 (-1d) |
| PG-12100 | 2nd Fix - Wiring works |  | 2025-12-10 → 2025-12-09 (-1d) |
| PG-12101 | Final Fix - Electrical Fixtures | 2025-12-27 → 2025-12-26 (-1d) |  |
| 1.3.1.3.3.24 | **Floor 21** | 2025-10-25 → 2025-10-24 (-1d) |  |
| 1.3.1.3.3.24.1 | **PHE Works** | 2025-10-25 → 2025-10-24 (-1d) |  |
| PG-12102 | 1st Fix - Piping works | 2025-10-25 → 2025-10-24 (-1d) |  |
| PG-12103 | 2nd Fix - diverter fixing & Pressure testing | 2025-11-06 → 2025-11-05 (-1d) |  |
| 1.3.1.3.3.24.2 | **Fire Fighting Works** | 2025-11-05 → 2025-11-04 (-1d) |  |
| PG-12105 | 1st Fix - Piping and Shaft hydrant works | 2025-11-05 → 2025-11-04 (-1d) | 2025-11-19 → 2025-11-18 (-1d) |
| 1.3.1.3.3.24.3 | **Electrical Works** | 2025-10-25 → 2025-10-24 (-1d) |  |
| PG-12108 | 1st Fix - GI wire pulling | 2025-10-25 → 2025-10-24 (-1d) | 2025-11-05 → 2025-11-04 (-1d) |
| PG-12109 | 2nd Fix - Wiring works |  | 2025-12-10 → 2025-12-09 (-1d) |
| PG-12110 | Final Fix - Electrical Fixtures | 2025-12-27 → 2025-12-26 (-1d) |  |
| 1.3.1.3.3.25 | **Floor 22** | 2025-11-08 → 2025-11-07 (-1d) |  |
| 1.3.1.3.3.25.1 | **PHE Works** | 2025-11-08 → 2025-11-07 (-1d) |  |
| PG-12111 | 1st Fix - Piping works | 2025-11-08 → 2025-11-07 (-1d) |  |
| PG-12112 | 2nd Fix - diverter fixing & Pressure testing | 2025-11-19 → 2025-11-18 (-1d) |  |
| 1.3.1.3.3.25.2 | **Fire Fighting Works** | 2025-11-18 → 2025-11-17 (-1d) |  |
| PG-12114 | 1st Fix - Piping and Shaft hydrant works | 2025-11-18 → 2025-11-17 (-1d) | 2025-12-02 → 2025-12-01 (-1d) |
| 1.3.1.3.3.25.3 | **Electrical Works** | 2025-11-08 → 2025-11-07 (-1d) |  |
| PG-12117 | 1st Fix - GI wire pulling | 2025-11-08 → 2025-11-07 (-1d) | 2025-11-18 → 2025-11-17 (-1d) |
| 1.3.1.3.3.26 | **Floor 23** | 2025-11-21 → 2025-11-20 (-1d) | 2026-02-11 → 2026-02-10 (-1d) |
| 1.3.1.3.3.26.1 | **PHE Works** | 2025-11-21 → 2025-11-20 (-1d) | 2026-02-11 → 2026-02-10 (-1d) |
| PG-12120 | 1st Fix - Piping works | 2025-11-21 → 2025-11-20 (-1d) |  |
| PG-12121 | 2nd Fix - diverter fixing & Pressure testing | 2025-11-29 → 2025-11-28 (-1d) |  |
| PG-12122 | Final Fix - CP & Sanitary fixtures |  | 2026-02-11 → 2026-02-10 (-1d) |
| 1.3.1.3.3.26.2 | **Fire Fighting Works** | 2025-11-29 → 2025-11-28 (-1d) | 2026-02-11 → 2026-02-10 (-1d) |
| PG-12123 | 1st Fix - Piping and Shaft hydrant works | 2025-11-29 → 2025-11-28 (-1d) |  |
| PG-12124 | 2nd Fix - Sprinkler fixing & Pressure testing | 2026-01-05 → 2026-01-03 (-2d) |  |
| PG-12125 | Final Fix - Smoke & heat detectors, FHC , FAS Etc. |  | 2026-02-11 → 2026-02-10 (-1d) |
| 1.3.1.3.3.26.3 | **Electrical Works** | 2025-11-21 → 2025-11-20 (-1d) | 2026-02-11 → 2026-02-10 (-1d) |
| PG-12126 | 1st Fix - GI wire pulling | 2025-11-21 → 2025-11-20 (-1d) |  |
| PG-12127 | 2nd Fix - Wiring works | 2025-12-30 → 2025-12-29 (-1d) |  |
| PG-12128 | Final Fix - Electrical Fixtures |  | 2026-02-11 → 2026-02-10 (-1d) |
| 1.3.1.3.3.27 | **Floor 24** | 2025-12-04 → 2025-12-03 (-1d) |  |
| 1.3.1.3.3.27.1 | **PHE Works** | 2025-12-04 → 2025-12-03 (-1d) |  |
| PG-12129 | 1st Fix - Piping works | 2025-12-04 → 2025-12-03 (-1d) |  |
| PG-12130 | 2nd Fix - diverter fixing & Pressure testing | 2025-12-13 → 2025-12-12 (-1d) |  |
| 1.3.1.3.3.27.3 | **Electrical Works** | 2025-12-04 → 2025-12-03 (-1d) |  |
| PG-12135 | 1st Fix - GI wire pulling | 2025-12-04 → 2025-12-03 (-1d) |  |
| PG-12140 | Final Fix - CP & Sanitary fixtures | 2026-03-06 → 2026-03-05 (-1d) |  |
| PG-12142 | 2nd Fix - Sprinkler fixing & Pressure testing | 2026-02-11 → 2026-02-10 (-1d) |  |
| PG-12143 | Final Fix - Smoke & heat detectors, FHC , FAS Etc. | 2026-03-06 → 2026-03-05 (-1d) |  |
| PG-12145 | 2nd Fix - Wiring works | 2026-02-03 → 2026-02-02 (-1d) |  |
| PG-12146 | Final Fix - Electrical Fixtures | 2026-03-11 → 2026-03-10 (-1d) |  |
| PG-12150 | 1st Fix - Piping and Shaft hydrant works |  | 2026-02-09 → 2026-02-07 (-2d) |
| PG-12151 | 2nd Fix - Sprinkler fixing & Pressure testing | 2026-03-04 → 2026-03-03 (-1d) |  |
| PG-12153 | 1st Fix - GI wire pulling |  | 2026-01-24 → 2026-01-23 (-1d) |
| PG-12154 | 2nd Fix - Wiring works | 2026-02-25 → 2026-02-24 (-1d) |  |
| PG-12156 | 1st Fix - Piping works |  | 2026-02-21 → 2026-02-20 (-1d) |
| PG-12157 | 2nd Fix - diverter fixing & Pressure testing |  | 2026-02-28 → 2026-02-27 (-1d) |
| PG-12158 | Final Fix - CP & Sanitary fixtures | 2026-04-17 → 2026-04-16 (-1d) |  |
| PG-12159 | 1st Fix - Piping and Shaft hydrant works |  | 2026-03-03 → 2026-03-02 (-1d) |
| PG-12160 | 2nd Fix - Sprinkler fixing & Pressure testing |  | 2026-04-07 → 2026-04-06 (-1d) |
| PG-12161 | Final Fix - Smoke & heat detectors, FHC , FAS Etc. | 2026-04-17 → 2026-04-16 (-1d) |  |
| PG-12162 | 1st Fix - GI wire pulling |  | 2026-02-17 → 2026-02-16 (-1d) |
| PG-12163 | 2nd Fix - Wiring works |  | 2026-04-06 → 2026-04-04 (-2d) |
| PG-12164 | Final Fix - Electrical Fixtures | 2026-04-23 → 2026-04-22 (-1d) |  |

| ID | Task | Start | Finish | Complete | Total float |
| --- | --- | --- | --- | --- | --- |
| 1.3.1.3.3.31 | **Floor 28** | 2026-03-02 → 2026-02-28 (-2d) |  |  |  |
| 1.3.1.3.3.31.1 | **PHE Works** | 2026-03-02 → 2026-02-28 (-2d) |  |  |  |
| PG-12165 | 1st Fix - Piping works | 2026-03-02 → 2026-02-28 (-2d) |  |  |  |
| PG-12166 | 2nd Fix - diverter fixing & Pressure testing | 2026-03-11 → 2026-03-10 (-1d) |  |  |  |
| PG-12167 | Final Fix - CP & Sanitary fixtures | 2026-05-11 → 2026-05-09 (-2d) |  |  |  |
| 1.3.1.3.3.31.2 | **Fire Fighting Works** | 2026-03-11 → 2026-03-10 (-1d) |  |  |  |
| PG-12168 | 1st Fix - Piping and Shaft hydrant works | 2026-03-11 → 2026-03-10 (-1d) |  |  |  |
| PG-12169 | 2nd Fix - Sprinkler fixing & Pressure testing | 2026-04-17 → 2026-04-16 (-1d) |  |  |  |
| PG-12170 | Final Fix - Smoke & heat detectors, FHC , FAS Etc. | 2026-05-11 → 2026-05-09 (-2d) |  |  |  |
| 1.3.1.3.3.31.3 | **Electrical Works** | 2026-03-02 → 2026-02-28 (-2d) |  |  |  |
| PG-12171 | 1st Fix - GI wire pulling | 2026-03-02 → 2026-02-28 (-2d) |  |  |  |
| PG-12172 | 2nd Fix - Wiring works | 2026-04-10 → 2026-04-09 (-1d) |  |  |  |
| PG-12173 | Final Fix - Electrical Fixtures | 2026-05-15 → 2026-05-14 (-1d) |  |  |  |
| 1.3.1.3.3.32 | **Floor 29** |  | 2026-06-12 → 2026-06-11 (-1d) |  |  |
| 1.3.1.3.3.32.1 | **PHE Works** |  | 2026-06-12 → 2026-06-11 (-1d) |  |  |
| PG-12176 | Final Fix - CP & Sanitary fixtures |  | 2026-06-12 → 2026-06-11 (-1d) |  |  |
| 1.3.1.3.3.32.2 | **Fire Fighting Works** |  | 2026-06-12 → 2026-06-11 (-1d) |  |  |
| PG-12179 | Final Fix - Smoke & heat detectors, FHC , FAS Etc. |  | 2026-06-12 → 2026-06-11 (-1d) |  |  |
| 1.3.1.3.3.32.3 | **Electrical Works** |  | 2026-06-12 → 2026-06-11 (-1d) |  |  |
| PG-12182 | Final Fix - Electrical Fixtures |  | 2026-06-12 → 2026-06-11 (-1d) |  |  |
| 1.3.1.3.4 | **Civil Finishes - Units** |  | 2026-06-05 → 2026-06-04 (-1d) |  |  |
| 1.3.1.3.4.8 | **Floor 5** |  | 2025-08-05 → 2025-08-04 (-1d) |  |  |
| 1.3.1.3.4.8.1 | **Ceiling Finishing works - Civil** |  | 2025-08-05 → 2025-08-04 (-1d) |  |  |
| PG-12267 | Toilet False ceiling | 2025-06-26 → 2025-06-25 (-1d) | 2025-07-01 → 2025-06-30 (-1d) |  | 346.08d → 346.79d |
| PG-12266 | Painting Works - Putty, Primer and 1st | 2025-07-07 → 2025-07-05 (-2d) | 2025-07-14 → 2025-07-12 (-2d) |  | 356.75d → 357.46d |
| PG-12268 | Final Coat Painting | 2025-07-14 → 2025-07-12 (-2d) | 2025-08-05 → 2025-08-04 (-1d) |  | 356.75d → 357.46d |
| 1.3.1.3.4.8.2 | **Wall Finishing works - Civil** |  | 2025-08-05 → 2025-08-04 (-1d) |  |  |
| PG-12271 | Dadoing - Wet area | 2025-06-13 → 2025-06-12 (-1d) | 2025-06-19 → 2025-06-18 (-1d) |  | 321.08d → 321.79d |
| PG-12270 | UPVC Windows & Sliding doors | 2025-07-01 → 2025-06-30 (-1d) | 2025-07-07 → 2025-07-05 (-2d) |  | 321.08d → 321.79d |
| PG-12272 | Painting Works - Putty, Primer and 1st | 2025-07-07 → 2025-07-05 (-2d) | 2025-07-14 → 2025-07-12 (-2d) |  | 321.08d → 321.79d |
| PG-12273 | Final Coat Painting | 2025-07-14 → 2025-07-12 (-2d) | 2025-08-05 → 2025-08-04 (-1d) |  | 321.08d → 321.79d |
| 1.3.1.3.4.8.3 | **Floor Finishing Works - Civil** |  | 2025-07-14 → 2025-07-12 (-2d) |  |  |
| PG-12275 | Floor Tiling - Wet area | 2025-06-19 → 2025-06-18 (-1d) | 2025-06-25 → 2025-06-24 (-1d) |  | 321.08d → 321.79d |
| PG-12276 | Floor Tiling - Dry area | 2025-06-25 → 2025-06-24 (-1d) | 2025-07-01 → 2025-06-30 (-1d) |  | 321.08d → 321.79d |
| PG-12277 | Wooden doors | 2025-07-08 → 2025-07-07 (-1d) | 2025-07-14 → 2025-07-12 (-2d) |  | 321.08d → 321.79d |
| PG-12282 | Final Coat Painting |  |  | 19% → 48% | 397.3d → 396.93d |
| PG-12287 | Final Coat Painting |  |  | 14% → 45% | 361.57d → 361.2d |
| 1.3.1.3.4.10 | **Floor 7** |  | 2025-07-01 → 2025-07-02 (+1d) |  |  |
| 1.3.1.3.4.10.1 | **Ceiling Finishing works - Civil** |  | 2025-07-01 → 2025-07-02 (+1d) |  |  |
| PG-12294 | Painting Works - Putty, Primer and 1st | 2025-05-31 A |  | 0% → 67% | 386.83d → 386.09d |
| PG-12296 | Final Coat Painting | 2025-06-07 → 2025-06-10 (+3d) | 2025-07-01 → 2025-07-02 (+1d) |  | 386.83d → 384.75d |
| 1.3.1.3.4.10.2 | **Wall Finishing works - Civil** |  | 2025-06-30 → 2025-07-01 (+1d) |  |  |
| PG-12298 | UPVC Windows & Sliding doors |  | 2025-05-31 A | 80% → 100% | 353.17d → none |
| PG-12300 | Painting Works - Putty, Primer and 1st | 2025-05-31 A | 2025-06-07 → 2025-06-09 (+2d) | 0% → 55% | 353.17d → 351.68d |
| PG-12301 | Final Coat Painting | 2025-06-07 → 2025-06-10 (+3d) | 2025-06-30 → 2025-07-01 (+1d) |  | 353.17d → 351.08d |
| 1.3.1.3.4.10.3 | **Floor Finishing Works - Civil** |  | 2025-06-07 → 2025-06-10 (+3d) |  |  |
| PG-12305 | Wooden doors | 2025-06-02 → 2025-06-04 A (+2d) | 2025-06-07 → 2025-06-10 (+3d) | 0% → 34% | 353.17d → 351.08d |
| 1.3.1.3.4.11 | **Floor 8** |  | 2025-07-17 → 2025-07-18 (+1d) |  |  |
| 1.3.1.3.4.11.1 | **Ceiling Finishing works - Civil** |  | 2025-07-17 → 2025-07-18 (+1d) |  |  |
| PG-12307 | Cornice fixing |  | 2025-06-03 → 2025-06-04 A (+1d) | 17% → 100% | 382.67d → none |
| PG-12309 | Toilet False ceiling | 2025-06-05 → 2025-06-06 A (+1d) | 2025-06-10 → 2025-06-11 (+1d) | 0% → 3% | 364.9d → 363.38d |
| PG-12308 | Painting Works - Putty, Primer and 1st | 2025-06-16 → 2025-06-18 (+2d) | 2025-06-23 → 2025-06-24 (+1d) |  | 371.57d → 370.05d |
| PG-12310 | Final Coat Painting | 2025-06-23 → 2025-06-25 (+2d) | 2025-07-17 → 2025-07-18 (+1d) |  | 371.57d → 370.05d |
| 1.3.1.3.4.11.2 | **Wall Finishing works - Civil** |  | 2025-07-16 → 2025-07-17 (+1d) |  |  |
| PG-12312 | UPVC Windows & Sliding doors | 2025-06-10 → 2025-06-12 (+2d) | 2025-06-16 → 2025-06-17 (+1d) |  | 337.9d → 336.38d |
| PG-12314 | Painting Works - Putty, Primer and 1st | 2025-06-16 → 2025-06-18 (+2d) | 2025-06-23 → 2025-06-24 (+1d) |  | 337.9d → 336.38d |
| PG-12315 | Final Coat Painting | 2025-06-23 → 2025-06-25 (+2d) | 2025-07-16 → 2025-07-17 (+1d) |  | 337.9d → 336.38d |
| 1.3.1.3.4.11.3 | **Floor Finishing Works - Civil** |  | 2025-06-23 → 2025-06-24 (+1d) |  |  |
| PG-12317 | Floor Tiling - Wet area |  | 2025-06-04 → 2025-06-05 A (+1d) | 3% → 100% | 337.9d → none |
| PG-12318 | Floor Tiling - Dry area | 2025-06-04 → 2025-06-05 A (+1d) | 2025-06-10 → 2025-06-11 (+1d) | 0% → 22% | 337.9d → 336.38d |
| PG-12319 | Wooden doors | 2025-06-17 → 2025-06-19 (+2d) | 2025-06-23 → 2025-06-24 (+1d) |  | 337.9d → 336.38d |
| PG-12320 | Gypsum Plastering |  | 2025-06-05 → 2025-06-06 A (+1d) | 8% → 100% | 370.75d → none |
| PG-12321 | Cornice fixing | 2025-06-14 → 2025-06-17 (+3d) | 2025-06-19 → 2025-06-21 (+2d) |  | 370.75d → 368.8d |
| 1.3.1.3.4.13 | **Floor 10** |  | 2025-08-18 → 2025-08-19 (+1d) |  |  |
| 1.3.1.3.4.13.1 | **Ceiling Finishing works - Civil** |  | 2025-08-18 → 2025-08-19 (+1d) |  |  |
| PG-12337 | Toilet False ceiling | 2025-07-08 → 2025-07-09 (+1d) |  |  | 337.17d → 336.05d |
| PG-12336 | Painting Works - Putty, Primer and 1st | 2025-07-18 → 2025-07-19 (+1d) |  |  | 345.83d → 344.71d |
| PG-12338 | Final Coat Painting | 2025-07-25 → 2025-07-26 (+1d) | 2025-08-18 → 2025-08-19 (+1d) |  | 345.83d → 344.71d |
| 1.3.1.3.4.13.2 | **Wall Finishing works - Civil** |  | 2025-08-16 → 2025-08-18 (+2d) |  |  |
| PG-12339 | Balcony Railing Fixing works | 2025-06-04 A | 2025-06-09 → 2025-06-07 (-2d) | 0% → 54% | 340.17d → 340.2d |

| ID | Task | Start | Finish | Complete | Total float |
| --- | --- | --- | --- | --- | --- |
| PG-12341 | Dadoing - Wet area | 2025-06-25 → 2025-06-26 (+1d) |  |  | 311.17d → 310.05d |
| PG-12340 | UPVC Windows & Sliding doors | 2025-07-12 → 2025-07-14 (+2d) |  |  | 311.17d → 310.05d |
| PG-12342 | Painting Works - Putty, Primer and 1st | 2025-07-18 → 2025-07-19 (+1d) |  |  | 311.17d → 310.05d |
| PG-12343 | Final Coat Painting | 2025-07-25 → 2025-07-26 (+1d) | 2025-08-16 → 2025-08-18 (+2d) |  | 311.17d → 310.05d |
| PG-12344 | Waterproofing for sunken areas | 2025-06-04 A | 2025-06-07 → 2025-06-06 (-1d) | 0% → 72% | 331.17d → 331.21d |
| PG-12345 | Floor Tiling - Wet area | 2025-07-01 → 2025-07-02 (+1d) |  |  | 311.17d → 310.05d |
| PG-12346 | Floor Tiling - Dry area | 2025-07-07 → 2025-07-08 (+1d) |  |  | 311.17d → 310.05d |
| PG-12347 | Wooden doors | 2025-07-19 → 2025-07-21 (+2d) |  |  | 311.17d → 310.05d |
| 1.3.1.3.4.14 | **Floor 11** | 2025-06-17 → 2025-06-16 (-1d) |  |  |  |
| 1.3.1.3.4.14.1 | **Ceiling Finishing works - Civil** | 2025-06-26 → 2025-06-25 (-1d) |  |  |  |
| PG-12348 | Gypsum Plastering | 2025-06-26 → 2025-06-25 (-1d) | 2025-07-03 → 2025-07-02 (-1d) |  |  |
| PG-12349 | Cornice fixing | 2025-07-12 → 2025-07-11 (-1d) | 2025-07-17 → 2025-07-16 (-1d) |  |  |
| PG-12351 | Toilet False ceiling | 2025-07-21 → 2025-07-19 (-2d) | 2025-07-25 → 2025-07-24 (-1d) |  |  |
| PG-12350 | Painting Works - Putty, Primer and 1st | 2025-07-31 → 2025-07-30 (-1d) | 2025-08-07 → 2025-08-06 (-1d) |  |  |
| PG-12352 | Final Coat Painting | 2025-08-07 → 2025-08-06 (-1d) |  |  |  |
| 1.3.1.3.4.14.2 | **Wall Finishing works - Civil** | 2025-06-17 → 2025-06-16 (-1d) |  |  |  |
| PG-12353 | Balcony Railing Fixing works | 2025-06-17 → 2025-06-16 (-1d) | 2025-06-21 → 2025-06-20 (-1d) |  |  |
| PG-12355 | Dadoing - Wet area | 2025-07-08 → 2025-07-07 (-1d) | 2025-07-14 → 2025-07-12 (-2d) |  |  |
| PG-12354 | UPVC Windows & Sliding doors | 2025-07-25 → 2025-07-24 (-1d) | 2025-07-31 → 2025-07-30 (-1d) |  |  |
| PG-12356 | Painting Works - Putty, Primer and 1st | 2025-07-31 → 2025-07-30 (-1d) | 2025-08-07 → 2025-08-06 (-1d) |  |  |
| PG-12357 | Final Coat Painting | 2025-08-07 → 2025-08-06 (-1d) |  |  |  |
| 1.3.1.3.4.14.3 | **Floor Finishing Works - Civil** | 2025-06-17 → 2025-06-16 (-1d) | 2025-08-07 → 2025-08-06 (-1d) |  |  |
| PG-12358 | Waterproofing for sunken areas | 2025-06-17 → 2025-06-16 (-1d) | 2025-06-20 → 2025-06-19 (-1d) |  |  |
| PG-12359 | Floor Tiling - Wet area | 2025-07-14 → 2025-07-12 (-2d) | 2025-07-19 → 2025-07-18 (-1d) |  |  |
| PG-12360 | Floor Tiling - Dry area | 2025-07-19 → 2025-07-18 (-1d) | 2025-07-25 → 2025-07-24 (-1d) |  |  |
| PG-12361 | Wooden doors | 2025-08-01 → 2025-07-31 (-1d) | 2025-08-07 → 2025-08-06 (-1d) |  |  |
| 1.3.1.3.4.15 | **Floor 12** | 2025-06-30 → 2025-06-28 (-2d) |  |  |  |
| PG-12365 | Toilet False ceiling | 2025-08-02 → 2025-08-01 (-1d) | 2025-08-07 → 2025-08-06 (-1d) |  |  |
| PG-12364 | Painting Works - Putty, Primer and 1st | 2025-08-13 → 2025-08-12 (-1d) | 2025-08-21 → 2025-08-20 (-1d) |  |  |
| PG-12366 | Final Coat Painting | 2025-08-21 → 2025-08-20 (-1d) |  |  |  |
| 1.3.1.3.4.15.2 | **Wall Finishing works - Civil** | 2025-06-30 → 2025-06-28 (-2d) |  |  |  |
| PG-12367 | Balcony Railing Fixing works | 2025-06-30 → 2025-06-28 (-2d) | 2025-07-04 → 2025-07-03 (-1d) |  |  |
| PG-12369 | Dadoing - Wet area | 2025-07-21 → 2025-07-19 (-2d) | 2025-07-26 → 2025-07-25 (-1d) |  |  |
| PG-12368 | UPVC Windows & Sliding doors | 2025-08-07 → 2025-08-06 (-1d) | 2025-08-13 → 2025-08-12 (-1d) |  |  |
| PG-12370 | Painting Works - Putty, Primer and 1st | 2025-08-13 → 2025-08-12 (-1d) | 2025-08-21 → 2025-08-20 (-1d) |  |  |
| PG-12371 | Final Coat Painting | 2025-08-21 → 2025-08-20 (-1d) |  |  |  |
| 1.3.1.3.4.15.3 | **Floor Finishing Works - Civil** | 2025-06-30 → 2025-06-28 (-2d) | 2025-08-21 → 2025-08-20 (-1d) |  |  |
| PG-12372 | Waterproofing for sunken areas | 2025-06-30 → 2025-06-28 (-2d) | 2025-07-03 → 2025-07-02 (-1d) |  |  |
| PG-12373 | Floor Tiling - Wet area | 2025-07-26 → 2025-07-25 (-1d) | 2025-08-01 → 2025-07-31 (-1d) |  |  |
| PG-12374 | Floor Tiling - Dry area | 2025-08-01 → 2025-07-31 (-1d) | 2025-08-07 → 2025-08-06 (-1d) |  |  |
| PG-12375 | Wooden doors | 2025-08-14 → 2025-08-13 (-1d) | 2025-08-21 → 2025-08-20 (-1d) |  |  |
| 1.3.1.3.4.16 | **Floor 13** | 2025-07-12 → 2025-07-11 (-1d) |  |  |  |
| PG-12379 | Toilet False ceiling | 2025-08-16 → 2025-08-14 (-2d) | 2025-08-21 → 2025-08-20 (-1d) |  |  |
| PG-12378 | Painting Works - Putty, Primer and 1st | 2025-08-27 → 2025-08-26 (-1d) | 2025-09-03 → 2025-09-02 (-1d) |  |  |
| PG-12380 | Final Coat Painting | 2025-09-03 → 2025-09-02 (-1d) |  |  |  |
| 1.3.1.3.4.16.2 | **Wall Finishing works - Civil** | 2025-07-12 → 2025-07-11 (-1d) |  |  |  |
| PG-12381 | Balcony Railing Fixing works | 2025-07-12 → 2025-07-11 (-1d) | 2025-07-17 → 2025-07-16 (-1d) |  |  |
| PG-12383 | Dadoing - Wet area | 2025-08-02 → 2025-08-01 (-1d) | 2025-08-08 → 2025-08-07 (-1d) |  |  |
| PG-12382 | UPVC Windows & Sliding doors | 2025-08-21 → 2025-08-20 (-1d) | 2025-08-27 → 2025-08-26 (-1d) |  |  |
| PG-12384 | Painting Works - Putty, Primer and 1st | 2025-08-27 → 2025-08-26 (-1d) | 2025-09-03 → 2025-09-02 (-1d) |  |  |
| PG-12385 | Final Coat Painting | 2025-09-03 → 2025-09-02 (-1d) |  |  |  |
| 1.3.1.3.4.16.3 | **Floor Finishing Works - Civil** | 2025-07-12 → 2025-07-11 (-1d) | 2025-09-03 → 2025-09-02 (-1d) |  |  |
| PG-12386 | Waterproofing for sunken areas | 2025-07-12 → 2025-07-11 (-1d) | 2025-07-16 → 2025-07-15 (-1d) |  |  |
| PG-12387 | Floor Tiling - Wet area | 2025-08-08 → 2025-08-07 (-1d) | 2025-08-14 → 2025-08-13 (-1d) |  |  |
| PG-12388 | Floor Tiling - Dry area | 2025-08-14 → 2025-08-13 (-1d) | 2025-08-21 → 2025-08-20 (-1d) |  |  |
| PG-12389 | Wooden doors | 2025-08-28 → 2025-08-27 (-1d) | 2025-09-03 → 2025-09-02 (-1d) |  |  |
| 1.3.1.3.4.17 | **Floor 14** | 2025-07-25 → 2025-07-24 (-1d) |  |  |  |
| PG-12393 | Toilet False ceiling | 2025-08-29 → 2025-08-28 (-1d) | 2025-09-03 → 2025-09-02 (-1d) |  |  |
| PG-12392 | Painting Works - Putty, Primer and 1st | 2025-09-09 → 2025-09-08 (-1d) | 2025-09-16 → 2025-09-15 (-1d) |  |  |
| PG-12394 | Final Coat Painting | 2025-09-16 → 2025-09-15 (-1d) |  |  |  |
| 1.3.1.3.4.17.2 | **Wall Finishing works - Civil** | 2025-07-25 → 2025-07-24 (-1d) |  |  |  |
| PG-12395 | Balcony Railing Fixing works | 2025-07-25 → 2025-07-24 (-1d) | 2025-07-30 → 2025-07-29 (-1d) |  |  |
| PG-12397 | Dadoing - Wet area | 2025-08-16 → 2025-08-14 (-2d) | 2025-08-22 → 2025-08-21 (-1d) |  |  |
| PG-12396 | UPVC Windows & Sliding doors | 2025-09-03 → 2025-09-02 (-1d) | 2025-09-09 → 2025-09-08 (-1d) |  |  |
| PG-12398 | Painting Works - Putty, Primer and 1st | 2025-09-09 → 2025-09-08 (-1d) | 2025-09-16 → 2025-09-15 (-1d) |  |  |
| PG-12399 | Final Coat Painting | 2025-09-16 → 2025-09-15 (-1d) |  |  |  |
| 1.3.1.3.4.17.3 | **Floor Finishing Works - Civil** | 2025-07-25 → 2025-07-24 (-1d) | 2025-09-16 → 2025-09-15 (-1d) |  |  |
| PG-12400 | Waterproofing for sunken areas | 2025-07-25 → 2025-07-24 (-1d) | 2025-07-29 → 2025-07-28 (-1d) |  |  |
| PG-12401 | Floor Tiling - Wet area | 2025-08-22 → 2025-08-21 (-1d) | 2025-08-28 → 2025-08-27 (-1d) |  |  |
| PG-12402 | Floor Tiling - Dry area | 2025-08-28 → 2025-08-27 (-1d) | 2025-09-03 → 2025-09-02 (-1d) |  |  |

| ID | Task | Start | Finish | Total float |
| --- | --- | --- | --- | --- |
| PG-12403 | Wooden doors | 2025-09-10 → 2025-09-09 (-1d) | 2025-09-16 → 2025-09-15 (-1d) |  |
| 1.3.1.3.4.18 | **Floor 15** | 2025-08-07 → 2025-08-06 (-1d) | 2026-01-07 → 2026-01-06 (-1d) |  |
| 1.3.1.3.4.18.1 | **Ceiling Finishing works - Civil** |  | 2026-01-07 → 2026-01-06 (-1d) |  |
| PG-12407 | Toilet False ceiling | 2025-11-28 → 2025-11-27 (-1d) | 2025-12-03 → 2025-12-02 (-1d) | 216.08d → 216.79d |
| PG-12406 | Painting Works - Putty, Primer and 1st | 2025-12-09 → 2025-12-08 (-1d) | 2025-12-16 → 2025-12-15 (-1d) | 225.92d → 226.62d |
| PG-12408 | Final Coat Painting | 2025-12-16 → 2025-12-15 (-1d) | 2026-01-07 → 2026-01-06 (-1d) | 225.92d → 226.62d |
| 1.3.1.3.4.18.2 | **Wall Finishing works - Civil** | 2025-08-07 → 2025-08-06 (-1d) | 2026-01-07 → 2026-01-06 (-1d) |  |
| PG-12409 | Balcony Railing Fixing works | 2025-08-07 → 2025-08-06 (-1d) | 2025-08-12 → 2025-08-11 (-1d) |  |
| PG-12411 | Dadoing - Wet area | 2025-11-15 → 2025-11-14 (-1d) | 2025-11-21 → 2025-11-20 (-1d) | 48.42d → 49.12d |
| PG-12410 | UPVC Windows & Sliding doors | 2025-12-03 → 2025-12-02 (-1d) | 2025-12-09 → 2025-12-08 (-1d) | 48.42d → 49.12d |
| PG-12412 | Painting Works - Putty, Primer and 1st | 2025-12-09 → 2025-12-08 (-1d) | 2025-12-16 → 2025-12-15 (-1d) | 48.42d → 49.12d |
| PG-12413 | Final Coat Painting | 2025-12-16 → 2025-12-15 (-1d) | 2026-01-07 → 2026-01-06 (-1d) | 190.08d → 190.79d |
| 1.3.1.3.4.18.3 | **Floor Finishing Works - Civil** | 2025-08-07 → 2025-08-06 (-1d) | 2025-12-16 → 2025-12-15 (-1d) |  |
| PG-12414 | Waterproofing for sunken areas | 2025-08-07 → 2025-08-06 (-1d) | 2025-08-11 → 2025-08-09 (-2d) |  |
| PG-12415 | Floor Tiling - Wet area | 2025-11-21 → 2025-11-20 (-1d) | 2025-11-27 → 2025-11-26 (-1d) | 48.42d → 49.12d |
| PG-12416 | Floor Tiling - Dry area | 2025-11-27 → 2025-11-26 (-1d) | 2025-12-03 → 2025-12-02 (-1d) | 48.42d → 49.12d |
| PG-12417 | Wooden doors | 2025-12-10 → 2025-12-09 (-1d) | 2025-12-16 → 2025-12-15 (-1d) | 48.42d → 49.12d |
| 1.3.1.3.4.19 | **Floor 16** | 2025-08-21 → 2025-08-20 (-1d) |  |  |
| PG-12421 | Toilet False ceiling | 2025-09-24 → 2025-09-23 (-1d) | 2025-09-29 → 2025-09-27 (-2d) |  |
| PG-12420 | Painting Works - Putty, Primer and 1st | 2025-10-06 → 2025-10-04 (-2d) | 2025-10-13 → 2025-10-11 (-2d) |  |
| PG-12422 | Final Coat Painting | 2025-10-13 → 2025-10-11 (-2d) |  |  |
| 1.3.1.3.4.19.2 | **Wall Finishing works - Civil** | 2025-08-21 → 2025-08-20 (-1d) |  |  |
| PG-12423 | Balcony Railing Fixing works | 2025-08-21 → 2025-08-20 (-1d) | 2025-08-26 → 2025-08-25 (-1d) |  |
| PG-12425 | Dadoing - Wet area | 2025-09-11 → 2025-09-10 (-1d) | 2025-09-17 → 2025-09-16 (-1d) |  |
| PG-12424 | UPVC Windows & Sliding doors | 2025-09-29 → 2025-09-27 (-2d) | 2025-10-06 → 2025-10-04 (-2d) |  |
| PG-12426 | Painting Works - Putty, Primer and 1st | 2025-10-06 → 2025-10-04 (-2d) | 2025-10-13 → 2025-10-11 (-2d) |  |
| PG-12427 | Final Coat Painting | 2025-10-13 → 2025-10-11 (-2d) |  |  |
| 1.3.1.3.4.19.3 | **Floor Finishing Works - Civil** | 2025-08-21 → 2025-08-20 (-1d) | 2025-10-13 → 2025-10-11 (-2d) |  |
| PG-12428 | Waterproofing for sunken areas | 2025-08-21 → 2025-08-20 (-1d) | 2025-08-25 → 2025-08-23 (-2d) |  |
| PG-12429 | Floor Tiling - Wet area | 2025-09-17 → 2025-09-16 (-1d) | 2025-09-23 → 2025-09-22 (-1d) |  |
| PG-12430 | Floor Tiling - Dry area | 2025-09-23 → 2025-09-22 (-1d) | 2025-09-29 → 2025-09-27 (-2d) |  |
| PG-12431 | Wooden doors | 2025-10-07 → 2025-10-06 (-1d) | 2025-10-13 → 2025-10-11 (-2d) |  |
| 1.3.1.3.4.20 | **Floor 17** | 2025-09-03 → 2025-09-02 (-1d) |  |  |
| PG-12435 | Toilet False ceiling | 2025-10-08 → 2025-10-07 (-1d) | 2025-10-13 → 2025-10-11 (-2d) |  |
| PG-12434 | Painting Works - Putty, Primer and 1st | 2025-10-18 → 2025-10-17 (-1d) | 2025-10-25 → 2025-10-24 (-1d) |  |
| PG-12436 | Final Coat Painting | 2025-10-25 → 2025-10-24 (-1d) |  |  |
| 1.3.1.3.4.20.2 | **Wall Finishing works - Civil** | 2025-09-03 → 2025-09-02 (-1d) |  |  |
| PG-12437 | Balcony Railing Fixing works | 2025-09-03 → 2025-09-02 (-1d) | 2025-09-08 → 2025-09-06 (-2d) |  |
| PG-12439 | Dadoing - Wet area | 2025-09-24 → 2025-09-23 (-1d) | 2025-09-30 → 2025-09-29 (-1d) |  |
| PG-12438 | UPVC Windows & Sliding doors | 2025-10-13 → 2025-10-11 (-2d) | 2025-10-18 → 2025-10-17 (-1d) |  |
| PG-12440 | Painting Works - Putty, Primer and 1st | 2025-10-18 → 2025-10-17 (-1d) | 2025-10-25 → 2025-10-24 (-1d) |  |
| PG-12441 | Final Coat Painting | 2025-10-25 → 2025-10-24 (-1d) |  |  |
| 1.3.1.3.4.20.3 | **Floor Finishing Works - Civil** | 2025-09-03 → 2025-09-02 (-1d) | 2025-10-25 → 2025-10-24 (-1d) |  |
| PG-12442 | Waterproofing for sunken areas | 2025-09-03 → 2025-09-02 (-1d) | 2025-09-06 → 2025-09-05 (-1d) |  |
| PG-12443 | Floor Tiling - Wet area | 2025-09-30 → 2025-09-29 (-1d) | 2025-10-07 → 2025-10-06 (-1d) |  |
| PG-12444 | Floor Tiling - Dry area | 2025-10-07 → 2025-10-06 (-1d) | 2025-10-13 → 2025-10-11 (-2d) |  |
| PG-12445 | Wooden doors | 2025-10-20 → 2025-10-18 (-2d) | 2025-10-25 → 2025-10-24 (-1d) |  |
| 1.3.1.3.4.21 | **Floor 18** | 2025-09-16 → 2025-09-15 (-1d) |  |  |
| PG-12449 | Toilet False ceiling | 2025-10-21 → 2025-10-20 (-1d) | 2025-10-25 → 2025-10-24 (-1d) |  |
| PG-12448 | Painting Works - Putty, Primer and 1st | 2025-10-31 → 2025-10-30 (-1d) | 2025-11-08 → 2025-11-07 (-1d) |  |
| PG-12450 | Final Coat Painting | 2025-11-08 → 2025-11-07 (-1d) |  |  |
| 1.3.1.3.4.21.2 | **Wall Finishing works - Civil** | 2025-09-16 → 2025-09-15 (-1d) |  |  |
| PG-12451 | Balcony Railing Fixing works | 2025-09-16 → 2025-09-15 (-1d) | 2025-09-20 → 2025-09-19 (-1d) |  |
| PG-12453 | Dadoing - Wet area | 2025-10-08 → 2025-10-07 (-1d) | 2025-10-14 → 2025-10-13 (-1d) |  |
| PG-12452 | UPVC Windows & Sliding doors | 2025-10-25 → 2025-10-24 (-1d) | 2025-10-31 → 2025-10-30 (-1d) |  |
| PG-12454 | Painting Works - Putty, Primer and 1st | 2025-10-31 → 2025-10-30 (-1d) | 2025-11-08 → 2025-11-07 (-1d) |  |
| PG-12455 | Final Coat Painting | 2025-11-08 → 2025-11-07 (-1d) |  |  |
| 1.3.1.3.4.21.3 | **Floor Finishing Works - Civil** | 2025-09-16 → 2025-09-15 (-1d) | 2025-11-08 → 2025-11-07 (-1d) |  |
| PG-12456 | Waterproofing for sunken areas | 2025-09-16 → 2025-09-15 (-1d) | 2025-09-19 → 2025-09-18 (-1d) |  |
| PG-12457 | Floor Tiling - Wet area | 2025-10-14 → 2025-10-13 (-1d) | 2025-10-20 → 2025-10-18 (-2d) |  |
| PG-12458 | Floor Tiling - Dry area | 2025-10-20 → 2025-10-18 (-2d) | 2025-10-25 → 2025-10-24 (-1d) |  |
| PG-12459 | Wooden doors | 2025-11-03 → 2025-10-31 (-3d) | 2025-11-08 → 2025-11-07 (-1d) |  |
| 1.3.1.3.4.22 | **Floor 19** | 2025-09-29 → 2025-09-27 (-2d) |  |  |
| PG-12463 | Toilet False ceiling | 2025-11-04 → 2025-11-03 (-1d) | 2025-11-08 → 2025-11-07 (-1d) |  |
| PG-12462 | Painting Works - Putty, Primer and 1st | 2025-11-14 → 2025-11-13 (-1d) | 2025-11-21 → 2025-11-20 (-1d) |  |
| PG-12464 | Final Coat Painting | 2025-11-21 → 2025-11-20 (-1d) |  |  |
| 1.3.1.3.4.22.2 | **Wall Finishing works - Civil** | 2025-09-29 → 2025-09-27 (-2d) |  |  |
| PG-12465 | Balcony Railing Fixing works | 2025-09-29 → 2025-09-27 (-2d) | 2025-10-04 → 2025-10-03 (-1d) |  |
| PG-12467 | Dadoing - Wet area | 2025-10-21 → 2025-10-20 (-1d) | 2025-10-27 → 2025-10-25 (-2d) |  |
| PG-12466 | UPVC Windows & Sliding doors | 2025-11-08 → 2025-11-07 (-1d) | 2025-11-14 → 2025-11-13 (-1d) |  |

| ID | Task | Start | Finish |
| --- | --- | --- | --- |
| PG-12468 | Painting Works - Putty, Primer and 1st | 2025-11-14 → 2025-11-13 (-1d) | 2025-11-21 → 2025-11-20 (-1d) |
| PG-12469 | Final Coat Painting | 2025-11-21 → 2025-11-20 (-1d) |  |
| 1.3.1.3.4.22.3 | **Floor Finishing Works - Civil** | 2025-09-29 → 2025-09-27 (-2d) | 2025-11-21 → 2025-11-20 (-1d) |
| PG-12470 | Waterproofing for sunken areas | 2025-09-29 → 2025-09-27 (-2d) | 2025-10-03 → 2025-10-01 (-2d) |
| PG-12471 | Floor Tiling - Wet area | 2025-10-27 → 2025-10-25 (-2d) | 2025-11-03 → 2025-10-31 (-3d) |
| PG-12472 | Floor Tiling - Dry area | 2025-11-03 → 2025-10-31 (-3d) | 2025-11-08 → 2025-11-07 (-1d) |
| PG-12473 | Wooden doors | 2025-11-15 → 2025-11-14 (-1d) | 2025-11-21 → 2025-11-20 (-1d) |
| 1.3.1.3.4.23 | **Floor 20** | 2025-10-13 → 2025-10-11 (-2d) |  |
| 1.3.1.3.4.23.1 | **Ceiling Finishing works - Civil** | 2025-10-22 → 2025-10-21 (-1d) |  |
| PG-12474 | Gypsum Plastering | 2025-10-22 → 2025-10-21 (-1d) | 2025-10-29 → 2025-10-28 (-1d) |
| PG-12475 | Cornice fixing | 2025-11-08 → 2025-11-07 (-1d) | 2025-11-13 → 2025-11-12 (-1d) |
| PG-12477 | Toilet False ceiling | 2025-11-17 → 2025-11-15 (-2d) | 2025-11-21 → 2025-11-20 (-1d) |
| PG-12476 | Painting Works - Putty, Primer and 1st | 2025-11-27 → 2025-11-26 (-1d) | 2025-12-04 → 2025-12-03 (-1d) |
| PG-12478 | Final Coat Painting | 2025-12-04 → 2025-12-03 (-1d) |  |
| 1.3.1.3.4.23.2 | **Wall Finishing works - Civil** | 2025-10-13 → 2025-10-11 (-2d) |  |
| PG-12479 | Balcony Railing Fixing works | 2025-10-13 → 2025-10-11 (-2d) | 2025-10-17 → 2025-10-16 (-1d) |
| PG-12481 | Dadoing - Wet area | 2025-11-04 → 2025-11-03 (-1d) | 2025-11-10 → 2025-11-08 (-2d) |
| PG-12480 | UPVC Windows & Sliding doors | 2025-11-21 → 2025-11-20 (-1d) | 2025-11-27 → 2025-11-26 (-1d) |
| PG-12482 | Painting Works - Putty, Primer and 1st | 2025-11-27 → 2025-11-26 (-1d) | 2025-12-04 → 2025-12-03 (-1d) |
| PG-12483 | Final Coat Painting | 2025-12-04 → 2025-12-03 (-1d) |  |
| 1.3.1.3.4.23.3 | **Floor Finishing Works - Civil** | 2025-10-13 → 2025-10-11 (-2d) | 2025-12-04 → 2025-12-03 (-1d) |
| PG-12484 | Waterproofing for sunken areas | 2025-10-13 → 2025-10-11 (-2d) | 2025-10-16 → 2025-10-15 (-1d) |
| PG-12485 | Floor Tiling - Wet area | 2025-11-10 → 2025-11-08 (-2d) | 2025-11-15 → 2025-11-14 (-1d) |
| PG-12486 | Floor Tiling - Dry area | 2025-11-15 → 2025-11-14 (-1d) | 2025-11-21 → 2025-11-20 (-1d) |
| PG-12487 | Wooden doors | 2025-11-28 → 2025-11-27 (-1d) | 2025-12-04 → 2025-12-03 (-1d) |
| 1.3.1.3.4.24 | **Floor 21** | 2025-10-25 → 2025-10-24 (-1d) |  |
| 1.3.1.3.4.24.1 | **Ceiling Finishing works - Civil** | 2025-11-05 → 2025-11-04 (-1d) |  |
| PG-12488 | Gypsum Plastering | 2025-11-05 → 2025-11-04 (-1d) | 2025-11-12 → 2025-11-11 (-1d) |
| PG-12489 | Cornice fixing | 2025-11-21 → 2025-11-20 (-1d) | 2025-11-26 → 2025-11-25 (-1d) |
| 1.3.1.3.4.24.2 | **Wall Finishing works - Civil** | 2025-10-25 → 2025-10-24 (-1d) |  |
| PG-12493 | Balcony Railing Fixing works | 2025-10-25 → 2025-10-24 (-1d) | 2025-10-30 → 2025-10-29 (-1d) |
| 1.3.1.3.4.24.3 | **Floor Finishing Works - Civil** | 2025-10-25 → 2025-10-24 (-1d) |  |
| PG-12498 | Waterproofing for sunken areas | 2025-10-25 → 2025-10-24 (-1d) | 2025-10-29 → 2025-10-28 (-1d) |
| 1.3.1.3.4.25 | **Floor 22** | 2025-11-08 → 2025-11-07 (-1d) |  |
| 1.3.1.3.4.25.1 | **Ceiling Finishing works - Civil** | 2025-11-18 → 2025-11-17 (-1d) |  |
| PG-12502 | Gypsum Plastering | 2025-11-18 → 2025-11-17 (-1d) | 2025-11-25 → 2025-11-24 (-1d) |
| PG-12503 | Cornice fixing | 2025-12-04 → 2025-12-03 (-1d) | 2025-12-09 → 2025-12-08 (-1d) |
| 1.3.1.3.4.25.2 | **Wall Finishing works - Civil** | 2025-11-08 → 2025-11-07 (-1d) |  |
| PG-12507 | Balcony Railing Fixing works | 2025-11-08 → 2025-11-07 (-1d) | 2025-11-13 → 2025-11-12 (-1d) |
| 1.3.1.3.4.25.3 | **Floor Finishing Works - Civil** | 2025-11-08 → 2025-11-07 (-1d) |  |
| PG-12512 | Waterproofing for sunken areas | 2025-11-08 → 2025-11-07 (-1d) | 2025-11-12 → 2025-11-11 (-1d) |
| 1.3.1.3.4.26 | **Floor 23** | 2025-11-21 → 2025-11-20 (-1d) | 2026-02-04 → 2026-02-03 (-1d) |
| 1.3.1.3.4.26.1 | **Ceiling Finishing works - Civil** |  | 2026-02-04 → 2026-02-03 (-1d) |
| PG-12520 | Final Coat Painting |  | 2026-02-04 → 2026-02-03 (-1d) |
| 1.3.1.3.4.26.2 | **Wall Finishing works - Civil** | 2025-11-21 → 2025-11-20 (-1d) | 2026-02-04 → 2026-02-03 (-1d) |
| PG-12521 | Balcony Railing Fixing works | 2025-11-21 → 2025-11-20 (-1d) | 2025-11-26 → 2025-11-25 (-1d) |
| PG-12525 | Final Coat Painting |  | 2026-02-04 → 2026-02-03 (-1d) |
| 1.3.1.3.4.26.3 | **Floor Finishing Works - Civil** | 2025-11-21 → 2025-11-20 (-1d) |  |
| PG-12526 | Waterproofing for sunken areas | 2025-11-21 → 2025-11-20 (-1d) | 2025-11-25 → 2025-11-24 (-1d) |
| 1.3.1.3.4.27 | **Floor 24** | 2025-12-04 → 2025-12-03 (-1d) |  |
| 1.3.1.3.4.27.2 | **Wall Finishing works - Civil** | 2025-12-04 → 2025-12-03 (-1d) |  |
| PG-12535 | Balcony Railing Fixing works | 2025-12-04 → 2025-12-03 (-1d) | 2025-12-09 → 2025-12-08 (-1d) |
| 1.3.1.3.4.27.3 | **Floor Finishing Works - Civil** | 2025-12-04 → 2025-12-03 (-1d) |  |
| PG-12540 | Waterproofing for sunken areas | 2025-12-04 → 2025-12-03 (-1d) | 2025-12-08 → 2025-12-06 (-2d) |
| 1.3.1.3.4.29.1 | **Ceiling Finishing works - Civil** | 2026-01-24 → 2026-01-23 (-1d) |  |
| PG-12558 | Gypsum Plastering | 2026-01-24 → 2026-01-23 (-1d) | 2026-02-02 → 2026-01-31 (-2d) |
| PG-12559 | Cornice fixing |  | 2026-02-16 → 2026-02-14 (-2d) |
| 1.3.1.3.4.30.1 | **Ceiling Finishing works - Civil** | 2026-02-17 → 2026-02-16 (-1d) |  |
| PG-12572 | Gypsum Plastering | 2026-02-17 → 2026-02-16 (-1d) | 2026-02-24 → 2026-02-23 (-1d) |
| PG-12573 | Cornice fixing | 2026-03-05 → 2026-03-04 (-1d) | 2026-03-10 → 2026-03-09 (-1d) |
| PG-12575 | Toilet False ceiling | 2026-03-13 → 2026-03-12 (-1d) | 2026-03-18 → 2026-03-17 (-1d) |
| PG-12574 | Painting Works - Putty, Primer and 1st | 2026-03-24 → 2026-03-23 (-1d) | 2026-03-31 → 2026-03-30 (-1d) |
| PG-12576 | Final Coat Painting | 2026-03-31 → 2026-03-30 (-1d) |  |
| PG-12579 | Dadoing - Wet area | 2026-02-28 → 2026-02-27 (-1d) | 2026-03-06 → 2026-03-05 (-1d) |
| PG-12578 | UPVC Windows & Sliding doors | 2026-03-18 → 2026-03-17 (-1d) | 2026-03-24 → 2026-03-23 (-1d) |
| PG-12580 | Painting Works - Putty, Primer and 1st | 2026-03-24 → 2026-03-23 (-1d) | 2026-03-31 → 2026-03-30 (-1d) |
| PG-12581 | Final Coat Painting | 2026-03-31 → 2026-03-30 (-1d) |  |
| 1.3.1.3.4.30.3 | **Floor Finishing Works - Civil** |  | 2026-03-31 → 2026-03-30 (-1d) |
| PG-12583 | Floor Tiling - Wet area | 2026-03-06 → 2026-03-05 (-1d) | 2026-03-12 → 2026-03-11 (-1d) |
| PG-12584 | Floor Tiling - Dry area | 2026-03-12 → 2026-03-11 (-1d) | 2026-03-18 → 2026-03-17 (-1d) |

| ID | Task | Start | Finish | Complete | Total float |
| --- | --- | --- | --- | --- | --- |
| PG-12585 | Wooden doors | 2026-03-25 → 2026-03-24 (-1d) | 2026-03-31 → 2026-03-30 (-1d) |  |  |
| 1.3.1.3.4.31 | **Floor 28** | 2026-03-02 → 2026-02-28 (-2d) |  |  |  |
| PG-12587 | Cornice fixing | 2026-03-27 → 2026-03-26 (-1d) |  |  |  |
| 1.3.1.3.4.31.2 | **Wall Finishing works - Civil** | 2026-03-02 → 2026-02-28 (-2d) |  |  |  |
| PG-12591 | Balcony Railing Fixing works | 2026-03-02 → 2026-02-28 (-2d) | 2026-03-06 → 2026-03-05 (-1d) |  |  |
| 1.3.1.3.4.31.3 | **Floor Finishing Works - Civil** | 2026-03-02 → 2026-02-28 (-2d) |  |  |  |
| PG-12596 | Waterproofing for sunken areas | 2026-03-02 → 2026-02-28 (-2d) | 2026-03-05 → 2026-03-04 (-1d) |  |  |
| 1.3.1.3.4.32 | **Floor 29** |  | 2026-06-05 → 2026-06-04 (-1d) |  |  |
| 1.3.1.3.4.32.1 | **Ceiling Finishing works - Civil** |  | 2026-06-05 → 2026-06-04 (-1d) |  |  |
| PG-12604 | Final Coat Painting |  | 2026-06-05 → 2026-06-04 (-1d) |  |  |
| 1.3.1.3.4.32.2 | **Wall Finishing works - Civil** |  | 2026-06-05 → 2026-06-04 (-1d) |  |  |
| PG-12609 | Final Coat Painting |  | 2026-06-05 → 2026-06-04 (-1d) |  |  |
| PG-12636 | Shaft door opening finishing |  | 2026-02-04 → 2026-02-03 (-1d) |  |  |
| PG-12637 | Painting works | 2026-02-04 → 2026-02-03 (-1d) | 2026-02-13 → 2026-02-12 (-1d) |  |  |
| PG-12638 | Lift Wall Cladding Works | 2026-04-29 → 2026-04-28 (-1d) |  |  |  |
| 1.3.1.3.7 | **MEP Shaft works** |  | 2026-04-09 → 2026-04-08 (-1d) |  |  |
| PG-12659 | Tray Works |  | 2026-01-31 → 2026-01-30 (-1d) |  |  |
| PG-12660 | Cable & Conducting works | 2026-01-31 → 2026-01-30 (-1d) |  |  |  |
| PG-12662 | Shaft MS Piping & fixtures installation |  | 2026-02-12 → 2026-02-11 (-1d) |  |  |
| PG-12663 | Tray / cabling / conducting & wiring works | 2026-02-12 → 2026-02-11 (-1d) |  |  |  |
| PG-12665 | Tray / cabling / conducting & wiring works |  | 2026-02-18 → 2026-02-17 (-1d) |  |  |
| PG-12666 | Wiring/DB/connector box installation and termination works | 2026-02-18 → 2026-02-17 (-1d) |  |  |  |
| 1.3.1.3.7.4 | **PHE** |  | 2026-04-09 → 2026-04-08 (-1d) |  |  |
| PG-12667 | Bracket fixing works |  | 2026-01-28 → 2026-01-27 (-1d) |  |  |
| PG-12668 | Piping Works | 2026-01-28 → 2026-01-27 (-1d) |  |  |  |
| PG-12670 | Commissioning |  | 2026-04-09 → 2026-04-08 (-1d) |  |  |
| PG-12672 | Guide Rails fixing works | 2026-02-13 → 2026-02-12 (-1d) |  |  |  |
| PG-12673 | Lift Frame fixing works |  | 2026-04-29 → 2026-04-28 (-1d) |  |  |
| PG-12674 | CAR Assembly works | 2026-04-29 → 2026-04-28 (-1d) |  |  |  |
| PG-12675 | Lift Machine Room Works |  | 2026-06-26 → 2026-06-25 (-1d) |  |  |
| PG-12676 | Slow Speed & High Speed Testing works | 2026-06-26 → 2026-06-25 (-1d) |  |  |  |
| 1.3.1.3.9 | **Electrical Panel Works** | 2025-12-16 → 2025-12-15 (-1d) | 2026-07-22 → 2026-07-21 (-1d) |  |  |
| 1.3.1.3.9.1 | **Civil Finishing Works** | 2025-12-16 → 2025-12-15 (-1d) | 2026-01-30 → 2026-01-29 (-1d) |  |  |
| PG-12677 | Wall Tie rod hole packing & Grinding works. | 2025-12-16 → 2025-12-15 (-1d) | 2026-01-01 → 2025-12-31 (-1d) |  | 48.42d → 49.12d |
| PG-12678 | Window, Louver and Door fixing works | 2026-01-01 → 2025-12-31 (-1d) | 2026-01-08 → 2026-01-07 (-1d) |  | 48.42d → 49.12d |
| PG-12679 | Pedestal works | 2026-01-08 → 2026-01-07 (-1d) | 2026-01-21 → 2026-01-20 (-1d) |  | 48.42d → 49.12d |
| PG-12680 | Painting works | 2026-01-21 → 2026-01-20 (-1d) | 2026-01-30 → 2026-01-29 (-1d) |  | 48.42d → 49.12d |
| 1.3.1.3.9.2 | **Electrical Panel works** | 2026-01-30 → 2026-01-29 (-1d) | 2026-07-22 → 2026-07-21 (-1d) |  |  |
| PG-12681 | Electrical Panel assembly works | 2026-01-30 → 2026-01-29 (-1d) | 2026-04-08 → 2026-04-07 (-1d) |  | 48.42d → 49.12d |
| PG-12682 | Electrical Panel installation and cable termination. | 2026-04-08 → 2026-04-07 (-1d) | 2026-06-18 → 2026-06-17 (-1d) |  | 48.42d → 49.12d |
| PG-12683 | Electrical Panel Testing and commissioning works | 2026-06-18 → 2026-06-17 (-1d) | 2026-07-22 → 2026-07-21 (-1d) |  | 48.42d → 49.12d |
| PG-12686 | Painting Works |  | 2026-08-26 → 2026-08-25 (-1d) |  |  |
| PG-12688 | Interior Works | 2026-08-26 → 2026-08-25 (-1d) |  |  |  |
| 1.3.1.3.11 | **Lightening Arrester works** |  | 2026-05-09 → 2026-05-08 (-1d) |  |  |
| PG-12689 | Conductor will be lifted with RCC Works, But Terrace works will be done once Parapet Painting done |  | 2026-05-09 → 2026-05-08 (-1d) |  |  |
| 1.3.1.5 | **Landscape and Hardscape works** |  | 2026-08-11 → 2026-08-10 (-1d) |  |  |
| PG-12718 | Planting works |  | 2026-08-11 → 2026-08-10 (-1d) |  |  |
| 1.3.9 | **Project Infrastructure Works ( Services/MEP )** |  | 2026-09-28 → 2026-09-26 (-2d) |  |  |
| 1.3.9.1 | **Civil & Services Works ( Transformer, DG,STP )** |  | 2026-09-28 → 2026-09-26 (-2d) |  |  |
| 1.3.9.1.1 | **Transformer Yard Civil Works** |  | 2026-06-02 → 2026-06-01 (-1d) |  |  |
| 1.3.9.1.1.1 | **Transformer 01** |  | 2026-06-02 → 2026-06-01 (-1d) |  |  |
| PG-30429 | Footing and Pedestal Reinforcement works | 2026-04-07 → 2026-04-06 (-1d) |  |  |  |
| PG-30430 | Footing and Pedestal Concrete works |  | 2026-04-22 → 2026-04-21 (-1d) |  |  |
| PG-30431 | Fencing Retaining wall footing reinforcement works | 2026-04-22 → 2026-04-21 (-1d) |  |  |  |
| PG-30435 | Floor Aggregates spreading works |  | 2026-06-02 → 2026-06-01 (-1d) |  |  |
| 1.3.9.1.2 | **Transformer Yard Electrical works** | 2026-08-11 → 2026-08-10 (-1d) | 2026-09-28 → 2026-09-26 (-2d) |  |  |
| 1.3.9.1.2.1 | **Transformer 01** | 2026-08-11 → 2026-08-10 (-1d) | 2026-09-28 → 2026-09-26 (-2d) |  |  |
| PG-30460 | Cable Trench works | 2026-08-11 → 2026-08-10 (-1d) |  |  |  |
| PG-30464 | Testing and commissioning works |  | 2026-09-28 → 2026-09-26 (-2d) |  |  |
| 1.4.6.2.1 | **Plumbing Works** |  | 2025-05-31 → 2025-06-02 (+2d) |  |  |
| PG-30697 | CP and Sanitary fixture works |  | 2025-05-31 → 2025-06-02 A (+2d) | 87% → 100% | 547.03d → none |
| PG-30700 | Sprinkler fixing and Testing Works |  |  | 26% → 51% | 305.83d → 305.46d |
| 1.6 | **Testing And Commissioning Works** |  | 2026-11-02 → 2026-10-31 (-2d) |  |  |
| 1.6.1 | **Building 1** |  | 2026-08-18 → 2026-08-17 (-1d) |  |  |
| 1.6.1.1.1 | **Units** |  | 2026-02-20 → 2026-02-21 (+1d) |  |  |
| PG-30738 | T&C - Floor 7 |  |  | 78% → 99% | 407.58d → 407.21d |
| PG-30739 | T&C - Floor 8 |  |  | 37% → 57% | 393.73d → 393.36d |
| PG-30740 | T&C - Floor 9 | 2025-06-02 A | 2025-07-05 → 2025-07-04 (-1d) | 0% → 15% | 381.83d → 382.15d |
| PG-30742 | T&C - Floor 11 | 2025-06-28 → 2025-07-02 (+4d) | 2025-08-02 → 2025-08-07 (+5d) |  | 357.93d → 353.91d |
| PG-30743 | T&C - Floor 12 |  | 2025-08-14 → 2025-08-16 (+2d) |  | 347.83d → 347.05d |

| ID | Task | Start | Finish | Complete | Total float |
| --- | --- | --- | --- | --- | --- |
| PG-30744 | T&C - Floor 13 | 2025-07-23 → 2025-07-24 (+1d) | 2025-08-27 → 2025-08-28 (+1d) |  | 338.71d → 337.38d |
| PG-30745 | T&C - Floor 14 | 2025-08-07 → 2025-08-08 (+1d) | 2025-09-10 → 2025-09-11 (+1d) |  | 326.05d → 324.71d |
| PG-30746 | T&C - Floor 15 | 2025-08-20 → 2025-08-18 (-2d) | 2025-09-22 → 2025-09-20 (-2d) |  | 316.14d → 317.4d |
| PG-30747 | T&C - Floor 16 | 2025-09-02 → 2025-09-03 (+1d) | 2025-10-06 → 2025-10-07 (+1d) |  | 305.14d → 303.8d |
| PG-30748 | T&C - Floor 17 | 2025-09-15 → 2025-09-16 (+1d) | 2025-10-18 → 2025-10-20 (+2d) |  | 294.14d → 292.8d |
| PG-30749 | T&C - Floor 18 | 2025-09-27 → 2025-09-29 (+2d) | 2025-10-31 → 2025-11-03 (+3d) |  | 283.14d → 281.8d |
| PG-30750 | T&C - Floor 19 | 2025-10-23 → 2025-10-24 (+1d) | 2025-11-26 → 2025-11-27 (+1d) |  | 262.14d → 260.8d |
| PG-30751 | T&C - Floor 20 | 2025-11-14 → 2025-11-15 (+1d) | 2025-12-17 → 2025-12-18 (+1d) |  | 242.97d → 241.63d |
| PG-30752 | T&C - Floor 21 | 2025-12-06 → 2025-12-08 (+2d) | 2026-01-08 → 2026-01-09 (+1d) |  | 223.97d → 222.63d |
| PG-30753 | T&C - Floor 22 | 2025-12-29 → 2025-12-30 (+1d) | 2026-02-02 → 2026-02-03 (+1d) |  | 203.97d → 202.63d |
| PG-30754 | T&C - Floor 23 | 2026-01-17 → 2026-01-19 (+2d) | 2026-02-20 → 2026-02-21 (+1d) |  | 187.97d → 186.63d |
| 1.6.1.1.2 | **Common Areas** | 2025-10-06 → 2025-10-07 (+1d) |  |  |  |
| PG-30755 | T&C - Internal Electrical Works | 2025-10-06 → 2025-10-07 (+1d) | 2025-10-21 → 2025-10-22 (+1d) |  | 263.64d → 262.3d |
| PG-30756 | T&C - Internal FPS Works | 2025-10-06 → 2025-10-07 (+1d) | 2025-10-21 → 2025-10-22 (+1d) |  | 263.31d → 261.96d |
| PG-30757 | T&C - Data & Communication Works | 2025-10-11 → 2025-10-13 (+2d) | 2025-10-27 → 2025-10-28 (+1d) |  | 258.31d → 256.96d |
| PG-30761 | T&C - Lightining Arrestor works | 2025-12-16 → 2025-12-17 (+1d) | 2025-12-23 → 2025-12-24 (+1d) |  | 252.14d → 250.8d |
| PG-30760 | T&C - Electrical Panel Works | 2026-02-26 → 2026-02-24 (-2d) | 2026-03-23 → 2026-03-20 (-3d) |  | 133.64d → 134.9d |
| 1.6.1.2 | **Tower 2** |  | 2026-05-12 → 2026-05-11 (-1d) |  |  |
| 1.6.1.2.1 | **Units** |  | 2026-04-03 → 2026-04-02 (-1d) |  |  |
| PG-30769 | T&C - Floor 7 |  | 2025-06-04 → 2025-06-05 A (+1d) | 85% → 100% | 409.41d → none |
| PG-30770 | T&C - Floor 8 |  |  | 33% → 54% | 393.85d → 393.48d |
| PG-30771 | T&C - Floor 9 | 2025-05-31 A | 2025-07-03 → 2025-07-02 (-1d) | 0% → 21% | 383.08d → 383.87d |
| PG-30773 | T&C - Floor 11 | 2025-06-28 → 2025-07-02 (+4d) | 2025-08-02 → 2025-08-06 (+4d) |  | 358.6d → 355.01d |
| PG-30774 | T&C - Floor 12 | 2025-07-12 → 2025-07-11 (-1d) | 2025-08-16 → 2025-08-14 (-2d) |  | 347.17d → 347.56d |
| PG-30776 | T&C - Floor 14 | 2025-08-08 → 2025-08-09 (+1d) | 2025-09-12 → 2025-09-13 (+1d) |  | 324.28d → 323.3d |
| PG-30778 | T&C - Floor 16 | 2025-09-03 → 2025-09-02 (-1d) | 2025-10-08 → 2025-10-07 (-1d) |  | 303.42d → 303.8d |
| PG-30779 | T&C - Floor 17 | 2025-09-16 → 2025-09-15 (-1d) | 2025-10-21 → 2025-10-20 (-1d) |  | 292.42d → 292.8d |
| PG-30780 | T&C - Floor 18 | 2025-09-30 → 2025-09-29 (-1d) | 2025-11-06 → 2025-11-05 (-1d) |  | 280.58d → 280.96d |
| PG-30781 | T&C - Floor 19 | 2025-10-14 → 2025-10-13 (-1d) | 2025-11-19 → 2025-11-18 (-1d) |  | 269.58d → 269.96d |
| PG-30782 | T&C - Floor 20 | 2025-10-28 → 2025-10-27 (-1d) | 2025-12-03 → 2025-12-02 (-1d) |  | 257.58d → 257.96d |
| PG-30783 | T&C - Floor 21 | 2025-11-10 → 2025-11-08 (-2d) |  |  | 247.92d → 248.3d |
| PG-30784 | T&C - Floor 22 | 2025-12-02 → 2025-12-01 (-1d) |  |  | 228.08d → 228.46d |
| PG-30785 | T&C - Floor 23 |  | 2026-01-27 → 2026-01-24 (-3d) |  | 210.08d → 210.46d |
| PG-30786 | T&C - Floor 24 | 2026-01-12 → 2026-01-10 (-2d) |  |  | 190.92d → 191.3d |
| PG-30787 | T&C - Floor 25 |  | 2026-03-12 → 2026-03-11 (-1d) |  | 171.42d → 171.8d |
| PG-30788 | T&C - Floor 26 | 2026-02-26 → 2026-02-25 (-1d) | 2026-04-03 → 2026-04-02 (-1d) |  | 123.92d → 124.3d |
| 1.6.1.2.2 | **Common Areas** | 2025-11-15 → 2025-11-14 (-1d) | 2026-05-12 → 2026-05-11 (-1d) |  |  |
| PG-30790 | T&C - Internal FPS Works | 2025-11-15 → 2025-11-14 (-1d) |  |  | 227.08d → 227.46d |
| PG-30789 | T&C - Internal Electrical Works | 2025-11-15 → 2025-11-14 (-1d) |  |  | 227.25d → 227.63d |
| PG-30791 | T&C - Data & Communication Works | 2025-11-21 → 2025-11-20 (-1d) | 2025-12-09 → 2025-12-08 (-1d) |  | 221.75d → 222.13d |
| PG-30792 | T&C - Internal PHE Works including OHT | 2025-12-25 → 2025-12-24 (-1d) | 2026-01-19 → 2026-01-17 (-2d) |  | 185.92d → 186.3d |
| PG-30795 | T&C - Lightining Arrestor works | 2026-01-27 → 2026-01-24 (-3d) | 2026-02-03 → 2026-02-02 (-1d) |  | 220.08d → 220.46d |
| PG-30793 | T&C - Lift Works | 2026-04-20 → 2026-04-18 (-2d) | 2026-05-12 → 2026-05-11 (-1d) |  | 120.58d → 120.96d |
| 1.6.1.3 | **Tower 3** |  | 2026-08-18 → 2026-08-17 (-1d) |  |  |
| PG-30799 | T&C - Floor 3 |  |  | 53% → 73% | 398.88d → 398.51d |
| PG-30800 | T&C - Floor 4 |  |  | 28% → 48% | 390.96d → 390.59d |
| PG-30803 | T&C - Floor 7 | 2025-07-07 → 2025-07-08 (+1d) | 2025-08-08 → 2025-08-11 (+3d) |  | 353.17d → 351.08d |
| PG-30804 | T&C - Floor 8 | 2025-07-23 → 2025-07-24 (+1d) | 2025-08-27 → 2025-08-28 (+1d) |  | 337.9d → 336.38d |
| PG-30801 | T&C - Floor 5 | 2025-08-12 → 2025-08-11 (-1d) | 2025-09-16 → 2025-09-15 (-1d) |  | 321.08d → 321.79d |
| PG-30806 | T&C - Floor 10 | 2025-08-23 → 2025-08-25 (+2d) | 2025-09-27 → 2025-09-29 (+2d) |  | 311.17d → 310.05d |
| PG-30816 | T&C - Floor 20 |  | 2026-02-07 → 2026-02-06 (-1d) |  |  |
| PG-30811 | T&C - Floor 15 | 2026-01-14 → 2026-01-13 (-1d) | 2026-02-19 → 2026-02-18 (-1d) |  | 190.08d → 190.79d |
| PG-30817 | T&C - Floor 21 |  | 2026-02-20 → 2026-02-19 (-1d) |  |  |
| PG-30818 | T&C - Floor 22 |  | 2026-03-05 → 2026-03-04 (-1d) |  |  |
| PG-30819 | T&C - Floor 23 | 2026-02-11 → 2026-02-10 (-1d) |  |  |  |
| PG-30820 | T&C - Floor 24 |  | 2026-03-31 → 2026-03-30 (-1d) |  |  |
| PG-30821 | T&C - Floor 25 |  | 2026-04-21 → 2026-04-20 (-1d) |  |  |
| PG-30825 | T&C - Floor 29 | 2026-06-12 → 2026-06-11 (-1d) |  |  |  |
| 1.6.1.3.2 | **Common Areas** |  | 2026-08-18 → 2026-08-17 (-1d) |  |  |
| PG-30826 | T&C - Internal Electrical Works |  | 2026-03-18 → 2026-03-17 (-1d) |  |  |
| PG-30828 | T&C - Data & Communication Works |  | 2026-03-24 → 2026-03-23 (-1d) |  |  |
| PG-30829 | T&C - Internal PHE Works including OHT | 2026-04-09 → 2026-04-08 (-1d) |  |  |  |
| PG-30832 | T&C - Lightining Arrestor works | 2026-05-09 → 2026-05-08 (-1d) |  |  |  |
| PG-30831 | T&C - Electrical Panel Works | 2026-07-22 → 2026-07-21 (-1d) | 2026-08-18 → 2026-08-17 (-1d) |  | 48.42d → 49.12d |
| 1.6.9 | **Project InfraStructure Works ( Services & MEP )** |  | 2026-11-02 → 2026-10-31 (-2d) |  |  |
| 1.6.9.1 | **Transformer Works** | 2026-09-28 → 2026-09-26 (-2d) | 2026-11-02 → 2026-10-31 (-2d) |  |  |
| PG-31514 | T&C - Transformer 01 ( Building 01 & 02 ) | 2026-09-28 → 2026-09-26 (-2d) | 2026-11-02 → 2026-10-31 (-2d) |  |  |
| 1.7.1.1.1 | **Units** |  | 2026-03-28 → 2026-03-30 (+2d) |  |  |
| PG-31539 | Floor 5 |  |  | 63% → 83% | 432.58d → 432.21d |
| PG-31540 | Floor 6 |  |  | 19% → 39% | 419.35d → 418.98d |

| ID | Task | Start | Finish | Complete | Total float |
| --- | --- | --- | --- | --- | --- |
| PG-31543 | Floor 9 | 2025-07-05 → 2025-07-04 (-1d) |  |  | 381.83d → 382.15d |
| PG-31545 | Floor 11 | 2025-08-02 → 2025-08-07 (+5d) | 2025-09-08 → 2025-09-12 (+4d) |  | 357.93d → 353.91d |
| PG-31546 | Floor 12 | 2025-08-14 → 2025-08-16 (+2d) | 2025-09-19 → 2025-09-20 (+1d) |  | 347.83d → 347.05d |
| PG-31547 | Floor 13 | 2025-08-27 → 2025-08-28 (+1d) | 2025-09-30 → 2025-10-01 (+1d) |  | 338.71d → 337.38d |
| PG-31548 | Floor 14 | 2025-09-10 → 2025-09-11 (+1d) | 2025-10-16 → 2025-10-17 (+1d) |  | 326.05d → 324.71d |
| PG-31549 | Floor 15 | 2025-09-22 → 2025-09-20 (-2d) | 2025-10-28 → 2025-10-25 (-3d) |  | 316.14d → 317.4d |
| PG-31550 | Floor 16 | 2025-10-06 → 2025-10-07 (+1d) | 2025-11-11 → 2025-11-12 (+1d) |  | 305.14d → 303.8d |
| PG-31551 | Floor 17 | 2025-10-18 → 2025-10-20 (+2d) | 2025-11-24 → 2025-11-25 (+1d) |  | 294.14d → 292.8d |
| PG-31552 | Floor 18 | 2025-10-31 → 2025-11-03 (+3d) | 2025-12-06 → 2025-12-08 (+2d) |  | 283.14d → 281.8d |
| PG-31553 | Floor 19 | 2025-11-26 → 2025-11-27 (+1d) | 2025-12-31 → 2026-01-01 (+1d) |  | 262.14d → 260.8d |
| PG-31554 | Floor 20 | 2025-12-17 → 2025-12-18 (+1d) | 2026-01-22 → 2026-01-23 (+1d) |  | 242.97d → 241.63d |
| PG-31555 | Floor 21 | 2026-01-08 → 2026-01-09 (+1d) | 2026-02-14 → 2026-02-16 (+2d) |  | 223.97d → 222.63d |
| PG-31556 | Floor 22 | 2026-02-02 → 2026-02-03 (+1d) | 2026-03-10 → 2026-03-11 (+1d) |  | 203.97d → 202.63d |
| PG-31557 | Floor 23 | 2026-02-20 → 2026-02-21 (+1d) | 2026-03-28 → 2026-03-30 (+2d) |  | 187.97d → 186.63d |
| 1.7.1.1.2 | **Common Areas** | 2025-10-21 → 2025-10-22 (+1d) |  |  |  |
| PG-31559 | Internal Electrical Works | 2025-10-21 → 2025-10-22 (+1d) | 2025-12-29 → 2025-12-30 (+1d) |  | 263.64d → 262.3d |
| PG-31560 | Internal FPS Works | 2025-10-21 → 2025-10-22 (+1d) | 2025-12-30 → 2025-12-31 (+1d) |  | 263.31d → 261.96d |
| PG-31561 | Data & Communication Works | 2025-10-27 → 2025-10-28 (+1d) | 2026-01-05 → 2026-01-06 (+1d) |  | 258.31d → 256.96d |
| PG-31565 | Lightining Arrestor works | 2025-12-23 → 2025-12-24 (+1d) | 2026-01-12 → 2026-01-13 (+1d) |  | 252.14d → 250.8d |
| PG-31564 | Electrical Panel Works | 2026-03-23 → 2026-03-20 (-3d) | 2026-05-30 → 2026-05-29 (-1d) |  | 133.64d → 134.9d |
| 1.7.1.2 | **Tower 2** |  | 2026-10-19 → 2026-10-17 (-2d) |  |  |
| PG-31570 | Floor 4 |  | 2025-05-30 → 2025-05-31 A (+1d) | 97% → 100% | 442.58d → none |
| PG-31571 | Floor 5 |  |  | 66% → 86% | 433.17d → 432.8d |
| PG-31572 | Floor 6 |  |  | 10% → 30% | 416.64d → 416.27d |
| PG-31573 | Floor 7 | 2025-06-04 → 2025-06-05 A (+1d) |  | 0% → 3% | 409.41d → 408.27d |
| PG-31575 | Floor 9 | 2025-07-03 → 2025-07-02 (-1d) | 2025-08-08 → 2025-08-07 (-1d) |  | 383.08d → 383.87d |
| PG-31577 | Floor 11 | 2025-08-02 → 2025-08-06 (+4d) | 2025-09-06 → 2025-09-11 (+5d) |  | 358.6d → 355.01d |
| PG-31578 | Floor 12 | 2025-08-16 → 2025-08-14 (-2d) | 2025-09-20 → 2025-09-19 (-1d) |  | 347.17d → 347.56d |
| PG-31579 | Floor 13 |  | 2025-10-03 → 2025-10-04 (+1d) |  | 336.74d → 336.15d |
| PG-31580 | Floor 14 | 2025-09-12 → 2025-09-13 (+1d) |  |  | 324.28d → 323.3d |
| PG-31582 | Floor 16 | 2025-10-08 → 2025-10-07 (-1d) | 2025-11-13 → 2025-11-12 (-1d) |  | 303.42d → 303.8d |
| PG-31583 | Floor 17 | 2025-10-21 → 2025-10-20 (-1d) | 2025-11-26 → 2025-11-25 (-1d) |  | 292.42d → 292.8d |
| PG-31584 | Floor 18 | 2025-11-06 → 2025-11-05 (-1d) |  |  | 280.58d → 280.96d |
| PG-31585 | Floor 19 | 2025-11-19 → 2025-11-18 (-1d) |  |  | 269.58d → 269.96d |
| PG-31586 | Floor 20 | 2025-12-03 → 2025-12-02 (-1d) |  |  | 257.58d → 257.96d |
| PG-31587 | Floor 21 | 2025-12-15 → 2025-12-13 (-2d) | 2026-01-16 → 2026-01-15 (-1d) |  | 247.92d → 248.3d |
| PG-31588 | Floor 22 |  | 2026-02-10 → 2026-02-09 (-1d) |  | 228.08d → 228.46d |
| PG-31589 | Floor 23 | 2026-01-27 → 2026-01-24 (-3d) | 2026-03-03 → 2026-03-02 (-1d) |  | 210.08d → 210.46d |
| PG-31590 | Floor 24 | 2026-02-18 → 2026-02-17 (-1d) | 2026-03-25 → 2026-03-24 (-1d) |  | 190.92d → 191.3d |
| PG-31591 | Floor 25 | 2026-03-12 → 2026-03-11 (-1d) | 2026-04-17 → 2026-04-16 (-1d) |  | 171.42d → 171.8d |
| PG-31592 | Floor 26 | 2026-04-03 → 2026-04-02 (-1d) |  |  | 153.58d → 153.96d |
| 1.7.1.2.2 | **Comman Areas** |  | 2026-10-19 → 2026-10-17 (-2d) |  |  |
| PG-31595 | Internal FPS Works |  | 2026-02-11 → 2026-02-10 (-1d) |  | 227.08d → 227.46d |
| PG-31596 | Data & Communication Works | 2025-12-09 → 2025-12-08 (-1d) |  |  | 221.75d → 222.13d |
| PG-31597 | Internal PHE Works including OHT | 2026-01-19 → 2026-01-17 (-2d) | 2026-03-31 → 2026-03-30 (-1d) |  | 185.92d → 186.3d |
| PG-31600 | Lightining Arrestor works | 2026-02-03 → 2026-02-02 (-1d) | 2026-02-19 → 2026-02-18 (-1d) |  | 220.08d → 220.46d |
| PG-31594 | Internal Electrical Works | 2026-04-03 → 2026-04-02 (-1d) | 2026-06-11 → 2026-06-10 (-1d) |  | 123.92d → 124.3d |
| PG-31598 | Lift Works | 2026-05-12 → 2026-05-11 (-1d) |  |  | 120.58d → 120.96d |
| PG-31593 | Common Area Civil Works |  | 2026-10-19 → 2026-10-17 (-2d) |  | 15.08d → 15.46d |
| PG-31601 | Ground Floor |  | 2025-05-30 → 2025-05-31 A (+1d) |  | 443.56d → none |
| PG-31602 | Floor 1 |  |  | 51% → 71% | 428.59d → 428.22d |
| PG-31603 | Floor 2 |  |  | 14% → 33% | 416.31d → 415.94d |
| PG-31608 | Floor 7 | 2025-08-08 → 2025-08-11 (+3d) | 2025-09-13 → 2025-09-16 (+3d) |  | 353.17d → 351.08d |
| PG-31609 | Floor 8 | 2025-08-27 → 2025-08-28 (+1d) | 2025-10-01 → 2025-10-03 (+2d) |  | 337.9d → 336.38d |
| PG-31606 | Floor 5 | 2025-09-16 → 2025-09-15 (-1d) | 2025-10-22 → 2025-10-21 (-1d) |  | 321.08d → 321.79d |
| PG-31611 | Floor 10 | 2025-09-27 → 2025-09-29 (+2d) | 2025-11-04 → 2025-11-05 (+1d) |  | 311.17d → 310.05d |
| PG-31612 | Floor 11 |  | 2025-11-17 → 2025-11-15 (-2d) |  |  |
| PG-31614 | Floor 13 |  | 2025-12-15 → 2025-12-13 (-2d) |  |  |
| PG-31615 | Floor 14 |  | 2025-12-25 → 2025-12-24 (-1d) |  |  |
| PG-31617 | Floor 16 |  | 2026-01-20 → 2026-01-19 (-1d) |  |  |
| PG-31618 | Floor 17 |  | 2026-02-03 → 2026-02-02 (-1d) |  |  |
| PG-31619 | Floor 18 |  | 2026-02-16 → 2026-02-14 (-2d) |  |  |
| PG-31620 | Floor 19 |  | 2026-02-28 → 2026-02-27 (-1d) |  |  |
| PG-31621 | Floor 20 | 2026-02-07 → 2026-02-06 (-1d) |  |  |  |
| PG-31616 | Floor 15 | 2026-02-19 → 2026-02-18 (-1d) | 2026-03-26 → 2026-03-25 (-1d) |  | 190.08d → 190.79d |
| PG-31622 | Floor 21 | 2026-02-20 → 2026-02-19 (-1d) |  |  |  |
| PG-31623 | Floor 22 | 2026-03-05 → 2026-03-04 (-1d) |  |  |  |
| PG-31625 | Floor 24 | 2026-03-31 → 2026-03-30 (-1d) |  |  |  |
| PG-31626 | Floor 25 | 2026-04-21 → 2026-04-20 (-1d) |  |  |  |
| PG-31627 | Floor 26 |  | 2026-06-18 → 2026-06-17 (-1d) |  |  |

| ID | Task | Start | Finish | Total float |
| --- | --- | --- | --- | --- |
| PG-31628 | Floor 27 |  | 2026-07-09 → 2026-07-08 (-1d) |  |
| PG-31629 | Floor 28 |  | 2026-07-30 → 2026-07-29 (-1d) |  |
| 1.7.1.3.2 | **Common Areas** | 2026-03-18 → 2026-03-17 (-1d) |  |  |
| PG-31632 | Internal Electrical Works | 2026-03-18 → 2026-03-17 (-1d) |  |  |
| PG-31633 | Internal FPS Works |  | 2026-04-06 → 2026-04-04 (-2d) |  |
| PG-31634 | Data & Communication Works | 2026-03-24 → 2026-03-23 (-1d) |  |  |
| PG-31635 | Internal PHE Works including OHT |  | 2026-05-26 → 2026-05-25 (-1d) |  |
| PG-31637 | Electrical Panel Works | 2026-08-18 → 2026-08-17 (-1d) | 2026-09-09 → 2026-09-08 (-1d) | 48.42d → 49.12d |
| 1.7.9.1 | **Transformer Works** | 2026-11-02 → 2026-10-31 (-2d) |  |  |
| PG-32336 | Transformer 01 ( Building 01 & 02 ) | 2026-11-02 → 2026-10-31 (-2d) |  |  |
| 1.8 | **Handing Over** |  | 2027-02-13 → 2027-02-12 (-1d) |  |
| PG-32378 | Building 1 |  | 2026-11-17 → 2026-11-16 (-1d) |  |
| PG-32386 | Project InfraStructure Works ( Services & MEP ) |  | 2027-02-13 → 2027-02-12 (-1d) |  |
| PG-32394 | CEIG Approval - Lift | 2026-11-17 → 2026-11-16 (-1d) |  |  |
| MS-1001 | Tower 1 - Structure Complete | 2025-08-18 → 2025-08-19 (+1d) | 2025-08-18 → 2025-08-19 (+1d) | 480.81d → 479.46d |
| MS-0105 | Electrical Panels Delivered | 2025-08-25 → 2025-08-22 (-3d) | 2025-08-25 → 2025-08-22 (-3d) | 475.14d → 476.4d |
| MS-2001 | Tower 2 - Structure Complete | 2025-09-27 → 2025-09-26 (-1d) | 2025-09-27 → 2025-09-26 (-1d) | 445.75d → 446.13d |
| MS-1002 | Tower 1 - MEP 1st Fix Complete | 2025-11-22 → 2025-11-24 (+2d) | 2025-11-22 → 2025-11-24 (+2d) | 399.81d → 398.46d |
| MS-1003 | Tower 1 - MEP 2nd Fix Complete | 2025-12-27 → 2025-12-29 (+2d) | 2025-12-27 → 2025-12-29 (+2d) | 369.81d → 368.46d |
| MS-2002 | Tower 2 - MEP 1st Fix Complete | 2025-12-30 → 2025-12-29 (-1d) | 2025-12-30 → 2025-12-29 (-1d) | 368.08d → 368.46d |
| MS-1005 | Tower 1 - MEP Final Fix Complete | 2026-01-17 → 2026-01-19 (+2d) | 2026-01-17 → 2026-01-19 (+2d) | 352.31d → 350.96d |
| MS-2003 | Tower 2 - MEP 2nd Fix Complete | 2026-02-04 → 2026-02-03 (-1d) | 2026-02-04 → 2026-02-03 (-1d) | 338.25d → 338.63d |
| MS-2005 | Tower 2 - MEP Final Fix Complete | 2026-02-26 → 2026-02-25 (-1d) | 2026-02-26 → 2026-02-25 (-1d) | 318.92d → 319.3d |
| MS-2004 | Tower 2 - Internal Finishes Complete | 2026-03-23 → 2026-03-21 (-2d) | 2026-03-23 → 2026-03-21 (-2d) | 297.92d → 298.3d |
| MS-2007 | Tower 2 - T&C Complete | 2026-05-12 → 2026-05-11 (-1d) | 2026-05-12 → 2026-05-11 (-1d) | 254.92d → 255.3d |
| MS-3005 | Tower 3 - MEP Final Fix Complete | 2026-06-12 → 2026-06-11 (-1d) | 2026-06-12 → 2026-06-11 (-1d) |  |
| MS-0103 | Transformer Delivered to Site | 2026-07-30 → 2026-07-29 (-1d) | 2026-07-30 → 2026-07-29 (-1d) |  |
| MS-9007 | Landscape Complete | 2026-08-11 → 2026-08-10 (-1d) | 2026-08-11 → 2026-08-10 (-1d) |  |
| MS-3007 | Tower 3 - T&C Complete | 2026-08-18 → 2026-08-17 (-1d) | 2026-08-18 → 2026-08-17 (-1d) | 172.08d → 172.79d |
| MS-9002 | Transformer Charged | 2026-11-02 → 2026-10-31 (-2d) | 2026-11-02 → 2026-10-31 (-2d) |  |
| MS-9999 | Project Finish / Handover | 2027-02-13 → 2027-02-12 (-1d) | 2027-02-13 → 2027-02-12 (-1d) |  |

## Version 14 (data date 2025-06-13, saved 2026-09-20, file APX_2025-06-13.xer)

Last finish 2027-03-09 → 2027-03-10 (+1d). Complete tasks 1350 → 1391.

Changed:

| ID | Task | Start | Finish | Complete | Total float |
| --- | --- | --- | --- | --- | --- |
| 1 | **Project Genisis** |  | 2027-03-09 → 2027-03-10 (+1d) |  |  |
| PG-32433 | Project Close Out | 2027-03-03 → 2027-03-04 (+1d) | 2027-03-09 → 2027-03-10 (+1d) |  |  |
| 1.2 | **Procurement and Materials requirement to Site** |  | 2026-07-29 → 2026-07-30 (+1d) |  |  |
| 1.2.2 | **Tiles & Marble Supply** |  | 2026-07-03 → 2026-07-04 (+1d) |  |  |
| 1.2.2.1 | **Toilet dado and Floor tiles** |  | 2026-04-16 → 2026-04-17 (+1d) |  |  |
| PG-10006 | Second Consignment Supply to site ( 5th to 14th Floor ) |  | 2025-06-12 → 2025-06-13 A (+1d) | 44% → 100% | 49.12d → none |
| PG-10007 | Third Consignment Supply to site ( 15th to 29th Floor ) | 2025-11-03 → 2025-11-04 (+1d) |  |  | 49.12d → 49.92d |
| PG-10008 | Fourth Consignment Supply to site ( Balance Floor wise - 30th to 41st Floor ) |  | 2026-04-16 → 2026-04-17 (+1d) |  | 276.12d → 276.92d |
| 1.2.2.2 | **Vitrified Floor Tiles including corridor Flooring & Cladding** |  | 2026-07-03 → 2026-07-04 (+1d) |  |  |
| PG-10011 | Second Consignment Supply to site ( 5th to 14th Floor ) |  | 2025-06-07 → 2025-06-09 A (+2d) | 84% → 100% | 23.98d → none |
| PG-10012 | Third Consignment Supply to site ( 15th to 29th Floor ) | 2025-11-10 → 2025-11-11 (+1d) | 2025-11-21 → 2025-11-22 (+1d) |  | 23.98d → 24.17d |
| PG-10013 | Fourth Consignment Supply to site ( Balance Floor wise - 30th to 41st Floor ) | 2026-06-20 → 2026-06-22 (+2d) | 2026-07-03 → 2026-07-04 (+1d) |  | 23.98d → 24.17d |
| 1.2.6 | **Electrical Panel Supply** |  | 2025-08-22 → 2025-08-23 (+1d) |  |  |
| PG-10032 | Materials Supply to site | 2025-07-18 → 2025-07-21 (+3d) | 2025-08-22 → 2025-08-23 (+1d) |  | 143.57d → 143.75d |
| 1.2.8 | **Transformer Supply** | 2026-02-28 → 2026-03-02 (+2d) | 2026-07-29 → 2026-07-30 (+1d) |  |  |
| PG-10035 | Purchase Order works | 2026-02-28 → 2026-03-02 (+2d) | 2026-03-11 → 2026-03-12 (+1d) |  |  |
| PG-10036 | Materials Supply to site | 2026-06-25 → 2026-06-26 (+1d) | 2026-07-29 → 2026-07-30 (+1d) |  |  |
| 1.3 | **Construction** |  | 2026-10-19 → 2026-10-20 (+1d) |  |  |
| 1.3.1 | **Building 1** |  | 2026-10-19 → 2026-10-20 (+1d) |  |  |
| 1.3.1.1 | **Tower 1 ( 2B+G+23 ) TYP 4 Units - 94 Units** |  | 2026-07-27 → 2026-07-28 (+1d) |  |  |
| 1.3.1.1.2 | **Structure works** |  | 2025-08-19 → 2025-08-18 (-1d) |  |  |
| PG-10177 | Formwork |  | 2025-06-07 A | 82% → 100% | 45.96d → none |
| PG-10178 | Formwork |  | 2025-06-10 A | 13% → 100% | 45.96d → none |
| PG-10179 | Reinforcement | 2025-06-09 A | 2025-06-12 A | 0% → 100% | 45.96d → none |
| PG-10180 | Concrete | 2025-06-12 A | 2025-06-13 A | 0% → 100% | 45.96d → none |
| 1.3.1.1.2.25 | **Floor 22** |  | 2025-06-26 → 2025-06-25 (-1d) |  |  |
| 1.3.1.1.2.25.1 | **Columns / shear walls** |  | 2025-06-20 → 2025-06-19 (-1d) |  |  |
| PG-10181 | Reinforcement | 2025-06-13 A | 2025-06-18 → 2025-06-17 (-1d) | 0% → 17% | 45.96d → 48.45d |
| PG-10182 | Formwork | 2025-06-16 → 2025-06-14 (-2d) | 2025-06-20 → 2025-06-19 (-1d) |  | 45.96d → 48.45d |
| 1.3.1.1.2.25.2 | **Slab, Beams & Staircase** | 2025-06-19 → 2025-06-18 (-1d) | 2025-06-26 → 2025-06-25 (-1d) |  |  |
| PG-10183 | Formwork | 2025-06-19 → 2025-06-18 (-1d) | 2025-06-23 → 2025-06-21 (-2d) |  | 45.96d → 48.45d |
| PG-10184 | Reinforcement | 2025-06-21 → 2025-06-20 (-1d) | 2025-06-25 → 2025-06-24 (-1d) |  | 45.96d → 48.45d |
| PG-10185 | Concrete | 2025-06-25 → 2025-06-24 (-1d) | 2025-06-26 → 2025-06-25 (-1d) |  | 45.96d → 48.45d |
| 1.3.1.1.2.26 | **Floor 23** | 2025-06-26 → 2025-06-25 (-1d) | 2025-07-09 → 2025-07-08 (-1d) |  |  |
| 1.3.1.1.2.26.1 | **Columns / shear walls** | 2025-06-26 → 2025-06-25 (-1d) | 2025-07-03 → 2025-07-02 (-1d) |  |  |
| PG-10186 | Reinforcement | 2025-06-26 → 2025-06-25 (-1d) | 2025-07-01 → 2025-06-30 (-1d) |  | 45.96d → 48.45d |
| PG-10187 | Formwork | 2025-06-28 → 2025-06-27 (-1d) | 2025-07-03 → 2025-07-02 (-1d) |  | 45.96d → 48.45d |
| 1.3.1.1.2.26.2 | **Slab, Beams & Staircase** | 2025-07-02 → 2025-07-01 (-1d) | 2025-07-09 → 2025-07-08 (-1d) |  |  |
| PG-10188 | Formwork | 2025-07-02 → 2025-07-01 (-1d) | 2025-07-05 → 2025-07-04 (-1d) |  | 45.96d → 48.45d |
| PG-10189 | Reinforcement | 2025-07-04 → 2025-07-03 (-1d) | 2025-07-08 → 2025-07-07 (-1d) |  | 45.96d → 48.45d |
| PG-10190 | Concrete | 2025-07-08 → 2025-07-07 (-1d) | 2025-07-09 → 2025-07-08 (-1d) |  | 45.96d → 48.45d |
| 1.3.1.1.2.27 | **Above Terrace Floor** | 2025-07-09 → 2025-07-08 (-1d) | 2025-08-19 → 2025-08-18 (-1d) |  |  |
| 1.3.1.1.2.27.1 | **Columns / shear walls/Parapet Walls** | 2025-07-09 → 2025-07-08 (-1d) | 2025-07-23 → 2025-07-22 (-1d) |  |  |
| PG-10191 | Reinforcement | 2025-07-09 → 2025-07-08 (-1d) | 2025-07-14 → 2025-07-12 (-2d) |  | 123.46d → 125.95d |
| PG-10192 | Formwork | 2025-07-11 → 2025-07-10 (-1d) | 2025-07-17 → 2025-07-16 (-1d) |  | 123.46d → 125.95d |
| PG-10193 | Concrete | 2025-07-17 → 2025-07-16 (-1d) | 2025-07-23 → 2025-07-22 (-1d) |  | 123.46d → 125.95d |
| 1.3.1.1.2.27.2 | **Slab, Beams & Staircase Head rooms, Lift headroom** | 2025-07-14 → 2025-07-12 (-2d) | 2025-08-19 → 2025-08-18 (-1d) |  |  |
| PG-10197 | Terrace Waterproofing and Protective finishing. | 2025-07-14 → 2025-07-12 (-2d) | 2025-08-19 → 2025-08-18 (-1d) |  | 248.63d → 251.12d |
| PG-10194 | Formwork | 2025-07-23 → 2025-07-22 (-1d) | 2025-07-29 → 2025-07-28 (-1d) |  | 248.63d → 251.12d |
| PG-10195 | Reinforcement | 2025-07-29 → 2025-07-28 (-1d) | 2025-08-04 → 2025-08-02 (-2d) |  | 248.63d → 251.12d |
| PG-10196 | Concrete | 2025-08-04 → 2025-08-02 (-2d) | 2025-08-06 → 2025-08-05 (-1d) |  | 248.63d → 251.12d |
| 1.3.1.1.3 | **MEP Internal works** |  | 2026-01-19 → 2026-01-16 (-3d) |  |  |
| 1.3.1.1.3.13 | **Floor 10** |  | 2025-06-16 → 2025-06-17 (+1d) |  |  |
| 1.3.1.1.3.13.1 | **PHE Works** |  | 2025-06-16 → 2025-06-17 (+1d) |  |  |
| PG-10297 | Final Fix - CP & Sanitary fixtures |  | 2025-06-16 → 2025-06-17 (+1d) | 32% → 92% | 368.66d → 368.83d |
| 1.3.1.1.3.13.2 | **Fire Fighting Works** |  | 2025-06-16 → 2025-06-13 (-3d) |  |  |
| PG-10300 | Final Fix - Smoke & heat detectors, FHC , FAS Etc. |  | 2025-06-16 → 2025-06-13 A (-3d) | 41% → 100% | 368.66d → none |
| 1.3.1.1.3.13.3 | **Electrical Works** |  | 2025-06-16 → 2025-06-17 (+1d) |  |  |
| PG-10303 | Final Fix - Electrical Fixtures | 2025-06-09 → 2025-06-10 A (+1d) | 2025-06-16 → 2025-06-17 (+1d) | 0% → 77% | 368.66d → 368.83d |
| 1.3.1.1.3.14 | **Floor 11** |  | 2025-07-02 → 2025-07-03 (+1d) |  |  |
| 1.3.1.1.3.14.1 | **PHE Works** |  | 2025-07-02 → 2025-07-03 (+1d) |  |  |
| PG-10306 | Final Fix - CP & Sanitary fixtures | 2025-06-21 → 2025-06-23 (+2d) | 2025-07-02 → 2025-07-03 (+1d) |  | 353.91d → 354.09d |
| 1.3.1.1.3.14.2 | **Fire Fighting Works** |  | 2025-07-02 → 2025-07-03 (+1d) |  |  |
| PG-10309 | Final Fix - Smoke & heat detectors, FHC , FAS Etc. | 2025-06-21 → 2025-06-23 (+2d) | 2025-07-02 → 2025-07-03 (+1d) |  | 353.91d → 354.09d |
| 1.3.1.1.3.14.3 | **Electrical Works** |  | 2025-07-02 → 2025-07-03 (+1d) |  |  |
| PG-10311 | 2nd Fix - Wiring works |  | 2025-06-07 A |  | 369.71d → none |
| PG-10312 | Final Fix - Electrical Fixtures | 2025-06-26 → 2025-06-27 (+1d) | 2025-07-02 → 2025-07-03 (+1d) |  | 353.91d → 354.09d |
| PG-10317 | 2nd Fix - Sprinkler fixing & Pressure testing | 2025-06-10 → 2025-06-12 A (+2d) | 2025-06-21 → 2025-06-23 (+2d) | 0% → 31% | 354.71d → 355.62d |
| PG-10320 | 2nd Fix - Wiring works |  | 2025-06-20 → 2025-06-21 (+1d) | 25% → 65% | 359.71d → 360.62d |
| 1.3.1.1.3.17 | **Floor 14** |  | 2025-08-08 → 2025-08-06 (-2d) |  |  |

| ID | Task | Start | Finish | Complete | Total float |
| --- | --- | --- | --- | --- | --- |
| 1.3.1.1.3.17.1 | **PHE Works** |  | 2025-08-08 → 2025-08-06 (-2d) |  |  |
| PG-10332 | 2nd Fix - diverter fixing & Pressure testing |  | 2025-06-09 → 2025-06-07 A (-2d) | 94% → 100% | 324.71d → none |
| PG-10333 | Final Fix - CP & Sanitary fixtures | 2025-07-28 → 2025-07-26 (-2d) | 2025-08-08 → 2025-08-06 (-2d) |  | 324.71d → 327.54d |
| 1.3.1.1.3.17.2 | **Fire Fighting Works** |  | 2025-08-08 → 2025-08-06 (-2d) |  |  |
| PG-10334 | 1st Fix - Piping and Shaft hydrant works |  | 2025-06-10 → 2025-06-09 A (-1d) | 88% → 100% | 372.05d → none |
| PG-10335 | 2nd Fix - Sprinkler fixing & Pressure testing | 2025-07-04 → 2025-07-03 (-1d) | 2025-07-16 → 2025-07-15 (-1d) |  | 334.71d → 337.54d |
| PG-10336 | Final Fix - Smoke & heat detectors, FHC , FAS Etc. | 2025-07-28 → 2025-07-26 (-2d) | 2025-08-08 → 2025-08-06 (-2d) |  | 324.71d → 327.54d |
| 1.3.1.1.3.17.3 | **Electrical Works** |  | 2025-08-08 → 2025-08-06 (-2d) |  |  |
| PG-10338 | 2nd Fix - Wiring works | 2025-06-27 → 2025-06-26 (-1d) | 2025-07-15 → 2025-07-14 (-1d) |  | 339.71d → 342.54d |
| PG-10339 | Final Fix - Electrical Fixtures | 2025-08-01 → 2025-07-31 (-1d) | 2025-08-08 → 2025-08-06 (-2d) |  | 324.71d → 327.54d |
| 1.3.1.1.3.18 | **Floor 15** |  | 2025-08-18 → 2025-08-19 (+1d) |  |  |
| 1.3.1.1.3.18.1 | **PHE Works** |  | 2025-08-18 → 2025-08-19 (+1d) |  |  |
| PG-10340 | 1st Fix - Piping works |  | 2025-06-11 → 2025-06-12 A (+1d) | 58% → 100% | 134.9d → none |
| PG-10341 | 2nd Fix - diverter fixing & Pressure testing | 2025-06-06 → 2025-06-07 A (+1d) | 2025-06-18 → 2025-06-19 (+1d) | 0% → 66% | 134.9d → 135.08d |
| PG-10342 | Final Fix - CP & Sanitary fixtures | 2025-08-05 → 2025-08-07 (+2d) | 2025-08-18 → 2025-08-19 (+1d) |  | 317.4d → 317.58d |
| 1.3.1.1.3.18.2 | **Fire Fighting Works** | 2025-06-07 → 2025-06-09 (+2d) | 2025-08-18 → 2025-08-19 (+1d) |  |  |
| PG-10343 | 1st Fix - Piping and Shaft hydrant works | 2025-06-07 → 2025-06-09 A (+2d) |  | 0% → 57% | 363.61d → 364.27d |
| PG-10344 | 2nd Fix - Sprinkler fixing & Pressure testing | 2025-07-14 → 2025-07-16 (+2d) | 2025-07-25 → 2025-07-26 (+1d) |  | 326.4d → 326.58d |
| PG-10345 | Final Fix - Smoke & heat detectors, FHC , FAS Etc. | 2025-08-05 → 2025-08-07 (+2d) | 2025-08-18 → 2025-08-19 (+1d) |  | 317.4d → 317.58d |
| 1.3.1.1.3.18.3 | **Electrical Works** |  | 2025-08-18 → 2025-08-19 (+1d) |  |  |
| PG-10346 | 1st Fix - GI wire pulling |  | 2025-06-07 → 2025-06-09 A (+2d) | 82% → 100% | 363.61d → none |
| PG-10347 | 2nd Fix - Wiring works | 2025-07-07 → 2025-07-09 (+2d) | 2025-07-24 → 2025-07-25 (+1d) |  | 331.4d → 331.58d |
| PG-10348 | Final Fix - Electrical Fixtures | 2025-08-09 → 2025-08-12 (+3d) | 2025-08-18 → 2025-08-19 (+1d) |  | 317.4d → 317.58d |
| 1.3.1.1.3.19 | **Floor 16** |  | 2025-09-03 → 2025-08-30 (-4d) |  |  |
| 1.3.1.1.3.19.1 | **PHE Works** |  | 2025-09-03 → 2025-08-30 (-4d) |  |  |
| PG-10349 | 1st Fix - Piping works | 2025-06-13 A | 2025-06-27 → 2025-06-24 (-3d) | 0% → 18% | 303.8d → 307.74d |
| PG-10350 | 2nd Fix - diverter fixing & Pressure testing | 2025-06-23 → 2025-06-19 (-4d) | 2025-07-04 → 2025-07-01 (-3d) |  | 303.8d → 307.74d |
| PG-10351 | Final Fix - CP & Sanitary fixtures | 2025-08-22 → 2025-08-19 (-3d) | 2025-09-03 → 2025-08-30 (-4d) |  | 303.8d → 307.74d |
| 1.3.1.1.3.19.2 | **Fire Fighting Works** | 2025-06-23 → 2025-06-20 (-3d) | 2025-09-03 → 2025-08-30 (-4d) |  |  |
| PG-10352 | 1st Fix - Piping and Shaft hydrant works | 2025-06-23 → 2025-06-20 (-3d) | 2025-07-07 → 2025-07-04 (-3d) |  | 350.46d → 353.61d |
| PG-10353 | 2nd Fix - Sprinkler fixing & Pressure testing | 2025-07-30 → 2025-07-26 (-4d) | 2025-08-11 → 2025-08-07 (-4d) |  | 312.8d → 316.74d |
| PG-10354 | Final Fix - Smoke & heat detectors, FHC , FAS Etc. | 2025-08-22 → 2025-08-19 (-3d) | 2025-09-03 → 2025-08-30 (-4d) |  | 303.8d → 307.74d |
| 1.3.1.1.3.19.3 | **Electrical Works** |  | 2025-09-03 → 2025-08-30 (-4d) |  |  |
| PG-10355 | 1st Fix - GI wire pulling | 2025-06-13 A | 2025-06-23 → 2025-06-20 (-3d) | 0% → 17% | 350.46d → 353.61d |
| PG-10356 | 2nd Fix - Wiring works | 2025-07-23 → 2025-07-19 (-4d) | 2025-08-09 → 2025-08-06 (-3d) |  | 317.8d → 321.74d |
| PG-10357 | Final Fix - Electrical Fixtures | 2025-08-27 → 2025-08-23 (-4d) | 2025-09-03 → 2025-08-30 (-4d) |  | 303.8d → 307.74d |
| 1.3.1.1.3.20 | **Floor 17** | 2025-06-26 → 2025-06-25 (-1d) | 2025-09-16 → 2025-09-13 (-3d) |  |  |
| 1.3.1.1.3.20.1 | **PHE Works** | 2025-06-26 → 2025-06-25 (-1d) | 2025-09-16 → 2025-09-13 (-3d) |  |  |
| PG-10358 | 1st Fix - Piping works | 2025-06-26 → 2025-06-25 (-1d) | 2025-07-10 → 2025-07-09 (-1d) |  | 292.8d → 295.28d |
| PG-10359 | 2nd Fix - diverter fixing & Pressure testing | 2025-07-05 → 2025-07-04 (-1d) | 2025-07-17 → 2025-07-16 (-1d) |  | 292.8d → 295.28d |
| PG-10360 | Final Fix - CP & Sanitary fixtures | 2025-09-04 → 2025-09-03 (-1d) | 2025-09-16 → 2025-09-13 (-3d) |  | 292.8d → 295.28d |
| 1.3.1.1.3.20.2 | **Fire Fighting Works** | 2025-07-05 → 2025-07-04 (-1d) | 2025-09-16 → 2025-09-13 (-3d) |  |  |
| PG-10361 | 1st Fix - Piping and Shaft hydrant works | 2025-07-05 → 2025-07-04 (-1d) | 2025-07-19 → 2025-07-18 (-1d) |  | 339.46d → 341.95d |
| PG-10362 | 2nd Fix - Sprinkler fixing & Pressure testing | 2025-08-12 → 2025-08-11 (-1d) | 2025-08-25 → 2025-08-23 (-2d) |  | 301.8d → 304.28d |
| PG-10363 | Final Fix - Smoke & heat detectors, FHC , FAS Etc. | 2025-09-04 → 2025-09-03 (-1d) | 2025-09-16 → 2025-09-13 (-3d) |  | 292.8d → 295.28d |
| 1.3.1.1.3.20.3 | **Electrical Works** | 2025-06-26 → 2025-06-25 (-1d) | 2025-09-16 → 2025-09-13 (-3d) |  |  |
| PG-10364 | 1st Fix - GI wire pulling | 2025-06-26 → 2025-06-25 (-1d) | 2025-07-05 → 2025-07-04 (-1d) |  | 339.46d → 341.95d |
| PG-10365 | 2nd Fix - Wiring works | 2025-08-05 → 2025-08-04 (-1d) | 2025-08-23 → 2025-08-22 (-1d) |  | 306.8d → 309.28d |
| PG-10366 | Final Fix - Electrical Fixtures | 2025-09-09 → 2025-09-08 (-1d) | 2025-09-16 → 2025-09-13 (-3d) |  | 292.8d → 295.28d |
| 1.3.1.1.3.21 | **Floor 18** | 2025-07-09 → 2025-07-08 (-1d) | 2025-09-29 → 2025-09-26 (-3d) |  |  |
| 1.3.1.1.3.21.1 | **PHE Works** | 2025-07-09 → 2025-07-08 (-1d) | 2025-09-29 → 2025-09-26 (-3d) |  |  |
| PG-10367 | 1st Fix - Piping works | 2025-07-09 → 2025-07-08 (-1d) | 2025-07-23 → 2025-07-22 (-1d) |  | 45.96d → 48.45d |
| PG-10368 | 2nd Fix - diverter fixing & Pressure testing | 2025-07-18 → 2025-07-17 (-1d) | 2025-07-30 → 2025-07-29 (-1d) |  | 281.8d → 284.28d |
| PG-10369 | Final Fix - CP & Sanitary fixtures | 2025-09-17 → 2025-09-16 (-1d) | 2025-09-29 → 2025-09-26 (-3d) |  | 281.8d → 284.28d |
| 1.3.1.1.3.21.2 | **Fire Fighting Works** | 2025-07-18 → 2025-07-17 (-1d) | 2025-09-29 → 2025-09-26 (-3d) |  |  |
| PG-10370 | 1st Fix - Piping and Shaft hydrant works | 2025-07-18 → 2025-07-17 (-1d) | 2025-08-01 → 2025-07-31 (-1d) |  | 328.46d → 330.95d |
| PG-10371 | 2nd Fix - Sprinkler fixing & Pressure testing | 2025-08-26 → 2025-08-25 (-1d) | 2025-09-06 → 2025-09-05 (-1d) |  | 290.8d → 293.28d |
| PG-10372 | Final Fix - Smoke & heat detectors, FHC , FAS Etc. | 2025-09-17 → 2025-09-16 (-1d) | 2025-09-29 → 2025-09-26 (-3d) |  | 281.8d → 284.28d |
| 1.3.1.1.3.21.3 | **Electrical Works** | 2025-07-09 → 2025-07-08 (-1d) | 2025-09-29 → 2025-09-26 (-3d) |  |  |
| PG-10373 | 1st Fix - GI wire pulling | 2025-07-09 → 2025-07-08 (-1d) | 2025-07-18 → 2025-07-17 (-1d) |  | 328.46d → 330.95d |
| PG-10374 | 2nd Fix - Wiring works | 2025-08-19 → 2025-08-18 (-1d) | 2025-09-05 → 2025-09-04 (-1d) |  | 295.8d → 298.28d |
| PG-10375 | Final Fix - Electrical Fixtures | 2025-09-22 → 2025-09-20 (-2d) | 2025-09-29 → 2025-09-26 (-3d) |  | 281.8d → 284.28d |
| 1.3.1.1.3.22 | **Floor 19** | 2025-07-31 → 2025-07-30 (-1d) | 2025-10-24 → 2025-10-22 (-2d) |  |  |
| 1.3.1.1.3.22.1 | **PHE Works** | 2025-07-31 → 2025-07-30 (-1d) | 2025-10-24 → 2025-10-22 (-2d) |  |  |
| PG-10376 | 1st Fix - Piping works | 2025-07-31 → 2025-07-30 (-1d) | 2025-08-14 → 2025-08-13 (-1d) |  | 164.96d → 167.45d |
| PG-10377 | 2nd Fix - diverter fixing & Pressure testing | 2025-08-09 → 2025-08-08 (-1d) | 2025-08-22 → 2025-08-21 (-1d) |  | 164.96d → 167.45d |
| PG-10378 | Final Fix - CP & Sanitary fixtures | 2025-10-13 → 2025-10-11 (-2d) | 2025-10-24 → 2025-10-22 (-2d) |  | 260.8d → 263.28d |
| 1.3.1.1.3.22.2 | **Fire Fighting Works** | 2025-08-09 → 2025-08-08 (-1d) | 2025-10-24 → 2025-10-22 (-2d) |  |  |
| PG-10379 | 1st Fix - Piping and Shaft hydrant works | 2025-08-09 → 2025-08-08 (-1d) | 2025-08-25 → 2025-08-23 (-2d) |  | 176.96d → 179.45d |
| PG-10380 | 2nd Fix - Sprinkler fixing & Pressure testing | 2025-09-17 → 2025-09-16 (-1d) | 2025-09-29 → 2025-09-27 (-2d) |  | 271.8d → 274.28d |

| ID | Task | Start | Finish | Complete | Total float |
| --- | --- | --- | --- | --- | --- |
| PG-10381 | Final Fix - Smoke & heat detectors, FHC , FAS Etc. | 2025-10-13 → 2025-10-11 (-2d) | 2025-10-24 → 2025-10-22 (-2d) |  | 260.8d → 263.28d |
| 1.3.1.1.3.22.3 | **Electrical Works** | 2025-07-31 → 2025-07-30 (-1d) | 2025-10-24 → 2025-10-22 (-2d) |  |  |
| PG-10382 | 1st Fix - GI wire pulling | 2025-07-31 → 2025-07-30 (-1d) | 2025-08-09 → 2025-08-08 (-1d) |  | 45.96d → 48.45d |
| PG-10383 | 2nd Fix - Wiring works | 2025-09-10 → 2025-09-09 (-1d) | 2025-09-27 → 2025-09-26 (-1d) |  | 276.8d → 279.28d |
| PG-10384 | Final Fix - Electrical Fixtures | 2025-10-17 → 2025-10-16 (-1d) | 2025-10-24 → 2025-10-22 (-2d) |  | 260.8d → 263.28d |
| 1.3.1.1.3.23 | **Floor 20** | 2025-08-23 → 2025-08-22 (-1d) | 2025-11-15 → 2025-11-13 (-2d) |  |  |
| 1.3.1.1.3.23.1 | **PHE Works** | 2025-08-23 → 2025-08-22 (-1d) | 2025-11-15 → 2025-11-13 (-2d) |  |  |
| PG-10385 | 1st Fix - Piping works | 2025-08-23 → 2025-08-22 (-1d) | 2025-09-06 → 2025-09-05 (-1d) |  | 186.63d → 189.12d |
| PG-10386 | 2nd Fix - diverter fixing & Pressure testing | 2025-09-02 → 2025-09-01 (-1d) | 2025-09-13 → 2025-09-12 (-1d) |  | 241.63d → 244.12d |
| PG-10387 | Final Fix - CP & Sanitary fixtures | 2025-11-04 → 2025-10-31 (-4d) | 2025-11-15 → 2025-11-13 (-2d) |  | 241.63d → 244.12d |
| 1.3.1.1.3.23.2 | **Fire Fighting Works** | 2025-09-02 → 2025-09-01 (-1d) | 2025-11-15 → 2025-11-13 (-2d) |  |  |
| PG-10388 | 1st Fix - Piping and Shaft hydrant works | 2025-09-02 → 2025-09-01 (-1d) | 2025-09-16 → 2025-09-15 (-1d) |  | 288.3d → 290.78d |
| PG-10389 | 2nd Fix - Sprinkler fixing & Pressure testing | 2025-10-10 → 2025-10-09 (-1d) | 2025-10-22 → 2025-10-21 (-1d) |  | 251.3d → 253.78d |
| PG-10390 | Final Fix - Smoke & heat detectors, FHC , FAS Etc. | 2025-11-04 → 2025-10-31 (-4d) | 2025-11-15 → 2025-11-13 (-2d) |  | 241.63d → 244.12d |
| 1.3.1.1.3.23.3 | **Electrical Works** | 2025-08-23 → 2025-08-22 (-1d) | 2025-11-15 → 2025-11-13 (-2d) |  |  |
| PG-10391 | 1st Fix - GI wire pulling | 2025-08-23 → 2025-08-22 (-1d) | 2025-09-02 → 2025-09-01 (-1d) |  | 288.3d → 290.78d |
| PG-10392 | 2nd Fix - Wiring works | 2025-10-03 → 2025-10-01 (-2d) | 2025-10-21 → 2025-10-20 (-1d) |  | 256.63d → 259.12d |
| PG-10393 | Final Fix - Electrical Fixtures | 2025-11-08 → 2025-11-07 (-1d) | 2025-11-15 → 2025-11-13 (-2d) |  | 241.63d → 244.12d |
| 1.3.1.1.3.24 | **Floor 21** | 2025-09-15 → 2025-09-13 (-2d) | 2025-12-08 → 2025-12-05 (-3d) |  |  |
| 1.3.1.1.3.24.1 | **PHE Works** | 2025-09-15 → 2025-09-13 (-2d) | 2025-12-08 → 2025-12-05 (-3d) |  |  |
| PG-10394 | 1st Fix - Piping works | 2025-09-15 → 2025-09-13 (-2d) | 2025-09-29 → 2025-09-27 (-2d) |  | 186.63d → 189.12d |
| PG-10395 | 2nd Fix - diverter fixing & Pressure testing | 2025-09-24 → 2025-09-23 (-1d) | 2025-10-07 → 2025-10-06 (-1d) |  | 222.63d → 225.12d |
| PG-10396 | Final Fix - CP & Sanitary fixtures | 2025-11-26 → 2025-11-25 (-1d) | 2025-12-08 → 2025-12-05 (-3d) |  | 222.63d → 225.12d |
| 1.3.1.1.3.24.2 | **Fire Fighting Works** | 2025-09-24 → 2025-09-23 (-1d) | 2025-12-08 → 2025-12-05 (-3d) |  |  |
| PG-10397 | 1st Fix - Piping and Shaft hydrant works | 2025-09-24 → 2025-09-23 (-1d) | 2025-10-09 → 2025-10-08 (-1d) |  | 269.3d → 271.78d |
| PG-10398 | 2nd Fix - Sprinkler fixing & Pressure testing | 2025-11-03 → 2025-10-31 (-3d) | 2025-11-14 → 2025-11-13 (-1d) |  | 232.63d → 235.12d |
| PG-10399 | Final Fix - Smoke & heat detectors, FHC , FAS Etc. | 2025-11-26 → 2025-11-25 (-1d) | 2025-12-08 → 2025-12-05 (-3d) |  | 222.63d → 225.12d |
| 1.3.1.1.3.24.3 | **Electrical Works** | 2025-09-15 → 2025-09-13 (-2d) | 2025-12-08 → 2025-12-05 (-3d) |  |  |
| PG-10400 | 1st Fix - GI wire pulling | 2025-09-15 → 2025-09-13 (-2d) | 2025-09-24 → 2025-09-23 (-1d) |  | 269.3d → 271.78d |
| PG-10401 | 2nd Fix - Wiring works | 2025-10-25 → 2025-10-24 (-1d) | 2025-11-13 → 2025-11-12 (-1d) |  | 237.63d → 240.12d |
| PG-10402 | Final Fix - Electrical Fixtures | 2025-12-01 → 2025-11-29 (-2d) | 2025-12-08 → 2025-12-05 (-3d) |  | 222.63d → 225.12d |
| 1.3.1.1.3.25 | **Floor 22** | 2025-10-08 → 2025-10-07 (-1d) | 2025-12-30 → 2025-12-27 (-3d) |  |  |
| 1.3.1.1.3.25.1 | **PHE Works** | 2025-10-08 → 2025-10-07 (-1d) | 2025-12-30 → 2025-12-27 (-3d) |  |  |
| PG-10403 | 1st Fix - Piping works | 2025-10-08 → 2025-10-07 (-1d) | 2025-10-22 → 2025-10-21 (-1d) |  | 186.63d → 189.12d |
| PG-10404 | 2nd Fix - diverter fixing & Pressure testing | 2025-10-17 → 2025-10-16 (-1d) | 2025-10-29 → 2025-10-28 (-1d) |  | 202.63d → 205.12d |
| PG-10405 | Final Fix - CP & Sanitary fixtures | 2025-12-18 → 2025-12-17 (-1d) | 2025-12-30 → 2025-12-27 (-3d) |  | 202.63d → 205.12d |
| 1.3.1.1.3.25.2 | **Fire Fighting Works** | 2025-10-17 → 2025-10-16 (-1d) | 2025-12-30 → 2025-12-27 (-3d) |  |  |
| PG-10406 | 1st Fix - Piping and Shaft hydrant works | 2025-10-17 → 2025-10-16 (-1d) | 2025-10-31 → 2025-10-30 (-1d) |  | 250.3d → 252.78d |
| PG-10407 | 2nd Fix - Sprinkler fixing & Pressure testing | 2025-11-25 → 2025-11-24 (-1d) | 2025-12-06 → 2025-12-05 (-1d) |  | 212.63d → 215.12d |
| PG-10408 | Final Fix - Smoke & heat detectors, FHC , FAS Etc. | 2025-12-18 → 2025-12-17 (-1d) | 2025-12-30 → 2025-12-27 (-3d) |  | 202.63d → 205.12d |
| 1.3.1.1.3.25.3 | **Electrical Works** | 2025-10-08 → 2025-10-07 (-1d) | 2025-12-30 → 2025-12-27 (-3d) |  |  |
| PG-10409 | 1st Fix - GI wire pulling | 2025-10-08 → 2025-10-07 (-1d) | 2025-10-17 → 2025-10-16 (-1d) |  | 250.3d → 252.78d |
| PG-10410 | 2nd Fix - Wiring works | 2025-11-18 → 2025-11-17 (-1d) | 2025-12-05 → 2025-12-04 (-1d) |  | 217.63d → 220.12d |
| PG-10411 | Final Fix - Electrical Fixtures | 2025-12-23 → 2025-12-22 (-1d) | 2025-12-30 → 2025-12-27 (-3d) |  | 202.63d → 205.12d |
| 1.3.1.1.3.26 | **Floor 23** | 2025-10-30 → 2025-10-29 (-1d) | 2026-01-19 → 2026-01-16 (-3d) |  |  |
| 1.3.1.1.3.26.1 | **PHE Works** | 2025-10-30 → 2025-10-29 (-1d) | 2026-01-19 → 2026-01-16 (-3d) |  |  |
| PG-10412 | 1st Fix - Piping works | 2025-10-30 → 2025-10-29 (-1d) | 2025-11-14 → 2025-11-13 (-1d) |  | 186.63d → 189.12d |
| PG-10413 | 2nd Fix - diverter fixing & Pressure testing | 2025-11-10 → 2025-11-08 (-2d) | 2025-11-21 → 2025-11-20 (-1d) |  | 186.63d → 189.12d |
| PG-10414 | Final Fix - CP & Sanitary fixtures | 2026-01-07 → 2026-01-05 (-2d) | 2026-01-19 → 2026-01-16 (-3d) |  | 186.63d → 189.12d |
| 1.3.1.1.3.26.2 | **Fire Fighting Works** | 2025-11-10 → 2025-11-08 (-2d) | 2026-01-19 → 2026-01-16 (-3d) |  |  |
| PG-10415 | 1st Fix - Piping and Shaft hydrant works | 2025-11-10 → 2025-11-08 (-2d) | 2025-11-24 → 2025-11-22 (-2d) |  | 231.46d → 233.95d |
| PG-10416 | 2nd Fix - Sprinkler fixing & Pressure testing | 2025-12-17 → 2025-12-16 (-1d) | 2025-12-29 → 2025-12-27 (-2d) |  | 194.13d → 196.62d |
| PG-10417 | Final Fix - Smoke & heat detectors, FHC , FAS Etc. | 2026-01-07 → 2026-01-05 (-2d) | 2026-01-19 → 2026-01-16 (-3d) |  | 186.63d → 189.12d |
| 1.3.1.1.3.26.3 | **Electrical Works** | 2025-10-30 → 2025-10-29 (-1d) | 2026-01-19 → 2026-01-16 (-3d) |  |  |
| PG-10418 | 1st Fix - GI wire pulling | 2025-10-30 → 2025-10-29 (-1d) | 2025-11-10 → 2025-11-08 (-2d) |  | 231.46d → 233.95d |
| PG-10419 | 2nd Fix - Wiring works | 2025-12-10 → 2025-12-09 (-1d) | 2025-12-27 → 2025-12-26 (-1d) |  | 199.13d → 201.62d |
| PG-10420 | Final Fix - Electrical Fixtures | 2026-01-12 → 2026-01-09 (-3d) | 2026-01-19 → 2026-01-16 (-3d) |  | 186.63d → 189.12d |
| 1.3.1.1.4 | **Civil Finishes - Units** |  | 2026-01-14 → 2026-01-12 (-2d) |  |  |
| 1.3.1.1.4.13 | **Floor 10** |  | 2025-06-09 → 2025-06-10 (+1d) |  |  |
| 1.3.1.1.4.13.1 | **Ceiling Finishing works - Civil** |  | 2025-06-07 → 2025-06-09 (+2d) |  |  |
| PG-10576 | Final Coat Painting |  | 2025-06-07 → 2025-06-09 A (+2d) | 92% → 100% | 406.24d → none |
| 1.3.1.1.4.13.2 | **Wall Finishing works - Civil** |  | 2025-06-09 → 2025-06-10 (+1d) |  |  |
| PG-10581 | Final Coat Painting |  | 2025-06-09 → 2025-06-10 A (+1d) | 87% → 100% | 368.66d → none |
| 1.3.1.1.4.14 | **Floor 11** |  | 2025-06-25 → 2025-06-26 (+1d) |  |  |
| 1.3.1.1.4.14.1 | **Ceiling Finishing works - Civil** |  | 2025-06-25 → 2025-06-26 (+1d) |  |  |
| PG-10590 | Final Coat Painting |  | 2025-06-25 → 2025-06-26 (+1d) | 3% → 36% | 390.58d → 391.53d |
| 1.3.1.1.4.14.2 | **Wall Finishing works - Civil** |  | 2025-06-25 → 2025-06-26 (+1d) |  |  |
| PG-10595 | Final Coat Painting |  | 2025-06-25 → 2025-06-26 (+1d) | 3% → 31% | 353.91d → 354.09d |
| PG-10602 | Painting Works - Putty, Primer and 1st | 2025-06-07 A |  | 0% → 71% | 381.88d → 383.15d |
| PG-10604 | Final Coat Painting | 2025-06-14 → 2025-06-16 (+2d) |  |  | 381.88d → 382.7d |

| ID | Task | Start | Finish | Complete | Total float |
| --- | --- | --- | --- | --- | --- |
| PG-10606 | UPVC Windows & Sliding doors |  | 2025-06-07 A | 84% → 100% | 347.05d → none |
| PG-10608 | Painting Works - Putty, Primer and 1st | 2025-06-07 A | 2025-06-14 → 2025-06-16 (+2d) | 0% → 64% | 347.05d → 347.95d |
| PG-10609 | Final Coat Painting | 2025-06-14 → 2025-06-16 (+2d) |  |  | 347.05d → 347.86d |
| 1.3.1.1.4.15.3 | **Floor Finishing Works - Civil** |  | 2025-06-14 → 2025-06-16 (+2d) |  |  |
| PG-10613 | Wooden doors | 2025-06-09 → 2025-06-11 A (+2d) | 2025-06-14 → 2025-06-16 (+2d) | 0% → 56% | 347.05d → 347.86d |
| PG-10617 | Toilet False ceiling | 2025-06-07 A | 2025-06-11 → 2025-06-12 A (+1d) | 0% → 100% | 363.88d → none |
| PG-10620 | UPVC Windows & Sliding doors | 2025-06-12 A |  | 0% → 34% | 337.38d → 338.58d |
| PG-10626 | Floor Tiling - Dry area |  | 2025-06-11 → 2025-06-12 A (+1d) | 19% → 100% | 337.38d → none |
| 1.3.1.1.4.17 | **Floor 14** |  | 2025-08-01 → 2025-07-30 (-2d) |  |  |
| 1.3.1.1.4.17.1 | **Ceiling Finishing works - Civil** |  | 2025-08-01 → 2025-07-30 (-2d) |  |  |
| PG-10629 | Cornice fixing | 2025-06-13 → 2025-06-11 A (-2d) | 2025-06-17 → 2025-06-16 (-1d) | 0% → 58% | 372.05d → 374.75d |
| PG-10631 | Toilet False ceiling | 2025-06-21 → 2025-06-20 (-1d) | 2025-06-26 → 2025-06-25 (-1d) |  | 351.71d → 354.54d |
| PG-10630 | Painting Works - Putty, Primer and 1st | 2025-07-02 → 2025-07-01 (-1d) | 2025-07-09 → 2025-07-08 (-1d) |  | 359.38d → 362.21d |
| PG-10632 | Final Coat Painting | 2025-07-09 → 2025-07-08 (-1d) | 2025-08-01 → 2025-07-30 (-2d) |  | 359.38d → 362.21d |
| 1.3.1.1.4.17.2 | **Wall Finishing works - Civil** |  | 2025-08-01 → 2025-07-30 (-2d) |  |  |
| PG-10635 | Dadoing - Wet area | 2025-06-09 → 2025-06-07 A (-2d) | 2025-06-14 → 2025-06-13 (-1d) | 0% → 99% | 324.71d → 327.54d |
| PG-10634 | UPVC Windows & Sliding doors | 2025-06-26 → 2025-06-25 (-1d) | 2025-07-02 → 2025-07-01 (-1d) |  | 324.71d → 327.54d |
| PG-10636 | Painting Works - Putty, Primer and 1st | 2025-07-02 → 2025-07-01 (-1d) | 2025-07-09 → 2025-07-08 (-1d) |  | 324.71d → 327.54d |
| PG-10637 | Final Coat Painting | 2025-07-09 → 2025-07-08 (-1d) | 2025-08-01 → 2025-07-30 (-2d) |  | 324.71d → 327.54d |
| 1.3.1.1.4.17.3 | **Floor Finishing Works - Civil** |  | 2025-07-09 → 2025-07-08 (-1d) |  |  |
| PG-10639 | Floor Tiling - Wet area | 2025-06-14 → 2025-06-13 (-1d) | 2025-06-20 → 2025-06-19 (-1d) |  | 324.71d → 327.54d |
| PG-10640 | Floor Tiling - Dry area | 2025-06-20 → 2025-06-19 (-1d) | 2025-06-26 → 2025-06-25 (-1d) |  | 324.71d → 327.54d |
| PG-10641 | Wooden doors | 2025-07-03 → 2025-07-02 (-1d) | 2025-07-09 → 2025-07-08 (-1d) |  | 324.71d → 327.54d |
| 1.3.1.1.4.18 | **Floor 15** |  | 2025-08-09 → 2025-08-11 (+2d) |  |  |
| 1.3.1.1.4.18.1 | **Ceiling Finishing works - Civil** | 2025-06-07 → 2025-06-09 (+2d) | 2025-08-09 → 2025-08-11 (+2d) |  |  |
| PG-10642 | Gypsum Plastering | 2025-06-07 → 2025-06-09 A (+2d) |  | 0% → 67% | 363.61d → 364.27d |
| PG-10645 | Toilet False ceiling | 2025-07-01 → 2025-07-03 (+2d) | 2025-07-05 → 2025-07-07 (+2d) |  | 343.4d → 343.58d |
| PG-10644 | Painting Works - Putty, Primer and 1st | 2025-07-11 → 2025-07-14 (+3d) | 2025-07-18 → 2025-07-19 (+1d) |  | 352.07d → 352.25d |
| PG-10646 | Final Coat Painting | 2025-07-18 → 2025-07-21 (+3d) | 2025-08-09 → 2025-08-11 (+2d) |  | 352.07d → 352.25d |
| 1.3.1.1.4.18.2 | **Wall Finishing works - Civil** |  | 2025-08-09 → 2025-08-11 (+2d) |  |  |
| PG-10649 | Dadoing - Wet area | 2025-06-18 → 2025-06-20 (+2d) | 2025-06-24 → 2025-06-25 (+1d) |  | 134.9d → 135.08d |
| PG-10648 | UPVC Windows & Sliding doors | 2025-07-05 → 2025-07-08 (+3d) | 2025-07-11 → 2025-07-12 (+1d) |  | 134.9d → 135.08d |
| PG-10650 | Painting Works - Putty, Primer and 1st | 2025-07-11 → 2025-07-14 (+3d) | 2025-07-18 → 2025-07-19 (+1d) |  | 134.9d → 135.08d |
| PG-10651 | Final Coat Painting | 2025-07-18 → 2025-07-21 (+3d) | 2025-08-09 → 2025-08-11 (+2d) |  | 317.4d → 317.58d |
| 1.3.1.1.4.18.3 | **Floor Finishing Works - Civil** |  | 2025-07-18 → 2025-07-19 (+1d) |  |  |
| PG-10653 | Floor Tiling - Wet area | 2025-06-24 → 2025-06-26 (+2d) | 2025-06-30 → 2025-07-01 (+1d) |  | 134.9d → 135.08d |
| PG-10654 | Floor Tiling - Dry area | 2025-06-30 → 2025-07-02 (+2d) | 2025-07-05 → 2025-07-07 (+2d) |  | 134.9d → 135.08d |
| PG-10655 | Wooden doors | 2025-07-12 → 2025-07-15 (+3d) | 2025-07-18 → 2025-07-19 (+1d) |  | 134.9d → 135.08d |
| 1.3.1.1.4.19 | **Floor 16** |  | 2025-08-27 → 2025-08-23 (-4d) |  |  |
| 1.3.1.1.4.19.1 | **Ceiling Finishing works - Civil** | 2025-06-23 → 2025-06-20 (-3d) | 2025-08-27 → 2025-08-23 (-4d) |  |  |
| PG-10656 | Gypsum Plastering | 2025-06-23 → 2025-06-20 (-3d) | 2025-06-30 → 2025-06-27 (-3d) |  | 350.46d → 353.61d |
| PG-10657 | Cornice fixing | 2025-07-09 → 2025-07-07 (-2d) | 2025-07-14 → 2025-07-11 (-3d) |  | 350.46d → 353.61d |
| PG-10659 | Toilet False ceiling | 2025-07-17 → 2025-07-14 (-3d) | 2025-07-22 → 2025-07-18 (-4d) |  | 329.8d → 333.74d |
| PG-10658 | Painting Works - Putty, Primer and 1st | 2025-07-28 → 2025-07-24 (-4d) | 2025-08-04 → 2025-07-31 (-4d) |  | 338.46d → 342.41d |
| PG-10660 | Final Coat Painting | 2025-08-04 → 2025-07-31 (-4d) | 2025-08-27 → 2025-08-23 (-4d) |  | 338.46d → 342.41d |
| 1.3.1.1.4.19.2 | **Wall Finishing works - Civil** |  | 2025-08-27 → 2025-08-23 (-4d) |  |  |
| PG-10661 | Balcony Railing Fixing works | 2025-06-13 A | 2025-06-18 → 2025-06-17 (-1d) | 0% → 13% | 332.8d → 335.1d |
| PG-10663 | Dadoing - Wet area | 2025-07-04 → 2025-07-01 (-3d) | 2025-07-10 → 2025-07-07 (-3d) |  | 303.8d → 307.74d |
| PG-10662 | UPVC Windows & Sliding doors | 2025-07-22 → 2025-07-18 (-4d) | 2025-07-28 → 2025-07-24 (-4d) |  | 303.8d → 307.74d |
| PG-10664 | Painting Works - Putty, Primer and 1st | 2025-07-28 → 2025-07-24 (-4d) | 2025-08-04 → 2025-07-31 (-4d) |  | 303.8d → 307.74d |
| PG-10665 | Final Coat Painting | 2025-08-04 → 2025-07-31 (-4d) | 2025-08-27 → 2025-08-23 (-4d) |  | 303.8d → 307.74d |
| 1.3.1.1.4.19.3 | **Floor Finishing Works - Civil** |  | 2025-08-04 → 2025-07-31 (-4d) |  |  |
| PG-10666 | Waterproofing for sunken areas | 2025-06-13 A | 2025-06-17 → 2025-06-16 (-1d) | 0% → 7% | 323.8d → 325.8d |
| PG-10667 | Floor Tiling - Wet area | 2025-07-10 → 2025-07-07 (-3d) | 2025-07-16 → 2025-07-12 (-4d) |  | 303.8d → 307.74d |
| PG-10668 | Floor Tiling - Dry area | 2025-07-16 → 2025-07-12 (-4d) | 2025-07-22 → 2025-07-18 (-4d) |  | 303.8d → 307.74d |
| PG-10669 | Wooden doors | 2025-07-29 → 2025-07-25 (-4d) | 2025-08-04 → 2025-07-31 (-4d) |  | 303.8d → 307.74d |
| 1.3.1.1.4.20 | **Floor 17** | 2025-06-26 → 2025-06-25 (-1d) | 2025-09-09 → 2025-09-06 (-3d) |  |  |
| 1.3.1.1.4.20.1 | **Ceiling Finishing works - Civil** | 2025-07-05 → 2025-07-04 (-1d) | 2025-09-09 → 2025-09-06 (-3d) |  |  |
| PG-10670 | Gypsum Plastering | 2025-07-05 → 2025-07-04 (-1d) | 2025-07-12 → 2025-07-11 (-1d) |  | 339.46d → 341.95d |
| PG-10671 | Cornice fixing | 2025-07-22 → 2025-07-21 (-1d) | 2025-07-26 → 2025-07-25 (-1d) |  | 339.46d → 341.95d |
| PG-10673 | Toilet False ceiling | 2025-07-30 → 2025-07-29 (-1d) | 2025-08-04 → 2025-08-02 (-2d) |  | 318.8d → 321.28d |
| PG-10672 | Painting Works - Putty, Primer and 1st | 2025-08-09 → 2025-08-08 (-1d) | 2025-08-18 → 2025-08-16 (-2d) |  | 327.46d → 329.95d |
| PG-10674 | Final Coat Painting | 2025-08-18 → 2025-08-16 (-2d) | 2025-09-09 → 2025-09-06 (-3d) |  | 327.46d → 329.95d |
| 1.3.1.1.4.20.2 | **Wall Finishing works - Civil** | 2025-06-26 → 2025-06-25 (-1d) | 2025-09-09 → 2025-09-06 (-3d) |  |  |
| PG-10675 | Balcony Railing Fixing works | 2025-06-26 → 2025-06-25 (-1d) | 2025-07-01 → 2025-06-30 (-1d) |  | 321.8d → 324.28d |
| PG-10677 | Dadoing - Wet area | 2025-07-17 → 2025-07-16 (-1d) | 2025-07-23 → 2025-07-22 (-1d) |  | 292.8d → 295.28d |
| PG-10676 | UPVC Windows & Sliding doors | 2025-08-04 → 2025-08-02 (-2d) | 2025-08-09 → 2025-08-08 (-1d) |  | 292.8d → 295.28d |
| PG-10678 | Painting Works - Putty, Primer and 1st | 2025-08-09 → 2025-08-08 (-1d) | 2025-08-18 → 2025-08-16 (-2d) |  | 292.8d → 295.28d |
| PG-10679 | Final Coat Painting | 2025-08-18 → 2025-08-16 (-2d) | 2025-09-09 → 2025-09-06 (-3d) |  | 292.8d → 295.28d |
| 1.3.1.1.4.20.3 | **Floor Finishing Works - Civil** | 2025-06-26 → 2025-06-25 (-1d) | 2025-08-18 → 2025-08-16 (-2d) |  |  |

| ID | Task | Start | Finish | Total float |
| --- | --- | --- | --- | --- |
| PG-10680 | Waterproofing for sunken areas | 2025-06-26 → 2025-06-25 (-1d) | 2025-06-30 → 2025-06-28 (-2d) | 312.8d → 315.28d |
| PG-10681 | Floor Tiling - Wet area | 2025-07-23 → 2025-07-22 (-1d) | 2025-07-29 → 2025-07-28 (-1d) | 292.8d → 295.28d |
| PG-10682 | Floor Tiling - Dry area | 2025-07-29 → 2025-07-28 (-1d) | 2025-08-04 → 2025-08-02 (-2d) | 292.8d → 295.28d |
| PG-10683 | Wooden doors | 2025-08-11 → 2025-08-09 (-2d) | 2025-08-18 → 2025-08-16 (-2d) | 292.8d → 295.28d |
| 1.3.1.1.4.21 | **Floor 18** | 2025-07-09 → 2025-07-08 (-1d) | 2025-09-22 → 2025-09-19 (-3d) |  |
| 1.3.1.1.4.21.1 | **Ceiling Finishing works - Civil** | 2025-07-18 → 2025-07-17 (-1d) | 2025-09-22 → 2025-09-19 (-3d) |  |
| PG-10684 | Gypsum Plastering | 2025-07-18 → 2025-07-17 (-1d) | 2025-07-25 → 2025-07-24 (-1d) | 328.46d → 330.95d |
| PG-10685 | Cornice fixing | 2025-08-04 → 2025-08-02 (-2d) | 2025-08-08 → 2025-08-07 (-1d) | 328.46d → 330.95d |
| PG-10687 | Toilet False ceiling | 2025-08-12 → 2025-08-11 (-1d) | 2025-08-18 → 2025-08-16 (-2d) | 307.8d → 310.28d |
| PG-10686 | Painting Works - Putty, Primer and 1st | 2025-08-23 → 2025-08-22 (-1d) | 2025-08-30 → 2025-08-29 (-1d) | 316.46d → 318.95d |
| PG-10688 | Final Coat Painting | 2025-08-30 → 2025-08-29 (-1d) | 2025-09-22 → 2025-09-19 (-3d) | 316.46d → 318.95d |
| 1.3.1.1.4.21.2 | **Wall Finishing works - Civil** | 2025-07-09 → 2025-07-08 (-1d) | 2025-09-22 → 2025-09-19 (-3d) |  |
| PG-10689 | Balcony Railing Fixing works | 2025-07-09 → 2025-07-08 (-1d) | 2025-07-14 → 2025-07-12 (-2d) | 310.8d → 313.28d |
| PG-10691 | Dadoing - Wet area | 2025-07-30 → 2025-07-29 (-1d) | 2025-08-05 → 2025-08-04 (-1d) | 281.8d → 284.28d |
| PG-10690 | UPVC Windows & Sliding doors | 2025-08-18 → 2025-08-16 (-2d) | 2025-08-23 → 2025-08-22 (-1d) | 281.8d → 284.28d |
| PG-10692 | Painting Works - Putty, Primer and 1st | 2025-08-23 → 2025-08-22 (-1d) | 2025-08-30 → 2025-08-29 (-1d) | 281.8d → 284.28d |
| PG-10693 | Final Coat Painting | 2025-08-30 → 2025-08-29 (-1d) | 2025-09-22 → 2025-09-19 (-3d) | 281.8d → 284.28d |
| 1.3.1.1.4.21.3 | **Floor Finishing Works - Civil** | 2025-07-09 → 2025-07-08 (-1d) | 2025-08-30 → 2025-08-29 (-1d) |  |
| PG-10694 | Waterproofing for sunken areas | 2025-07-09 → 2025-07-08 (-1d) | 2025-07-12 → 2025-07-11 (-1d) | 301.8d → 304.28d |
| PG-10695 | Floor Tiling - Wet area | 2025-08-05 → 2025-08-04 (-1d) | 2025-08-11 → 2025-08-09 (-2d) | 281.8d → 284.28d |
| PG-10696 | Floor Tiling - Dry area | 2025-08-11 → 2025-08-09 (-2d) | 2025-08-18 → 2025-08-16 (-2d) | 281.8d → 284.28d |
| PG-10697 | Wooden doors | 2025-08-25 → 2025-08-23 (-2d) | 2025-08-30 → 2025-08-29 (-1d) | 281.8d → 284.28d |
| 1.3.1.1.4.22 | **Floor 19** | 2025-07-31 → 2025-07-30 (-1d) | 2025-10-17 → 2025-10-15 (-2d) |  |
| 1.3.1.1.4.22.1 | **Ceiling Finishing works - Civil** | 2025-08-09 → 2025-08-08 (-1d) | 2025-10-17 → 2025-10-15 (-2d) |  |
| PG-10698 | Gypsum Plastering | 2025-08-09 → 2025-08-08 (-1d) | 2025-08-18 → 2025-08-16 (-2d) | 176.96d → 179.45d |
| PG-10699 | Cornice fixing | 2025-08-27 → 2025-08-26 (-1d) | 2025-09-01 → 2025-08-30 (-2d) | 176.96d → 179.45d |
| PG-10701 | Toilet False ceiling | 2025-09-04 → 2025-09-03 (-1d) | 2025-09-09 → 2025-09-08 (-1d) | 288.8d → 291.28d |
| PG-10700 | Painting Works - Putty, Primer and 1st | 2025-09-15 → 2025-09-13 (-2d) | 2025-09-22 → 2025-09-20 (-2d) | 164.96d → 167.45d |
| PG-10702 | Final Coat Painting | 2025-09-22 → 2025-09-20 (-2d) | 2025-10-17 → 2025-10-15 (-2d) | 295.46d → 297.95d |
| 1.3.1.1.4.22.2 | **Wall Finishing works - Civil** | 2025-07-31 → 2025-07-30 (-1d) | 2025-10-17 → 2025-10-15 (-2d) |  |
| PG-10703 | Balcony Railing Fixing works | 2025-07-31 → 2025-07-30 (-1d) | 2025-08-05 → 2025-08-04 (-1d) | 193.96d → 196.45d |
| PG-10705 | Dadoing - Wet area | 2025-08-22 → 2025-08-21 (-1d) | 2025-08-28 → 2025-08-27 (-1d) | 164.96d → 167.45d |
| PG-10704 | UPVC Windows & Sliding doors | 2025-09-09 → 2025-09-08 (-1d) | 2025-09-15 → 2025-09-13 (-2d) | 164.96d → 167.45d |
| PG-10706 | Painting Works - Putty, Primer and 1st | 2025-09-15 → 2025-09-13 (-2d) | 2025-09-22 → 2025-09-20 (-2d) | 260.8d → 263.28d |
| PG-10707 | Final Coat Painting | 2025-09-22 → 2025-09-20 (-2d) | 2025-10-17 → 2025-10-15 (-2d) | 260.8d → 263.28d |
| 1.3.1.1.4.22.3 | **Floor Finishing Works - Civil** | 2025-07-31 → 2025-07-30 (-1d) | 2025-09-22 → 2025-09-20 (-2d) |  |
| PG-10708 | Waterproofing for sunken areas | 2025-07-31 → 2025-07-30 (-1d) | 2025-08-04 → 2025-08-02 (-2d) | 184.96d → 187.45d |
| PG-10709 | Floor Tiling - Wet area | 2025-08-28 → 2025-08-27 (-1d) | 2025-09-03 → 2025-09-02 (-1d) | 164.96d → 167.45d |
| PG-10710 | Floor Tiling - Dry area | 2025-09-03 → 2025-09-02 (-1d) | 2025-09-09 → 2025-09-08 (-1d) | 164.96d → 167.45d |
| PG-10711 | Wooden doors | 2025-09-16 → 2025-09-15 (-1d) | 2025-09-22 → 2025-09-20 (-2d) | 260.8d → 263.28d |
| 1.3.1.1.4.23 | **Floor 20** | 2025-08-23 → 2025-08-22 (-1d) | 2025-11-08 → 2025-11-06 (-2d) |  |
| 1.3.1.1.4.23.1 | **Ceiling Finishing works - Civil** | 2025-09-02 → 2025-09-01 (-1d) | 2025-11-08 → 2025-11-06 (-2d) |  |
| PG-10712 | Gypsum Plastering | 2025-09-02 → 2025-09-01 (-1d) | 2025-09-09 → 2025-09-08 (-1d) | 288.3d → 290.78d |
| PG-10713 | Cornice fixing | 2025-09-18 → 2025-09-17 (-1d) | 2025-09-23 → 2025-09-22 (-1d) | 288.3d → 290.78d |
| PG-10715 | Toilet False ceiling | 2025-09-26 → 2025-09-25 (-1d) | 2025-10-01 → 2025-09-30 (-1d) | 268.3d → 270.78d |
| PG-10714 | Painting Works - Putty, Primer and 1st | 2025-10-08 → 2025-10-07 (-1d) | 2025-10-15 → 2025-10-14 (-1d) | 276.3d → 278.78d |
| PG-10716 | Final Coat Painting | 2025-10-15 → 2025-10-14 (-1d) | 2025-11-08 → 2025-11-06 (-2d) | 276.3d → 278.78d |
| 1.3.1.1.4.23.2 | **Wall Finishing works - Civil** | 2025-08-23 → 2025-08-22 (-1d) | 2025-11-08 → 2025-11-06 (-2d) |  |
| PG-10717 | Balcony Railing Fixing works | 2025-08-23 → 2025-08-22 (-1d) | 2025-08-28 → 2025-08-27 (-1d) | 270.63d → 273.12d |
| PG-10719 | Dadoing - Wet area | 2025-09-13 → 2025-09-12 (-1d) | 2025-09-19 → 2025-09-18 (-1d) | 241.63d → 244.12d |
| PG-10718 | UPVC Windows & Sliding doors | 2025-10-01 → 2025-09-30 (-1d) | 2025-10-08 → 2025-10-07 (-1d) | 241.63d → 244.12d |
| PG-10720 | Painting Works - Putty, Primer and 1st | 2025-10-08 → 2025-10-07 (-1d) | 2025-10-15 → 2025-10-14 (-1d) | 241.63d → 244.12d |
| PG-10721 | Final Coat Painting | 2025-10-15 → 2025-10-14 (-1d) | 2025-11-08 → 2025-11-06 (-2d) | 241.63d → 244.12d |
| 1.3.1.1.4.23.3 | **Floor Finishing Works - Civil** | 2025-08-23 → 2025-08-22 (-1d) | 2025-10-15 → 2025-10-14 (-1d) |  |
| PG-10722 | Waterproofing for sunken areas | 2025-08-23 → 2025-08-22 (-1d) | 2025-08-27 → 2025-08-26 (-1d) | 261.63d → 264.12d |
| PG-10723 | Floor Tiling - Wet area | 2025-09-19 → 2025-09-18 (-1d) | 2025-09-25 → 2025-09-24 (-1d) | 241.63d → 244.12d |
| PG-10724 | Floor Tiling - Dry area | 2025-09-25 → 2025-09-24 (-1d) | 2025-10-01 → 2025-09-30 (-1d) | 241.63d → 244.12d |
| PG-10725 | Wooden doors | 2025-10-09 → 2025-10-08 (-1d) | 2025-10-15 → 2025-10-14 (-1d) | 241.63d → 244.12d |
| 1.3.1.1.4.24 | **Floor 21** | 2025-09-15 → 2025-09-13 (-2d) | 2025-12-01 → 2025-11-28 (-3d) |  |
| 1.3.1.1.4.24.1 | **Ceiling Finishing works - Civil** | 2025-09-24 → 2025-09-23 (-1d) | 2025-12-01 → 2025-11-28 (-3d) |  |
| PG-10726 | Gypsum Plastering | 2025-09-24 → 2025-09-23 (-1d) | 2025-10-01 → 2025-09-30 (-1d) | 269.3d → 271.78d |
| PG-10727 | Cornice fixing | 2025-10-11 → 2025-10-10 (-1d) | 2025-10-16 → 2025-10-15 (-1d) | 269.3d → 271.78d |
| PG-10729 | Toilet False ceiling | 2025-10-20 → 2025-10-18 (-2d) | 2025-10-24 → 2025-10-23 (-1d) | 249.63d → 252.12d |
| PG-10728 | Painting Works - Putty, Primer and 1st | 2025-10-30 → 2025-10-29 (-1d) | 2025-11-07 → 2025-11-06 (-1d) | 257.3d → 259.78d |
| PG-10730 | Final Coat Painting | 2025-11-07 → 2025-11-06 (-1d) | 2025-12-01 → 2025-11-28 (-3d) | 257.3d → 259.78d |
| 1.3.1.1.4.24.2 | **Wall Finishing works - Civil** | 2025-09-15 → 2025-09-13 (-2d) | 2025-12-01 → 2025-11-28 (-3d) |  |
| PG-10731 | Balcony Railing Fixing works | 2025-09-15 → 2025-09-13 (-2d) | 2025-09-19 → 2025-09-18 (-1d) | 251.63d → 254.12d |
| PG-10733 | Dadoing - Wet area | 2025-10-07 → 2025-10-06 (-1d) | 2025-10-13 → 2025-10-11 (-2d) | 222.63d → 225.12d |
| PG-10732 | UPVC Windows & Sliding doors | 2025-10-24 → 2025-10-23 (-1d) | 2025-10-30 → 2025-10-29 (-1d) | 222.63d → 225.12d |
| PG-10734 | Painting Works - Putty, Primer and 1st | 2025-10-30 → 2025-10-29 (-1d) | 2025-11-07 → 2025-11-06 (-1d) | 222.63d → 225.12d |

| ID | Task | Start | Finish | Total float |
| --- | --- | --- | --- | --- |
| PG-10735 | Final Coat Painting | 2025-11-07 → 2025-11-06 (-1d) | 2025-12-01 → 2025-11-28 (-3d) | 222.63d → 225.12d |
| 1.3.1.1.4.24.3 | **Floor Finishing Works - Civil** | 2025-09-15 → 2025-09-13 (-2d) | 2025-11-07 → 2025-11-06 (-1d) |  |
| PG-10736 | Waterproofing for sunken areas | 2025-09-15 → 2025-09-13 (-2d) | 2025-09-18 → 2025-09-17 (-1d) | 242.63d → 245.12d |
| PG-10737 | Floor Tiling - Wet area | 2025-10-13 → 2025-10-11 (-2d) | 2025-10-18 → 2025-10-17 (-1d) | 222.63d → 225.12d |
| PG-10738 | Floor Tiling - Dry area | 2025-10-18 → 2025-10-17 (-1d) | 2025-10-24 → 2025-10-23 (-1d) | 222.63d → 225.12d |
| PG-10739 | Wooden doors | 2025-10-31 → 2025-10-30 (-1d) | 2025-11-07 → 2025-11-06 (-1d) | 222.63d → 225.12d |
| 1.3.1.1.4.25 | **Floor 22** | 2025-10-08 → 2025-10-07 (-1d) | 2025-12-23 → 2025-12-20 (-3d) |  |
| 1.3.1.1.4.25.1 | **Ceiling Finishing works - Civil** | 2025-10-17 → 2025-10-16 (-1d) | 2025-12-23 → 2025-12-20 (-3d) |  |
| PG-10740 | Gypsum Plastering | 2025-10-17 → 2025-10-16 (-1d) | 2025-10-24 → 2025-10-23 (-1d) | 250.3d → 252.78d |
| PG-10741 | Cornice fixing | 2025-11-04 → 2025-11-03 (-1d) | 2025-11-08 → 2025-11-07 (-1d) | 250.3d → 252.78d |
| PG-10743 | Toilet False ceiling | 2025-11-12 → 2025-11-11 (-1d) | 2025-11-17 → 2025-11-15 (-2d) | 229.63d → 232.12d |
| PG-10742 | Painting Works - Putty, Primer and 1st | 2025-11-22 → 2025-11-21 (-1d) | 2025-11-29 → 2025-11-28 (-1d) | 238.3d → 240.78d |
| PG-10744 | Final Coat Painting | 2025-11-29 → 2025-11-28 (-1d) | 2025-12-23 → 2025-12-20 (-3d) | 238.3d → 240.78d |
| 1.3.1.1.4.25.2 | **Wall Finishing works - Civil** | 2025-10-08 → 2025-10-07 (-1d) | 2025-12-23 → 2025-12-20 (-3d) |  |
| PG-10745 | Balcony Railing Fixing works | 2025-10-08 → 2025-10-07 (-1d) | 2025-10-13 → 2025-10-11 (-2d) | 231.63d → 234.12d |
| PG-10747 | Dadoing - Wet area | 2025-10-29 → 2025-10-28 (-1d) | 2025-11-05 → 2025-11-04 (-1d) | 202.63d → 205.12d |
| PG-10746 | UPVC Windows & Sliding doors | 2025-11-17 → 2025-11-15 (-2d) | 2025-11-22 → 2025-11-21 (-1d) | 202.63d → 205.12d |
| PG-10748 | Painting Works - Putty, Primer and 1st | 2025-11-22 → 2025-11-21 (-1d) | 2025-11-29 → 2025-11-28 (-1d) | 202.63d → 205.12d |
| PG-10749 | Final Coat Painting | 2025-11-29 → 2025-11-28 (-1d) | 2025-12-23 → 2025-12-20 (-3d) | 202.63d → 205.12d |
| 1.3.1.1.4.25.3 | **Floor Finishing Works - Civil** | 2025-10-08 → 2025-10-07 (-1d) | 2025-11-29 → 2025-11-28 (-1d) |  |
| PG-10750 | Waterproofing for sunken areas | 2025-10-08 → 2025-10-07 (-1d) | 2025-10-11 → 2025-10-10 (-1d) | 222.63d → 225.12d |
| PG-10751 | Floor Tiling - Wet area | 2025-11-05 → 2025-11-04 (-1d) | 2025-11-11 → 2025-11-10 (-1d) | 202.63d → 205.12d |
| PG-10752 | Floor Tiling - Dry area | 2025-11-11 → 2025-11-10 (-1d) | 2025-11-17 → 2025-11-15 (-2d) | 202.63d → 205.12d |
| PG-10753 | Wooden doors | 2025-11-24 → 2025-11-22 (-2d) | 2025-11-29 → 2025-11-28 (-1d) | 202.63d → 205.12d |
| 1.3.1.1.4.26 | **Floor 23** | 2025-10-30 → 2025-10-29 (-1d) | 2026-01-14 → 2026-01-12 (-2d) |  |
| 1.3.1.1.4.26.1 | **Ceiling Finishing works - Civil** | 2025-11-10 → 2025-11-08 (-2d) | 2026-01-14 → 2026-01-12 (-2d) |  |
| PG-10754 | Gypsum Plastering | 2025-11-10 → 2025-11-08 (-2d) | 2025-11-17 → 2025-11-15 (-2d) | 231.46d → 233.95d |
| PG-10755 | Cornice fixing | 2025-11-26 → 2025-11-25 (-1d) | 2025-12-01 → 2025-11-29 (-2d) | 231.46d → 233.95d |
| PG-10757 | Toilet False ceiling | 2025-12-04 → 2025-12-03 (-1d) | 2025-12-09 → 2025-12-08 (-1d) | 211.13d → 213.62d |
| PG-10756 | Painting Works - Putty, Primer and 1st | 2025-12-15 → 2025-12-13 (-2d) | 2025-12-22 → 2025-12-20 (-2d) | 219.46d → 221.95d |
| PG-10758 | Final Coat Painting | 2025-12-22 → 2025-12-20 (-2d) | 2026-01-14 → 2026-01-12 (-2d) | 219.46d → 221.95d |
| 1.3.1.1.4.26.2 | **Wall Finishing works - Civil** | 2025-10-30 → 2025-10-29 (-1d) | 2026-01-12 → 2026-01-09 (-3d) |  |
| PG-10759 | Balcony Railing Fixing works | 2025-10-30 → 2025-10-29 (-1d) | 2025-11-05 → 2025-11-04 (-1d) | 215.63d → 218.12d |
| PG-10761 | Dadoing - Wet area | 2025-11-21 → 2025-11-20 (-1d) | 2025-11-27 → 2025-11-26 (-1d) | 186.63d → 189.12d |
| PG-10760 | UPVC Windows & Sliding doors | 2025-12-09 → 2025-12-08 (-1d) | 2025-12-15 → 2025-12-13 (-2d) | 186.63d → 189.12d |
| PG-10762 | Painting Works - Putty, Primer and 1st | 2025-12-15 → 2025-12-13 (-2d) | 2025-12-22 → 2025-12-20 (-2d) | 186.63d → 189.12d |
| PG-10763 | Final Coat Painting | 2025-12-22 → 2025-12-20 (-2d) | 2026-01-12 → 2026-01-09 (-3d) | 186.63d → 189.12d |
| 1.3.1.1.4.26.3 | **Floor Finishing Works - Civil** | 2025-10-30 → 2025-10-29 (-1d) | 2025-12-22 → 2025-12-20 (-2d) |  |
| PG-10764 | Waterproofing for sunken areas | 2025-10-30 → 2025-10-29 (-1d) | 2025-11-04 → 2025-11-03 (-1d) | 206.63d → 209.12d |
| PG-10765 | Floor Tiling - Wet area | 2025-11-27 → 2025-11-26 (-1d) | 2025-12-03 → 2025-12-02 (-1d) | 186.63d → 189.12d |
| PG-10766 | Floor Tiling - Dry area | 2025-12-03 → 2025-12-02 (-1d) | 2025-12-09 → 2025-12-08 (-1d) | 186.63d → 189.12d |
| PG-10767 | Wooden doors | 2025-12-16 → 2025-12-15 (-1d) | 2025-12-22 → 2025-12-20 (-2d) | 186.63d → 189.12d |
| 1.3.1.1.4.27 | **External Finishing works** | 2025-08-06 → 2025-08-05 (-1d) | 2025-12-04 → 2025-12-03 (-1d) |  |
| PG-10768 | External walls tie rod hole plugging with GP2 | 2025-08-06 → 2025-08-05 (-1d) | 2025-09-11 → 2025-09-10 (-1d) | 250.8d → 253.28d |
| PG-10769 | External walls grinding works | 2025-08-30 → 2025-08-29 (-1d) | 2025-10-17 → 2025-10-16 (-1d) | 250.8d → 253.28d |
| PG-10770 | Texture and painting works | 2025-10-11 → 2025-10-10 (-1d) | 2025-12-04 → 2025-12-03 (-1d) | 250.8d → 253.28d |
| 1.3.1.1.5 | **Corridor & Fire Staircase Finishing works** | 2025-10-14 → 2025-10-13 (-1d) | 2026-07-27 → 2026-07-28 (+1d) |  |
| 1.3.1.1.5.1 | **Ceiling Finishing works - Civil** | 2025-10-14 → 2025-10-13 (-1d) | 2026-01-24 → 2026-01-23 (-1d) |  |
| PG-10771 | Gypsum Plastering | 2025-10-14 → 2025-10-13 (-1d) | 2025-10-21 → 2025-10-20 (-1d) | 45.96d → 48.45d |
| PG-10772 | Cornice fixing | 2025-10-20 → 2025-10-18 (-2d) | 2025-10-24 → 2025-10-23 (-1d) | 176.96d → 179.45d |
| PG-10773 | Painting Works - Putty, Primer and 1st | 2025-11-08 → 2025-11-07 (-1d) | 2025-11-15 → 2025-11-14 (-1d) | 164.96d → 167.45d |
| PG-10774 | False ceiling | 2025-11-15 → 2025-11-14 (-1d) | 2025-12-20 → 2025-12-19 (-1d) | 164.96d → 167.45d |
| PG-10775 | Final Coat Painting | 2025-12-20 → 2025-12-19 (-1d) | 2026-01-24 → 2026-01-23 (-1d) | 179.96d → 182.45d |
| 1.3.1.1.5.2 | **Wall Finishing works - Civil** | 2025-11-20 → 2025-11-19 (-1d) | 2026-07-27 → 2026-07-28 (+1d) |  |
| PG-10776 | UPVC Windows & Sliding doors | 2025-11-20 → 2025-11-19 (-1d) | 2025-11-26 → 2025-11-25 (-1d) | 170.96d → 173.45d |
| PG-10777 | Wall Cladding Upto 1.2 Mts | 2025-12-08 → 2025-12-06 (-2d) | 2025-12-31 → 2025-12-30 (-1d) | 170.96d → 173.45d |
| PG-10778 | Painting Works - Texture & one coat Painting works | 2026-01-07 → 2026-01-06 (-1d) | 2026-01-24 → 2026-01-23 (-1d) | 164.96d → 167.45d |
| PG-10779 | Final Coat Painting | 2026-07-03 → 2026-07-04 (+1d) | 2026-07-27 → 2026-07-28 (+1d) | 23.98d → 24.17d |
| 1.3.1.1.5.3 | **Floor Finishing Works - Civil** | 2025-10-21 → 2025-10-20 (-1d) | 2025-11-20 → 2025-11-19 (-1d) |  |
| PG-10780 | Fire Doors installation | 2025-10-21 → 2025-10-20 (-1d) | 2025-11-03 → 2025-10-31 (-3d) | 215.63d → 218.12d |
| PG-10781 | Verified tile flooring works | 2025-11-03 → 2025-10-31 (-3d) | 2025-11-20 → 2025-11-19 (-1d) | 215.63d → 218.12d |
| 1.3.1.1.5.4 | **Fire Staircase Finishing Works - Civil** | 2025-10-21 → 2025-10-20 (-1d) | 2026-02-11 → 2026-02-10 (-1d) |  |
| PG-10782 | Staircase Railing Fixing works | 2025-10-21 → 2025-10-20 (-1d) | 2025-11-14 → 2025-11-13 (-1d) | 45.96d → 48.45d |
| PG-10783 | Wall and ceiling Gypsum plastering | 2025-11-03 → 2025-10-31 (-3d) | 2025-12-08 → 2025-12-06 (-2d) | 45.96d → 48.45d |
| PG-10784 | Staircase Flooring and Skirting Works | 2025-11-20 → 2025-11-19 (-1d) | 2026-01-06 → 2026-01-05 (-1d) | 45.96d → 48.45d |
| PG-10785 | UPVC Window fixing works | 2026-01-06 → 2026-01-05 (-1d) | 2026-01-23 → 2026-01-22 (-1d) | 45.96d → 48.45d |
| PG-10786 | Staircase Painting works | 2026-01-17 → 2026-01-16 (-1d) | 2026-02-11 → 2026-02-10 (-1d) | 45.96d → 48.45d |
| 1.3.1.1.6 | **MEP Civil Works (Shaft, Lift Shaft & OHT )** | 2025-07-23 → 2025-07-22 (-1d) |  |  |
| 1.3.1.1.6.1 | **Lift Shaft Works** | 2025-07-23 → 2025-07-22 (-1d) |  |  |
| PG-10787 | Tie rod hole packing | 2025-07-23 → 2025-07-22 (-1d) | 2025-08-01 → 2025-07-31 (-1d) | 123.46d → 125.95d |

| ID | Task | Start | Finish | Complete | Total float |
| --- | --- | --- | --- | --- | --- |
| PG-10788 | Grinding works | 2025-08-01 → 2025-07-31 (-1d) | 2025-08-07 → 2025-08-06 (-1d) |  | 123.46d → 125.95d |
| PG-10789 | Lift pit waterproofing works | 2025-08-07 → 2025-08-06 (-1d) | 2025-09-02 → 2025-09-01 (-1d) |  | 123.46d → 125.95d |
| PG-10790 | Shaft door opening finishing | 2025-09-02 → 2025-09-01 (-1d) | 2025-09-10 → 2025-09-09 (-1d) |  | 123.46d → 125.95d |
| PG-10791 | Painting works | 2025-09-10 → 2025-09-09 (-1d) | 2025-09-19 → 2025-09-18 (-1d) |  | 123.46d → 125.95d |
| 1.3.1.1.6.2 | **Electrical Shaft works** | 2025-07-23 → 2025-07-22 (-1d) | 2025-08-26 → 2025-08-25 (-1d) |  |  |
| PG-10793 | Tie rod hole packing | 2025-07-23 → 2025-07-22 (-1d) | 2025-08-01 → 2025-07-31 (-1d) |  | 262.3d → 264.78d |
| PG-10794 | Grinding works | 2025-08-01 → 2025-07-31 (-1d) | 2025-08-07 → 2025-08-06 (-1d) |  | 262.3d → 264.78d |
| PG-10795 | Shaft door opening finishing | 2025-08-07 → 2025-08-06 (-1d) | 2025-08-16 → 2025-08-14 (-2d) |  | 262.3d → 264.78d |
| PG-10796 | Painting works | 2025-08-16 → 2025-08-14 (-2d) | 2025-08-26 → 2025-08-25 (-1d) |  | 262.3d → 264.78d |
| 1.3.1.1.6.3 | **FPS Shaft works** | 2025-07-23 → 2025-07-22 (-1d) | 2025-08-26 → 2025-08-25 (-1d) |  |  |
| PG-10797 | Tie rod hole packing | 2025-07-23 → 2025-07-22 (-1d) | 2025-08-01 → 2025-07-31 (-1d) |  | 261.96d → 264.45d |
| PG-10798 | Grinding works | 2025-08-01 → 2025-07-31 (-1d) | 2025-08-07 → 2025-08-06 (-1d) |  | 261.96d → 264.45d |
| PG-10799 | Shaft door opening finishing | 2025-08-07 → 2025-08-06 (-1d) | 2025-08-16 → 2025-08-14 (-2d) |  | 261.96d → 264.45d |
| PG-10800 | Painting works | 2025-08-16 → 2025-08-14 (-2d) | 2025-08-26 → 2025-08-25 (-1d) |  | 261.96d → 264.45d |
| 1.3.1.1.6.4 | **PHE Shaft works** | 2025-07-23 → 2025-07-22 (-1d) | 2025-08-26 → 2025-08-25 (-1d) |  |  |
| PG-10801 | Tie rod hole packing | 2025-07-23 → 2025-07-22 (-1d) | 2025-08-01 → 2025-07-31 (-1d) |  | 220.63d → 223.12d |
| PG-10802 | Grinding works | 2025-08-01 → 2025-07-31 (-1d) | 2025-08-07 → 2025-08-06 (-1d) |  | 220.63d → 223.12d |
| PG-10803 | Shaft door opening finishing | 2025-08-07 → 2025-08-06 (-1d) | 2025-08-16 → 2025-08-14 (-2d) |  | 220.63d → 223.12d |
| PG-10804 | Painting works | 2025-08-16 → 2025-08-14 (-2d) | 2025-08-26 → 2025-08-25 (-1d) |  | 220.63d → 223.12d |
| 1.3.1.1.6.5 | **Data & Communication Shaft** | 2025-07-23 → 2025-07-22 (-1d) | 2025-08-23 → 2025-08-22 (-1d) |  |  |
| PG-10805 | Tie rod hole packing | 2025-07-23 → 2025-07-22 (-1d) | 2025-08-01 → 2025-07-31 (-1d) |  | 256.96d → 259.45d |
| PG-10806 | Grinding works | 2025-08-01 → 2025-07-31 (-1d) | 2025-08-07 → 2025-08-06 (-1d) |  | 256.96d → 259.45d |
| PG-10807 | Shaft door opening finishing | 2025-08-07 → 2025-08-06 (-1d) | 2025-08-13 → 2025-08-12 (-1d) |  | 256.96d → 259.45d |
| PG-10808 | Painting works | 2025-08-13 → 2025-08-12 (-1d) | 2025-08-23 → 2025-08-22 (-1d) |  | 256.96d → 259.45d |
| 1.3.1.1.7 | **MEP Shaft works** | 2025-08-23 → 2025-08-22 (-1d) |  |  |  |
| 1.3.1.1.7.1 | **Electrical** | 2025-08-26 → 2025-08-25 (-1d) | 2025-10-07 → 2025-10-06 (-1d) |  |  |
| PG-10813 | Tray Works | 2025-08-26 → 2025-08-25 (-1d) | 2025-09-06 → 2025-09-05 (-1d) |  | 262.3d → 264.78d |
| PG-10814 | Cable & Conducting works | 2025-09-06 → 2025-09-05 (-1d) | 2025-09-18 → 2025-09-17 (-1d) |  | 262.3d → 264.78d |
| PG-10815 | Wiring/DB/connector box installation and termination works | 2025-09-18 → 2025-09-17 (-1d) | 2025-10-07 → 2025-10-06 (-1d) |  | 262.3d → 264.78d |
| 1.3.1.1.7.2 | **FPS** | 2025-08-26 → 2025-08-25 (-1d) | 2025-10-07 → 2025-10-06 (-1d) |  |  |
| PG-10816 | Shaft MS Piping & fixtures installation | 2025-08-26 → 2025-08-25 (-1d) | 2025-09-18 → 2025-09-17 (-1d) |  | 261.96d → 264.45d |
| PG-10817 | Tray / cabling / conducting & wiring works | 2025-09-18 → 2025-09-17 (-1d) | 2025-10-07 → 2025-10-06 (-1d) |  | 261.96d → 264.45d |
| 1.3.1.1.7.3 | **Data & Communication** | 2025-08-23 → 2025-08-22 (-1d) | 2025-10-13 → 2025-10-11 (-2d) |  |  |
| PG-10818 | Tray Works | 2025-08-23 → 2025-08-22 (-1d) | 2025-09-06 → 2025-09-05 (-1d) |  | 256.96d → 259.45d |
| PG-10819 | Tray / cabling / conducting & wiring works | 2025-09-06 → 2025-09-05 (-1d) | 2025-09-24 → 2025-09-23 (-1d) |  | 256.96d → 259.45d |
| PG-10820 | Wiring/DB/connector box installation and termination works | 2025-09-24 → 2025-09-23 (-1d) | 2025-10-13 → 2025-10-11 (-2d) |  | 256.96d → 259.45d |
| 1.3.1.1.7.4 | **PHE** | 2025-08-26 → 2025-08-25 (-1d) |  |  |  |
| PG-10821 | Bracket fixing works | 2025-08-26 → 2025-08-25 (-1d) | 2025-09-03 → 2025-09-02 (-1d) |  | 220.63d → 223.12d |
| PG-10822 | Piping Works | 2025-09-03 → 2025-09-02 (-1d) | 2025-09-20 → 2025-09-19 (-1d) |  | 220.63d → 223.12d |
| 1.3.1.1.8 | **Lift Installation and Testing works** | 2025-08-07 → 2025-08-06 (-1d) |  |  |  |
| PG-10825 | Lift Shaft Survey works | 2025-08-07 → 2025-08-06 (-1d) | 2025-08-20 → 2025-08-18 (-2d) |  | 149.96d → 152.45d |
| PG-10826 | Guide Rails fixing works | 2025-09-19 → 2025-09-18 (-1d) | 2025-11-07 → 2025-11-06 (-1d) |  | 123.46d → 125.95d |
| 1.3.1.1.9 | **Electrical Panel Works** | 2025-07-18 → 2025-07-21 (+3d) | 2026-02-24 → 2026-02-25 (+1d) |  |  |
| 1.3.1.1.9.1 | **Civil Finishing Works** | 2025-07-18 → 2025-07-21 (+3d) | 2025-09-02 → 2025-09-03 (+1d) |  |  |
| PG-10831 | Wall Tie rod hole packing & Grinding works. | 2025-07-18 → 2025-07-21 (+3d) | 2025-08-05 → 2025-08-06 (+1d) |  | 134.9d → 135.08d |
| PG-10832 | Window, Louver and Door fixing works | 2025-08-05 → 2025-08-07 (+2d) | 2025-08-13 → 2025-08-14 (+1d) |  | 134.9d → 135.08d |
| PG-10833 | Pedestal works | 2025-08-13 → 2025-08-14 (+1d) | 2025-08-26 → 2025-08-27 (+1d) |  | 134.9d → 135.08d |
| PG-10834 | Painting works | 2025-08-26 → 2025-08-27 (+1d) | 2025-09-02 → 2025-09-03 (+1d) |  | 134.9d → 135.08d |
| 1.3.1.1.9.2 | **Electrical Panel works** | 2025-09-02 → 2025-09-03 (+1d) | 2026-02-24 → 2026-02-25 (+1d) |  |  |
| PG-10835 | Electrical Panel assembly works | 2025-09-02 → 2025-09-03 (+1d) | 2025-11-11 → 2025-11-12 (+1d) |  | 134.9d → 135.08d |
| PG-10836 | Electrical Panel installation and cable termination. | 2025-11-11 → 2025-11-12 (+1d) | 2026-01-20 → 2026-01-21 (+1d) |  | 134.9d → 135.08d |
| PG-10837 | Electrical Panel Testing and commissioning works | 2026-01-20 → 2026-01-21 (+1d) | 2026-02-24 → 2026-02-25 (+1d) |  | 134.9d → 135.08d |
| 1.3.1.1.10 | **Entrance Lobby works** | 2026-02-11 → 2026-02-10 (-1d) | 2026-07-01 → 2026-06-30 (-1d) |  |  |
| PG-10838 | Flooring Works | 2026-02-11 → 2026-02-10 (-1d) | 2026-03-19 → 2026-03-17 (-2d) |  | 45.96d → 48.45d |
| PG-10839 | Glass Door and False ceiling Works | 2026-03-19 → 2026-03-17 (-2d) | 2026-04-23 → 2026-04-21 (-2d) |  | 45.96d → 48.45d |
| PG-10841 | Canopy Works | 2026-03-19 → 2026-03-17 (-2d) | 2026-04-17 → 2026-04-16 (-1d) |  | 64.8d → 67.28d |
| PG-10840 | Painting Works | 2026-04-23 → 2026-04-21 (-2d) | 2026-05-09 → 2026-05-08 (-1d) |  | 45.96d → 48.45d |
| PG-10842 | Interior Works | 2026-05-09 → 2026-05-08 (-1d) | 2026-07-01 → 2026-06-30 (-1d) |  | 45.96d → 48.45d |
| 1.3.1.1.11 | **Lightening Arrester works** | 2025-12-04 → 2025-12-03 (-1d) | 2025-12-17 → 2025-12-15 (-2d) |  |  |
| PG-10843 | Conductor will be lifted with RCC Works, But Terrace works will be done once Parapet Painting done | 2025-12-04 → 2025-12-03 (-1d) | 2025-12-17 → 2025-12-15 (-2d) |  | 250.8d → 253.28d |
| 1.3.1.2 | **Tower 2 ( 2B+G+26 ) TYP 4 Units - 106 Units** |  | 2026-08-07 → 2026-08-08 (+1d) |  |  |
| 1.3.1.2.2 | **Structure works** |  | 2025-09-26 → 2025-09-29 (+3d) |  |  |
| 1.3.1.2.2.24 | **Floor 21** |  | 2025-06-14 → 2025-06-16 (+2d) |  |  |
| 1.3.1.2.2.24.1 | **Columns / shear walls** |  | 2025-06-09 → 2025-06-10 (+1d) |  |  |
| PG-10973 | Reinforcement |  | 2025-06-06 → 2025-06-07 A (+1d) | 94% → 100% | 15.46d → none |
| PG-10974 | Formwork |  | 2025-06-09 → 2025-06-10 A (+1d) | 45% → 100% | 15.46d → none |
| 1.3.1.2.2.24.2 | **Slab, Beams & Staircase** | 2025-06-07 → 2025-06-09 (+2d) | 2025-06-14 → 2025-06-16 (+2d) |  |  |
| PG-10975 | Formwork | 2025-06-07 → 2025-06-09 A (+2d) | 2025-06-11 → 2025-06-12 A (+1d) | 0% → 100% | 15.46d → none |
| PG-10976 | Reinforcement | 2025-06-10 → 2025-06-11 A (+1d) | 2025-06-13 → 2025-06-14 (+1d) | 0% → 76% | 15.46d → 15.5d |
| PG-10977 | Concrete | 2025-06-13 → 2025-06-14 (+1d) | 2025-06-14 → 2025-06-16 (+2d) |  | 15.46d → 15.5d |

| ID | Task | Start | Finish | Complete | Total float |
| --- | --- | --- | --- | --- | --- |
| 1.3.1.2.2.25 | **Floor 22** | 2025-06-14 → 2025-06-16 (+2d) | 2025-06-27 → 2025-06-28 (+1d) |  |  |
| 1.3.1.2.2.25.1 | **Columns / shear walls** | 2025-06-14 → 2025-06-16 (+2d) | 2025-06-21 → 2025-06-23 (+2d) |  |  |
| PG-10978 | Reinforcement | 2025-06-14 → 2025-06-16 (+2d) | 2025-06-19 → 2025-06-20 (+1d) |  | 15.46d → 15.5d |
| PG-10979 | Formwork | 2025-06-17 → 2025-06-18 (+1d) | 2025-06-21 → 2025-06-23 (+2d) |  | 15.46d → 15.5d |
| 1.3.1.2.2.25.2 | **Slab, Beams & Staircase** | 2025-06-20 → 2025-06-21 (+1d) | 2025-06-27 → 2025-06-28 (+1d) |  |  |
| PG-10980 | Formwork | 2025-06-20 → 2025-06-21 (+1d) | 2025-06-24 → 2025-06-25 (+1d) |  | 15.46d → 15.5d |
| PG-10981 | Reinforcement | 2025-06-23 → 2025-06-24 (+1d) | 2025-06-26 → 2025-06-27 (+1d) |  | 15.46d → 15.5d |
| PG-10982 | Concrete | 2025-06-26 → 2025-06-27 (+1d) | 2025-06-27 → 2025-06-28 (+1d) |  | 15.46d → 15.5d |
| 1.3.1.2.2.26 | **Floor 23** | 2025-06-27 → 2025-06-28 (+1d) | 2025-07-10 → 2025-07-11 (+1d) |  |  |
| 1.3.1.2.2.26.1 | **Columns / shear walls** | 2025-06-27 → 2025-06-28 (+1d) | 2025-07-04 → 2025-07-05 (+1d) |  |  |
| PG-10983 | Reinforcement | 2025-06-27 → 2025-06-28 (+1d) | 2025-07-02 → 2025-07-03 (+1d) |  | 15.46d → 15.5d |
| PG-10984 | Formwork | 2025-06-30 → 2025-07-01 (+1d) | 2025-07-04 → 2025-07-05 (+1d) |  | 15.46d → 15.5d |
| 1.3.1.2.2.26.2 | **Slab, Beams & Staircase** | 2025-07-03 → 2025-07-04 (+1d) | 2025-07-10 → 2025-07-11 (+1d) |  |  |
| PG-10985 | Formwork | 2025-07-03 → 2025-07-04 (+1d) | 2025-07-07 → 2025-07-08 (+1d) |  | 15.46d → 15.5d |
| PG-10986 | Reinforcement | 2025-07-05 → 2025-07-07 (+2d) | 2025-07-09 → 2025-07-10 (+1d) |  | 15.46d → 15.5d |
| PG-10987 | Concrete | 2025-07-09 → 2025-07-10 (+1d) | 2025-07-10 → 2025-07-11 (+1d) |  | 15.46d → 15.5d |
| 1.3.1.2.2.27 | **Floor 24** | 2025-07-10 → 2025-07-11 (+1d) | 2025-07-23 → 2025-07-24 (+1d) |  |  |
| 1.3.1.2.2.27.1 | **Columns / shear walls** | 2025-07-10 → 2025-07-11 (+1d) | 2025-07-17 → 2025-07-18 (+1d) |  |  |
| PG-10988 | Reinforcement | 2025-07-10 → 2025-07-11 (+1d) | 2025-07-15 → 2025-07-16 (+1d) |  | 15.46d → 15.5d |
| PG-10989 | Formwork | 2025-07-12 → 2025-07-14 (+2d) | 2025-07-17 → 2025-07-18 (+1d) |  | 15.46d → 15.5d |
| 1.3.1.2.2.27.2 | **Slab, Beams & Staircase** | 2025-07-16 → 2025-07-17 (+1d) | 2025-07-23 → 2025-07-24 (+1d) |  |  |
| PG-10990 | Formwork | 2025-07-16 → 2025-07-17 (+1d) | 2025-07-19 → 2025-07-21 (+2d) |  | 15.46d → 15.5d |
| PG-10991 | Reinforcement | 2025-07-18 → 2025-07-19 (+1d) | 2025-07-22 → 2025-07-23 (+1d) |  | 15.46d → 15.5d |
| PG-10992 | Concrete | 2025-07-22 → 2025-07-23 (+1d) | 2025-07-23 → 2025-07-24 (+1d) |  | 15.46d → 15.5d |
| 1.3.1.2.2.28 | **Floor 25** | 2025-07-23 → 2025-07-24 (+1d) | 2025-08-05 → 2025-08-06 (+1d) |  |  |
| 1.3.1.2.2.28.1 | **Columns / shear walls** | 2025-07-23 → 2025-07-24 (+1d) | 2025-07-30 → 2025-07-31 (+1d) |  |  |
| PG-10993 | Reinforcement | 2025-07-23 → 2025-07-24 (+1d) | 2025-07-28 → 2025-07-29 (+1d) |  | 15.46d → 15.5d |
| PG-10994 | Formwork | 2025-07-25 → 2025-07-26 (+1d) | 2025-07-30 → 2025-07-31 (+1d) |  | 15.46d → 15.5d |
| 1.3.1.2.2.28.2 | **Slab, Beams & Staircase** | 2025-07-29 → 2025-07-30 (+1d) | 2025-08-05 → 2025-08-06 (+1d) |  |  |
| PG-10995 | Formwork | 2025-07-29 → 2025-07-30 (+1d) | 2025-08-01 → 2025-08-02 (+1d) |  | 15.46d → 15.5d |
| PG-10996 | Reinforcement | 2025-07-31 → 2025-08-01 (+1d) | 2025-08-04 → 2025-08-05 (+1d) |  | 15.46d → 15.5d |
| PG-10997 | Concrete | 2025-08-04 → 2025-08-05 (+1d) | 2025-08-05 → 2025-08-06 (+1d) |  | 15.46d → 15.5d |
| 1.3.1.2.2.29 | **Floor 26** | 2025-08-05 → 2025-08-06 (+1d) | 2025-08-19 → 2025-08-20 (+1d) |  |  |
| 1.3.1.2.2.29.1 | **Columns / shear walls** | 2025-08-05 → 2025-08-06 (+1d) | 2025-08-12 → 2025-08-13 (+1d) |  |  |
| PG-10998 | Reinforcement | 2025-08-05 → 2025-08-06 (+1d) | 2025-08-09 → 2025-08-11 (+2d) |  | 15.46d → 15.5d |
| PG-10999 | Formwork | 2025-08-07 → 2025-08-08 (+1d) | 2025-08-12 → 2025-08-13 (+1d) |  | 15.46d → 15.5d |
| 1.3.1.2.2.29.2 | **Slab, Beams & Staircase** | 2025-08-11 → 2025-08-12 (+1d) | 2025-08-19 → 2025-08-20 (+1d) |  |  |
| PG-11000 | Formwork | 2025-08-11 → 2025-08-12 (+1d) | 2025-08-14 → 2025-08-16 (+2d) |  | 15.46d → 15.5d |
| PG-11001 | Reinforcement | 2025-08-13 → 2025-08-14 (+1d) | 2025-08-18 → 2025-08-19 (+1d) |  | 15.46d → 15.5d |
| PG-11002 | Concrete | 2025-08-18 → 2025-08-19 (+1d) | 2025-08-19 → 2025-08-20 (+1d) |  | 15.46d → 15.5d |
| 1.3.1.2.2.30 | **Above Terrace Floor** | 2025-08-19 → 2025-08-20 (+1d) | 2025-09-26 → 2025-09-29 (+3d) |  |  |
| 1.3.1.2.2.30.1 | **Columns / shear walls/Parapet Walls** | 2025-08-19 → 2025-08-20 (+1d) | 2025-09-01 → 2025-09-03 (+2d) |  |  |
| PG-11003 | Reinforcement | 2025-08-19 → 2025-08-20 (+1d) | 2025-08-23 → 2025-08-25 (+2d) |  | 120.96d → 121d |
| PG-11004 | Formwork | 2025-08-21 → 2025-08-22 (+1d) | 2025-08-27 → 2025-08-28 (+1d) |  | 120.96d → 121d |
| PG-11005 | Concrete | 2025-08-27 → 2025-08-28 (+1d) | 2025-09-01 → 2025-09-03 (+2d) |  | 120.96d → 121d |
| 1.3.1.2.2.30.2 | **Slab, Beams & Staircase Head rooms, Lift headroom** | 2025-08-25 → 2025-08-26 (+1d) | 2025-09-26 → 2025-09-29 (+3d) |  |  |
| PG-11009 | Terrace Waterproofing and Protective finishing. | 2025-08-25 → 2025-08-26 (+1d) | 2025-09-26 → 2025-09-29 (+3d) |  | 213.63d → 213.67d |
| PG-11006 | Formwork | 2025-09-01 → 2025-09-03 (+2d) | 2025-09-06 → 2025-09-09 (+3d) |  | 213.63d → 213.67d |
| PG-11007 | Reinforcement | 2025-09-06 → 2025-09-09 (+3d) | 2025-09-12 → 2025-09-15 (+3d) |  | 213.63d → 213.67d |
| PG-11008 | Concrete | 2025-09-12 → 2025-09-15 (+3d) | 2025-09-15 → 2025-09-17 (+2d) |  | 213.63d → 213.67d |
| 1.3.1.2.3 | **MEP Internal works** |  | 2026-02-25 → 2026-02-26 (+1d) |  |  |
| 1.3.1.2.3.13 | **Floor 10** |  | 2025-06-18 → 2025-06-19 (+1d) |  |  |
| 1.3.1.2.3.13.1 | **PHE Works** |  | 2025-06-18 → 2025-06-19 (+1d) |  |  |
| PG-11109 | Final Fix - CP & Sanitary fixtures | 2025-06-06 → 2025-06-07 A (+1d) | 2025-06-18 → 2025-06-19 (+1d) | 0% → 49% | 366.83d → 367d |
| 1.3.1.2.3.13.2 | **Fire Fighting Works** |  | 2025-06-18 → 2025-06-19 (+1d) |  |  |
| PG-11112 | Final Fix - Smoke & heat detectors, FHC , FAS Etc. | 2025-06-06 → 2025-06-07 A (+1d) | 2025-06-18 → 2025-06-19 (+1d) | 0% → 57% | 366.83d → 367d |
| 1.3.1.2.3.13.3 | **Electrical Works** |  | 2025-06-18 → 2025-06-19 (+1d) |  |  |
| PG-11115 | Final Fix - Electrical Fixtures | 2025-06-12 → 2025-06-13 A (+1d) | 2025-06-18 → 2025-06-19 (+1d) | 0% → 9% | 366.83d → 367d |
| PG-11120 | 2nd Fix - Sprinkler fixing & Pressure testing |  | 2025-06-07 → 2025-06-09 A (+2d) | 81% → 100% | 365.21d → none |
| PG-11123 | 2nd Fix - Wiring works |  | 2025-06-06 → 2025-06-07 A (+1d) | 93% → 100% | 371.05d → none |
| 1.3.1.2.3.15 | **Floor 12** |  | 2025-07-11 → 2025-07-14 (+3d) |  |  |
| 1.3.1.2.3.15.1 | **PHE Works** |  | 2025-07-11 → 2025-07-14 (+3d) |  |  |
| PG-11127 | Final Fix - CP & Sanitary fixtures | 2025-06-30 → 2025-07-02 (+2d) | 2025-07-11 → 2025-07-14 (+3d) |  | 347.56d → 347.05d |
| 1.3.1.2.3.15.2 | **Fire Fighting Works** |  | 2025-07-11 → 2025-07-14 (+3d) |  |  |
| PG-11129 | 2nd Fix - Sprinkler fixing & Pressure testing | 2025-06-07 → 2025-06-11 A (+4d) | 2025-06-19 → 2025-06-21 (+2d) | 0% → 26% | 356.56d → 356.05d |
| PG-11130 | Final Fix - Smoke & heat detectors, FHC , FAS Etc. | 2025-06-30 → 2025-07-02 (+2d) | 2025-07-11 → 2025-07-14 (+3d) |  | 347.56d → 347.05d |
| 1.3.1.2.3.15.3 | **Electrical Works** |  | 2025-07-11 → 2025-07-14 (+3d) |  |  |
| PG-11132 | 2nd Fix - Wiring works |  | 2025-06-20 → 2025-06-21 (+1d) | 3% → 38% | 359.93d → 359.66d |
| PG-11133 | Final Fix - Electrical Fixtures | 2025-07-04 → 2025-07-07 (+3d) | 2025-07-11 → 2025-07-14 (+3d) |  | 347.56d → 347.05d |
| 1.3.1.2.3.16 | **Floor 13** |  | 2025-07-25 → 2025-07-26 (+1d) |  |  |

| ID | Task | Start | Finish | Complete | Total float |
| --- | --- | --- | --- | --- | --- |
| 1.3.1.2.3.16.1 | **PHE Works** |  | 2025-07-25 → 2025-07-26 (+1d) |  |  |
| PG-11136 | Final Fix - CP & Sanitary fixtures | 2025-07-14 → 2025-07-15 (+1d) | 2025-07-25 → 2025-07-26 (+1d) |  | 336.15d → 336.33d |
| 1.3.1.2.3.16.2 | **Fire Fighting Works** |  | 2025-07-25 → 2025-07-26 (+1d) |  |  |
| PG-11138 | 2nd Fix - Sprinkler fixing & Pressure testing | 2025-06-21 → 2025-06-23 (+2d) | 2025-07-03 → 2025-07-04 (+1d) |  | 345.15d → 345.33d |
| PG-11139 | Final Fix - Smoke & heat detectors, FHC , FAS Etc. | 2025-07-14 → 2025-07-15 (+1d) | 2025-07-25 → 2025-07-26 (+1d) |  | 336.15d → 336.33d |
| 1.3.1.2.3.16.3 | **Electrical Works** |  | 2025-07-25 → 2025-07-26 (+1d) |  |  |
| PG-11141 | 2nd Fix - Wiring works | 2025-06-17 → 2025-06-18 (+1d) | 2025-07-02 → 2025-07-03 (+1d) |  | 351.15d → 351.33d |
| PG-11142 | Final Fix - Electrical Fixtures | 2025-07-19 → 2025-07-21 (+2d) | 2025-07-25 → 2025-07-26 (+1d) |  | 336.15d → 336.33d |
| PG-11144 | 2nd Fix - diverter fixing & Pressure testing |  | 2025-06-11 A | 65% → 100% | 323.3d → none |
| PG-11145 | Final Fix - CP & Sanitary fixtures | 2025-07-30 → 2025-07-29 (-1d) |  |  | 323.3d → 324.89d |
| PG-11146 | 1st Fix - Piping and Shaft hydrant works |  | 2025-06-12 A | 63% → 100% | 370.13d → none |
| PG-11147 | 2nd Fix - Sprinkler fixing & Pressure testing | 2025-07-07 → 2025-07-05 (-2d) | 2025-07-18 → 2025-07-17 (-1d) |  | 333.3d → 334.89d |
| PG-11148 | Final Fix - Smoke & heat detectors, FHC , FAS Etc. | 2025-07-30 → 2025-07-29 (-1d) |  |  | 323.3d → 324.89d |
| PG-11150 | 2nd Fix - Wiring works | 2025-07-02 → 2025-07-01 (-1d) | 2025-07-17 → 2025-07-16 (-1d) |  | 338.3d → 339.89d |
| PG-11151 | Final Fix - Electrical Fixtures | 2025-08-04 → 2025-08-02 (-2d) |  |  | 323.3d → 324.89d |
| 1.3.1.2.3.18 | **Floor 15** |  | 2025-08-22 → 2025-08-23 (+1d) |  |  |
| 1.3.1.2.3.18.1 | **PHE Works** |  | 2025-08-22 → 2025-08-23 (+1d) |  |  |
| PG-11152 | 1st Fix - Piping works |  |  | 25% → 75% | 162.33d → 163.53d |
| PG-11153 | 2nd Fix - diverter fixing & Pressure testing | 2025-06-12 → 2025-06-13 A (+1d) |  | 0% → 3% | 162.33d → 162.89d |
| PG-11154 | Final Fix - CP & Sanitary fixtures |  | 2025-08-22 → 2025-08-23 (+1d) |  | 313.33d → 313.89d |
| 1.3.1.2.3.18.2 | **Fire Fighting Works** | 2025-06-11 → 2025-06-12 (+1d) | 2025-08-22 → 2025-08-23 (+1d) |  |  |
| PG-11155 | 1st Fix - Piping and Shaft hydrant works | 2025-06-11 → 2025-06-12 A (+1d) |  | 0% → 10% | 360.65d → 361.55d |
| PG-11157 | Final Fix - Smoke & heat detectors, FHC , FAS Etc. |  | 2025-08-22 → 2025-08-23 (+1d) |  | 313.33d → 313.89d |
| 1.3.1.2.3.18.3 | **Electrical Works** |  | 2025-08-22 → 2025-08-23 (+1d) |  |  |
| PG-11158 | 1st Fix - GI wire pulling |  | 2025-06-11 → 2025-06-12 A (+1d) | 46% → 100% | 360.65d → none |
| PG-11159 | 2nd Fix - Wiring works | 2025-07-12 → 2025-07-14 (+2d) |  |  | 327.33d → 327.89d |
| PG-11160 | Final Fix - Electrical Fixtures |  | 2025-08-22 → 2025-08-23 (+1d) |  | 313.33d → 313.89d |
| 1.3.1.2.3.19 | **Floor 16** | 2025-06-14 → 2025-06-16 (+2d) | 2025-09-02 → 2025-09-03 (+1d) |  |  |
| 1.3.1.2.3.19.1 | **PHE Works** | 2025-06-14 → 2025-06-16 (+2d) | 2025-09-02 → 2025-09-03 (+1d) |  |  |
| PG-11161 | 1st Fix - Piping works | 2025-06-14 → 2025-06-16 (+2d) | 2025-06-28 → 2025-06-30 (+2d) |  | 303.8d → 303.83d |
| PG-11162 | 2nd Fix - diverter fixing & Pressure testing | 2025-06-24 → 2025-06-25 (+1d) | 2025-07-05 → 2025-07-07 (+2d) |  | 303.8d → 303.83d |
| PG-11163 | Final Fix - CP & Sanitary fixtures | 2025-08-21 → 2025-08-22 (+1d) | 2025-09-02 → 2025-09-03 (+1d) |  | 303.8d → 303.83d |
| 1.3.1.2.3.19.2 | **Fire Fighting Works** | 2025-06-24 → 2025-06-25 (+1d) | 2025-09-02 → 2025-09-03 (+1d) |  |  |
| PG-11164 | 1st Fix - Piping and Shaft hydrant works | 2025-06-24 → 2025-06-25 (+1d) | 2025-07-08 → 2025-07-09 (+1d) |  | 349.63d → 349.67d |
| PG-11165 | 2nd Fix - Sprinkler fixing & Pressure testing | 2025-07-31 → 2025-08-01 (+1d) | 2025-08-12 → 2025-08-13 (+1d) |  | 310.96d → 311d |
| PG-11166 | Final Fix - Smoke & heat detectors, FHC , FAS Etc. | 2025-08-21 → 2025-08-22 (+1d) | 2025-09-02 → 2025-09-03 (+1d) |  | 303.8d → 303.83d |
| 1.3.1.2.3.19.3 | **Electrical Works** | 2025-06-14 → 2025-06-16 (+2d) | 2025-09-02 → 2025-09-03 (+1d) |  |  |
| PG-11167 | 1st Fix - GI wire pulling | 2025-06-14 → 2025-06-16 (+2d) | 2025-06-24 → 2025-06-25 (+1d) |  | 349.63d → 349.67d |
| PG-11168 | 2nd Fix - Wiring works | 2025-07-25 → 2025-07-26 (+1d) | 2025-08-11 → 2025-08-12 (+1d) |  | 316.8d → 316.83d |
| PG-11169 | Final Fix - Electrical Fixtures | 2025-08-27 → 2025-08-28 (+1d) | 2025-09-02 → 2025-09-03 (+1d) |  | 303.8d → 303.83d |
| 1.3.1.2.3.20 | **Floor 17** | 2025-06-27 → 2025-06-28 (+1d) | 2025-09-15 → 2025-09-16 (+1d) |  |  |
| 1.3.1.2.3.20.1 | **PHE Works** | 2025-06-27 → 2025-06-28 (+1d) | 2025-09-15 → 2025-09-16 (+1d) |  |  |
| PG-11170 | 1st Fix - Piping works | 2025-06-27 → 2025-06-28 (+1d) | 2025-07-11 → 2025-07-12 (+1d) |  | 292.8d → 292.83d |
| PG-11171 | 2nd Fix - diverter fixing & Pressure testing | 2025-07-07 → 2025-07-08 (+1d) | 2025-07-18 → 2025-07-19 (+1d) |  | 292.8d → 292.83d |
| PG-11172 | Final Fix - CP & Sanitary fixtures | 2025-09-03 → 2025-09-04 (+1d) | 2025-09-15 → 2025-09-16 (+1d) |  | 292.8d → 292.83d |
| 1.3.1.2.3.20.2 | **Fire Fighting Works** | 2025-07-07 → 2025-07-08 (+1d) | 2025-09-15 → 2025-09-16 (+1d) |  |  |
| PG-11173 | 1st Fix - Piping and Shaft hydrant works | 2025-07-07 → 2025-07-08 (+1d) | 2025-07-21 → 2025-07-22 (+1d) |  | 338.63d → 338.67d |
| PG-11174 | 2nd Fix - Sprinkler fixing & Pressure testing | 2025-08-13 → 2025-08-14 (+1d) | 2025-08-26 → 2025-08-27 (+1d) |  | 299.96d → 300d |
| PG-11175 | Final Fix - Smoke & heat detectors, FHC , FAS Etc. | 2025-09-03 → 2025-09-04 (+1d) | 2025-09-15 → 2025-09-16 (+1d) |  | 292.8d → 292.83d |
| 1.3.1.2.3.20.3 | **Electrical Works** | 2025-06-27 → 2025-06-28 (+1d) | 2025-09-15 → 2025-09-16 (+1d) |  |  |
| PG-11176 | 1st Fix - GI wire pulling | 2025-06-27 → 2025-06-28 (+1d) | 2025-07-07 → 2025-07-08 (+1d) |  | 338.63d → 338.67d |
| PG-11177 | 2nd Fix - Wiring works | 2025-08-07 → 2025-08-08 (+1d) | 2025-08-25 → 2025-08-26 (+1d) |  | 305.8d → 305.83d |
| PG-11178 | Final Fix - Electrical Fixtures | 2025-09-09 → 2025-09-10 (+1d) | 2025-09-15 → 2025-09-16 (+1d) |  | 292.8d → 292.83d |
| 1.3.1.2.3.21 | **Floor 18** | 2025-07-10 → 2025-07-11 (+1d) | 2025-09-29 → 2025-09-30 (+1d) |  |  |
| 1.3.1.2.3.21.1 | **PHE Works** | 2025-07-10 → 2025-07-11 (+1d) | 2025-09-29 → 2025-09-30 (+1d) |  |  |
| PG-11179 | 1st Fix - Piping works | 2025-07-10 → 2025-07-11 (+1d) | 2025-07-23 → 2025-07-25 (+2d) |  | 280.96d → 281d |
| PG-11180 | 2nd Fix - diverter fixing & Pressure testing | 2025-07-21 → 2025-07-22 (+1d) | 2025-07-30 → 2025-08-01 (+2d) |  | 280.96d → 281d |
| PG-11181 | Final Fix - CP & Sanitary fixtures | 2025-09-16 → 2025-09-18 (+2d) | 2025-09-29 → 2025-09-30 (+1d) |  | 280.96d → 281d |
| 1.3.1.2.3.21.2 | **Fire Fighting Works** | 2025-07-19 → 2025-07-21 (+2d) | 2025-09-29 → 2025-09-30 (+1d) |  |  |
| PG-11182 | 1st Fix - Piping and Shaft hydrant works | 2025-07-19 → 2025-07-21 (+2d) | 2025-08-02 → 2025-08-04 (+2d) |  | 328.63d → 328.67d |
| PG-11183 | 2nd Fix - Sprinkler fixing & Pressure testing | 2025-08-26 → 2025-08-27 (+1d) | 2025-09-06 → 2025-09-09 (+3d) |  | 288.96d → 289d |
| PG-11184 | Final Fix - Smoke & heat detectors, FHC , FAS Etc. | 2025-09-16 → 2025-09-18 (+2d) | 2025-09-29 → 2025-09-30 (+1d) |  | 280.96d → 281d |
| 1.3.1.2.3.21.3 | **Electrical Works** | 2025-07-10 → 2025-07-11 (+1d) | 2025-09-29 → 2025-09-30 (+1d) |  |  |
| PG-11185 | 1st Fix - GI wire pulling | 2025-07-10 → 2025-07-11 (+1d) | 2025-07-19 → 2025-07-21 (+2d) |  | 328.63d → 328.67d |
| PG-11186 | 2nd Fix - Wiring works | 2025-08-19 → 2025-08-20 (+1d) | 2025-09-05 → 2025-09-08 (+3d) |  | 294.96d → 295d |
| PG-11187 | Final Fix - Electrical Fixtures | 2025-09-22 → 2025-09-24 (+2d) | 2025-09-29 → 2025-09-30 (+1d) |  | 280.96d → 281d |
| 1.3.1.2.3.22 | **Floor 19** | 2025-07-23 → 2025-07-24 (+1d) | 2025-10-13 → 2025-10-14 (+1d) |  |  |
| 1.3.1.2.3.22.1 | **PHE Works** | 2025-07-23 → 2025-07-24 (+1d) | 2025-10-13 → 2025-10-14 (+1d) |  |  |
| PG-11188 | 1st Fix - Piping works | 2025-07-23 → 2025-07-24 (+1d) | 2025-08-05 → 2025-08-07 (+2d) |  | 269.96d → 270d |
| PG-11189 | 2nd Fix - diverter fixing & Pressure testing | 2025-08-02 → 2025-08-04 (+2d) | 2025-08-12 → 2025-08-14 (+2d) |  | 269.96d → 270d |

| ID | Task | Start | Finish | Total float |
| --- | --- | --- | --- | --- |
| PG-11190 | Final Fix - CP & Sanitary fixtures | 2025-09-29 → 2025-10-01 (+2d) | 2025-10-13 → 2025-10-14 (+1d) | 269.96d → 270d |
| 1.3.1.2.3.22.2 | **Fire Fighting Works** | 2025-07-31 → 2025-08-01 (+1d) | 2025-10-13 → 2025-10-14 (+1d) |  |
| PG-11191 | 1st Fix - Piping and Shaft hydrant works | 2025-07-31 → 2025-08-01 (+1d) | 2025-08-16 → 2025-08-18 (+2d) | 317.63d → 317.67d |
| PG-11192 | 2nd Fix - Sprinkler fixing & Pressure testing | 2025-09-08 → 2025-09-09 (+1d) | 2025-09-19 → 2025-09-22 (+3d) | 277.96d → 278d |
| PG-11193 | Final Fix - Smoke & heat detectors, FHC , FAS Etc. | 2025-09-29 → 2025-10-01 (+2d) | 2025-10-13 → 2025-10-14 (+1d) | 269.96d → 270d |
| 1.3.1.2.3.22.3 | **Electrical Works** | 2025-07-23 → 2025-07-24 (+1d) | 2025-10-13 → 2025-10-14 (+1d) |  |
| PG-11194 | 1st Fix - GI wire pulling | 2025-07-23 → 2025-07-24 (+1d) | 2025-08-01 → 2025-08-02 (+1d) | 317.63d → 317.67d |
| PG-11195 | 2nd Fix - Wiring works | 2025-09-01 → 2025-09-02 (+1d) | 2025-09-18 → 2025-09-20 (+2d) | 283.96d → 284d |
| PG-11196 | Final Fix - Electrical Fixtures | 2025-10-06 → 2025-10-08 (+2d) | 2025-10-13 → 2025-10-14 (+1d) | 269.96d → 270d |
| 1.3.1.2.3.23 | **Floor 20** | 2025-08-05 → 2025-08-06 (+1d) | 2025-10-27 → 2025-10-28 (+1d) |  |
| 1.3.1.2.3.23.1 | **PHE Works** | 2025-08-05 → 2025-08-06 (+1d) | 2025-10-27 → 2025-10-28 (+1d) |  |
| PG-11197 | 1st Fix - Piping works | 2025-08-05 → 2025-08-06 (+1d) | 2025-08-20 → 2025-08-22 (+2d) | 257.96d → 258d |
| PG-11198 | 2nd Fix - diverter fixing & Pressure testing | 2025-08-18 → 2025-08-19 (+1d) | 2025-08-27 → 2025-08-29 (+2d) | 257.96d → 258d |
| PG-11199 | Final Fix - CP & Sanitary fixtures | 2025-10-14 → 2025-10-16 (+2d) | 2025-10-27 → 2025-10-28 (+1d) | 257.96d → 258d |
| 1.3.1.2.3.23.2 | **Fire Fighting Works** | 2025-08-16 → 2025-08-18 (+2d) | 2025-10-27 → 2025-10-28 (+1d) |  |
| PG-11200 | 1st Fix - Piping and Shaft hydrant works | 2025-08-16 → 2025-08-18 (+2d) | 2025-08-29 → 2025-09-01 (+3d) | 305.8d → 305.83d |
| PG-11201 | 2nd Fix - Sprinkler fixing & Pressure testing | 2025-09-22 → 2025-09-23 (+1d) | 2025-10-04 → 2025-10-07 (+3d) | 265.96d → 266d |
| PG-11202 | Final Fix - Smoke & heat detectors, FHC , FAS Etc. | 2025-10-14 → 2025-10-16 (+2d) | 2025-10-27 → 2025-10-28 (+1d) | 257.96d → 258d |
| 1.3.1.2.3.23.3 | **Electrical Works** | 2025-08-05 → 2025-08-06 (+1d) | 2025-10-27 → 2025-10-28 (+1d) |  |
| PG-11203 | 1st Fix - GI wire pulling | 2025-08-05 → 2025-08-06 (+1d) | 2025-08-14 → 2025-08-18 (+4d) | 305.8d → 305.83d |
| PG-11204 | 2nd Fix - Wiring works | 2025-09-15 → 2025-09-16 (+1d) | 2025-10-03 → 2025-10-06 (+3d) | 271.96d → 272d |
| PG-11205 | Final Fix - Electrical Fixtures | 2025-10-20 → 2025-10-22 (+2d) | 2025-10-27 → 2025-10-28 (+1d) | 257.96d → 258d |
| 1.3.1.2.3.24 | **Floor 21** | 2025-08-19 → 2025-08-20 (+1d) | 2025-11-08 → 2025-11-10 (+2d) |  |
| 1.3.1.2.3.24.1 | **PHE Works** | 2025-08-19 → 2025-08-20 (+1d) | 2025-11-08 → 2025-11-10 (+2d) |  |
| PG-11206 | 1st Fix - Piping works | 2025-08-19 → 2025-08-20 (+1d) | 2025-08-30 → 2025-09-02 (+3d) | 15.46d → 15.5d |
| PG-11207 | 2nd Fix - diverter fixing & Pressure testing | 2025-08-27 → 2025-08-28 (+1d) | 2025-09-06 → 2025-09-09 (+3d) | 248.3d → 248.33d |
| PG-11208 | Final Fix - CP & Sanitary fixtures | 2025-10-25 → 2025-10-28 (+3d) | 2025-11-08 → 2025-11-10 (+2d) | 248.3d → 248.33d |
| 1.3.1.2.3.24.2 | **Fire Fighting Works** | 2025-08-27 → 2025-08-28 (+1d) | 2025-11-08 → 2025-11-10 (+2d) |  |
| PG-11209 | 1st Fix - Piping and Shaft hydrant works | 2025-08-27 → 2025-08-28 (+1d) | 2025-09-09 → 2025-09-11 (+2d) | 295.96d → 296d |
| PG-11210 | 2nd Fix - Sprinkler fixing & Pressure testing | 2025-10-04 → 2025-10-06 (+2d) | 2025-10-15 → 2025-10-17 (+2d) | 257.3d → 257.33d |
| PG-11211 | Final Fix - Smoke & heat detectors, FHC , FAS Etc. | 2025-10-25 → 2025-10-28 (+3d) | 2025-11-08 → 2025-11-10 (+2d) | 248.3d → 248.33d |
| 1.3.1.2.3.24.3 | **Electrical Works** | 2025-08-19 → 2025-08-20 (+1d) | 2025-10-27 → 2025-10-28 (+1d) |  |
| PG-11212 | 1st Fix - GI wire pulling | 2025-08-19 → 2025-08-20 (+1d) | 2025-08-26 → 2025-08-28 (+2d) | 295.96d → 296d |
| PG-11213 | 2nd Fix - Wiring works | 2025-09-15 → 2025-09-16 (+1d) | 2025-10-03 → 2025-10-06 (+3d) | 272.3d → 272.33d |
| PG-11214 | Final Fix - Electrical Fixtures | 2025-10-20 → 2025-10-22 (+2d) | 2025-10-27 → 2025-10-28 (+1d) | 258.3d → 258.33d |
| 1.3.1.2.3.25 | **Floor 22** | 2025-09-08 → 2025-09-10 (+2d) | 2025-12-01 → 2025-12-02 (+1d) |  |
| 1.3.1.2.3.25.1 | **PHE Works** | 2025-09-08 → 2025-09-10 (+2d) | 2025-12-01 → 2025-12-02 (+1d) |  |
| PG-11215 | 1st Fix - Piping works | 2025-09-08 → 2025-09-10 (+2d) | 2025-09-22 → 2025-09-23 (+1d) | 124.3d → 124.33d |
| PG-11216 | 2nd Fix - diverter fixing & Pressure testing | 2025-09-17 → 2025-09-18 (+1d) | 2025-09-29 → 2025-09-30 (+1d) | 133.8d → 133.83d |
| PG-11217 | Final Fix - CP & Sanitary fixtures | 2025-11-19 → 2025-11-20 (+1d) | 2025-12-01 → 2025-12-02 (+1d) | 228.46d → 228.5d |
| 1.3.1.2.3.25.2 | **Fire Fighting Works** | 2025-09-18 → 2025-09-19 (+1d) | 2025-12-01 → 2025-12-02 (+1d) |  |
| PG-11218 | 1st Fix - Piping and Shaft hydrant works | 2025-09-18 → 2025-09-19 (+1d) | 2025-10-01 → 2025-10-03 (+2d) | 145.96d → 146d |
| PG-11219 | 2nd Fix - Sprinkler fixing & Pressure testing | 2025-10-25 → 2025-10-27 (+2d) | 2025-11-07 → 2025-11-08 (+1d) | 238.46d → 238.5d |
| PG-11220 | Final Fix - Smoke & heat detectors, FHC , FAS Etc. | 2025-11-19 → 2025-11-20 (+1d) | 2025-12-01 → 2025-12-02 (+1d) | 228.46d → 228.5d |
| 1.3.1.2.3.25.3 | **Electrical Works** | 2025-09-08 → 2025-09-10 (+2d) | 2025-12-01 → 2025-12-02 (+1d) |  |
| PG-11221 | 1st Fix - GI wire pulling | 2025-09-08 → 2025-09-10 (+2d) | 2025-09-17 → 2025-09-18 (+1d) | 15.46d → 15.5d |
| PG-11222 | 2nd Fix - Wiring works | 2025-10-18 → 2025-10-20 (+2d) | 2025-11-06 → 2025-11-07 (+1d) | 243.46d → 243.5d |
| PG-11223 | Final Fix - Electrical Fixtures | 2025-11-24 → 2025-11-25 (+1d) | 2025-12-01 → 2025-12-02 (+1d) | 228.46d → 228.5d |
| 1.3.1.2.3.26 | **Floor 23** | 2025-09-30 → 2025-10-01 (+1d) | 2025-12-22 → 2025-12-23 (+1d) |  |
| 1.3.1.2.3.26.1 | **PHE Works** | 2025-09-30 → 2025-10-01 (+1d) | 2025-12-22 → 2025-12-23 (+1d) |  |
| PG-11224 | 1st Fix - Piping works | 2025-09-30 → 2025-10-01 (+1d) | 2025-10-14 → 2025-10-15 (+1d) | 124.3d → 124.33d |
| PG-11225 | 2nd Fix - diverter fixing & Pressure testing | 2025-10-10 → 2025-10-11 (+1d) | 2025-10-21 → 2025-10-22 (+1d) | 210.46d → 210.5d |
| PG-11226 | Final Fix - CP & Sanitary fixtures | 2025-12-10 → 2025-12-11 (+1d) | 2025-12-22 → 2025-12-23 (+1d) | 210.46d → 210.5d |
| 1.3.1.2.3.26.2 | **Fire Fighting Works** | 2025-10-10 → 2025-10-11 (+1d) | 2025-12-22 → 2025-12-23 (+1d) |  |
| PG-11227 | 1st Fix - Piping and Shaft hydrant works | 2025-10-10 → 2025-10-11 (+1d) | 2025-10-24 → 2025-10-25 (+1d) | 257.3d → 257.33d |
| PG-11228 | 2nd Fix - Sprinkler fixing & Pressure testing | 2025-11-18 → 2025-11-19 (+1d) | 2025-11-28 → 2025-11-29 (+1d) | 220.46d → 220.5d |
| PG-11229 | Final Fix - Smoke & heat detectors, FHC , FAS Etc. | 2025-12-10 → 2025-12-11 (+1d) | 2025-12-22 → 2025-12-23 (+1d) | 210.46d → 210.5d |
| 1.3.1.2.3.26.3 | **Electrical Works** | 2025-09-30 → 2025-10-01 (+1d) | 2025-12-22 → 2025-12-23 (+1d) |  |
| PG-11230 | 1st Fix - GI wire pulling | 2025-09-30 → 2025-10-01 (+1d) | 2025-10-10 → 2025-10-11 (+1d) | 257.3d → 257.33d |
| PG-11231 | 2nd Fix - Wiring works | 2025-11-11 → 2025-11-12 (+1d) | 2025-11-27 → 2025-11-28 (+1d) | 225.46d → 225.5d |
| PG-11232 | Final Fix - Electrical Fixtures | 2025-12-15 → 2025-12-16 (+1d) | 2025-12-22 → 2025-12-23 (+1d) | 210.46d → 210.5d |
| 1.3.1.2.3.27 | **Floor 24** | 2025-10-22 → 2025-10-23 (+1d) | 2026-01-10 → 2026-01-12 (+2d) |  |
| 1.3.1.2.3.27.1 | **PHE Works** | 2025-10-22 → 2025-10-23 (+1d) | 2026-01-10 → 2026-01-12 (+2d) |  |
| PG-11233 | 1st Fix - Piping works | 2025-10-22 → 2025-10-23 (+1d) | 2025-11-06 → 2025-11-07 (+1d) | 124.3d → 124.33d |
| PG-11234 | 2nd Fix - diverter fixing & Pressure testing | 2025-10-31 → 2025-11-03 (+3d) | 2025-11-13 → 2025-11-14 (+1d) | 191.3d → 191.33d |
| PG-11235 | Final Fix - CP & Sanitary fixtures | 2025-12-30 → 2025-12-31 (+1d) | 2026-01-10 → 2026-01-12 (+2d) | 191.3d → 191.33d |
| 1.3.1.2.3.27.2 | **Fire Fighting Works** | 2025-10-31 → 2025-11-03 (+3d) | 2026-01-10 → 2026-01-12 (+2d) |  |
| PG-11236 | 1st Fix - Piping and Shaft hydrant works | 2025-10-31 → 2025-11-03 (+3d) | 2025-11-15 → 2025-11-17 (+2d) | 239.96d → 240d |
| PG-11237 | 2nd Fix - Sprinkler fixing & Pressure testing | 2025-12-09 → 2025-12-10 (+1d) | 2025-12-20 → 2025-12-22 (+2d) | 199.8d → 199.83d |
| PG-11238 | Final Fix - Smoke & heat detectors, FHC , FAS Etc. | 2025-12-30 → 2025-12-31 (+1d) | 2026-01-10 → 2026-01-12 (+2d) | 191.3d → 191.33d |

| ID | Task | Start | Finish | Complete | Total float |
| --- | --- | --- | --- | --- | --- |
| 1.3.1.2.3.27.3 | **Electrical Works** | 2025-10-22 → 2025-10-23 (+1d) | 2026-01-10 → 2026-01-12 (+2d) |  |  |
| PG-11239 | 1st Fix - GI wire pulling | 2025-10-22 → 2025-10-23 (+1d) | 2025-10-31 → 2025-11-03 (+3d) |  | 239.96d → 240d |
| PG-11240 | 2nd Fix - Wiring works | 2025-12-02 → 2025-12-03 (+1d) | 2025-12-19 → 2025-12-20 (+1d) |  | 205.3d → 205.33d |
| PG-11241 | Final Fix - Electrical Fixtures | 2026-01-05 → 2026-01-06 (+1d) | 2026-01-10 → 2026-01-12 (+2d) |  | 191.3d → 191.33d |
| 1.3.1.2.3.28 | **Floor 25** | 2025-11-14 → 2025-11-15 (+1d) | 2026-02-05 → 2026-02-06 (+1d) |  |  |
| 1.3.1.2.3.28.1 | **PHE Works** | 2025-11-14 → 2025-11-15 (+1d) | 2026-02-05 → 2026-02-06 (+1d) |  |  |
| PG-11242 | 1st Fix - Piping works | 2025-11-14 → 2025-11-15 (+1d) | 2025-11-27 → 2025-11-28 (+1d) |  | 124.3d → 124.33d |
| PG-11243 | 2nd Fix - diverter fixing & Pressure testing | 2025-11-24 → 2025-11-25 (+1d) | 2025-12-04 → 2025-12-05 (+1d) |  | 171.8d → 171.83d |
| PG-11244 | Final Fix - CP & Sanitary fixtures | 2026-01-22 → 2026-01-23 (+1d) | 2026-02-05 → 2026-02-06 (+1d) |  | 171.8d → 171.83d |
| 1.3.1.2.3.28.2 | **Fire Fighting Works** | 2025-11-24 → 2025-11-25 (+1d) | 2026-02-05 → 2026-02-06 (+1d) |  |  |
| PG-11245 | 1st Fix - Piping and Shaft hydrant works | 2025-11-24 → 2025-11-25 (+1d) | 2025-12-06 → 2025-12-08 (+2d) |  | 219.46d → 219.5d |
| PG-11246 | 2nd Fix - Sprinkler fixing & Pressure testing | 2025-12-31 → 2026-01-01 (+1d) | 2026-01-10 → 2026-01-12 (+2d) |  | 181.8d → 181.83d |
| PG-11247 | Final Fix - Smoke & heat detectors, FHC , FAS Etc. | 2026-01-22 → 2026-01-23 (+1d) | 2026-02-05 → 2026-02-06 (+1d) |  | 171.8d → 171.83d |
| 1.3.1.2.3.28.3 | **Electrical Works** | 2025-11-14 → 2025-11-15 (+1d) | 2026-02-05 → 2026-02-06 (+1d) |  |  |
| PG-11248 | 1st Fix - GI wire pulling | 2025-11-14 → 2025-11-15 (+1d) | 2025-11-22 → 2025-11-24 (+2d) |  | 219.46d → 219.5d |
| PG-11249 | 2nd Fix - Wiring works | 2025-12-24 → 2025-12-25 (+1d) | 2026-01-09 → 2026-01-10 (+1d) |  | 187.8d → 187.83d |
| PG-11250 | Final Fix - Electrical Fixtures | 2026-01-29 → 2026-01-30 (+1d) | 2026-02-05 → 2026-02-06 (+1d) |  | 171.8d → 171.83d |
| 1.3.1.2.3.29 | **Floor 26** | 2025-12-05 → 2025-12-06 (+1d) | 2026-02-25 → 2026-02-26 (+1d) |  |  |
| 1.3.1.2.3.29.1 | **PHE Works** | 2025-12-05 → 2025-12-06 (+1d) | 2026-02-25 → 2026-02-26 (+1d) |  |  |
| PG-11251 | 1st Fix - Piping works | 2025-12-05 → 2025-12-06 (+1d) | 2025-12-19 → 2025-12-20 (+1d) |  | 124.3d → 124.33d |
| PG-11252 | 2nd Fix - diverter fixing & Pressure testing | 2025-12-15 → 2025-12-16 (+1d) | 2025-12-26 → 2025-12-27 (+1d) |  | 124.3d → 124.33d |
| PG-11253 | Final Fix - CP & Sanitary fixtures | 2026-02-13 → 2026-02-14 (+1d) | 2026-02-25 → 2026-02-26 (+1d) |  | 124.3d → 124.33d |
| 1.3.1.2.3.29.2 | **Fire Fighting Works** | 2025-12-16 → 2025-12-17 (+1d) | 2026-02-25 → 2026-02-26 (+1d) |  |  |
| PG-11254 | 1st Fix - Piping and Shaft hydrant works | 2025-12-16 → 2025-12-17 (+1d) | 2025-12-29 → 2025-12-30 (+1d) |  | 202.46d → 202.5d |
| PG-11255 | 2nd Fix - Sprinkler fixing & Pressure testing | 2026-01-21 → 2026-01-22 (+1d) | 2026-02-03 → 2026-02-04 (+1d) |  | 133.3d → 133.33d |
| PG-11256 | Final Fix - Smoke & heat detectors, FHC , FAS Etc. | 2026-02-13 → 2026-02-14 (+1d) | 2026-02-25 → 2026-02-26 (+1d) |  | 124.3d → 124.33d |
| 1.3.1.2.3.29.3 | **Electrical Works** | 2025-12-05 → 2025-12-06 (+1d) | 2026-02-25 → 2026-02-26 (+1d) |  |  |
| PG-11257 | 1st Fix - GI wire pulling | 2025-12-05 → 2025-12-06 (+1d) | 2025-12-15 → 2025-12-16 (+1d) |  | 202.46d → 202.5d |
| PG-11258 | 2nd Fix - Wiring works | 2026-01-14 → 2026-01-15 (+1d) | 2026-02-02 → 2026-02-03 (+1d) |  | 139.3d → 139.33d |
| PG-11259 | Final Fix - Electrical Fixtures | 2026-02-19 → 2026-02-20 (+1d) | 2026-02-25 → 2026-02-26 (+1d) |  | 124.3d → 124.33d |
| 1.3.1.2.4 | **Civil Finishes - Units** |  | 2026-02-18 → 2026-02-19 (+1d) |  |  |
| PG-11415 | Final Coat Painting |  |  | 64% → 96% | 400.68d → 401.88d |
| 1.3.1.2.4.13.2 | **Wall Finishing works - Civil** |  | 2025-06-11 → 2025-06-12 (+1d) |  |  |
| PG-11420 | Final Coat Painting |  | 2025-06-11 → 2025-06-12 A (+1d) | 73% → 100% | 366.83d → none |
| 1.3.1.2.4.14 | **Floor 11** |  | 2025-06-27 → 2025-06-28 (+1d) |  |  |
| 1.3.1.2.4.14.1 | **Ceiling Finishing works - Civil** |  | 2025-06-27 → 2025-06-28 (+1d) |  |  |
| PG-11429 | Final Coat Painting |  | 2025-06-27 → 2025-06-28 (+1d) | 3% → 29% | 389.27d → 389.28d |
| PG-11434 | Final Coat Painting |  |  | 9% → 42% | 355.01d → 356.22d |
| 1.3.1.2.4.15 | **Floor 12** |  | 2025-07-04 → 2025-07-07 (+3d) |  |  |
| 1.3.1.2.4.15.1 | **Ceiling Finishing works - Civil** |  | 2025-07-04 → 2025-07-07 (+3d) |  |  |
| PG-11441 | Painting Works - Putty, Primer and 1st |  | 2025-06-12 → 2025-06-14 (+2d) | 3% → 81% | 383.06d → 382.93d |
| PG-11443 | Final Coat Painting | 2025-06-12 → 2025-06-14 (+2d) | 2025-07-04 → 2025-07-07 (+3d) |  | 383.06d → 382.55d |
| 1.3.1.2.4.15.2 | **Wall Finishing works - Civil** |  | 2025-07-04 → 2025-07-07 (+3d) |  |  |
| PG-11447 | Painting Works - Putty, Primer and 1st |  | 2025-06-12 → 2025-06-14 (+2d) | 3% → 74% | 347.56d → 347.05d |
| PG-11448 | Final Coat Painting | 2025-06-12 → 2025-06-14 (+2d) | 2025-07-04 → 2025-07-07 (+3d) |  | 347.56d → 347.05d |
| 1.3.1.2.4.15.3 | **Floor Finishing Works - Civil** |  | 2025-06-12 → 2025-06-14 (+2d) |  |  |
| PG-11452 | Wooden doors | 2025-06-06 → 2025-06-10 A (+4d) | 2025-06-12 → 2025-06-14 (+2d) | 0% → 72% | 347.56d → 347.05d |
| 1.3.1.2.4.16 | **Floor 13** |  | 2025-07-18 → 2025-07-19 (+1d) |  |  |
| 1.3.1.2.4.16.1 | **Ceiling Finishing works - Civil** |  | 2025-07-18 → 2025-07-19 (+1d) |  |  |
| PG-11456 | Toilet False ceiling | 2025-06-09 → 2025-06-10 A (+1d) | 2025-06-13 → 2025-06-14 (+1d) | 0% → 93% | 362.15d → 362.33d |
| PG-11455 | Painting Works - Putty, Primer and 1st | 2025-06-19 → 2025-06-20 (+1d) | 2025-06-26 → 2025-06-27 (+1d) |  | 370.82d → 371d |
| PG-11457 | Final Coat Painting | 2025-06-26 → 2025-06-27 (+1d) | 2025-07-18 → 2025-07-19 (+1d) |  | 370.82d → 371d |
| 1.3.1.2.4.16.2 | **Wall Finishing works - Civil** |  | 2025-07-18 → 2025-07-19 (+1d) |  |  |
| PG-11459 | UPVC Windows & Sliding doors | 2025-06-13 → 2025-06-14 (+1d) | 2025-06-19 → 2025-06-20 (+1d) |  | 336.15d → 336.33d |
| PG-11461 | Painting Works - Putty, Primer and 1st | 2025-06-19 → 2025-06-20 (+1d) | 2025-06-26 → 2025-06-27 (+1d) |  | 336.15d → 336.33d |
| PG-11462 | Final Coat Painting | 2025-06-26 → 2025-06-27 (+1d) | 2025-07-18 → 2025-07-19 (+1d) |  | 336.15d → 336.33d |
| 1.3.1.2.4.16.3 | **Floor Finishing Works - Civil** |  | 2025-06-26 → 2025-06-27 (+1d) |  |  |
| PG-11464 | Floor Tiling - Wet area |  | 2025-06-07 → 2025-06-09 A (+2d) | 75% → 100% | 336.15d → none |
| PG-11465 | Floor Tiling - Dry area | 2025-06-07 → 2025-06-09 A (+2d) | 2025-06-13 → 2025-06-14 (+1d) | 0% → 94% | 336.15d → 336.33d |
| PG-11466 | Wooden doors | 2025-06-20 → 2025-06-21 (+1d) | 2025-06-26 → 2025-06-27 (+1d) |  | 336.15d → 336.33d |
| PG-11470 | Toilet False ceiling | 2025-06-24 → 2025-06-23 (-1d) | 2025-06-28 → 2025-06-27 (-1d) |  | 350.3d → 351.89d |
| PG-11469 | Painting Works - Putty, Primer and 1st | 2025-07-04 → 2025-07-03 (-1d) | 2025-07-11 → 2025-07-10 (-1d) |  | 357.96d → 359.56d |
| PG-11471 | Final Coat Painting | 2025-07-11 → 2025-07-10 (-1d) |  |  | 357.96d → 359.56d |
| PG-11474 | Dadoing - Wet area | 2025-06-11 A | 2025-06-17 → 2025-06-16 (-1d) | 0% → 46% | 323.3d → 324.89d |
| PG-11473 | UPVC Windows & Sliding doors | 2025-06-28 → 2025-06-27 (-1d) | 2025-07-04 → 2025-07-03 (-1d) |  | 323.3d → 324.89d |
| PG-11475 | Painting Works - Putty, Primer and 1st | 2025-07-04 → 2025-07-03 (-1d) | 2025-07-11 → 2025-07-10 (-1d) |  | 323.3d → 324.89d |
| PG-11476 | Final Coat Painting | 2025-07-11 → 2025-07-10 (-1d) |  |  | 323.3d → 324.89d |
| 1.3.1.2.4.17.3 | **Floor Finishing Works - Civil** |  | 2025-07-11 → 2025-07-10 (-1d) |  |  |
| PG-11478 | Floor Tiling - Wet area | 2025-06-17 → 2025-06-16 (-1d) | 2025-06-23 → 2025-06-21 (-2d) |  | 323.3d → 324.89d |
| PG-11479 | Floor Tiling - Dry area | 2025-06-23 → 2025-06-21 (-2d) | 2025-06-28 → 2025-06-27 (-1d) |  | 323.3d → 324.89d |

| ID | Task | Start | Finish | Complete | Total float |
| --- | --- | --- | --- | --- | --- |
| PG-11480 | Wooden doors | 2025-07-05 → 2025-07-04 (-1d) | 2025-07-11 → 2025-07-10 (-1d) |  | 323.3d → 324.89d |
| 1.3.1.2.4.18 | **Floor 15** |  | 2025-08-14 → 2025-08-16 (+2d) |  |  |
| 1.3.1.2.4.18.1 | **Ceiling Finishing works - Civil** | 2025-06-11 → 2025-06-12 (+1d) | 2025-08-14 → 2025-08-16 (+2d) |  |  |
| PG-11481 | Gypsum Plastering | 2025-06-11 → 2025-06-12 A (+1d) |  | 0% → 31% | 360.65d → 361.94d |
| PG-11485 | Final Coat Painting |  | 2025-08-14 → 2025-08-16 (+2d) |  | 347.83d → 348.39d |
| 1.3.1.2.4.18.2 | **Wall Finishing works - Civil** |  | 2025-08-14 → 2025-08-16 (+2d) |  |  |
| PG-11486 | Balcony Railing Fixing works |  | 2025-06-06 → 2025-06-07 A (+1d) | 97% → 100% | 192.25d → none |
| PG-11490 | Final Coat Painting |  | 2025-08-14 → 2025-08-16 (+2d) |  | 313.33d → 313.89d |
| 1.3.1.2.4.19 | **Floor 16** | 2025-06-14 → 2025-06-16 (+2d) | 2025-08-27 → 2025-08-29 (+2d) |  |  |
| 1.3.1.2.4.19.1 | **Ceiling Finishing works - Civil** | 2025-06-24 → 2025-06-25 (+1d) | 2025-08-27 → 2025-08-29 (+2d) |  |  |
| PG-11495 | Gypsum Plastering | 2025-06-24 → 2025-06-25 (+1d) | 2025-07-01 → 2025-07-02 (+1d) |  | 349.63d → 349.67d |
| PG-11496 | Cornice fixing | 2025-07-10 → 2025-07-11 (+1d) | 2025-07-15 → 2025-07-16 (+1d) |  | 349.63d → 349.67d |
| PG-11498 | Toilet False ceiling | 2025-07-18 → 2025-07-19 (+1d) | 2025-07-23 → 2025-07-24 (+1d) |  | 327.96d → 328d |
| PG-11497 | Painting Works - Putty, Primer and 1st | 2025-07-29 → 2025-07-30 (+1d) | 2025-08-05 → 2025-08-06 (+1d) |  | 337.46d → 337.5d |
| PG-11499 | Final Coat Painting | 2025-08-05 → 2025-08-06 (+1d) | 2025-08-27 → 2025-08-29 (+2d) |  | 337.46d → 337.5d |
| 1.3.1.2.4.19.2 | **Wall Finishing works - Civil** | 2025-06-14 → 2025-06-16 (+2d) | 2025-08-26 → 2025-08-27 (+1d) |  |  |
| PG-11500 | Balcony Railing Fixing works | 2025-06-14 → 2025-06-16 (+2d) | 2025-06-19 → 2025-06-20 (+1d) |  | 332.8d → 332.83d |
| PG-11502 | Dadoing - Wet area | 2025-07-05 → 2025-07-07 (+2d) | 2025-07-11 → 2025-07-12 (+1d) |  | 303.8d → 303.83d |
| PG-11501 | UPVC Windows & Sliding doors | 2025-07-23 → 2025-07-24 (+1d) | 2025-07-29 → 2025-07-30 (+1d) |  | 303.8d → 303.83d |
| PG-11503 | Painting Works - Putty, Primer and 1st | 2025-07-29 → 2025-07-30 (+1d) | 2025-08-05 → 2025-08-06 (+1d) |  | 303.8d → 303.83d |
| PG-11504 | Final Coat Painting | 2025-08-05 → 2025-08-06 (+1d) | 2025-08-26 → 2025-08-27 (+1d) |  | 303.8d → 303.83d |
| 1.3.1.2.4.19.3 | **Floor Finishing Works - Civil** | 2025-06-14 → 2025-06-16 (+2d) | 2025-08-05 → 2025-08-06 (+1d) |  |  |
| PG-11505 | Waterproofing for sunken areas | 2025-06-14 → 2025-06-16 (+2d) | 2025-06-18 → 2025-06-19 (+1d) |  | 323.8d → 323.83d |
| PG-11506 | Floor Tiling - Wet area | 2025-07-11 → 2025-07-12 (+1d) | 2025-07-17 → 2025-07-18 (+1d) |  | 303.8d → 303.83d |
| PG-11507 | Floor Tiling - Dry area | 2025-07-17 → 2025-07-18 (+1d) | 2025-07-23 → 2025-07-24 (+1d) |  | 303.8d → 303.83d |
| PG-11508 | Wooden doors | 2025-07-30 → 2025-07-31 (+1d) | 2025-08-05 → 2025-08-06 (+1d) |  | 303.8d → 303.83d |
| 1.3.1.2.4.20 | **Floor 17** | 2025-06-27 → 2025-06-28 (+1d) | 2025-09-09 → 2025-09-11 (+2d) |  |  |
| 1.3.1.2.4.20.1 | **Ceiling Finishing works - Civil** | 2025-07-07 → 2025-07-08 (+1d) | 2025-09-09 → 2025-09-11 (+2d) |  |  |
| PG-11509 | Gypsum Plastering | 2025-07-07 → 2025-07-08 (+1d) | 2025-07-14 → 2025-07-15 (+1d) |  | 338.63d → 338.67d |
| PG-11510 | Cornice fixing | 2025-07-23 → 2025-07-24 (+1d) | 2025-07-28 → 2025-07-29 (+1d) |  | 338.63d → 338.67d |
| PG-11512 | Toilet False ceiling | 2025-07-31 → 2025-08-01 (+1d) | 2025-08-05 → 2025-08-06 (+1d) |  | 316.96d → 317d |
| PG-11511 | Painting Works - Putty, Primer and 1st | 2025-08-11 → 2025-08-12 (+1d) | 2025-08-19 → 2025-08-20 (+1d) |  | 326.46d → 326.5d |
| PG-11513 | Final Coat Painting | 2025-08-19 → 2025-08-20 (+1d) | 2025-09-09 → 2025-09-11 (+2d) |  | 326.46d → 326.5d |
| 1.3.1.2.4.20.2 | **Wall Finishing works - Civil** | 2025-06-27 → 2025-06-28 (+1d) | 2025-09-08 → 2025-09-09 (+1d) |  |  |
| PG-11514 | Balcony Railing Fixing works | 2025-06-27 → 2025-06-28 (+1d) | 2025-07-02 → 2025-07-03 (+1d) |  | 321.8d → 321.83d |
| PG-11516 | Dadoing - Wet area | 2025-07-18 → 2025-07-19 (+1d) | 2025-07-24 → 2025-07-25 (+1d) |  | 292.8d → 292.83d |
| PG-11515 | UPVC Windows & Sliding doors | 2025-08-05 → 2025-08-06 (+1d) | 2025-08-11 → 2025-08-12 (+1d) |  | 292.8d → 292.83d |
| PG-11517 | Painting Works - Putty, Primer and 1st | 2025-08-11 → 2025-08-12 (+1d) | 2025-08-19 → 2025-08-20 (+1d) |  | 292.8d → 292.83d |
| PG-11518 | Final Coat Painting | 2025-08-19 → 2025-08-20 (+1d) | 2025-09-08 → 2025-09-09 (+1d) |  | 292.8d → 292.83d |
| 1.3.1.2.4.20.3 | **Floor Finishing Works - Civil** | 2025-06-27 → 2025-06-28 (+1d) | 2025-08-19 → 2025-08-20 (+1d) |  |  |
| PG-11519 | Waterproofing for sunken areas | 2025-06-27 → 2025-06-28 (+1d) | 2025-07-01 → 2025-07-02 (+1d) |  | 312.8d → 312.83d |
| PG-11520 | Floor Tiling - Wet area | 2025-07-24 → 2025-07-25 (+1d) | 2025-07-30 → 2025-07-31 (+1d) |  | 292.8d → 292.83d |
| PG-11521 | Floor Tiling - Dry area | 2025-07-30 → 2025-07-31 (+1d) | 2025-08-05 → 2025-08-06 (+1d) |  | 292.8d → 292.83d |
| PG-11522 | Wooden doors | 2025-08-12 → 2025-08-13 (+1d) | 2025-08-19 → 2025-08-20 (+1d) |  | 292.8d → 292.83d |
| 1.3.1.2.4.21 | **Floor 18** | 2025-07-10 → 2025-07-11 (+1d) | 2025-09-22 → 2025-09-23 (+1d) |  |  |
| 1.3.1.2.4.21.1 | **Ceiling Finishing works - Civil** | 2025-07-19 → 2025-07-21 (+2d) | 2025-09-22 → 2025-09-23 (+1d) |  |  |
| PG-11523 | Gypsum Plastering | 2025-07-19 → 2025-07-21 (+2d) | 2025-07-26 → 2025-07-28 (+2d) |  | 328.63d → 328.67d |
| PG-11524 | Cornice fixing | 2025-08-05 → 2025-08-06 (+1d) | 2025-08-09 → 2025-08-11 (+2d) |  | 328.63d → 328.67d |
| PG-11526 | Toilet False ceiling | 2025-08-12 → 2025-08-14 (+2d) | 2025-08-18 → 2025-08-20 (+2d) |  | 305.96d → 306d |
| PG-11525 | Painting Works - Putty, Primer and 1st | 2025-08-23 → 2025-08-26 (+3d) | 2025-08-30 → 2025-09-02 (+3d) |  | 316.8d → 316.83d |
| PG-11527 | Final Coat Painting | 2025-08-30 → 2025-09-02 (+3d) | 2025-09-22 → 2025-09-23 (+1d) |  | 316.8d → 316.83d |
| 1.3.1.2.4.21.2 | **Wall Finishing works - Civil** | 2025-07-10 → 2025-07-11 (+1d) | 2025-09-22 → 2025-09-23 (+1d) |  |  |
| PG-11528 | Balcony Railing Fixing works | 2025-07-10 → 2025-07-11 (+1d) | 2025-07-15 → 2025-07-16 (+1d) |  | 309.63d → 309.67d |
| PG-11530 | Dadoing - Wet area | 2025-07-30 → 2025-08-01 (+2d) | 2025-08-05 → 2025-08-07 (+2d) |  | 280.96d → 281d |
| PG-11529 | UPVC Windows & Sliding doors | 2025-08-18 → 2025-08-20 (+2d) | 2025-08-23 → 2025-08-26 (+3d) |  | 280.96d → 281d |
| PG-11531 | Painting Works - Putty, Primer and 1st | 2025-08-23 → 2025-08-26 (+3d) | 2025-08-30 → 2025-09-02 (+3d) |  | 280.96d → 281d |
| PG-11532 | Final Coat Painting | 2025-08-30 → 2025-09-02 (+3d) | 2025-09-22 → 2025-09-23 (+1d) |  | 280.96d → 281d |
| 1.3.1.2.4.21.3 | **Floor Finishing Works - Civil** | 2025-07-10 → 2025-07-11 (+1d) | 2025-08-30 → 2025-09-02 (+3d) |  |  |
| PG-11533 | Waterproofing for sunken areas | 2025-07-10 → 2025-07-11 (+1d) | 2025-07-14 → 2025-07-15 (+1d) |  | 300.63d → 300.67d |
| PG-11534 | Floor Tiling - Wet area | 2025-08-05 → 2025-08-07 (+2d) | 2025-08-11 → 2025-08-13 (+2d) |  | 280.96d → 281d |
| PG-11535 | Floor Tiling - Dry area | 2025-08-11 → 2025-08-13 (+2d) | 2025-08-18 → 2025-08-20 (+2d) |  | 280.96d → 281d |
| PG-11536 | Wooden doors | 2025-08-25 → 2025-08-27 (+2d) | 2025-08-30 → 2025-09-02 (+3d) |  | 280.96d → 281d |
| 1.3.1.2.4.22 | **Floor 19** | 2025-07-23 → 2025-07-24 (+1d) | 2025-10-06 → 2025-10-07 (+1d) |  |  |
| 1.3.1.2.4.22.1 | **Ceiling Finishing works - Civil** | 2025-08-01 → 2025-08-02 (+1d) | 2025-10-06 → 2025-10-07 (+1d) |  |  |
| PG-11537 | Gypsum Plastering | 2025-08-01 → 2025-08-02 (+1d) | 2025-08-08 → 2025-08-09 (+1d) |  | 317.63d → 317.67d |
| PG-11538 | Cornice fixing | 2025-08-19 → 2025-08-20 (+1d) | 2025-08-23 → 2025-08-25 (+2d) |  | 317.63d → 317.67d |
| PG-11540 | Toilet False ceiling | 2025-08-26 → 2025-08-28 (+2d) | 2025-08-30 → 2025-09-02 (+3d) |  | 294.96d → 295d |
| PG-11539 | Painting Works - Putty, Primer and 1st | 2025-09-05 → 2025-09-08 (+3d) | 2025-09-12 → 2025-09-15 (+3d) |  | 305.8d → 305.83d |
| PG-11541 | Final Coat Painting | 2025-09-12 → 2025-09-15 (+3d) | 2025-10-06 → 2025-10-07 (+1d) |  | 305.8d → 305.83d |
| 1.3.1.2.4.22.2 | **Wall Finishing works - Civil** | 2025-07-23 → 2025-07-24 (+1d) | 2025-10-06 → 2025-10-07 (+1d) |  |  |

| ID | Task | Start | Finish | Total float |
| --- | --- | --- | --- | --- |
| PG-11542 | Balcony Railing Fixing works | 2025-07-23 → 2025-07-24 (+1d) | 2025-07-28 → 2025-07-29 (+1d) | 298.63d → 298.67d |
| PG-11544 | Dadoing - Wet area | 2025-08-12 → 2025-08-14 (+2d) | 2025-08-19 → 2025-08-21 (+2d) | 269.96d → 270d |
| PG-11543 | UPVC Windows & Sliding doors | 2025-08-30 → 2025-09-02 (+3d) | 2025-09-05 → 2025-09-08 (+3d) | 269.96d → 270d |
| PG-11545 | Painting Works - Putty, Primer and 1st | 2025-09-05 → 2025-09-08 (+3d) | 2025-09-12 → 2025-09-15 (+3d) | 269.96d → 270d |
| PG-11546 | Final Coat Painting | 2025-09-12 → 2025-09-15 (+3d) | 2025-10-06 → 2025-10-07 (+1d) | 269.96d → 270d |
| 1.3.1.2.4.22.3 | **Floor Finishing Works - Civil** | 2025-07-23 → 2025-07-24 (+1d) | 2025-09-12 → 2025-09-15 (+3d) |  |
| PG-11547 | Waterproofing for sunken areas | 2025-07-23 → 2025-07-24 (+1d) | 2025-07-26 → 2025-07-28 (+2d) | 289.63d → 289.67d |
| PG-11548 | Floor Tiling - Wet area | 2025-08-19 → 2025-08-21 (+2d) | 2025-08-25 → 2025-08-27 (+2d) | 269.96d → 270d |
| PG-11549 | Floor Tiling - Dry area | 2025-08-25 → 2025-08-27 (+2d) | 2025-08-30 → 2025-09-02 (+3d) | 269.96d → 270d |
| PG-11550 | Wooden doors | 2025-09-06 → 2025-09-09 (+3d) | 2025-09-12 → 2025-09-15 (+3d) | 269.96d → 270d |
| 1.3.1.2.4.23 | **Floor 20** | 2025-08-05 → 2025-08-06 (+1d) | 2025-10-20 → 2025-10-21 (+1d) |  |
| 1.3.1.2.4.23.1 | **Ceiling Finishing works - Civil** | 2025-08-14 → 2025-08-18 (+4d) | 2025-10-20 → 2025-10-21 (+1d) |  |
| PG-11551 | Gypsum Plastering | 2025-08-14 → 2025-08-18 (+4d) | 2025-08-22 → 2025-08-25 (+3d) | 305.8d → 305.83d |
| PG-11552 | Cornice fixing | 2025-09-02 → 2025-09-03 (+1d) | 2025-09-05 → 2025-09-08 (+3d) | 305.8d → 305.83d |
| PG-11554 | Toilet False ceiling | 2025-09-09 → 2025-09-11 (+2d) | 2025-09-13 → 2025-09-16 (+3d) | 282.96d → 283d |
| PG-11553 | Painting Works - Putty, Primer and 1st | 2025-09-19 → 2025-09-22 (+3d) | 2025-09-26 → 2025-09-29 (+3d) | 293.8d → 293.83d |
| PG-11555 | Final Coat Painting | 2025-09-26 → 2025-09-29 (+3d) | 2025-10-20 → 2025-10-21 (+1d) | 293.8d → 293.83d |
| 1.3.1.2.4.23.2 | **Wall Finishing works - Civil** | 2025-08-05 → 2025-08-06 (+1d) | 2025-10-20 → 2025-10-21 (+1d) |  |
| PG-11556 | Balcony Railing Fixing works | 2025-08-05 → 2025-08-06 (+1d) | 2025-08-09 → 2025-08-11 (+2d) | 287.63d → 287.67d |
| PG-11558 | Dadoing - Wet area | 2025-08-27 → 2025-08-29 (+2d) | 2025-09-02 → 2025-09-04 (+2d) | 257.96d → 258d |
| PG-11557 | UPVC Windows & Sliding doors | 2025-09-13 → 2025-09-16 (+3d) | 2025-09-19 → 2025-09-22 (+3d) | 257.96d → 258d |
| PG-11559 | Painting Works - Putty, Primer and 1st | 2025-09-19 → 2025-09-22 (+3d) | 2025-09-26 → 2025-09-29 (+3d) | 257.96d → 258d |
| PG-11560 | Final Coat Painting | 2025-09-26 → 2025-09-29 (+3d) | 2025-10-20 → 2025-10-21 (+1d) | 257.96d → 258d |
| 1.3.1.2.4.23.3 | **Floor Finishing Works - Civil** | 2025-08-05 → 2025-08-06 (+1d) | 2025-09-26 → 2025-09-29 (+3d) |  |
| PG-11561 | Waterproofing for sunken areas | 2025-08-05 → 2025-08-06 (+1d) | 2025-08-08 → 2025-08-09 (+1d) | 278.63d → 278.67d |
| PG-11562 | Floor Tiling - Wet area | 2025-09-02 → 2025-09-04 (+2d) | 2025-09-08 → 2025-09-10 (+2d) | 257.96d → 258d |
| PG-11563 | Floor Tiling - Dry area | 2025-09-08 → 2025-09-10 (+2d) | 2025-09-13 → 2025-09-16 (+3d) | 257.96d → 258d |
| PG-11564 | Wooden doors | 2025-09-20 → 2025-09-23 (+3d) | 2025-09-26 → 2025-09-29 (+3d) | 257.96d → 258d |
| 1.3.1.2.4.24 | **Floor 21** | 2025-08-19 → 2025-08-20 (+1d) | 2025-10-31 → 2025-11-03 (+3d) |  |
| 1.3.1.2.4.24.1 | **Ceiling Finishing works - Civil** | 2025-08-26 → 2025-08-28 (+2d) | 2025-10-31 → 2025-11-03 (+3d) |  |
| PG-11565 | Gypsum Plastering | 2025-08-26 → 2025-08-28 (+2d) | 2025-09-02 → 2025-09-04 (+2d) | 295.96d → 296d |
| PG-11566 | Cornice fixing | 2025-09-12 → 2025-09-13 (+1d) | 2025-09-16 → 2025-09-18 (+2d) | 295.96d → 296d |
| PG-11568 | Toilet False ceiling | 2025-09-19 → 2025-09-22 (+3d) | 2025-09-24 → 2025-09-26 (+2d) | 274.3d → 274.33d |
| PG-11567 | Painting Works - Putty, Primer and 1st | 2025-09-30 → 2025-10-03 (+3d) | 2025-10-08 → 2025-10-10 (+2d) | 283.96d → 284d |
| PG-11569 | Final Coat Painting | 2025-10-08 → 2025-10-10 (+2d) | 2025-10-31 → 2025-11-03 (+3d) | 283.96d → 284d |
| 1.3.1.2.4.24.2 | **Wall Finishing works - Civil** | 2025-08-19 → 2025-08-20 (+1d) | 2025-10-31 → 2025-11-03 (+3d) |  |
| PG-11570 | Balcony Railing Fixing works | 2025-08-19 → 2025-08-20 (+1d) | 2025-08-23 → 2025-08-25 (+2d) | 275.96d → 276d |
| PG-11572 | Dadoing - Wet area | 2025-09-06 → 2025-09-09 (+3d) | 2025-09-12 → 2025-09-15 (+3d) | 248.3d → 248.33d |
| PG-11571 | UPVC Windows & Sliding doors | 2025-09-24 → 2025-09-26 (+2d) | 2025-09-30 → 2025-10-03 (+3d) | 248.3d → 248.33d |
| PG-11573 | Painting Works - Putty, Primer and 1st | 2025-09-30 → 2025-10-03 (+3d) | 2025-10-08 → 2025-10-10 (+2d) | 248.3d → 248.33d |
| PG-11574 | Final Coat Painting | 2025-10-08 → 2025-10-10 (+2d) | 2025-10-31 → 2025-11-03 (+3d) | 248.3d → 248.33d |
| 1.3.1.2.4.24.3 | **Floor Finishing Works - Civil** | 2025-08-19 → 2025-08-20 (+1d) | 2025-10-08 → 2025-10-10 (+2d) |  |
| PG-11575 | Waterproofing for sunken areas | 2025-08-19 → 2025-08-20 (+1d) | 2025-08-22 → 2025-08-23 (+1d) | 266.96d → 267d |
| PG-11576 | Floor Tiling - Wet area | 2025-09-12 → 2025-09-15 (+3d) | 2025-09-18 → 2025-09-20 (+2d) | 248.3d → 248.33d |
| PG-11577 | Floor Tiling - Dry area | 2025-09-18 → 2025-09-20 (+2d) | 2025-09-24 → 2025-09-26 (+2d) | 248.3d → 248.33d |
| PG-11578 | Wooden doors | 2025-10-01 → 2025-10-04 (+3d) | 2025-10-08 → 2025-10-10 (+2d) | 248.3d → 248.33d |
| 1.3.1.2.4.25 | **Floor 22** | 2025-09-08 → 2025-09-10 (+2d) | 2025-11-24 → 2025-11-25 (+1d) |  |
| 1.3.1.2.4.25.1 | **Ceiling Finishing works - Civil** | 2025-09-17 → 2025-09-18 (+1d) | 2025-11-24 → 2025-11-25 (+1d) |  |
| PG-11579 | Gypsum Plastering | 2025-09-17 → 2025-09-18 (+1d) | 2025-09-24 → 2025-09-25 (+1d) | 145.96d → 146d |
| PG-11580 | Cornice fixing | 2025-10-04 → 2025-10-07 (+3d) | 2025-10-09 → 2025-10-10 (+1d) | 145.96d → 146d |
| PG-11582 | Toilet False ceiling | 2025-10-13 → 2025-10-14 (+1d) | 2025-10-17 → 2025-10-18 (+1d) | 255.46d → 255.5d |
| PG-11581 | Painting Works - Putty, Primer and 1st | 2025-10-23 → 2025-10-24 (+1d) | 2025-10-30 → 2025-10-31 (+1d) | 133.8d → 133.83d |
| PG-11583 | Final Coat Painting | 2025-10-30 → 2025-10-31 (+1d) | 2025-11-24 → 2025-11-25 (+1d) | 263.13d → 263.17d |
| 1.3.1.2.4.25.2 | **Wall Finishing works - Civil** | 2025-09-08 → 2025-09-10 (+2d) | 2025-11-24 → 2025-11-25 (+1d) |  |
| PG-11584 | Balcony Railing Fixing works | 2025-09-08 → 2025-09-10 (+2d) | 2025-09-12 → 2025-09-15 (+3d) | 162.63d → 162.67d |
| PG-11586 | Dadoing - Wet area | 2025-09-29 → 2025-09-30 (+1d) | 2025-10-06 → 2025-10-07 (+1d) | 133.8d → 133.83d |
| PG-11585 | UPVC Windows & Sliding doors | 2025-10-17 → 2025-10-18 (+1d) | 2025-10-23 → 2025-10-24 (+1d) | 133.8d → 133.83d |
| PG-11587 | Painting Works - Putty, Primer and 1st | 2025-10-23 → 2025-10-24 (+1d) | 2025-10-30 → 2025-10-31 (+1d) | 228.46d → 228.5d |
| PG-11588 | Final Coat Painting | 2025-10-30 → 2025-10-31 (+1d) | 2025-11-24 → 2025-11-25 (+1d) | 228.46d → 228.5d |
| 1.3.1.2.4.25.3 | **Floor Finishing Works - Civil** | 2025-09-08 → 2025-09-10 (+2d) | 2025-10-30 → 2025-10-31 (+1d) |  |
| PG-11589 | Waterproofing for sunken areas | 2025-09-08 → 2025-09-10 (+2d) | 2025-09-11 → 2025-09-13 (+2d) | 153.63d → 153.67d |
| PG-11590 | Floor Tiling - Wet area | 2025-10-06 → 2025-10-07 (+1d) | 2025-10-11 → 2025-10-13 (+2d) | 133.8d → 133.83d |
| PG-11591 | Floor Tiling - Dry area | 2025-10-11 → 2025-10-13 (+2d) | 2025-10-17 → 2025-10-18 (+1d) | 133.8d → 133.83d |
| PG-11592 | Wooden doors | 2025-10-24 → 2025-10-25 (+1d) | 2025-10-30 → 2025-10-31 (+1d) | 228.46d → 228.5d |
| 1.3.1.2.4.26 | **Floor 23** | 2025-09-30 → 2025-10-01 (+1d) | 2025-12-15 → 2025-12-16 (+1d) |  |
| 1.3.1.2.4.26.1 | **Ceiling Finishing works - Civil** | 2025-10-10 → 2025-10-11 (+1d) | 2025-12-15 → 2025-12-16 (+1d) |  |
| PG-11593 | Gypsum Plastering | 2025-10-10 → 2025-10-11 (+1d) | 2025-10-17 → 2025-10-18 (+1d) | 257.3d → 257.33d |
| PG-11594 | Cornice fixing | 2025-10-27 → 2025-10-28 (+1d) | 2025-10-31 → 2025-11-03 (+3d) | 257.3d → 257.33d |
| PG-11596 | Toilet False ceiling | 2025-11-04 → 2025-11-05 (+1d) | 2025-11-08 → 2025-11-10 (+2d) | 237.46d → 237.5d |
| PG-11595 | Painting Works - Putty, Primer and 1st | 2025-11-14 → 2025-11-15 (+1d) | 2025-11-21 → 2025-11-22 (+1d) | 246.3d → 246.33d |

| ID | Task | Start | Finish | Total float |
| --- | --- | --- | --- | --- |
| PG-11597 | Final Coat Painting | 2025-11-21 → 2025-11-22 (+1d) | 2025-12-15 → 2025-12-16 (+1d) | 246.3d → 246.33d |
| 1.3.1.2.4.26.2 | **Wall Finishing works - Civil** | 2025-09-30 → 2025-10-01 (+1d) | 2025-12-15 → 2025-12-16 (+1d) |  |
| PG-11598 | Balcony Railing Fixing works | 2025-09-30 → 2025-10-01 (+1d) | 2025-10-06 → 2025-10-07 (+1d) | 238.13d → 238.17d |
| PG-11600 | Dadoing - Wet area | 2025-10-21 → 2025-10-22 (+1d) | 2025-10-27 → 2025-10-28 (+1d) | 210.46d → 210.5d |
| PG-11599 | UPVC Windows & Sliding doors | 2025-11-08 → 2025-11-10 (+2d) | 2025-11-14 → 2025-11-15 (+1d) | 210.46d → 210.5d |
| PG-11601 | Painting Works - Putty, Primer and 1st | 2025-11-14 → 2025-11-15 (+1d) | 2025-11-21 → 2025-11-22 (+1d) | 210.46d → 210.5d |
| PG-11602 | Final Coat Painting | 2025-11-21 → 2025-11-22 (+1d) | 2025-12-15 → 2025-12-16 (+1d) | 210.46d → 210.5d |
| 1.3.1.2.4.26.3 | **Floor Finishing Works - Civil** | 2025-09-30 → 2025-10-01 (+1d) | 2025-11-21 → 2025-11-22 (+1d) |  |
| PG-11603 | Waterproofing for sunken areas | 2025-09-30 → 2025-10-01 (+1d) | 2025-10-04 → 2025-10-06 (+2d) | 229.13d → 229.17d |
| PG-11604 | Floor Tiling - Wet area | 2025-10-27 → 2025-10-28 (+1d) | 2025-11-03 → 2025-11-04 (+1d) | 210.46d → 210.5d |
| PG-11605 | Floor Tiling - Dry area | 2025-11-03 → 2025-11-04 (+1d) | 2025-11-08 → 2025-11-10 (+2d) | 210.46d → 210.5d |
| PG-11606 | Wooden doors | 2025-11-15 → 2025-11-17 (+2d) | 2025-11-21 → 2025-11-22 (+1d) | 210.46d → 210.5d |
| 1.3.1.2.4.27 | **Floor 24** | 2025-10-22 → 2025-10-23 (+1d) | 2026-01-03 → 2026-01-05 (+2d) |  |
| 1.3.1.2.4.27.1 | **Ceiling Finishing works - Civil** | 2025-10-31 → 2025-11-03 (+3d) | 2026-01-03 → 2026-01-05 (+2d) |  |
| PG-11607 | Gypsum Plastering | 2025-10-31 → 2025-11-03 (+3d) | 2025-11-08 → 2025-11-10 (+2d) | 239.96d → 240d |
| PG-11608 | Cornice fixing | 2025-11-18 → 2025-11-19 (+1d) | 2025-11-22 → 2025-11-24 (+2d) | 239.96d → 240d |
| PG-11610 | Toilet False ceiling | 2025-11-26 → 2025-11-27 (+1d) | 2025-12-01 → 2025-12-02 (+1d) | 216.8d → 216.83d |
| PG-11609 | Painting Works - Putty, Primer and 1st | 2025-12-06 → 2025-12-08 (+2d) | 2025-12-13 → 2025-12-15 (+2d) | 227.96d → 228d |
| PG-11611 | Final Coat Painting | 2025-12-13 → 2025-12-15 (+2d) | 2026-01-03 → 2026-01-05 (+2d) | 227.96d → 228d |
| 1.3.1.2.4.27.2 | **Wall Finishing works - Civil** | 2025-10-22 → 2025-10-23 (+1d) | 2026-01-03 → 2026-01-05 (+2d) |  |
| PG-11612 | Balcony Railing Fixing works | 2025-10-22 → 2025-10-23 (+1d) | 2025-10-27 → 2025-10-28 (+1d) | 219.96d → 220d |
| PG-11614 | Dadoing - Wet area | 2025-11-13 → 2025-11-14 (+1d) | 2025-11-19 → 2025-11-20 (+1d) | 191.3d → 191.33d |
| PG-11613 | UPVC Windows & Sliding doors | 2025-12-01 → 2025-12-02 (+1d) | 2025-12-06 → 2025-12-08 (+2d) | 191.3d → 191.33d |
| PG-11615 | Painting Works - Putty, Primer and 1st | 2025-12-06 → 2025-12-08 (+2d) | 2025-12-13 → 2025-12-15 (+2d) | 191.3d → 191.33d |
| PG-11616 | Final Coat Painting | 2025-12-13 → 2025-12-15 (+2d) | 2026-01-03 → 2026-01-05 (+2d) | 191.3d → 191.33d |
| 1.3.1.2.4.27.3 | **Floor Finishing Works - Civil** | 2025-10-22 → 2025-10-23 (+1d) | 2025-12-13 → 2025-12-15 (+2d) |  |
| PG-11617 | Waterproofing for sunken areas | 2025-10-22 → 2025-10-23 (+1d) | 2025-10-25 → 2025-10-27 (+2d) | 210.96d → 211d |
| PG-11618 | Floor Tiling - Wet area | 2025-11-19 → 2025-11-20 (+1d) | 2025-11-25 → 2025-11-26 (+1d) | 191.3d → 191.33d |
| PG-11619 | Floor Tiling - Dry area | 2025-11-25 → 2025-11-26 (+1d) | 2025-12-01 → 2025-12-02 (+1d) | 191.3d → 191.33d |
| PG-11620 | Wooden doors | 2025-12-08 → 2025-12-09 (+1d) | 2025-12-13 → 2025-12-15 (+2d) | 191.3d → 191.33d |
| 1.3.1.2.4.28 | **Floor 25** | 2025-11-14 → 2025-11-15 (+1d) | 2026-01-29 → 2026-01-30 (+1d) |  |
| 1.3.1.2.4.28.1 | **Ceiling Finishing works - Civil** | 2025-11-22 → 2025-11-24 (+2d) | 2026-01-29 → 2026-01-30 (+1d) |  |
| PG-11621 | Gypsum Plastering | 2025-11-22 → 2025-11-24 (+2d) | 2025-11-29 → 2025-12-01 (+2d) | 219.46d → 219.5d |
| PG-11622 | Cornice fixing | 2025-12-10 → 2025-12-11 (+1d) | 2025-12-13 → 2025-12-15 (+2d) | 219.46d → 219.5d |
| PG-11624 | Toilet False ceiling | 2025-12-17 → 2025-12-18 (+1d) | 2025-12-22 → 2025-12-23 (+1d) | 198.8d → 198.83d |
| PG-11623 | Painting Works - Putty, Primer and 1st | 2025-12-27 → 2025-12-29 (+2d) | 2026-01-03 → 2026-01-05 (+2d) | 207.46d → 207.5d |
| PG-11625 | Final Coat Painting | 2026-01-03 → 2026-01-05 (+2d) | 2026-01-29 → 2026-01-30 (+1d) | 207.46d → 207.5d |
| 1.3.1.2.4.28.2 | **Wall Finishing works - Civil** | 2025-11-14 → 2025-11-15 (+1d) | 2026-01-29 → 2026-01-30 (+1d) |  |
| PG-11626 | Balcony Railing Fixing works | 2025-11-14 → 2025-11-15 (+1d) | 2025-11-19 → 2025-11-20 (+1d) | 200.46d → 200.5d |
| PG-11628 | Dadoing - Wet area | 2025-12-04 → 2025-12-05 (+1d) | 2025-12-10 → 2025-12-11 (+1d) | 171.8d → 171.83d |
| PG-11627 | UPVC Windows & Sliding doors | 2025-12-22 → 2025-12-23 (+1d) | 2025-12-27 → 2025-12-29 (+2d) | 171.8d → 171.83d |
| PG-11629 | Painting Works - Putty, Primer and 1st | 2025-12-27 → 2025-12-29 (+2d) | 2026-01-03 → 2026-01-05 (+2d) | 171.8d → 171.83d |
| PG-11630 | Final Coat Painting | 2026-01-03 → 2026-01-05 (+2d) | 2026-01-29 → 2026-01-30 (+1d) | 171.8d → 171.83d |
| 1.3.1.2.4.28.3 | **Floor Finishing Works - Civil** | 2025-11-14 → 2025-11-15 (+1d) | 2026-01-03 → 2026-01-05 (+2d) |  |
| PG-11631 | Waterproofing for sunken areas | 2025-11-14 → 2025-11-15 (+1d) | 2025-11-18 → 2025-11-19 (+1d) | 191.46d → 191.5d |
| PG-11632 | Floor Tiling - Wet area | 2025-12-10 → 2025-12-11 (+1d) | 2025-12-16 → 2025-12-17 (+1d) | 171.8d → 171.83d |
| PG-11633 | Floor Tiling - Dry area | 2025-12-16 → 2025-12-17 (+1d) | 2025-12-22 → 2025-12-23 (+1d) | 171.8d → 171.83d |
| PG-11634 | Wooden doors | 2025-12-29 → 2025-12-30 (+1d) | 2026-01-03 → 2026-01-05 (+2d) | 171.8d → 171.83d |
| 1.3.1.2.4.29 | **Floor 26** | 2025-12-05 → 2025-12-06 (+1d) | 2026-02-18 → 2026-02-19 (+1d) |  |
| 1.3.1.2.4.29.1 | **Ceiling Finishing works - Civil** | 2025-12-15 → 2025-12-16 (+1d) | 2026-02-18 → 2026-02-19 (+1d) |  |
| PG-11635 | Gypsum Plastering | 2025-12-15 → 2025-12-16 (+1d) | 2025-12-22 → 2025-12-23 (+1d) | 202.46d → 202.5d |
| PG-11636 | Cornice fixing | 2025-12-31 → 2026-01-02 (+2d) | 2026-01-05 → 2026-01-06 (+1d) | 202.46d → 202.5d |
| PG-11638 | Toilet False ceiling | 2026-01-08 → 2026-01-09 (+1d) | 2026-01-13 → 2026-01-14 (+1d) | 150.3d → 150.33d |
| PG-11637 | Painting Works - Putty, Primer and 1st | 2026-01-19 → 2026-01-20 (+1d) | 2026-01-27 → 2026-01-28 (+1d) | 190.63d → 190.67d |
| PG-11639 | Final Coat Painting | 2026-01-27 → 2026-01-28 (+1d) | 2026-02-18 → 2026-02-19 (+1d) | 190.63d → 190.67d |
| 1.3.1.2.4.29.2 | **Wall Finishing works - Civil** | 2025-12-05 → 2025-12-06 (+1d) | 2026-02-18 → 2026-02-19 (+1d) |  |
| PG-11640 | Balcony Railing Fixing works | 2025-12-05 → 2025-12-06 (+1d) | 2025-12-10 → 2025-12-11 (+1d) | 152.96d → 153d |
| PG-11642 | Dadoing - Wet area | 2025-12-26 → 2025-12-27 (+1d) | 2026-01-01 → 2026-01-02 (+1d) | 124.3d → 124.33d |
| PG-11641 | UPVC Windows & Sliding doors | 2026-01-13 → 2026-01-14 (+1d) | 2026-01-19 → 2026-01-20 (+1d) | 124.3d → 124.33d |
| PG-11643 | Painting Works - Putty, Primer and 1st | 2026-01-19 → 2026-01-20 (+1d) | 2026-01-27 → 2026-01-28 (+1d) | 124.3d → 124.33d |
| PG-11644 | Final Coat Painting | 2026-01-27 → 2026-01-28 (+1d) | 2026-02-18 → 2026-02-19 (+1d) | 124.3d → 124.33d |
| 1.3.1.2.4.29.3 | **Floor Finishing Works - Civil** | 2025-12-05 → 2025-12-06 (+1d) | 2026-01-27 → 2026-01-28 (+1d) |  |
| PG-11645 | Waterproofing for sunken areas | 2025-12-05 → 2025-12-06 (+1d) | 2025-12-09 → 2025-12-10 (+1d) | 143.96d → 144d |
| PG-11646 | Floor Tiling - Wet area | 2026-01-01 → 2026-01-02 (+1d) | 2026-01-07 → 2026-01-08 (+1d) | 124.3d → 124.33d |
| PG-11647 | Floor Tiling - Dry area | 2026-01-07 → 2026-01-08 (+1d) | 2026-01-13 → 2026-01-14 (+1d) | 124.3d → 124.33d |
| PG-11648 | Wooden doors | 2026-01-20 → 2026-01-21 (+1d) | 2026-01-27 → 2026-01-28 (+1d) | 124.3d → 124.33d |
| 1.3.1.2.4.30 | **External Finishing works** | 2025-09-15 → 2025-09-17 (+2d) | 2026-01-12 → 2026-01-14 (+2d) |  |
| PG-11649 | External walls tie rod hole plugging with GP2 | 2025-09-15 → 2025-09-17 (+2d) | 2025-10-21 → 2025-10-23 (+2d) | 220.46d → 220.5d |
| PG-11650 | External walls grinding works | 2025-10-09 → 2025-10-11 (+2d) | 2025-11-26 → 2025-11-28 (+2d) | 220.46d → 220.5d |
| PG-11651 | Texture and painting works | 2025-11-20 → 2025-11-22 (+2d) | 2026-01-12 → 2026-01-14 (+2d) | 220.46d → 220.5d |

| ID | Task | Start | Finish | Total float |
| --- | --- | --- | --- | --- |
| 1.3.1.2.5 | **Corridor & Fire Staircase Finishing works** | 2025-11-21 → 2025-11-22 (+1d) | 2026-03-21 → 2026-03-23 (+2d) |  |
| 1.3.1.2.5.1 | **Ceiling Finishing works - Civil** | 2025-11-21 → 2025-11-22 (+1d) | 2026-02-14 → 2026-02-16 (+2d) |  |
| PG-11652 | Gypsum Plastering | 2025-11-21 → 2025-11-22 (+1d) | 2025-11-28 → 2025-11-29 (+1d) | 15.46d → 15.5d |
| PG-11653 | Cornice fixing | 2025-11-27 → 2025-11-28 (+1d) | 2025-12-02 → 2025-12-03 (+1d) | 145.96d → 146d |
| PG-11654 | Painting Works - Putty, Primer and 1st | 2025-12-16 → 2025-12-17 (+1d) | 2025-12-23 → 2025-12-24 (+1d) | 133.8d → 133.83d |
| PG-11655 | False ceiling | 2025-12-23 → 2025-12-24 (+1d) | 2026-01-28 → 2026-01-29 (+1d) | 133.8d → 133.83d |
| PG-11656 | Final Coat Painting | 2026-01-09 → 2026-01-10 (+1d) | 2026-02-14 → 2026-02-16 (+2d) | 163.8d → 163.83d |
| 1.3.1.2.5.2 | **Wall Finishing works - Civil** | 2025-12-27 → 2025-12-29 (+2d) | 2026-03-21 → 2026-03-23 (+2d) |  |
| PG-11657 | UPVC Windows & Sliding doors | 2025-12-27 → 2025-12-29 (+2d) | 2026-01-02 → 2026-01-03 (+1d) | 139.8d → 139.83d |
| PG-11658 | Wall Cladding Upto 1.2 Mts | 2026-01-14 → 2026-01-15 (+1d) | 2026-02-07 → 2026-02-09 (+2d) | 139.8d → 139.83d |
| PG-11659 | Painting Works - Texture & one coat Painting works | 2026-02-14 → 2026-02-16 (+2d) | 2026-03-04 → 2026-03-05 (+1d) | 133.8d → 133.83d |
| PG-11660 | Final Coat Painting | 2026-02-26 → 2026-02-27 (+1d) | 2026-03-21 → 2026-03-23 (+2d) | 133.8d → 133.83d |
| 1.3.1.2.5.3 | **Floor Finishing Works - Civil** | 2025-11-28 → 2025-11-29 (+1d) | 2025-12-27 → 2025-12-29 (+2d) |  |
| PG-11661 | Fire Doors installation | 2025-11-28 → 2025-11-29 (+1d) | 2025-12-10 → 2025-12-11 (+1d) | 184.3d → 184.33d |
| PG-11662 | Vitrified tile flooring works | 2025-12-10 → 2025-12-11 (+1d) | 2025-12-27 → 2025-12-29 (+2d) | 184.3d → 184.33d |
| 1.3.1.2.5.4 | **Fire Staircase Finishing Works - Civil** | 2025-11-28 → 2025-11-29 (+1d) | 2026-03-20 → 2026-03-21 (+1d) |  |
| PG-11663 | Staircase Railing Fixing works | 2025-11-28 → 2025-11-29 (+1d) | 2025-12-22 → 2025-12-23 (+1d) | 15.46d → 15.5d |
| PG-11664 | Wall and ceiling Gypsum plastering | 2025-12-10 → 2025-12-12 (+2d) | 2026-01-14 → 2026-01-15 (+1d) | 15.46d → 15.5d |
| PG-11665 | Staircase Flooring and Skirting Works | 2025-12-27 → 2025-12-29 (+2d) | 2026-02-13 → 2026-02-14 (+1d) | 15.46d → 15.5d |
| PG-11666 | UPVC Window fixing works | 2026-02-14 → 2026-02-16 (+2d) | 2026-03-03 → 2026-03-04 (+1d) | 15.46d → 15.5d |
| PG-11667 | Staircase Painting works | 2026-02-25 → 2026-02-26 (+1d) | 2026-03-20 → 2026-03-21 (+1d) | 15.46d → 15.5d |
| 1.3.1.2.6 | **MEP Civil Works (Shaft, Lift Shaft & OHT )** | 2025-09-01 → 2025-09-03 (+2d) | 2026-01-30 → 2026-02-02 (+3d) |  |
| 1.3.1.2.6.1 | **Lift Shaft Works** | 2025-09-01 → 2025-09-03 (+2d) | 2026-01-30 → 2026-02-02 (+3d) |  |
| PG-11668 | Tie rod hole packing | 2025-09-01 → 2025-09-03 (+2d) | 2025-09-10 → 2025-09-12 (+2d) | 120.96d → 121d |
| PG-11669 | Grinding works | 2025-09-10 → 2025-09-12 (+2d) | 2025-09-16 → 2025-09-18 (+2d) | 120.96d → 121d |
| PG-11670 | Lift pit water proofing works | 2025-09-16 → 2025-09-18 (+2d) | 2025-10-11 → 2025-10-13 (+2d) | 120.96d → 121d |
| PG-11671 | Shaft door opening finishing | 2025-10-11 → 2025-10-13 (+2d) | 2025-10-18 → 2025-10-21 (+3d) | 120.96d → 121d |
| PG-11672 | Painting works | 2025-10-18 → 2025-10-21 (+3d) | 2025-10-28 → 2025-10-30 (+2d) | 120.96d → 121d |
| PG-11673 | Lift Wall Cladding Works | 2026-01-13 → 2026-01-14 (+1d) | 2026-01-30 → 2026-02-02 (+3d) | 156.63d → 156.67d |
| 1.3.1.2.6.2 | **Electrical Shaft works** | 2025-09-01 → 2025-09-03 (+2d) | 2025-10-04 → 2025-10-06 (+2d) |  |
| PG-11674 | Tie rod hole packing | 2025-09-01 → 2025-09-03 (+2d) | 2025-09-10 → 2025-09-12 (+2d) | 227.63d → 227.67d |
| PG-11675 | Grinding works | 2025-09-10 → 2025-09-12 (+2d) | 2025-09-16 → 2025-09-18 (+2d) | 227.63d → 227.67d |
| PG-11676 | Shaft door opening finishing | 2025-09-16 → 2025-09-18 (+2d) | 2025-09-24 → 2025-09-25 (+1d) | 227.63d → 227.67d |
| PG-11677 | Painting works | 2025-09-24 → 2025-09-25 (+1d) | 2025-10-04 → 2025-10-06 (+2d) | 227.63d → 227.67d |
| 1.3.1.2.6.3 | **FPS Shaft works** | 2025-09-01 → 2025-09-03 (+2d) | 2025-10-04 → 2025-10-06 (+2d) |  |
| PG-11678 | Tie rod hole packing | 2025-09-01 → 2025-09-03 (+2d) | 2025-09-10 → 2025-09-12 (+2d) | 227.46d → 227.5d |
| PG-11679 | Grinding works | 2025-09-10 → 2025-09-12 (+2d) | 2025-09-16 → 2025-09-18 (+2d) | 227.46d → 227.5d |
| PG-11680 | Shaft door opening finishing | 2025-09-16 → 2025-09-18 (+2d) | 2025-09-24 → 2025-09-25 (+1d) | 227.46d → 227.5d |
| PG-11681 | Painting works | 2025-09-24 → 2025-09-25 (+1d) | 2025-10-04 → 2025-10-06 (+2d) | 227.46d → 227.5d |
| 1.3.1.2.6.4 | **PHE Shaft works** | 2025-09-01 → 2025-09-03 (+2d) | 2025-10-04 → 2025-10-06 (+2d) |  |
| PG-11682 | Tie rod hole packing | 2025-09-01 → 2025-09-03 (+2d) | 2025-09-10 → 2025-09-12 (+2d) | 186.3d → 186.33d |
| PG-11683 | Grinding works | 2025-09-10 → 2025-09-12 (+2d) | 2025-09-16 → 2025-09-18 (+2d) | 186.3d → 186.33d |
| PG-11684 | Shaft door opening finishing | 2025-09-16 → 2025-09-18 (+2d) | 2025-09-24 → 2025-09-25 (+1d) | 186.3d → 186.33d |
| PG-11685 | Painting works | 2025-09-24 → 2025-09-25 (+1d) | 2025-10-04 → 2025-10-06 (+2d) | 186.3d → 186.33d |
| 1.3.1.2.6.5 | **Data & Communication Shaft** | 2025-09-01 → 2025-09-03 (+2d) | 2025-10-01 → 2025-10-04 (+3d) |  |
| PG-11686 | Tie rod hole packing | 2025-09-01 → 2025-09-03 (+2d) | 2025-09-10 → 2025-09-12 (+2d) | 222.13d → 222.17d |
| PG-11687 | Grinding works | 2025-09-10 → 2025-09-12 (+2d) | 2025-09-16 → 2025-09-18 (+2d) | 222.13d → 222.17d |
| PG-11688 | Shaft door opening finishing | 2025-09-16 → 2025-09-18 (+2d) | 2025-09-22 → 2025-09-24 (+2d) | 222.13d → 222.17d |
| PG-11689 | Painting works | 2025-09-22 → 2025-09-24 (+2d) | 2025-10-01 → 2025-10-04 (+3d) | 222.13d → 222.17d |
| 1.3.1.2.6.6 | **OHT Works** | 2025-09-01 → 2025-09-03 (+2d) | 2025-10-21 → 2025-10-23 (+2d) |  |
| PG-11690 | Tank materials Supply & Shifting | 2025-09-01 → 2025-09-03 (+2d) | 2025-09-12 → 2025-09-15 (+3d) | 193.63d → 193.67d |
| PG-11691 | Assembling OHT FRP Tank | 2025-09-12 → 2025-09-15 (+3d) | 2025-09-24 → 2025-09-26 (+2d) | 193.63d → 193.67d |
| PG-11692 | Installation of OHT Tank | 2025-09-24 → 2025-09-26 (+2d) | 2025-10-13 → 2025-10-15 (+2d) | 193.63d → 193.67d |
| PG-11693 | Water tightness works and checking | 2025-10-13 → 2025-10-15 (+2d) | 2025-10-21 → 2025-10-23 (+2d) | 193.63d → 193.67d |
| 1.3.1.2.7 | **MEP Shaft works** | 2025-10-01 → 2025-10-04 (+3d) | 2025-12-24 → 2025-12-26 (+2d) |  |
| 1.3.1.2.7.1 | **Electrical** | 2025-10-04 → 2025-10-06 (+2d) | 2025-11-14 → 2025-11-15 (+1d) |  |
| PG-11694 | Tray Works | 2025-10-04 → 2025-10-06 (+2d) | 2025-10-16 → 2025-10-17 (+1d) | 227.63d → 227.67d |
| PG-11695 | Cable & Conducting works | 2025-10-16 → 2025-10-17 (+1d) | 2025-10-27 → 2025-10-29 (+2d) | 227.63d → 227.67d |
| PG-11696 | Wiring/DB/connector box installation and termination works | 2025-10-27 → 2025-10-29 (+2d) | 2025-11-14 → 2025-11-15 (+1d) | 227.63d → 227.67d |
| 1.3.1.2.7.2 | **FPS** | 2025-10-04 → 2025-10-06 (+2d) | 2025-11-14 → 2025-11-15 (+1d) |  |
| PG-11697 | Shaft MS Piping & fixtures installation | 2025-10-04 → 2025-10-06 (+2d) | 2025-10-28 → 2025-10-29 (+1d) | 227.46d → 227.5d |
| PG-11698 | Tray / cabling / conducting & wiring works | 2025-10-28 → 2025-10-29 (+1d) | 2025-11-14 → 2025-11-15 (+1d) | 227.46d → 227.5d |
| 1.3.1.2.7.3 | **Data & Communication** | 2025-10-01 → 2025-10-04 (+3d) | 2025-11-20 → 2025-11-21 (+1d) |  |
| PG-11699 | Tray Works | 2025-10-01 → 2025-10-04 (+3d) | 2025-10-16 → 2025-10-17 (+1d) | 222.13d → 222.17d |
| PG-11700 | Tray / cabling / conducting & wiring works | 2025-10-16 → 2025-10-17 (+1d) | 2025-11-04 → 2025-11-05 (+1d) | 222.13d → 222.17d |
| PG-11701 | Wiring/DB/connector box installation and termination works | 2025-11-04 → 2025-11-05 (+1d) | 2025-11-20 → 2025-11-21 (+1d) | 222.13d → 222.17d |
| 1.3.1.2.7.4 | **PHE** | 2025-10-04 → 2025-10-06 (+2d) | 2025-12-24 → 2025-12-26 (+2d) |  |
| PG-11702 | Bracket fixing works | 2025-10-04 → 2025-10-06 (+2d) | 2025-10-13 → 2025-10-14 (+1d) | 186.3d → 186.33d |
| PG-11703 | Piping Works | 2025-10-13 → 2025-10-14 (+1d) | 2025-10-30 → 2025-10-31 (+1d) | 186.3d → 186.33d |
| PG-11704 | Terrace Ring main & OHT Connection works | 2025-10-30 → 2025-10-31 (+1d) | 2025-12-17 → 2025-12-18 (+1d) | 186.3d → 186.33d |

| ID | Task | Start | Finish | Complete | Total float |
| --- | --- | --- | --- | --- | --- |
| PG-11705 | Commissioning | 2025-12-17 → 2025-12-18 (+1d) | 2025-12-24 → 2025-12-26 (+2d) |  | 186.3d → 186.33d |
| 1.3.1.2.8 | **Lift Installation and Testing works** | 2025-09-16 → 2025-09-18 (+2d) | 2026-04-18 → 2026-04-20 (+2d) |  |  |
| PG-11706 | Lift Shaft Survey works | 2025-09-16 → 2025-09-18 (+2d) | 2025-09-27 → 2025-09-29 (+2d) |  | 146.63d → 146.67d |
| PG-11707 | Guide Rails fixing works | 2025-10-28 → 2025-10-30 (+2d) | 2025-12-15 → 2025-12-16 (+1d) |  | 120.96d → 121d |
| PG-11708 | Lift Frame fixing works | 2025-12-15 → 2025-12-16 (+1d) | 2026-01-13 → 2026-01-14 (+1d) |  | 120.96d → 121d |
| PG-11709 | CAR Assembly works | 2026-01-13 → 2026-01-14 (+1d) | 2026-02-06 → 2026-02-07 (+1d) |  | 120.96d → 121d |
| PG-11710 | Lift Machine Room Works | 2026-02-06 → 2026-02-07 (+1d) | 2026-03-13 → 2026-03-14 (+1d) |  | 120.96d → 121d |
| PG-11711 | Slow Speed & High Speed Testing works | 2026-03-13 → 2026-03-14 (+1d) | 2026-04-18 → 2026-04-20 (+2d) |  | 120.96d → 121d |
| 1.3.1.2.9 | **Electrical Panel Works** |  | 2026-02-27 → 2026-02-28 (+1d) |  |  |
| 1.3.1.2.9.1 | **Civil Finishing Works** |  | 2025-09-05 → 2025-09-06 (+1d) |  |  |
| PG-11712 | Wall Tie rod hole packing & Grinding works. |  | 2025-08-08 → 2025-08-09 (+1d) |  | 162.33d → 162.89d |
| PG-11713 | Window, Louver and Door fixing works | 2025-08-08 → 2025-08-09 (+1d) | 2025-08-18 → 2025-08-19 (+1d) |  | 162.33d → 162.89d |
| PG-11714 | Pedestal works | 2025-08-18 → 2025-08-19 (+1d) |  |  | 162.33d → 162.89d |
| PG-11715 | Painting works |  | 2025-09-05 → 2025-09-06 (+1d) |  | 162.33d → 162.89d |
| 1.3.1.2.9.2 | **Electrical Panel works** | 2025-09-05 → 2025-09-06 (+1d) | 2026-02-27 → 2026-02-28 (+1d) |  |  |
| PG-11716 | Electrical Panel assembly works | 2025-09-05 → 2025-09-06 (+1d) |  |  | 162.33d → 162.89d |
| PG-11717 | Electrical Panel installation and cable termination. |  | 2026-01-22 → 2026-01-23 (+1d) |  | 162.33d → 162.89d |
| PG-11718 | Electrical Panel Testing and commissioning works | 2026-01-22 → 2026-01-23 (+1d) | 2026-02-27 → 2026-02-28 (+1d) |  | 162.33d → 162.89d |
| 1.3.1.2.10 | **Entrance Lobby works** | 2026-03-20 → 2026-03-21 (+1d) | 2026-08-07 → 2026-08-08 (+1d) |  |  |
| PG-11719 | Flooring Works | 2026-03-20 → 2026-03-21 (+1d) | 2026-04-25 → 2026-04-27 (+2d) |  | 15.46d → 15.5d |
| PG-11720 | Glass Door and installation Works | 2026-04-25 → 2026-04-27 (+2d) | 2026-05-29 → 2026-05-30 (+1d) |  | 15.46d → 15.5d |
| PG-11722 | Canopy Works | 2026-04-25 → 2026-04-27 (+2d) | 2026-05-23 → 2026-05-25 (+2d) |  | 35.13d → 35.17d |
| PG-11721 | Painting Works | 2026-05-29 → 2026-05-30 (+1d) | 2026-06-16 → 2026-06-17 (+1d) |  | 15.46d → 15.5d |
| PG-11723 | Interior Works | 2026-06-16 → 2026-06-17 (+1d) | 2026-08-07 → 2026-08-08 (+1d) |  | 15.46d → 15.5d |
| 1.3.1.2.11 | **Lightening Arrester works** | 2026-01-12 → 2026-01-14 (+2d) | 2026-01-24 → 2026-01-27 (+3d) |  |  |
| PG-11724 | Conductor will be lifted with RCC Works, But Terrace works will be done once Parapet Painting done | 2026-01-12 → 2026-01-14 (+2d) | 2026-01-24 → 2026-01-27 (+3d) |  | 220.46d → 220.5d |
| 1.3.1.3 | **Tower 3 ( 2B+G+29 ) TYP 4 Units - 118 Units** |  | 2026-10-19 → 2026-10-20 (+1d) |  |  |
| 1.3.1.3.2 | **Structure works** |  | 2026-01-12 → 2026-01-13 (+1d) |  |  |
| 1.3.1.3.2.19 | **Floor 16** |  | 2025-06-16 → 2025-06-18 (+2d) |  |  |
| 1.3.1.3.2.19.1 | **Columns / shear walls** |  | 2025-06-10 → 2025-06-12 (+2d) |  |  |
| PG-11829 | Reinforcement |  | 2025-06-07 → 2025-06-09 A (+2d) | 56% → 100% | 0.13d → none |
| PG-11830 | Formwork |  | 2025-06-10 → 2025-06-12 A (+2d) | 3% → 100% | 0d → none |
| 1.3.1.3.2.19.2 | **Slab, Beams & Staircase** | 2025-06-09 → 2025-06-11 (+2d) | 2025-06-16 → 2025-06-18 (+2d) |  |  |
| PG-11831 | Formwork | 2025-06-09 → 2025-06-11 A (+2d) | 2025-06-12 → 2025-06-14 (+2d) | 0% → 95% |  |
| PG-11832 | Reinforcement | 2025-06-11 → 2025-06-13 A (+2d) | 2025-06-14 → 2025-06-17 (+3d) | 0% → 29% |  |
| PG-11833 | Concrete | 2025-06-14 → 2025-06-17 (+3d) | 2025-06-16 → 2025-06-18 (+2d) |  |  |
| 1.3.1.3.2.20 | **Floor 17** | 2025-06-16 → 2025-06-18 (+2d) | 2025-06-28 → 2025-07-01 (+3d) |  |  |
| 1.3.1.3.2.20.1 | **Columns / shear walls** | 2025-06-16 → 2025-06-18 (+2d) | 2025-06-23 → 2025-06-25 (+2d) |  |  |
| PG-11834 | Reinforcement | 2025-06-16 → 2025-06-18 (+2d) | 2025-06-20 → 2025-06-23 (+3d) |  |  |
| PG-11835 | Formwork | 2025-06-18 → 2025-06-20 (+2d) | 2025-06-23 → 2025-06-25 (+2d) |  |  |
| 1.3.1.3.2.20.2 | **Slab, Beams & Staircase** | 2025-06-21 → 2025-06-24 (+3d) | 2025-06-28 → 2025-07-01 (+3d) |  |  |
| PG-11836 | Formwork | 2025-06-21 → 2025-06-24 (+3d) | 2025-06-25 → 2025-06-27 (+2d) |  |  |
| PG-11837 | Reinforcement | 2025-06-24 → 2025-06-26 (+2d) | 2025-06-27 → 2025-06-30 (+3d) |  |  |
| PG-11838 | Concrete | 2025-06-27 → 2025-06-30 (+3d) | 2025-06-28 → 2025-07-01 (+3d) |  |  |
| 1.3.1.3.2.21 | **Floor 18** | 2025-06-28 → 2025-07-01 (+3d) | 2025-07-11 → 2025-07-14 (+3d) |  |  |
| 1.3.1.3.2.21.1 | **Columns / shear walls** | 2025-06-28 → 2025-07-01 (+3d) | 2025-07-05 → 2025-07-08 (+3d) |  |  |
| PG-11839 | Reinforcement | 2025-06-28 → 2025-07-01 (+3d) | 2025-07-03 → 2025-07-05 (+2d) |  |  |
| PG-11840 | Formwork | 2025-07-01 → 2025-07-03 (+2d) | 2025-07-05 → 2025-07-08 (+3d) |  |  |
| 1.3.1.3.2.21.2 | **Slab, Beams & Staircase** | 2025-07-04 → 2025-07-07 (+3d) | 2025-07-11 → 2025-07-14 (+3d) |  |  |
| PG-11841 | Formwork | 2025-07-04 → 2025-07-07 (+3d) | 2025-07-08 → 2025-07-10 (+2d) |  |  |
| PG-11842 | Reinforcement | 2025-07-07 → 2025-07-09 (+2d) | 2025-07-10 → 2025-07-12 (+2d) |  |  |
| PG-11843 | Concrete | 2025-07-10 → 2025-07-12 (+2d) | 2025-07-11 → 2025-07-14 (+3d) |  |  |
| 1.3.1.3.2.22 | **Floor 19** | 2025-07-11 → 2025-07-14 (+3d) | 2025-07-24 → 2025-07-26 (+2d) |  |  |
| 1.3.1.3.2.22.1 | **Columns / shear walls** | 2025-07-11 → 2025-07-14 (+3d) | 2025-07-18 → 2025-07-21 (+3d) |  |  |
| PG-11844 | Reinforcement | 2025-07-11 → 2025-07-14 (+3d) | 2025-07-16 → 2025-07-18 (+2d) |  |  |
| PG-11845 | Formwork | 2025-07-14 → 2025-07-16 (+2d) | 2025-07-18 → 2025-07-21 (+3d) |  |  |
| 1.3.1.3.2.22.2 | **Slab, Beams & Staircase** | 2025-07-17 → 2025-07-19 (+2d) | 2025-07-24 → 2025-07-26 (+2d) |  |  |
| PG-11846 | Formwork | 2025-07-17 → 2025-07-19 (+2d) | 2025-07-21 → 2025-07-23 (+2d) |  |  |
| PG-11847 | Reinforcement | 2025-07-19 → 2025-07-22 (+3d) | 2025-07-23 → 2025-07-25 (+2d) |  |  |
| PG-11848 | Concrete | 2025-07-23 → 2025-07-25 (+2d) | 2025-07-24 → 2025-07-26 (+2d) |  |  |
| 1.3.1.3.2.23 | **Floor 20** | 2025-07-24 → 2025-07-26 (+2d) | 2025-08-06 → 2025-08-08 (+2d) |  |  |
| 1.3.1.3.2.23.1 | **Columns / shear walls** | 2025-07-24 → 2025-07-26 (+2d) | 2025-07-31 → 2025-08-02 (+2d) |  |  |
| PG-11849 | Reinforcement | 2025-07-24 → 2025-07-26 (+2d) | 2025-07-29 → 2025-07-31 (+2d) |  |  |
| PG-11850 | Formwork | 2025-07-26 → 2025-07-29 (+3d) | 2025-07-31 → 2025-08-02 (+2d) |  |  |
| 1.3.1.3.2.23.2 | **Slab, Beams & Staircase** | 2025-07-30 → 2025-08-01 (+2d) | 2025-08-06 → 2025-08-08 (+2d) |  |  |
| PG-11851 | Formwork | 2025-07-30 → 2025-08-01 (+2d) | 2025-08-02 → 2025-08-05 (+3d) |  |  |
| PG-11852 | Reinforcement | 2025-08-01 → 2025-08-04 (+3d) | 2025-08-05 → 2025-08-07 (+2d) |  |  |
| PG-11853 | Concrete | 2025-08-05 → 2025-08-07 (+2d) | 2025-08-06 → 2025-08-08 (+2d) |  |  |
| 1.3.1.3.2.24 | **Floor 21** | 2025-08-06 → 2025-08-08 (+2d) | 2025-08-20 → 2025-08-22 (+2d) |  |  |
| 1.3.1.3.2.24.1 | **Columns / shear walls** | 2025-08-06 → 2025-08-08 (+2d) | 2025-08-13 → 2025-08-16 (+3d) |  |  |

| ID | Task | Start | Finish |
| --- | --- | --- | --- |
| PG-11854 | Reinforcement | 2025-08-06 → 2025-08-08 (+2d) | 2025-08-11 → 2025-08-13 (+2d) |
| PG-11855 | Formwork | 2025-08-08 → 2025-08-11 (+3d) | 2025-08-13 → 2025-08-16 (+3d) |
| 1.3.1.3.2.24.2 | **Slab, Beams & Staircase** | 2025-08-12 → 2025-08-14 (+2d) | 2025-08-20 → 2025-08-22 (+2d) |
| PG-11856 | Formwork | 2025-08-12 → 2025-08-14 (+2d) | 2025-08-16 → 2025-08-19 (+3d) |
| PG-11857 | Reinforcement | 2025-08-14 → 2025-08-18 (+4d) | 2025-08-19 → 2025-08-21 (+2d) |
| PG-11858 | Concrete | 2025-08-19 → 2025-08-21 (+2d) | 2025-08-20 → 2025-08-22 (+2d) |
| 1.3.1.3.2.25 | **Floor 22** | 2025-08-20 → 2025-08-22 (+2d) | 2025-09-02 → 2025-09-04 (+2d) |
| 1.3.1.3.2.25.1 | **Columns / shear walls** | 2025-08-20 → 2025-08-22 (+2d) | 2025-08-27 → 2025-08-29 (+2d) |
| PG-11859 | Reinforcement | 2025-08-20 → 2025-08-22 (+2d) | 2025-08-25 → 2025-08-27 (+2d) |
| PG-11860 | Formwork | 2025-08-22 → 2025-08-25 (+3d) | 2025-08-27 → 2025-08-29 (+2d) |
| 1.3.1.3.2.25.2 | **Slab, Beams & Staircase** | 2025-08-26 → 2025-08-28 (+2d) | 2025-09-02 → 2025-09-04 (+2d) |
| PG-11861 | Formwork | 2025-08-26 → 2025-08-28 (+2d) | 2025-08-29 → 2025-09-01 (+3d) |
| PG-11862 | Reinforcement | 2025-08-28 → 2025-08-30 (+2d) | 2025-09-01 → 2025-09-03 (+2d) |
| PG-11863 | Concrete | 2025-09-01 → 2025-09-03 (+2d) | 2025-09-02 → 2025-09-04 (+2d) |
| 1.3.1.3.2.26 | **Floor 23** | 2025-09-02 → 2025-09-04 (+2d) | 2025-09-15 → 2025-09-17 (+2d) |
| 1.3.1.3.2.26.1 | **Columns / shear walls** | 2025-09-02 → 2025-09-04 (+2d) | 2025-09-09 → 2025-09-11 (+2d) |
| PG-11864 | Reinforcement | 2025-09-02 → 2025-09-04 (+2d) | 2025-09-06 → 2025-09-09 (+3d) |
| PG-11865 | Formwork | 2025-09-04 → 2025-09-06 (+2d) | 2025-09-09 → 2025-09-11 (+2d) |
| 1.3.1.3.2.26.2 | **Slab, Beams & Staircase** | 2025-09-08 → 2025-09-10 (+2d) | 2025-09-15 → 2025-09-17 (+2d) |
| PG-11866 | Formwork | 2025-09-08 → 2025-09-10 (+2d) | 2025-09-11 → 2025-09-13 (+2d) |
| PG-11867 | Reinforcement | 2025-09-10 → 2025-09-12 (+2d) | 2025-09-13 → 2025-09-16 (+3d) |
| PG-11868 | Concrete | 2025-09-13 → 2025-09-16 (+3d) | 2025-09-15 → 2025-09-17 (+2d) |
| 1.3.1.3.2.27 | **Floor 24** | 2025-09-15 → 2025-09-17 (+2d) | 2025-09-27 → 2025-09-30 (+3d) |
| 1.3.1.3.2.27.1 | **Columns / shear walls** | 2025-09-15 → 2025-09-17 (+2d) | 2025-09-22 → 2025-09-24 (+2d) |
| PG-11869 | Reinforcement | 2025-09-15 → 2025-09-17 (+2d) | 2025-09-19 → 2025-09-22 (+3d) |
| PG-11870 | Formwork | 2025-09-17 → 2025-09-19 (+2d) | 2025-09-22 → 2025-09-24 (+2d) |
| 1.3.1.3.2.27.2 | **Slab, Beams & Staircase** | 2025-09-20 → 2025-09-23 (+3d) | 2025-09-27 → 2025-09-30 (+3d) |
| PG-11871 | Formwork | 2025-09-20 → 2025-09-23 (+3d) | 2025-09-24 → 2025-09-26 (+2d) |
| PG-11872 | Reinforcement | 2025-09-23 → 2025-09-25 (+2d) | 2025-09-26 → 2025-09-29 (+3d) |
| PG-11873 | Concrete | 2025-09-26 → 2025-09-29 (+3d) | 2025-09-27 → 2025-09-30 (+3d) |
| 1.3.1.3.2.28 | **Floor 25** | 2025-09-27 → 2025-09-30 (+3d) | 2025-10-11 → 2025-10-14 (+3d) |
| 1.3.1.3.2.28.1 | **Columns / shear walls** | 2025-09-27 → 2025-09-30 (+3d) | 2025-10-06 → 2025-10-08 (+2d) |
| PG-11874 | Reinforcement | 2025-09-27 → 2025-09-30 (+3d) | 2025-10-03 → 2025-10-06 (+3d) |
| PG-11875 | Formwork | 2025-09-30 → 2025-10-03 (+3d) | 2025-10-06 → 2025-10-08 (+2d) |
| 1.3.1.3.2.28.2 | **Slab, Beams & Staircase** | 2025-10-04 → 2025-10-07 (+3d) | 2025-10-11 → 2025-10-14 (+3d) |
| PG-11876 | Formwork | 2025-10-04 → 2025-10-07 (+3d) | 2025-10-08 → 2025-10-10 (+2d) |
| PG-11877 | Reinforcement | 2025-10-07 → 2025-10-09 (+2d) | 2025-10-10 → 2025-10-13 (+3d) |
| PG-11878 | Concrete | 2025-10-10 → 2025-10-13 (+3d) | 2025-10-11 → 2025-10-14 (+3d) |
| 1.3.1.3.2.29 | **Floor 26** | 2025-10-11 → 2025-10-14 (+3d) | 2025-10-24 → 2025-10-27 (+3d) |
| 1.3.1.3.2.29.1 | **Columns / shear walls** | 2025-10-11 → 2025-10-14 (+3d) | 2025-10-18 → 2025-10-21 (+3d) |
| PG-11879 | Reinforcement | 2025-10-11 → 2025-10-14 (+3d) | 2025-10-16 → 2025-10-18 (+2d) |
| PG-11880 | Formwork | 2025-10-14 → 2025-10-16 (+2d) | 2025-10-18 → 2025-10-21 (+3d) |
| 1.3.1.3.2.29.2 | **Slab, Beams & Staircase** | 2025-10-17 → 2025-10-20 (+3d) | 2025-10-24 → 2025-10-27 (+3d) |
| PG-11881 | Formwork | 2025-10-17 → 2025-10-20 (+3d) | 2025-10-21 → 2025-10-23 (+2d) |
| PG-11882 | Reinforcement | 2025-10-20 → 2025-10-22 (+2d) | 2025-10-23 → 2025-10-25 (+2d) |
| PG-11883 | Concrete | 2025-10-23 → 2025-10-25 (+2d) | 2025-10-24 → 2025-10-27 (+3d) |
| 1.3.1.3.2.30 | **Floor 27** | 2025-10-24 → 2025-10-27 (+3d) | 2025-11-07 → 2025-11-10 (+3d) |
| 1.3.1.3.2.30.1 | **Columns / shear walls** | 2025-10-24 → 2025-10-27 (+3d) | 2025-10-31 → 2025-11-04 (+4d) |
| PG-11884 | Reinforcement | 2025-10-24 → 2025-10-27 (+3d) | 2025-10-29 → 2025-10-31 (+2d) |
| PG-11885 | Formwork | 2025-10-27 → 2025-10-29 (+2d) | 2025-10-31 → 2025-11-04 (+4d) |
| 1.3.1.3.2.30.2 | **Slab, Beams & Staircase** | 2025-10-30 → 2025-11-03 (+4d) | 2025-11-07 → 2025-11-10 (+3d) |
| PG-11886 | Formwork | 2025-10-30 → 2025-11-03 (+4d) | 2025-11-04 → 2025-11-06 (+2d) |
| PG-11887 | Reinforcement | 2025-11-03 → 2025-11-05 (+2d) | 2025-11-06 → 2025-11-08 (+2d) |
| PG-11888 | Concrete | 2025-11-06 → 2025-11-08 (+2d) | 2025-11-07 → 2025-11-10 (+3d) |
| 1.3.1.3.2.31 | **Floor 28** | 2025-11-07 → 2025-11-10 (+3d) | 2025-11-20 → 2025-11-21 (+1d) |
| 1.3.1.3.2.31.1 | **Columns / shear walls** | 2025-11-07 → 2025-11-10 (+3d) | 2025-11-14 → 2025-11-17 (+3d) |
| PG-11889 | Reinforcement | 2025-11-07 → 2025-11-10 (+3d) | 2025-11-12 → 2025-11-14 (+2d) |
| PG-11890 | Formwork | 2025-11-10 → 2025-11-12 (+2d) | 2025-11-14 → 2025-11-17 (+3d) |
| 1.3.1.3.2.31.2 | **Slab, Beams & Staircase** | 2025-11-13 → 2025-11-15 (+2d) | 2025-11-20 → 2025-11-21 (+1d) |
| PG-11891 | Formwork | 2025-11-13 → 2025-11-15 (+2d) | 2025-11-17 → 2025-11-19 (+2d) |
| PG-11892 | Reinforcement | 2025-11-15 → 2025-11-18 (+3d) | 2025-11-19 → 2025-11-21 (+2d) |
| PG-11893 | Concrete | 2025-11-19 → 2025-11-21 (+2d) | 2025-11-20 → 2025-11-21 (+1d) |
| 1.3.1.3.2.32 | **Floor 29** | 2025-11-20 → 2025-11-21 (+1d) | 2025-12-03 → 2025-12-04 (+1d) |
| 1.3.1.3.2.32.1 | **Columns / shear walls** | 2025-11-20 → 2025-11-21 (+1d) | 2025-11-27 → 2025-11-28 (+1d) |
| PG-11894 | Reinforcement | 2025-11-20 → 2025-11-21 (+1d) | 2025-11-25 → 2025-11-26 (+1d) |
| PG-11895 | Formwork | 2025-11-22 → 2025-11-24 (+2d) | 2025-11-27 → 2025-11-28 (+1d) |
| 1.3.1.3.2.32.2 | **Slab, Beams & Staircase** | 2025-11-26 → 2025-11-27 (+1d) | 2025-12-03 → 2025-12-04 (+1d) |
| PG-11896 | Formwork | 2025-11-26 → 2025-11-27 (+1d) | 2025-11-29 → 2025-12-01 (+2d) |
| PG-11897 | Reinforcement | 2025-11-28 → 2025-11-29 (+1d) | 2025-12-02 → 2025-12-03 (+1d) |
| PG-11898 | Concrete | 2025-12-02 → 2025-12-03 (+1d) | 2025-12-03 → 2025-12-04 (+1d) |

| ID | Task | Start | Finish | Complete | Total float |
| --- | --- | --- | --- | --- | --- |
| 1.3.1.3.2.33 | **Above Terrace Floor** | 2025-12-03 → 2025-12-04 (+1d) | 2026-01-12 → 2026-01-13 (+1d) |  |  |
| 1.3.1.3.2.33.1 | **Columns / shear walls/Parapet Walls** | 2025-12-03 → 2025-12-04 (+1d) | 2025-12-17 → 2025-12-18 (+1d) |  |  |
| PG-11899 | Reinforcement | 2025-12-03 → 2025-12-04 (+1d) | 2025-12-08 → 2025-12-09 (+1d) |  |  |
| PG-11900 | Formwork | 2025-12-05 → 2025-12-06 (+1d) | 2025-12-11 → 2025-12-12 (+1d) |  |  |
| PG-11901 | Concrete | 2025-12-11 → 2025-12-12 (+1d) | 2025-12-17 → 2025-12-18 (+1d) |  |  |
| 1.3.1.3.2.33.2 | **Slab, Beams & Staircase Head rooms, Lift headroom** | 2025-12-08 → 2025-12-09 (+1d) | 2026-01-12 → 2026-01-13 (+1d) |  |  |
| PG-11905 | Terrace Waterproofing and Protective finishing. | 2025-12-08 → 2025-12-09 (+1d) | 2026-01-12 → 2026-01-13 (+1d) |  |  |
| PG-11902 | Formwork | 2025-12-17 → 2025-12-18 (+1d) | 2025-12-23 → 2025-12-24 (+1d) |  |  |
| PG-11903 | Reinforcement | 2025-12-23 → 2025-12-24 (+1d) | 2025-12-29 → 2025-12-30 (+1d) |  |  |
| PG-11904 | Concrete | 2025-12-29 → 2025-12-30 (+1d) | 2025-12-31 → 2026-01-01 (+1d) |  |  |
| 1.3.1.3.3 | **MEP Internal works** |  | 2026-06-11 → 2026-06-12 (+1d) |  |  |
| PG-11965 | 2nd Fix - Wiring works | 2025-07-03 → 2025-07-04 (+1d) |  |  | 334.79d → 335.73d |
| 1.3.1.3.3.10 | **Floor 7** |  | 2025-07-08 → 2025-07-10 (+2d) |  |  |
| 1.3.1.3.3.10.1 | **PHE Works** |  | 2025-07-08 → 2025-07-10 (+2d) |  |  |
| PG-11978 | Final Fix - CP & Sanitary fixtures | 2025-06-28 → 2025-07-01 (+3d) | 2025-07-08 → 2025-07-10 (+2d) |  | 351.08d → 350.13d |
| 1.3.1.3.3.10.2 | **Fire Fighting Works** |  | 2025-07-08 → 2025-07-10 (+2d) |  |  |
| PG-11980 | 2nd Fix - Sprinkler fixing & Pressure testing |  |  | 10% → 70% | 361.36d → 361.92d |
| PG-11981 | Final Fix - Smoke & heat detectors, FHC , FAS Etc. | 2025-06-28 → 2025-07-01 (+3d) | 2025-07-08 → 2025-07-10 (+2d) |  | 351.08d → 350.13d |
| 1.3.1.3.3.10.3 | **Electrical Works** |  | 2025-07-08 → 2025-07-10 (+2d) |  |  |
| PG-11983 | 2nd Fix - Wiring works |  | 2025-06-14 → 2025-06-16 (+2d) | 47% → 88% | 365.65d → 365.92d |
| PG-11984 | Final Fix - Electrical Fixtures | 2025-07-02 → 2025-07-04 (+2d) | 2025-07-08 → 2025-07-10 (+2d) |  | 351.08d → 350.13d |
| PG-11987 | Final Fix - CP & Sanitary fixtures | 2025-07-14 → 2025-07-12 (-2d) |  |  | 336.38d → 337.67d |
| PG-11989 | 2nd Fix - Sprinkler fixing & Pressure testing | 2025-06-20 → 2025-06-19 (-1d) |  |  | 346.38d → 347.67d |
| PG-11990 | Final Fix - Smoke & heat detectors, FHC , FAS Etc. | 2025-07-14 → 2025-07-12 (-2d) |  |  | 336.38d → 337.67d |
| PG-11993 | Final Fix - Electrical Fixtures | 2025-07-18 → 2025-07-17 (-1d) |  |  | 336.38d → 337.67d |
| PG-11995 | 2nd Fix - diverter fixing & Pressure testing |  | 2025-06-10 → 2025-06-11 A (+1d) | 62% → 100% | 324.38d → none |
| PG-11996 | Final Fix - CP & Sanitary fixtures | 2025-07-28 → 2025-07-26 (-2d) |  |  | 324.38d → 325.73d |
| PG-11997 | 1st Fix - Piping and Shaft hydrant works |  |  | 39% → 91% | 368.8d → 370d |
| PG-11999 | Final Fix - Smoke & heat detectors, FHC , FAS Etc. | 2025-07-28 → 2025-07-26 (-2d) |  |  | 324.38d → 325.73d |
| PG-12003 | 1st Fix - Piping works |  |  | 8% → 58% | 310.05d → 311.25d |
| 1.3.1.3.3.13.2 | **Fire Fighting Works** | 2025-06-12 → 2025-06-13 (+1d) |  |  |  |
| PG-12006 | 1st Fix - Piping and Shaft hydrant works | 2025-06-12 → 2025-06-13 A (+1d) |  | 0% → 3% | 358.66d → 359.6d |
| PG-12009 | 1st Fix - GI wire pulling |  | 2025-06-12 → 2025-06-13 A (+1d) | 34% → 100% | 358.66d → none |
| 1.3.1.3.3.14 | **Floor 11** | 2025-06-16 → 2025-06-18 (+2d) | 2025-09-05 → 2025-09-06 (+1d) |  |  |
| 1.3.1.3.3.14.1 | **PHE Works** | 2025-06-16 → 2025-06-18 (+2d) | 2025-09-05 → 2025-09-06 (+1d) |  |  |
| PG-12012 | 1st Fix - Piping works | 2025-06-16 → 2025-06-18 (+2d) | 2025-06-30 → 2025-07-02 (+2d) |  |  |
| PG-12013 | 2nd Fix - diverter fixing & Pressure testing | 2025-06-25 → 2025-06-27 (+2d) | 2025-07-07 → 2025-07-09 (+2d) |  |  |
| PG-12014 | Final Fix - CP & Sanitary fixtures | 2025-08-25 → 2025-08-27 (+2d) | 2025-09-05 → 2025-09-06 (+1d) |  |  |
| 1.3.1.3.3.14.2 | **Fire Fighting Works** | 2025-06-25 → 2025-06-26 (+1d) | 2025-09-05 → 2025-09-06 (+1d) |  |  |
| PG-12015 | 1st Fix - Piping and Shaft hydrant works | 2025-06-25 → 2025-06-26 (+1d) | 2025-07-09 → 2025-07-10 (+1d) |  |  |
| PG-12016 | 2nd Fix - Sprinkler fixing & Pressure testing | 2025-08-01 → 2025-08-04 (+3d) | 2025-08-13 → 2025-08-16 (+3d) |  |  |
| PG-12017 | Final Fix - Smoke & heat detectors, FHC , FAS Etc. | 2025-08-25 → 2025-08-27 (+2d) | 2025-09-05 → 2025-09-06 (+1d) |  |  |
| 1.3.1.3.3.14.3 | **Electrical Works** | 2025-06-16 → 2025-06-18 (+2d) | 2025-09-05 → 2025-09-06 (+1d) |  |  |
| PG-12018 | 1st Fix - GI wire pulling | 2025-06-16 → 2025-06-18 (+2d) | 2025-06-25 → 2025-06-26 (+1d) |  |  |
| PG-12019 | 2nd Fix - Wiring works | 2025-07-29 → 2025-07-30 (+1d) | 2025-08-12 → 2025-08-14 (+2d) |  |  |
| PG-12020 | Final Fix - Electrical Fixtures | 2025-08-29 → 2025-09-01 (+3d) | 2025-09-05 → 2025-09-06 (+1d) |  |  |
| 1.3.1.3.3.15 | **Floor 12** | 2025-06-28 → 2025-07-01 (+3d) | 2025-09-22 → 2025-09-23 (+1d) |  |  |
| 1.3.1.3.3.15.1 | **PHE Works** | 2025-06-28 → 2025-07-01 (+3d) | 2025-09-22 → 2025-09-23 (+1d) |  |  |
| PG-12021 | 1st Fix - Piping works | 2025-06-28 → 2025-07-01 (+3d) | 2025-07-12 → 2025-07-15 (+3d) |  |  |
| PG-12022 | 2nd Fix - diverter fixing & Pressure testing | 2025-07-08 → 2025-07-10 (+2d) | 2025-07-19 → 2025-07-22 (+3d) |  |  |
| PG-12023 | Final Fix - CP & Sanitary fixtures | 2025-09-08 → 2025-09-10 (+2d) | 2025-09-22 → 2025-09-23 (+1d) |  |  |
| 1.3.1.3.3.15.2 | **Fire Fighting Works** | 2025-07-08 → 2025-07-09 (+1d) | 2025-09-22 → 2025-09-23 (+1d) |  |  |
| PG-12024 | 1st Fix - Piping and Shaft hydrant works | 2025-07-08 → 2025-07-09 (+1d) | 2025-07-22 → 2025-07-23 (+1d) |  |  |
| PG-12025 | 2nd Fix - Sprinkler fixing & Pressure testing | 2025-08-14 → 2025-08-18 (+4d) | 2025-08-27 → 2025-08-29 (+2d) |  |  |
| PG-12026 | Final Fix - Smoke & heat detectors, FHC , FAS Etc. | 2025-09-08 → 2025-09-10 (+2d) | 2025-09-22 → 2025-09-23 (+1d) |  |  |
| 1.3.1.3.3.15.3 | **Electrical Works** | 2025-06-28 → 2025-07-01 (+3d) | 2025-09-22 → 2025-09-23 (+1d) |  |  |
| PG-12027 | 1st Fix - GI wire pulling | 2025-06-28 → 2025-07-01 (+3d) | 2025-07-08 → 2025-07-09 (+1d) |  |  |
| PG-12028 | 2nd Fix - Wiring works | 2025-08-09 → 2025-08-11 (+2d) | 2025-08-26 → 2025-08-28 (+2d) |  |  |
| PG-12029 | Final Fix - Electrical Fixtures | 2025-09-15 → 2025-09-17 (+2d) | 2025-09-22 → 2025-09-23 (+1d) |  |  |
| 1.3.1.3.3.16 | **Floor 13** | 2025-07-11 → 2025-07-14 (+3d) | 2025-10-06 → 2025-10-07 (+1d) |  |  |
| 1.3.1.3.3.16.1 | **PHE Works** | 2025-07-11 → 2025-07-14 (+3d) | 2025-10-06 → 2025-10-07 (+1d) |  |  |
| PG-12030 | 1st Fix - Piping works | 2025-07-11 → 2025-07-14 (+3d) | 2025-07-25 → 2025-07-28 (+3d) |  |  |
| PG-12031 | 2nd Fix - diverter fixing & Pressure testing | 2025-07-21 → 2025-07-23 (+2d) | 2025-08-01 → 2025-08-04 (+3d) |  |  |
| PG-12032 | Final Fix - CP & Sanitary fixtures | 2025-09-22 → 2025-09-24 (+2d) | 2025-10-06 → 2025-10-07 (+1d) |  |  |
| 1.3.1.3.3.16.2 | **Fire Fighting Works** | 2025-07-21 → 2025-07-22 (+1d) | 2025-10-06 → 2025-10-07 (+1d) |  |  |
| PG-12033 | 1st Fix - Piping and Shaft hydrant works | 2025-07-21 → 2025-07-22 (+1d) | 2025-08-04 → 2025-08-05 (+1d) |  |  |
| PG-12034 | 2nd Fix - Sprinkler fixing & Pressure testing | 2025-08-28 → 2025-08-30 (+2d) | 2025-09-09 → 2025-09-11 (+2d) |  |  |
| PG-12035 | Final Fix - Smoke & heat detectors, FHC , FAS Etc. | 2025-09-22 → 2025-09-24 (+2d) | 2025-10-06 → 2025-10-07 (+1d) |  |  |
| 1.3.1.3.3.16.3 | **Electrical Works** | 2025-07-11 → 2025-07-14 (+3d) | 2025-10-06 → 2025-10-07 (+1d) |  |  |
| PG-12036 | 1st Fix - GI wire pulling | 2025-07-11 → 2025-07-14 (+3d) | 2025-07-21 → 2025-07-22 (+1d) |  |  |

| ID | Task | Start | Finish | Total float |
| --- | --- | --- | --- | --- |
| PG-12037 | 2nd Fix - Wiring works | 2025-08-23 → 2025-08-25 (+2d) | 2025-09-08 → 2025-09-10 (+2d) |  |
| PG-12038 | Final Fix - Electrical Fixtures | 2025-09-27 → 2025-09-30 (+3d) | 2025-10-06 → 2025-10-07 (+1d) |  |
| 1.3.1.3.3.17 | **Floor 14** | 2025-07-24 → 2025-07-26 (+2d) | 2025-10-16 → 2025-10-17 (+1d) |  |
| 1.3.1.3.3.17.1 | **PHE Works** | 2025-07-24 → 2025-07-26 (+2d) | 2025-10-16 → 2025-10-17 (+1d) |  |
| PG-12039 | 1st Fix - Piping works | 2025-07-24 → 2025-07-26 (+2d) | 2025-08-07 → 2025-08-09 (+2d) |  |
| PG-12040 | 2nd Fix - diverter fixing & Pressure testing | 2025-08-02 → 2025-08-05 (+3d) | 2025-08-14 → 2025-08-18 (+4d) |  |
| PG-12041 | Final Fix - CP & Sanitary fixtures | 2025-10-04 → 2025-10-07 (+3d) | 2025-10-16 → 2025-10-17 (+1d) |  |
| 1.3.1.3.3.17.2 | **Fire Fighting Works** | 2025-08-02 → 2025-08-04 (+2d) | 2025-10-16 → 2025-10-17 (+1d) |  |
| PG-12042 | 1st Fix - Piping and Shaft hydrant works | 2025-08-02 → 2025-08-04 (+2d) | 2025-08-18 → 2025-08-19 (+1d) |  |
| PG-12043 | 2nd Fix - Sprinkler fixing & Pressure testing | 2025-09-10 → 2025-09-12 (+2d) | 2025-09-22 → 2025-09-24 (+2d) |  |
| PG-12044 | Final Fix - Smoke & heat detectors, FHC , FAS Etc. | 2025-10-04 → 2025-10-07 (+3d) | 2025-10-16 → 2025-10-17 (+1d) |  |
| 1.3.1.3.3.17.3 | **Electrical Works** | 2025-07-24 → 2025-07-26 (+2d) | 2025-10-16 → 2025-10-17 (+1d) |  |
| PG-12045 | 1st Fix - GI wire pulling | 2025-07-24 → 2025-07-26 (+2d) | 2025-08-02 → 2025-08-04 (+2d) |  |
| PG-12046 | 2nd Fix - Wiring works | 2025-09-04 → 2025-09-05 (+1d) | 2025-09-20 → 2025-09-23 (+3d) |  |
| PG-12047 | Final Fix - Electrical Fixtures | 2025-10-09 → 2025-10-11 (+2d) | 2025-10-16 → 2025-10-17 (+1d) |  |
| 1.3.1.3.3.18 | **Floor 15** | 2025-08-06 → 2025-08-08 (+2d) | 2026-01-13 → 2026-01-14 (+1d) |  |
| 1.3.1.3.3.18.1 | **PHE Works** | 2025-08-06 → 2025-08-08 (+2d) | 2026-01-13 → 2026-01-14 (+1d) |  |
| PG-12048 | 1st Fix - Piping works | 2025-08-06 → 2025-08-08 (+2d) | 2025-08-21 → 2025-08-23 (+2d) |  |
| PG-12049 | 2nd Fix - diverter fixing & Pressure testing | 2025-08-16 → 2025-08-19 (+3d) | 2025-08-28 → 2025-08-30 (+2d) |  |
| PG-12050 | Final Fix - CP & Sanitary fixtures |  | 2026-01-13 → 2026-01-14 (+1d) | 190.79d → 191.58d |
| 1.3.1.3.3.18.2 | **Fire Fighting Works** | 2025-08-16 → 2025-08-18 (+2d) | 2026-01-13 → 2026-01-14 (+1d) |  |
| PG-12051 | 1st Fix - Piping and Shaft hydrant works | 2025-08-16 → 2025-08-18 (+2d) | 2025-08-30 → 2025-09-01 (+2d) |  |
| PG-12053 | Final Fix - Smoke & heat detectors, FHC , FAS Etc. |  | 2026-01-13 → 2026-01-14 (+1d) | 190.79d → 191.58d |
| 1.3.1.3.3.18.3 | **Electrical Works** | 2025-08-06 → 2025-08-08 (+2d) | 2026-01-13 → 2026-01-14 (+1d) |  |
| PG-12054 | 1st Fix - GI wire pulling | 2025-08-06 → 2025-08-08 (+2d) | 2025-08-16 → 2025-08-18 (+2d) |  |
| PG-12055 | 2nd Fix - Wiring works | 2025-12-04 → 2025-12-05 (+1d) |  | 205.79d → 206.58d |
| PG-12056 | Final Fix - Electrical Fixtures |  | 2026-01-13 → 2026-01-14 (+1d) | 190.79d → 191.58d |
| 1.3.1.3.3.19 | **Floor 16** | 2025-08-20 → 2025-08-22 (+2d) | 2025-11-12 → 2025-11-13 (+1d) |  |
| 1.3.1.3.3.19.1 | **PHE Works** | 2025-08-20 → 2025-08-22 (+2d) | 2025-11-12 → 2025-11-13 (+1d) |  |
| PG-12057 | 1st Fix - Piping works | 2025-08-20 → 2025-08-22 (+2d) | 2025-09-03 → 2025-09-05 (+2d) |  |
| PG-12058 | 2nd Fix - diverter fixing & Pressure testing | 2025-08-29 → 2025-09-01 (+3d) | 2025-09-10 → 2025-09-12 (+2d) |  |
| PG-12059 | Final Fix - CP & Sanitary fixtures | 2025-10-29 → 2025-10-31 (+2d) | 2025-11-12 → 2025-11-13 (+1d) |  |
| 1.3.1.3.3.19.2 | **Fire Fighting Works** | 2025-08-29 → 2025-08-30 (+1d) | 2025-11-12 → 2025-11-13 (+1d) |  |
| PG-12060 | 1st Fix - Piping and Shaft hydrant works | 2025-08-29 → 2025-08-30 (+1d) | 2025-09-12 → 2025-09-13 (+1d) |  |
| PG-12061 | 2nd Fix - Sprinkler fixing & Pressure testing | 2025-10-07 → 2025-10-09 (+2d) | 2025-10-18 → 2025-10-21 (+3d) |  |
| PG-12062 | Final Fix - Smoke & heat detectors, FHC , FAS Etc. | 2025-10-29 → 2025-10-31 (+2d) | 2025-11-12 → 2025-11-13 (+1d) |  |
| 1.3.1.3.3.19.3 | **Electrical Works** | 2025-08-20 → 2025-08-22 (+2d) | 2025-11-12 → 2025-11-13 (+1d) |  |
| PG-12063 | 1st Fix - GI wire pulling | 2025-08-20 → 2025-08-22 (+2d) | 2025-08-29 → 2025-08-30 (+1d) |  |
| PG-12064 | 2nd Fix - Wiring works | 2025-10-03 → 2025-10-04 (+1d) | 2025-10-17 → 2025-10-20 (+3d) |  |
| PG-12065 | Final Fix - Electrical Fixtures | 2025-11-05 → 2025-11-07 (+2d) | 2025-11-12 → 2025-11-13 (+1d) |  |
| 1.3.1.3.3.20 | **Floor 17** | 2025-09-02 → 2025-09-04 (+2d) | 2025-11-24 → 2025-11-25 (+1d) |  |
| 1.3.1.3.3.20.1 | **PHE Works** | 2025-09-02 → 2025-09-04 (+2d) | 2025-11-24 → 2025-11-25 (+1d) |  |
| PG-12066 | 1st Fix - Piping works | 2025-09-02 → 2025-09-04 (+2d) | 2025-09-16 → 2025-09-18 (+2d) |  |
| PG-12067 | 2nd Fix - diverter fixing & Pressure testing | 2025-09-11 → 2025-09-13 (+2d) | 2025-09-23 → 2025-09-25 (+2d) |  |
| PG-12068 | Final Fix - CP & Sanitary fixtures | 2025-11-11 → 2025-11-13 (+2d) | 2025-11-24 → 2025-11-25 (+1d) |  |
| 1.3.1.3.3.20.2 | **Fire Fighting Works** | 2025-09-11 → 2025-09-12 (+1d) | 2025-11-24 → 2025-11-25 (+1d) |  |
| PG-12069 | 1st Fix - Piping and Shaft hydrant works | 2025-09-11 → 2025-09-12 (+1d) | 2025-09-25 → 2025-09-26 (+1d) |  |
| PG-12070 | 2nd Fix - Sprinkler fixing & Pressure testing | 2025-10-20 → 2025-10-22 (+2d) | 2025-10-31 → 2025-11-04 (+4d) |  |
| PG-12071 | Final Fix - Smoke & heat detectors, FHC , FAS Etc. | 2025-11-11 → 2025-11-13 (+2d) | 2025-11-24 → 2025-11-25 (+1d) |  |
| 1.3.1.3.3.20.3 | **Electrical Works** | 2025-09-02 → 2025-09-04 (+2d) | 2025-11-24 → 2025-11-25 (+1d) |  |
| PG-12072 | 1st Fix - GI wire pulling | 2025-09-02 → 2025-09-04 (+2d) | 2025-09-11 → 2025-09-12 (+1d) |  |
| PG-12073 | 2nd Fix - Wiring works | 2025-10-15 → 2025-10-16 (+1d) | 2025-10-30 → 2025-11-03 (+4d) |  |
| PG-12074 | Final Fix - Electrical Fixtures | 2025-11-17 → 2025-11-19 (+2d) | 2025-11-24 → 2025-11-25 (+1d) |  |
| 1.3.1.3.3.21 | **Floor 18** | 2025-09-15 → 2025-09-17 (+2d) | 2025-12-06 → 2025-12-08 (+2d) |  |
| 1.3.1.3.3.21.1 | **PHE Works** | 2025-09-15 → 2025-09-17 (+2d) | 2025-12-06 → 2025-12-08 (+2d) |  |
| PG-12075 | 1st Fix - Piping works | 2025-09-15 → 2025-09-17 (+2d) | 2025-09-29 → 2025-10-01 (+2d) |  |
| PG-12076 | 2nd Fix - diverter fixing & Pressure testing | 2025-09-24 → 2025-09-26 (+2d) | 2025-10-07 → 2025-10-09 (+2d) |  |
| PG-12077 | Final Fix - CP & Sanitary fixtures | 2025-11-24 → 2025-11-26 (+2d) | 2025-12-06 → 2025-12-08 (+2d) |  |
| 1.3.1.3.3.21.2 | **Fire Fighting Works** | 2025-09-24 → 2025-09-25 (+1d) | 2025-12-06 → 2025-12-08 (+2d) |  |
| PG-12078 | 1st Fix - Piping and Shaft hydrant works | 2025-09-24 → 2025-09-25 (+1d) | 2025-10-09 → 2025-10-10 (+1d) |  |
| PG-12079 | 2nd Fix - Sprinkler fixing & Pressure testing | 2025-11-03 → 2025-11-05 (+2d) | 2025-11-14 → 2025-11-17 (+3d) |  |
| PG-12080 | Final Fix - Smoke & heat detectors, FHC , FAS Etc. | 2025-11-24 → 2025-11-26 (+2d) | 2025-12-06 → 2025-12-08 (+2d) |  |
| 1.3.1.3.3.21.3 | **Electrical Works** | 2025-09-15 → 2025-09-17 (+2d) | 2025-12-06 → 2025-12-08 (+2d) |  |
| PG-12081 | 1st Fix - GI wire pulling | 2025-09-15 → 2025-09-17 (+2d) | 2025-09-24 → 2025-09-25 (+1d) |  |
| PG-12082 | 2nd Fix - Wiring works | 2025-10-28 → 2025-10-29 (+1d) | 2025-11-13 → 2025-11-15 (+2d) |  |
| PG-12083 | Final Fix - Electrical Fixtures | 2025-11-29 → 2025-12-02 (+3d) | 2025-12-06 → 2025-12-08 (+2d) |  |
| 1.3.1.3.3.22 | **Floor 19** | 2025-09-27 → 2025-09-30 (+3d) | 2025-12-19 → 2025-12-20 (+1d) |  |
| 1.3.1.3.3.22.1 | **PHE Works** | 2025-09-27 → 2025-09-30 (+3d) | 2025-12-19 → 2025-12-20 (+1d) |  |
| PG-12084 | 1st Fix - Piping works | 2025-09-27 → 2025-09-30 (+3d) | 2025-10-13 → 2025-10-15 (+2d) |  |
| PG-12085 | 2nd Fix - diverter fixing & Pressure testing | 2025-10-08 → 2025-10-10 (+2d) | 2025-10-20 → 2025-10-22 (+2d) |  |

| ID | Task | Start | Finish |
| --- | --- | --- | --- |
| PG-12086 | Final Fix - CP & Sanitary fixtures | 2025-12-06 → 2025-12-09 (+3d) | 2025-12-19 → 2025-12-20 (+1d) |
| 1.3.1.3.3.22.2 | **Fire Fighting Works** | 2025-10-08 → 2025-10-09 (+1d) | 2025-12-19 → 2025-12-20 (+1d) |
| PG-12087 | 1st Fix - Piping and Shaft hydrant works | 2025-10-08 → 2025-10-09 (+1d) | 2025-10-22 → 2025-10-23 (+1d) |
| PG-12088 | 2nd Fix - Sprinkler fixing & Pressure testing | 2025-11-15 → 2025-11-18 (+3d) | 2025-11-27 → 2025-11-29 (+2d) |
| PG-12089 | Final Fix - Smoke & heat detectors, FHC , FAS Etc. | 2025-12-06 → 2025-12-09 (+3d) | 2025-12-19 → 2025-12-20 (+1d) |
| 1.3.1.3.3.22.3 | **Electrical Works** | 2025-09-27 → 2025-09-30 (+3d) | 2025-12-19 → 2025-12-20 (+1d) |
| PG-12090 | 1st Fix - GI wire pulling | 2025-09-27 → 2025-09-30 (+3d) | 2025-10-08 → 2025-10-09 (+1d) |
| PG-12091 | 2nd Fix - Wiring works | 2025-11-11 → 2025-11-12 (+1d) | 2025-11-26 → 2025-11-28 (+2d) |
| PG-12092 | Final Fix - Electrical Fixtures | 2025-12-12 → 2025-12-15 (+3d) | 2025-12-19 → 2025-12-20 (+1d) |
| 1.3.1.3.3.23 | **Floor 20** | 2025-10-11 → 2025-10-14 (+3d) | 2026-01-02 → 2026-01-03 (+1d) |
| 1.3.1.3.3.23.1 | **PHE Works** | 2025-10-11 → 2025-10-14 (+3d) | 2026-01-02 → 2026-01-03 (+1d) |
| PG-12093 | 1st Fix - Piping works | 2025-10-11 → 2025-10-14 (+3d) | 2025-10-25 → 2025-10-28 (+3d) |
| PG-12094 | 2nd Fix - diverter fixing & Pressure testing | 2025-10-21 → 2025-10-23 (+2d) | 2025-11-03 → 2025-11-05 (+2d) |
| PG-12095 | Final Fix - CP & Sanitary fixtures | 2025-12-22 → 2025-12-24 (+2d) | 2026-01-02 → 2026-01-03 (+1d) |
| 1.3.1.3.3.23.2 | **Fire Fighting Works** | 2025-10-21 → 2025-10-22 (+1d) | 2026-01-02 → 2026-01-03 (+1d) |
| PG-12096 | 1st Fix - Piping and Shaft hydrant works | 2025-10-21 → 2025-10-22 (+1d) | 2025-11-05 → 2025-11-06 (+1d) |
| PG-12097 | 2nd Fix - Sprinkler fixing & Pressure testing | 2025-11-28 → 2025-12-01 (+3d) | 2025-12-10 → 2025-12-12 (+2d) |
| PG-12098 | Final Fix - Smoke & heat detectors, FHC , FAS Etc. | 2025-12-22 → 2025-12-24 (+2d) | 2026-01-02 → 2026-01-03 (+1d) |
| 1.3.1.3.3.23.3 | **Electrical Works** | 2025-10-11 → 2025-10-14 (+3d) | 2026-01-02 → 2026-01-03 (+1d) |
| PG-12099 | 1st Fix - GI wire pulling | 2025-10-11 → 2025-10-14 (+3d) | 2025-10-21 → 2025-10-22 (+1d) |
| PG-12100 | 2nd Fix - Wiring works | 2025-11-24 → 2025-11-25 (+1d) | 2025-12-09 → 2025-12-11 (+2d) |
| PG-12101 | Final Fix - Electrical Fixtures | 2025-12-26 → 2025-12-29 (+3d) | 2026-01-02 → 2026-01-03 (+1d) |
| 1.3.1.3.3.24 | **Floor 21** | 2025-10-24 → 2025-10-27 (+3d) | 2026-01-15 → 2026-01-16 (+1d) |
| 1.3.1.3.3.24.1 | **PHE Works** | 2025-10-24 → 2025-10-27 (+3d) | 2026-01-15 → 2026-01-16 (+1d) |
| PG-12102 | 1st Fix - Piping works | 2025-10-24 → 2025-10-27 (+3d) | 2025-11-08 → 2025-11-10 (+2d) |
| PG-12103 | 2nd Fix - diverter fixing & Pressure testing | 2025-11-05 → 2025-11-07 (+2d) | 2025-11-15 → 2025-11-17 (+2d) |
| PG-12104 | Final Fix - CP & Sanitary fixtures | 2026-01-02 → 2026-01-03 (+1d) | 2026-01-15 → 2026-01-16 (+1d) |
| 1.3.1.3.3.24.2 | **Fire Fighting Works** | 2025-11-04 → 2025-11-05 (+1d) | 2026-01-15 → 2026-01-16 (+1d) |
| PG-12105 | 1st Fix - Piping and Shaft hydrant works | 2025-11-04 → 2025-11-05 (+1d) | 2025-11-18 → 2025-11-19 (+1d) |
| PG-12106 | 2nd Fix - Sprinkler fixing & Pressure testing | 2025-12-12 → 2025-12-13 (+1d) | 2025-12-23 → 2025-12-24 (+1d) |
| PG-12107 | Final Fix - Smoke & heat detectors, FHC , FAS Etc. | 2026-01-02 → 2026-01-03 (+1d) | 2026-01-15 → 2026-01-16 (+1d) |
| 1.3.1.3.3.24.3 | **Electrical Works** | 2025-10-24 → 2025-10-27 (+3d) | 2026-01-02 → 2026-01-03 (+1d) |
| PG-12108 | 1st Fix - GI wire pulling | 2025-10-24 → 2025-10-27 (+3d) | 2025-11-04 → 2025-11-05 (+1d) |
| PG-12109 | 2nd Fix - Wiring works | 2025-11-24 → 2025-11-25 (+1d) | 2025-12-09 → 2025-12-11 (+2d) |
| PG-12110 | Final Fix - Electrical Fixtures | 2025-12-26 → 2025-12-29 (+3d) | 2026-01-02 → 2026-01-03 (+1d) |
| 1.3.1.3.3.25 | **Floor 22** | 2025-11-07 → 2025-11-10 (+3d) | 2026-01-29 → 2026-01-30 (+1d) |
| 1.3.1.3.3.25.1 | **PHE Works** | 2025-11-07 → 2025-11-10 (+3d) | 2026-01-29 → 2026-01-30 (+1d) |
| PG-12111 | 1st Fix - Piping works | 2025-11-07 → 2025-11-10 (+3d) | 2025-11-21 → 2025-11-22 (+1d) |
| PG-12112 | 2nd Fix - diverter fixing & Pressure testing | 2025-11-18 → 2025-11-20 (+2d) | 2025-11-28 → 2025-11-29 (+1d) |
| PG-12113 | Final Fix - CP & Sanitary fixtures | 2026-01-15 → 2026-01-16 (+1d) | 2026-01-29 → 2026-01-30 (+1d) |
| 1.3.1.3.3.25.2 | **Fire Fighting Works** | 2025-11-17 → 2025-11-18 (+1d) | 2026-01-29 → 2026-01-30 (+1d) |
| PG-12114 | 1st Fix - Piping and Shaft hydrant works | 2025-11-17 → 2025-11-18 (+1d) | 2025-12-01 → 2025-12-02 (+1d) |
| PG-12115 | 2nd Fix - Sprinkler fixing & Pressure testing | 2025-12-25 → 2025-12-26 (+1d) | 2026-01-05 → 2026-01-06 (+1d) |
| PG-12116 | Final Fix - Smoke & heat detectors, FHC , FAS Etc. | 2026-01-15 → 2026-01-16 (+1d) | 2026-01-29 → 2026-01-30 (+1d) |
| 1.3.1.3.3.25.3 | **Electrical Works** | 2025-11-07 → 2025-11-10 (+3d) | 2026-01-29 → 2026-01-30 (+1d) |
| PG-12117 | 1st Fix - GI wire pulling | 2025-11-07 → 2025-11-10 (+3d) | 2025-11-17 → 2025-11-18 (+1d) |
| PG-12118 | 2nd Fix - Wiring works | 2025-12-19 → 2025-12-20 (+1d) | 2026-01-03 → 2026-01-05 (+2d) |
| PG-12119 | Final Fix - Electrical Fixtures | 2026-01-21 → 2026-01-22 (+1d) | 2026-01-29 → 2026-01-30 (+1d) |
| 1.3.1.3.3.26 | **Floor 23** | 2025-11-20 → 2025-11-21 (+1d) | 2026-02-10 → 2026-02-11 (+1d) |
| 1.3.1.3.3.26.1 | **PHE Works** | 2025-11-20 → 2025-11-21 (+1d) | 2026-02-10 → 2026-02-11 (+1d) |
| PG-12120 | 1st Fix - Piping works | 2025-11-20 → 2025-11-21 (+1d) | 2025-12-03 → 2025-12-04 (+1d) |
| PG-12121 | 2nd Fix - diverter fixing & Pressure testing | 2025-11-28 → 2025-11-29 (+1d) | 2025-12-10 → 2025-12-11 (+1d) |
| PG-12122 | Final Fix - CP & Sanitary fixtures | 2026-01-30 → 2026-01-31 (+1d) | 2026-02-10 → 2026-02-11 (+1d) |
| 1.3.1.3.3.26.2 | **Fire Fighting Works** | 2025-11-28 → 2025-11-29 (+1d) | 2026-02-10 → 2026-02-11 (+1d) |
| PG-12123 | 1st Fix - Piping and Shaft hydrant works | 2025-11-28 → 2025-11-29 (+1d) | 2025-12-12 → 2025-12-13 (+1d) |
| PG-12124 | 2nd Fix - Sprinkler fixing & Pressure testing | 2026-01-03 → 2026-01-05 (+2d) | 2026-01-16 → 2026-01-17 (+1d) |
| PG-12125 | Final Fix - Smoke & heat detectors, FHC , FAS Etc. | 2026-01-30 → 2026-01-31 (+1d) | 2026-02-10 → 2026-02-11 (+1d) |
| 1.3.1.3.3.26.3 | **Electrical Works** | 2025-11-20 → 2025-11-21 (+1d) | 2026-02-10 → 2026-02-11 (+1d) |
| PG-12126 | 1st Fix - GI wire pulling | 2025-11-20 → 2025-11-21 (+1d) | 2025-11-28 → 2025-11-29 (+1d) |
| PG-12127 | 2nd Fix - Wiring works | 2025-12-29 → 2025-12-30 (+1d) | 2026-01-15 → 2026-01-16 (+1d) |
| PG-12128 | Final Fix - Electrical Fixtures | 2026-02-04 → 2026-02-05 (+1d) | 2026-02-10 → 2026-02-11 (+1d) |
| 1.3.1.3.3.27 | **Floor 24** | 2025-12-03 → 2025-12-04 (+1d) | 2026-02-24 → 2026-02-25 (+1d) |
| 1.3.1.3.3.27.1 | **PHE Works** | 2025-12-03 → 2025-12-04 (+1d) | 2026-02-24 → 2026-02-25 (+1d) |
| PG-12129 | 1st Fix - Piping works | 2025-12-03 → 2025-12-04 (+1d) | 2025-12-17 → 2025-12-18 (+1d) |
| PG-12130 | 2nd Fix - diverter fixing & Pressure testing | 2025-12-12 → 2025-12-13 (+1d) | 2025-12-24 → 2025-12-25 (+1d) |
| PG-12131 | Final Fix - CP & Sanitary fixtures | 2026-02-12 → 2026-02-13 (+1d) | 2026-02-24 → 2026-02-25 (+1d) |
| 1.3.1.3.3.27.2 | **Fire Fighting Works** | 2025-12-13 → 2025-12-15 (+2d) | 2026-02-24 → 2026-02-25 (+1d) |
| PG-12132 | 1st Fix - Piping and Shaft hydrant works | 2025-12-13 → 2025-12-15 (+2d) | 2025-12-26 → 2025-12-27 (+1d) |
| PG-12133 | 2nd Fix - Sprinkler fixing & Pressure testing | 2026-01-19 → 2026-01-20 (+1d) | 2026-01-31 → 2026-02-02 (+2d) |
| PG-12134 | Final Fix - Smoke & heat detectors, FHC , FAS Etc. | 2026-02-12 → 2026-02-13 (+1d) | 2026-02-24 → 2026-02-25 (+1d) |

| ID | Task | Start | Finish |
| --- | --- | --- | --- |
| 1.3.1.3.3.27.3 | **Electrical Works** | 2025-12-03 → 2025-12-04 (+1d) | 2026-02-24 → 2026-02-25 (+1d) |
| PG-12135 | 1st Fix - GI wire pulling | 2025-12-03 → 2025-12-04 (+1d) | 2025-12-12 → 2025-12-13 (+1d) |
| PG-12136 | 2nd Fix - Wiring works | 2026-01-13 → 2026-01-14 (+1d) | 2026-01-30 → 2026-01-31 (+1d) |
| PG-12137 | Final Fix - Electrical Fixtures | 2026-02-17 → 2026-02-18 (+1d) | 2026-02-24 → 2026-02-25 (+1d) |
| 1.3.1.3.3.28 | **Floor 25** | 2025-12-25 → 2025-12-26 (+1d) | 2026-03-17 → 2026-03-18 (+1d) |
| 1.3.1.3.3.28.1 | **PHE Works** | 2025-12-25 → 2025-12-26 (+1d) | 2026-03-17 → 2026-03-18 (+1d) |
| PG-12138 | 1st Fix - Piping works | 2025-12-25 → 2025-12-26 (+1d) | 2026-01-07 → 2026-01-08 (+1d) |
| PG-12139 | 2nd Fix - diverter fixing & Pressure testing | 2026-01-03 → 2026-01-05 (+2d) | 2026-01-14 → 2026-01-15 (+1d) |
| PG-12140 | Final Fix - CP & Sanitary fixtures | 2026-03-05 → 2026-03-07 (+2d) | 2026-03-17 → 2026-03-18 (+1d) |
| 1.3.1.3.3.28.2 | **Fire Fighting Works** | 2026-01-03 → 2026-01-05 (+2d) | 2026-03-17 → 2026-03-18 (+1d) |
| PG-12141 | 1st Fix - Piping and Shaft hydrant works | 2026-01-03 → 2026-01-05 (+2d) | 2026-01-17 → 2026-01-19 (+2d) |
| PG-12142 | 2nd Fix - Sprinkler fixing & Pressure testing | 2026-02-10 → 2026-02-12 (+2d) | 2026-02-21 → 2026-02-23 (+2d) |
| PG-12143 | Final Fix - Smoke & heat detectors, FHC , FAS Etc. | 2026-03-05 → 2026-03-07 (+2d) | 2026-03-17 → 2026-03-18 (+1d) |
| 1.3.1.3.3.28.3 | **Electrical Works** | 2025-12-25 → 2025-12-26 (+1d) | 2026-03-17 → 2026-03-18 (+1d) |
| PG-12144 | 1st Fix - GI wire pulling | 2025-12-25 → 2025-12-26 (+1d) | 2026-01-03 → 2026-01-05 (+2d) |
| PG-12145 | 2nd Fix - Wiring works | 2026-02-02 → 2026-02-04 (+2d) | 2026-02-20 → 2026-02-21 (+1d) |
| PG-12146 | Final Fix - Electrical Fixtures | 2026-03-10 → 2026-03-12 (+2d) | 2026-03-17 → 2026-03-18 (+1d) |
| 1.3.1.3.3.29 | **Floor 26** | 2026-01-15 → 2026-01-16 (+1d) | 2026-04-07 → 2026-04-08 (+1d) |
| 1.3.1.3.3.29.1 | **PHE Works** | 2026-01-15 → 2026-01-16 (+1d) | 2026-04-07 → 2026-04-08 (+1d) |
| PG-12147 | 1st Fix - Piping works | 2026-01-15 → 2026-01-16 (+1d) | 2026-01-30 → 2026-01-31 (+1d) |
| PG-12148 | 2nd Fix - diverter fixing & Pressure testing | 2026-01-23 → 2026-01-24 (+1d) | 2026-02-06 → 2026-02-07 (+1d) |
| PG-12149 | Final Fix - CP & Sanitary fixtures | 2026-03-28 → 2026-03-30 (+2d) | 2026-04-07 → 2026-04-08 (+1d) |
| 1.3.1.3.3.29.2 | **Fire Fighting Works** | 2026-01-24 → 2026-01-27 (+3d) | 2026-04-07 → 2026-04-08 (+1d) |
| PG-12150 | 1st Fix - Piping and Shaft hydrant works | 2026-01-24 → 2026-01-27 (+3d) | 2026-02-07 → 2026-02-10 (+3d) |
| PG-12151 | 2nd Fix - Sprinkler fixing & Pressure testing | 2026-03-03 → 2026-03-04 (+1d) | 2026-03-16 → 2026-03-17 (+1d) |
| PG-12152 | Final Fix - Smoke & heat detectors, FHC , FAS Etc. | 2026-03-28 → 2026-03-30 (+2d) | 2026-04-07 → 2026-04-08 (+1d) |
| 1.3.1.3.3.29.3 | **Electrical Works** | 2026-01-15 → 2026-01-16 (+1d) | 2026-04-07 → 2026-04-08 (+1d) |
| PG-12153 | 1st Fix - GI wire pulling | 2026-01-15 → 2026-01-16 (+1d) | 2026-01-23 → 2026-01-27 (+4d) |
| PG-12154 | 2nd Fix - Wiring works | 2026-02-24 → 2026-02-25 (+1d) | 2026-03-14 → 2026-03-16 (+2d) |
| PG-12155 | Final Fix - Electrical Fixtures | 2026-04-01 → 2026-04-02 (+1d) | 2026-04-07 → 2026-04-08 (+1d) |
| 1.3.1.3.3.30 | **Floor 27** | 2026-02-07 → 2026-02-09 (+2d) | 2026-04-29 → 2026-04-30 (+1d) |
| 1.3.1.3.3.30.1 | **PHE Works** | 2026-02-07 → 2026-02-09 (+2d) | 2026-04-29 → 2026-04-30 (+1d) |
| PG-12156 | 1st Fix - Piping works | 2026-02-07 → 2026-02-09 (+2d) | 2026-02-20 → 2026-02-21 (+1d) |
| PG-12157 | 2nd Fix - diverter fixing & Pressure testing | 2026-02-17 → 2026-02-18 (+1d) | 2026-02-27 → 2026-02-28 (+1d) |
| PG-12158 | Final Fix - CP & Sanitary fixtures | 2026-04-16 → 2026-04-17 (+1d) | 2026-04-29 → 2026-04-30 (+1d) |
| 1.3.1.3.3.30.2 | **Fire Fighting Works** | 2026-02-17 → 2026-02-18 (+1d) | 2026-04-29 → 2026-04-30 (+1d) |
| PG-12159 | 1st Fix - Piping and Shaft hydrant works | 2026-02-17 → 2026-02-18 (+1d) | 2026-03-02 → 2026-03-03 (+1d) |
| PG-12160 | 2nd Fix - Sprinkler fixing & Pressure testing | 2026-03-27 → 2026-03-28 (+1d) | 2026-04-06 → 2026-04-07 (+1d) |
| PG-12161 | Final Fix - Smoke & heat detectors, FHC , FAS Etc. | 2026-04-16 → 2026-04-17 (+1d) | 2026-04-29 → 2026-04-30 (+1d) |
| 1.3.1.3.3.30.3 | **Electrical Works** | 2026-02-07 → 2026-02-09 (+2d) | 2026-04-29 → 2026-04-30 (+1d) |
| PG-12162 | 1st Fix - GI wire pulling | 2026-02-07 → 2026-02-09 (+2d) | 2026-02-16 → 2026-02-17 (+1d) |
| PG-12163 | 2nd Fix - Wiring works | 2026-03-20 → 2026-03-21 (+1d) | 2026-04-04 → 2026-04-06 (+2d) |
| PG-12164 | Final Fix - Electrical Fixtures | 2026-04-22 → 2026-04-23 (+1d) | 2026-04-29 → 2026-04-30 (+1d) |
| 1.3.1.3.3.31 | **Floor 28** | 2026-02-28 → 2026-03-02 (+2d) | 2026-05-21 → 2026-05-22 (+1d) |
| 1.3.1.3.3.31.1 | **PHE Works** | 2026-02-28 → 2026-03-02 (+2d) | 2026-05-21 → 2026-05-22 (+1d) |
| PG-12165 | 1st Fix - Piping works | 2026-02-28 → 2026-03-02 (+2d) | 2026-03-14 → 2026-03-16 (+2d) |
| PG-12166 | 2nd Fix - diverter fixing & Pressure testing | 2026-03-10 → 2026-03-11 (+1d) | 2026-03-21 → 2026-03-23 (+2d) |
| PG-12167 | Final Fix - CP & Sanitary fixtures | 2026-05-09 → 2026-05-11 (+2d) | 2026-05-21 → 2026-05-22 (+1d) |
| 1.3.1.3.3.31.2 | **Fire Fighting Works** | 2026-03-10 → 2026-03-11 (+1d) | 2026-05-21 → 2026-05-22 (+1d) |
| PG-12168 | 1st Fix - Piping and Shaft hydrant works | 2026-03-10 → 2026-03-11 (+1d) | 2026-03-24 → 2026-03-25 (+1d) |
| PG-12169 | 2nd Fix - Sprinkler fixing & Pressure testing | 2026-04-16 → 2026-04-18 (+2d) | 2026-04-28 → 2026-04-29 (+1d) |
| PG-12170 | Final Fix - Smoke & heat detectors, FHC , FAS Etc. | 2026-05-09 → 2026-05-11 (+2d) | 2026-05-21 → 2026-05-22 (+1d) |
| 1.3.1.3.3.31.3 | **Electrical Works** | 2026-02-28 → 2026-03-02 (+2d) | 2026-05-21 → 2026-05-22 (+1d) |
| PG-12171 | 1st Fix - GI wire pulling | 2026-02-28 → 2026-03-02 (+2d) | 2026-03-10 → 2026-03-11 (+1d) |
| PG-12172 | 2nd Fix - Wiring works | 2026-04-09 → 2026-04-11 (+2d) | 2026-04-27 → 2026-04-28 (+1d) |
| PG-12173 | Final Fix - Electrical Fixtures | 2026-05-14 → 2026-05-15 (+1d) | 2026-05-21 → 2026-05-22 (+1d) |
| 1.3.1.3.3.32 | **Floor 29** | 2026-03-23 → 2026-03-24 (+1d) | 2026-06-11 → 2026-06-12 (+1d) |
| 1.3.1.3.3.32.1 | **PHE Works** | 2026-03-23 → 2026-03-24 (+1d) | 2026-06-11 → 2026-06-12 (+1d) |
| PG-12174 | 1st Fix - Piping works | 2026-03-23 → 2026-03-24 (+1d) | 2026-04-06 → 2026-04-07 (+1d) |
| PG-12175 | 2nd Fix - diverter fixing & Pressure testing | 2026-04-01 → 2026-04-02 (+1d) | 2026-04-13 → 2026-04-14 (+1d) |
| PG-12176 | Final Fix - CP & Sanitary fixtures | 2026-06-01 → 2026-06-02 (+1d) | 2026-06-11 → 2026-06-12 (+1d) |
| 1.3.1.3.3.32.2 | **Fire Fighting Works** | 2026-03-31 → 2026-04-01 (+1d) | 2026-06-11 → 2026-06-12 (+1d) |
| PG-12177 | 1st Fix - Piping and Shaft hydrant works | 2026-03-31 → 2026-04-01 (+1d) | 2026-04-15 → 2026-04-16 (+1d) |
| PG-12178 | 2nd Fix - Sprinkler fixing & Pressure testing | 2026-05-08 → 2026-05-09 (+1d) | 2026-05-20 → 2026-05-21 (+1d) |
| PG-12179 | Final Fix - Smoke & heat detectors, FHC , FAS Etc. | 2026-06-01 → 2026-06-02 (+1d) | 2026-06-11 → 2026-06-12 (+1d) |
| 1.3.1.3.3.32.3 | **Electrical Works** | 2026-03-23 → 2026-03-24 (+1d) | 2026-06-11 → 2026-06-12 (+1d) |
| PG-12180 | 1st Fix - GI wire pulling | 2026-03-23 → 2026-03-24 (+1d) | 2026-04-01 → 2026-04-02 (+1d) |
| PG-12181 | 2nd Fix - Wiring works | 2026-04-29 → 2026-04-30 (+1d) | 2026-05-19 → 2026-05-20 (+1d) |
| PG-12182 | Final Fix - Electrical Fixtures | 2026-06-05 → 2026-06-06 (+1d) | 2026-06-11 → 2026-06-12 (+1d) |
| 1.3.1.3.4 | **Civil Finishes - Units** |  | 2026-06-04 → 2026-06-05 (+1d) |

| ID | Task | Start | Finish | Complete | Total float |
| --- | --- | --- | --- | --- | --- |
| PG-12271 | Dadoing - Wet area | 2025-06-12 → 2025-06-13 A (+1d) |  | 0% → 3% | 321.79d → 322.73d |
| PG-12282 | Final Coat Painting |  |  | 48% → 77% | 396.93d → 398.13d |
| PG-12287 | Final Coat Painting |  |  | 45% → 76% | 361.2d → 362.4d |
| 1.3.1.3.4.10 | **Floor 7** |  | 2025-07-02 → 2025-07-04 (+2d) |  |  |
| 1.3.1.3.4.10.1 | **Ceiling Finishing works - Civil** |  | 2025-07-02 → 2025-07-04 (+2d) |  |  |
| PG-12294 | Painting Works - Putty, Primer and 1st |  | 2025-06-07 → 2025-06-09 A (+2d) | 67% → 100% | 386.09d → none |
| PG-12296 | Final Coat Painting | 2025-06-10 → 2025-06-11 A (+1d) | 2025-07-02 → 2025-07-04 (+2d) | 0% → 3% | 384.75d → 383.84d |
| 1.3.1.3.4.10.2 | **Wall Finishing works - Civil** |  | 2025-07-01 → 2025-07-03 (+2d) |  |  |
| PG-12300 | Painting Works - Putty, Primer and 1st |  | 2025-06-09 → 2025-06-10 A (+1d) | 55% → 100% | 351.68d → none |
| PG-12301 | Final Coat Painting | 2025-06-10 → 2025-06-11 A (+1d) | 2025-07-01 → 2025-07-03 (+2d) | 0% → 3% | 351.08d → 350.13d |
| 1.3.1.3.4.10.3 | **Floor Finishing Works - Civil** |  | 2025-06-10 → 2025-06-11 (+1d) |  |  |
| PG-12305 | Wooden doors |  | 2025-06-10 → 2025-06-11 A (+1d) | 34% → 100% | 351.08d → none |
| PG-12309 | Toilet False ceiling |  | 2025-06-11 → 2025-06-12 A (+1d) | 3% → 100% | 363.38d → none |
| PG-12308 | Painting Works - Putty, Primer and 1st | 2025-06-18 → 2025-06-17 (-1d) |  |  | 370.05d → 371.33d |
| PG-12310 | Final Coat Painting | 2025-06-25 → 2025-06-24 (-1d) |  |  | 370.05d → 371.33d |
| PG-12312 | UPVC Windows & Sliding doors | 2025-06-12 → 2025-06-11 A (-1d) |  | 0% → 38% | 336.38d → 337.67d |
| PG-12314 | Painting Works - Putty, Primer and 1st | 2025-06-18 → 2025-06-17 (-1d) |  |  | 336.38d → 337.67d |
| PG-12315 | Final Coat Painting | 2025-06-25 → 2025-06-24 (-1d) |  |  | 336.38d → 337.67d |
| PG-12318 | Floor Tiling - Dry area |  | 2025-06-11 A | 22% → 100% | 336.38d → none |
| PG-12319 | Wooden doors | 2025-06-19 → 2025-06-18 (-1d) |  |  | 336.38d → 337.67d |
| PG-12327 | Dadoing - Wet area | 2025-06-10 → 2025-06-11 A (+1d) |  | 0% → 46% | 324.38d → 325.73d |
| 1.3.1.3.4.13.1 | **Ceiling Finishing works - Civil** | 2025-06-12 → 2025-06-13 (+1d) |  |  |  |
| PG-12334 | Gypsum Plastering | 2025-06-12 → 2025-06-13 A (+1d) |  | 0% → 13% | 358.66d → 359.68d |
| PG-12339 | Balcony Railing Fixing works |  | 2025-06-07 → 2025-06-09 A (+2d) | 54% → 100% | 340.2d → none |
| PG-12344 | Waterproofing for sunken areas |  | 2025-06-06 → 2025-06-07 A (+1d) | 72% → 100% | 331.21d → none |
| 1.3.1.3.4.14 | **Floor 11** | 2025-06-16 → 2025-06-18 (+2d) | 2025-08-30 → 2025-09-01 (+2d) |  |  |
| 1.3.1.3.4.14.1 | **Ceiling Finishing works - Civil** | 2025-06-25 → 2025-06-26 (+1d) | 2025-08-30 → 2025-09-01 (+2d) |  |  |
| PG-12348 | Gypsum Plastering | 2025-06-25 → 2025-06-26 (+1d) | 2025-07-02 → 2025-07-03 (+1d) |  |  |
| PG-12349 | Cornice fixing | 2025-07-11 → 2025-07-12 (+1d) | 2025-07-16 → 2025-07-17 (+1d) |  |  |
| PG-12351 | Toilet False ceiling | 2025-07-19 → 2025-07-22 (+3d) | 2025-07-24 → 2025-07-26 (+2d) |  |  |
| PG-12350 | Painting Works - Putty, Primer and 1st | 2025-07-30 → 2025-08-01 (+2d) | 2025-08-06 → 2025-08-08 (+2d) |  |  |
| PG-12352 | Final Coat Painting | 2025-08-06 → 2025-08-08 (+2d) | 2025-08-30 → 2025-09-01 (+2d) |  |  |
| 1.3.1.3.4.14.2 | **Wall Finishing works - Civil** | 2025-06-16 → 2025-06-18 (+2d) | 2025-08-29 → 2025-08-30 (+1d) |  |  |
| PG-12353 | Balcony Railing Fixing works | 2025-06-16 → 2025-06-18 (+2d) | 2025-06-20 → 2025-06-23 (+3d) |  |  |
| PG-12355 | Dadoing - Wet area | 2025-07-07 → 2025-07-09 (+2d) | 2025-07-12 → 2025-07-15 (+3d) |  |  |
| PG-12354 | UPVC Windows & Sliding doors | 2025-07-24 → 2025-07-26 (+2d) | 2025-07-30 → 2025-08-01 (+2d) |  |  |
| PG-12356 | Painting Works - Putty, Primer and 1st | 2025-07-30 → 2025-08-01 (+2d) | 2025-08-06 → 2025-08-08 (+2d) |  |  |
| PG-12357 | Final Coat Painting | 2025-08-06 → 2025-08-08 (+2d) | 2025-08-29 → 2025-08-30 (+1d) |  |  |
| 1.3.1.3.4.14.3 | **Floor Finishing Works - Civil** | 2025-06-16 → 2025-06-18 (+2d) | 2025-08-06 → 2025-08-08 (+2d) |  |  |
| PG-12358 | Waterproofing for sunken areas | 2025-06-16 → 2025-06-18 (+2d) | 2025-06-19 → 2025-06-21 (+2d) |  |  |
| PG-12359 | Floor Tiling - Wet area | 2025-07-12 → 2025-07-15 (+3d) | 2025-07-18 → 2025-07-21 (+3d) |  |  |
| PG-12360 | Floor Tiling - Dry area | 2025-07-18 → 2025-07-21 (+3d) | 2025-07-24 → 2025-07-26 (+2d) |  |  |
| PG-12361 | Wooden doors | 2025-07-31 → 2025-08-02 (+2d) | 2025-08-06 → 2025-08-08 (+2d) |  |  |
| 1.3.1.3.4.15 | **Floor 12** | 2025-06-28 → 2025-07-01 (+3d) | 2025-09-15 → 2025-09-16 (+1d) |  |  |
| 1.3.1.3.4.15.1 | **Ceiling Finishing works - Civil** | 2025-07-08 → 2025-07-09 (+1d) | 2025-09-15 → 2025-09-16 (+1d) |  |  |
| PG-12362 | Gypsum Plastering | 2025-07-08 → 2025-07-09 (+1d) | 2025-07-15 → 2025-07-16 (+1d) |  |  |
| PG-12363 | Cornice fixing | 2025-07-24 → 2025-07-25 (+1d) | 2025-07-29 → 2025-07-30 (+1d) |  |  |
| PG-12365 | Toilet False ceiling | 2025-08-01 → 2025-08-04 (+3d) | 2025-08-06 → 2025-08-08 (+2d) |  |  |
| PG-12364 | Painting Works - Putty, Primer and 1st | 2025-08-12 → 2025-08-14 (+2d) | 2025-08-20 → 2025-08-22 (+2d) |  |  |
| PG-12366 | Final Coat Painting | 2025-08-20 → 2025-08-22 (+2d) | 2025-09-15 → 2025-09-16 (+1d) |  |  |
| 1.3.1.3.4.15.2 | **Wall Finishing works - Civil** | 2025-06-28 → 2025-07-01 (+3d) | 2025-09-15 → 2025-09-16 (+1d) |  |  |
| PG-12367 | Balcony Railing Fixing works | 2025-06-28 → 2025-07-01 (+3d) | 2025-07-03 → 2025-07-05 (+2d) |  |  |
| PG-12369 | Dadoing - Wet area | 2025-07-19 → 2025-07-22 (+3d) | 2025-07-25 → 2025-07-28 (+3d) |  |  |
| PG-12368 | UPVC Windows & Sliding doors | 2025-08-06 → 2025-08-08 (+2d) | 2025-08-12 → 2025-08-14 (+2d) |  |  |
| PG-12370 | Painting Works - Putty, Primer and 1st | 2025-08-12 → 2025-08-14 (+2d) | 2025-08-20 → 2025-08-22 (+2d) |  |  |
| PG-12371 | Final Coat Painting | 2025-08-20 → 2025-08-22 (+2d) | 2025-09-15 → 2025-09-16 (+1d) |  |  |
| 1.3.1.3.4.15.3 | **Floor Finishing Works - Civil** | 2025-06-28 → 2025-07-01 (+3d) | 2025-08-20 → 2025-08-22 (+2d) |  |  |
| PG-12372 | Waterproofing for sunken areas | 2025-06-28 → 2025-07-01 (+3d) | 2025-07-02 → 2025-07-04 (+2d) |  |  |
| PG-12373 | Floor Tiling - Wet area | 2025-07-25 → 2025-07-28 (+3d) | 2025-07-31 → 2025-08-02 (+2d) |  |  |
| PG-12374 | Floor Tiling - Dry area | 2025-07-31 → 2025-08-02 (+2d) | 2025-08-06 → 2025-08-08 (+2d) |  |  |
| PG-12375 | Wooden doors | 2025-08-13 → 2025-08-16 (+3d) | 2025-08-20 → 2025-08-22 (+2d) |  |  |
| 1.3.1.3.4.16 | **Floor 13** | 2025-07-11 → 2025-07-14 (+3d) | 2025-09-27 → 2025-09-29 (+2d) |  |  |
| 1.3.1.3.4.16.1 | **Ceiling Finishing works - Civil** | 2025-07-21 → 2025-07-22 (+1d) | 2025-09-27 → 2025-09-29 (+2d) |  |  |
| PG-12376 | Gypsum Plastering | 2025-07-21 → 2025-07-22 (+1d) | 2025-07-28 → 2025-07-29 (+1d) |  |  |
| PG-12377 | Cornice fixing | 2025-08-06 → 2025-08-07 (+1d) | 2025-08-11 → 2025-08-12 (+1d) |  |  |
| PG-12379 | Toilet False ceiling | 2025-08-14 → 2025-08-18 (+4d) | 2025-08-20 → 2025-08-22 (+2d) |  |  |
| PG-12378 | Painting Works - Putty, Primer and 1st | 2025-08-26 → 2025-08-28 (+2d) | 2025-09-02 → 2025-09-04 (+2d) |  |  |
| PG-12380 | Final Coat Painting | 2025-09-02 → 2025-09-04 (+2d) | 2025-09-27 → 2025-09-29 (+2d) |  |  |
| 1.3.1.3.4.16.2 | **Wall Finishing works - Civil** | 2025-07-11 → 2025-07-14 (+3d) | 2025-09-27 → 2025-09-29 (+2d) |  |  |
| PG-12381 | Balcony Railing Fixing works | 2025-07-11 → 2025-07-14 (+3d) | 2025-07-16 → 2025-07-18 (+2d) |  |  |

| ID | Task | Start | Finish | Total float |
| --- | --- | --- | --- | --- |
| PG-12383 | Dadoing - Wet area | 2025-08-01 → 2025-08-04 (+3d) | 2025-08-07 → 2025-08-09 (+2d) |  |
| PG-12382 | UPVC Windows & Sliding doors | 2025-08-20 → 2025-08-22 (+2d) | 2025-08-26 → 2025-08-28 (+2d) |  |
| PG-12384 | Painting Works - Putty, Primer and 1st | 2025-08-26 → 2025-08-28 (+2d) | 2025-09-02 → 2025-09-04 (+2d) |  |
| PG-12385 | Final Coat Painting | 2025-09-02 → 2025-09-04 (+2d) | 2025-09-27 → 2025-09-29 (+2d) |  |
| 1.3.1.3.4.16.3 | **Floor Finishing Works - Civil** | 2025-07-11 → 2025-07-14 (+3d) | 2025-09-02 → 2025-09-04 (+2d) |  |
| PG-12386 | Waterproofing for sunken areas | 2025-07-11 → 2025-07-14 (+3d) | 2025-07-15 → 2025-07-17 (+2d) |  |
| PG-12387 | Floor Tiling - Wet area | 2025-08-07 → 2025-08-09 (+2d) | 2025-08-13 → 2025-08-16 (+3d) |  |
| PG-12388 | Floor Tiling - Dry area | 2025-08-13 → 2025-08-16 (+3d) | 2025-08-20 → 2025-08-22 (+2d) |  |
| PG-12389 | Wooden doors | 2025-08-27 → 2025-08-29 (+2d) | 2025-09-02 → 2025-09-04 (+2d) |  |
| 1.3.1.3.4.17 | **Floor 14** | 2025-07-24 → 2025-07-26 (+2d) | 2025-10-09 → 2025-10-10 (+1d) |  |
| 1.3.1.3.4.17.1 | **Ceiling Finishing works - Civil** | 2025-08-02 → 2025-08-04 (+2d) | 2025-10-09 → 2025-10-10 (+1d) |  |
| PG-12390 | Gypsum Plastering | 2025-08-02 → 2025-08-04 (+2d) | 2025-08-09 → 2025-08-11 (+2d) |  |
| PG-12391 | Cornice fixing | 2025-08-20 → 2025-08-21 (+1d) | 2025-08-25 → 2025-08-26 (+1d) |  |
| PG-12393 | Toilet False ceiling | 2025-08-28 → 2025-08-30 (+2d) | 2025-09-02 → 2025-09-04 (+2d) |  |
| PG-12392 | Painting Works - Putty, Primer and 1st | 2025-09-08 → 2025-09-10 (+2d) | 2025-09-15 → 2025-09-17 (+2d) |  |
| PG-12394 | Final Coat Painting | 2025-09-15 → 2025-09-17 (+2d) | 2025-10-09 → 2025-10-10 (+1d) |  |
| 1.3.1.3.4.17.2 | **Wall Finishing works - Civil** | 2025-07-24 → 2025-07-26 (+2d) | 2025-10-09 → 2025-10-10 (+1d) |  |
| PG-12395 | Balcony Railing Fixing works | 2025-07-24 → 2025-07-26 (+2d) | 2025-07-29 → 2025-07-31 (+2d) |  |
| PG-12397 | Dadoing - Wet area | 2025-08-14 → 2025-08-18 (+4d) | 2025-08-21 → 2025-08-23 (+2d) |  |
| PG-12396 | UPVC Windows & Sliding doors | 2025-09-02 → 2025-09-04 (+2d) | 2025-09-08 → 2025-09-10 (+2d) |  |
| PG-12398 | Painting Works - Putty, Primer and 1st | 2025-09-08 → 2025-09-10 (+2d) | 2025-09-15 → 2025-09-17 (+2d) |  |
| PG-12399 | Final Coat Painting | 2025-09-15 → 2025-09-17 (+2d) | 2025-10-09 → 2025-10-10 (+1d) |  |
| 1.3.1.3.4.17.3 | **Floor Finishing Works - Civil** | 2025-07-24 → 2025-07-26 (+2d) | 2025-09-15 → 2025-09-17 (+2d) |  |
| PG-12400 | Waterproofing for sunken areas | 2025-07-24 → 2025-07-26 (+2d) | 2025-07-28 → 2025-07-30 (+2d) |  |
| PG-12401 | Floor Tiling - Wet area | 2025-08-21 → 2025-08-23 (+2d) | 2025-08-27 → 2025-08-29 (+2d) |  |
| PG-12402 | Floor Tiling - Dry area | 2025-08-27 → 2025-08-29 (+2d) | 2025-09-02 → 2025-09-04 (+2d) |  |
| PG-12403 | Wooden doors | 2025-09-09 → 2025-09-11 (+2d) | 2025-09-15 → 2025-09-17 (+2d) |  |
| 1.3.1.3.4.18 | **Floor 15** | 2025-08-06 → 2025-08-08 (+2d) | 2026-01-06 → 2026-01-07 (+1d) |  |
| 1.3.1.3.4.18.1 | **Ceiling Finishing works - Civil** | 2025-08-16 → 2025-08-18 (+2d) | 2026-01-06 → 2026-01-07 (+1d) |  |
| PG-12404 | Gypsum Plastering | 2025-08-16 → 2025-08-18 (+2d) | 2025-08-23 → 2025-08-25 (+2d) |  |
| PG-12405 | Cornice fixing | 2025-09-02 → 2025-09-03 (+1d) | 2025-09-06 → 2025-09-08 (+2d) |  |
| PG-12408 | Final Coat Painting |  | 2026-01-06 → 2026-01-07 (+1d) | 226.62d → 227.42d |
| 1.3.1.3.4.18.2 | **Wall Finishing works - Civil** | 2025-08-06 → 2025-08-08 (+2d) | 2026-01-06 → 2026-01-07 (+1d) |  |
| PG-12409 | Balcony Railing Fixing works | 2025-08-06 → 2025-08-08 (+2d) | 2025-08-11 → 2025-08-13 (+2d) |  |
| PG-12413 | Final Coat Painting |  | 2026-01-06 → 2026-01-07 (+1d) | 190.79d → 191.58d |
| 1.3.1.3.4.18.3 | **Floor Finishing Works - Civil** | 2025-08-06 → 2025-08-08 (+2d) |  |  |
| PG-12414 | Waterproofing for sunken areas | 2025-08-06 → 2025-08-08 (+2d) | 2025-08-09 → 2025-08-12 (+3d) |  |
| 1.3.1.3.4.19 | **Floor 16** | 2025-08-20 → 2025-08-22 (+2d) | 2025-11-05 → 2025-11-06 (+1d) |  |
| 1.3.1.3.4.19.1 | **Ceiling Finishing works - Civil** | 2025-08-29 → 2025-08-30 (+1d) | 2025-11-05 → 2025-11-06 (+1d) |  |
| PG-12418 | Gypsum Plastering | 2025-08-29 → 2025-08-30 (+1d) | 2025-09-05 → 2025-09-06 (+1d) |  |
| PG-12419 | Cornice fixing | 2025-09-15 → 2025-09-16 (+1d) | 2025-09-19 → 2025-09-20 (+1d) |  |
| PG-12421 | Toilet False ceiling | 2025-09-23 → 2025-09-25 (+2d) | 2025-09-27 → 2025-09-30 (+3d) |  |
| PG-12420 | Painting Works - Putty, Primer and 1st | 2025-10-04 → 2025-10-07 (+3d) | 2025-10-11 → 2025-10-14 (+3d) |  |
| PG-12422 | Final Coat Painting | 2025-10-11 → 2025-10-14 (+3d) | 2025-11-05 → 2025-11-06 (+1d) |  |
| 1.3.1.3.4.19.2 | **Wall Finishing works - Civil** | 2025-08-20 → 2025-08-22 (+2d) | 2025-11-05 → 2025-11-06 (+1d) |  |
| PG-12423 | Balcony Railing Fixing works | 2025-08-20 → 2025-08-22 (+2d) | 2025-08-25 → 2025-08-27 (+2d) |  |
| PG-12425 | Dadoing - Wet area | 2025-09-10 → 2025-09-12 (+2d) | 2025-09-16 → 2025-09-18 (+2d) |  |
| PG-12424 | UPVC Windows & Sliding doors | 2025-09-27 → 2025-09-30 (+3d) | 2025-10-04 → 2025-10-07 (+3d) |  |
| PG-12426 | Painting Works - Putty, Primer and 1st | 2025-10-04 → 2025-10-07 (+3d) | 2025-10-11 → 2025-10-14 (+3d) |  |
| PG-12427 | Final Coat Painting | 2025-10-11 → 2025-10-14 (+3d) | 2025-11-05 → 2025-11-06 (+1d) |  |
| 1.3.1.3.4.19.3 | **Floor Finishing Works - Civil** | 2025-08-20 → 2025-08-22 (+2d) | 2025-10-11 → 2025-10-14 (+3d) |  |
| PG-12428 | Waterproofing for sunken areas | 2025-08-20 → 2025-08-22 (+2d) | 2025-08-23 → 2025-08-26 (+3d) |  |
| PG-12429 | Floor Tiling - Wet area | 2025-09-16 → 2025-09-18 (+2d) | 2025-09-22 → 2025-09-24 (+2d) |  |
| PG-12430 | Floor Tiling - Dry area | 2025-09-22 → 2025-09-24 (+2d) | 2025-09-27 → 2025-09-30 (+3d) |  |
| PG-12431 | Wooden doors | 2025-10-06 → 2025-10-08 (+2d) | 2025-10-11 → 2025-10-14 (+3d) |  |
| 1.3.1.3.4.20 | **Floor 17** | 2025-09-02 → 2025-09-04 (+2d) | 2025-11-17 → 2025-11-18 (+1d) |  |
| 1.3.1.3.4.20.1 | **Ceiling Finishing works - Civil** | 2025-09-11 → 2025-09-12 (+1d) | 2025-11-17 → 2025-11-18 (+1d) |  |
| PG-12432 | Gypsum Plastering | 2025-09-11 → 2025-09-12 (+1d) | 2025-09-18 → 2025-09-19 (+1d) |  |
| PG-12433 | Cornice fixing | 2025-09-27 → 2025-09-29 (+2d) | 2025-10-03 → 2025-10-04 (+1d) |  |
| PG-12435 | Toilet False ceiling | 2025-10-07 → 2025-10-09 (+2d) | 2025-10-11 → 2025-10-14 (+3d) |  |
| PG-12434 | Painting Works - Putty, Primer and 1st | 2025-10-17 → 2025-10-20 (+3d) | 2025-10-24 → 2025-10-27 (+3d) |  |
| PG-12436 | Final Coat Painting | 2025-10-24 → 2025-10-27 (+3d) | 2025-11-17 → 2025-11-18 (+1d) |  |
| 1.3.1.3.4.20.2 | **Wall Finishing works - Civil** | 2025-09-02 → 2025-09-04 (+2d) | 2025-11-17 → 2025-11-18 (+1d) |  |
| PG-12437 | Balcony Railing Fixing works | 2025-09-02 → 2025-09-04 (+2d) | 2025-09-06 → 2025-09-09 (+3d) |  |
| PG-12439 | Dadoing - Wet area | 2025-09-23 → 2025-09-25 (+2d) | 2025-09-29 → 2025-10-01 (+2d) |  |
| PG-12438 | UPVC Windows & Sliding doors | 2025-10-11 → 2025-10-14 (+3d) | 2025-10-17 → 2025-10-20 (+3d) |  |
| PG-12440 | Painting Works - Putty, Primer and 1st | 2025-10-17 → 2025-10-20 (+3d) | 2025-10-24 → 2025-10-27 (+3d) |  |
| PG-12441 | Final Coat Painting | 2025-10-24 → 2025-10-27 (+3d) | 2025-11-17 → 2025-11-18 (+1d) |  |
| 1.3.1.3.4.20.3 | **Floor Finishing Works - Civil** | 2025-09-02 → 2025-09-04 (+2d) | 2025-10-24 → 2025-10-27 (+3d) |  |
| PG-12442 | Waterproofing for sunken areas | 2025-09-02 → 2025-09-04 (+2d) | 2025-09-05 → 2025-09-08 (+3d) |  |

| ID | Task | Start | Finish |
| --- | --- | --- | --- |
| PG-12443 | Floor Tiling - Wet area | 2025-09-29 → 2025-10-01 (+2d) | 2025-10-06 → 2025-10-08 (+2d) |
| PG-12444 | Floor Tiling - Dry area | 2025-10-06 → 2025-10-08 (+2d) | 2025-10-11 → 2025-10-14 (+3d) |
| PG-12445 | Wooden doors | 2025-10-18 → 2025-10-21 (+3d) | 2025-10-24 → 2025-10-27 (+3d) |
| 1.3.1.3.4.21 | **Floor 18** | 2025-09-15 → 2025-09-17 (+2d) | 2025-11-29 → 2025-12-01 (+2d) |
| 1.3.1.3.4.21.1 | **Ceiling Finishing works - Civil** | 2025-09-24 → 2025-09-25 (+1d) | 2025-11-29 → 2025-12-01 (+2d) |
| PG-12446 | Gypsum Plastering | 2025-09-24 → 2025-09-25 (+1d) | 2025-10-01 → 2025-10-03 (+2d) |
| PG-12447 | Cornice fixing | 2025-10-11 → 2025-10-13 (+2d) | 2025-10-16 → 2025-10-17 (+1d) |
| PG-12449 | Toilet False ceiling | 2025-10-20 → 2025-10-22 (+2d) | 2025-10-24 → 2025-10-27 (+3d) |
| PG-12448 | Painting Works - Putty, Primer and 1st | 2025-10-30 → 2025-11-03 (+4d) | 2025-11-07 → 2025-11-10 (+3d) |
| PG-12450 | Final Coat Painting | 2025-11-07 → 2025-11-10 (+3d) | 2025-11-29 → 2025-12-01 (+2d) |
| 1.3.1.3.4.21.2 | **Wall Finishing works - Civil** | 2025-09-15 → 2025-09-17 (+2d) | 2025-11-29 → 2025-12-01 (+2d) |
| PG-12451 | Balcony Railing Fixing works | 2025-09-15 → 2025-09-17 (+2d) | 2025-09-19 → 2025-09-22 (+3d) |
| PG-12453 | Dadoing - Wet area | 2025-10-07 → 2025-10-09 (+2d) | 2025-10-13 → 2025-10-15 (+2d) |
| PG-12452 | UPVC Windows & Sliding doors | 2025-10-24 → 2025-10-27 (+3d) | 2025-10-30 → 2025-11-03 (+4d) |
| PG-12454 | Painting Works - Putty, Primer and 1st | 2025-10-30 → 2025-11-03 (+4d) | 2025-11-07 → 2025-11-10 (+3d) |
| PG-12455 | Final Coat Painting | 2025-11-07 → 2025-11-10 (+3d) | 2025-11-29 → 2025-12-01 (+2d) |
| 1.3.1.3.4.21.3 | **Floor Finishing Works - Civil** | 2025-09-15 → 2025-09-17 (+2d) | 2025-11-07 → 2025-11-10 (+3d) |
| PG-12456 | Waterproofing for sunken areas | 2025-09-15 → 2025-09-17 (+2d) | 2025-09-18 → 2025-09-20 (+2d) |
| PG-12457 | Floor Tiling - Wet area | 2025-10-13 → 2025-10-15 (+2d) | 2025-10-18 → 2025-10-21 (+3d) |
| PG-12458 | Floor Tiling - Dry area | 2025-10-18 → 2025-10-21 (+3d) | 2025-10-24 → 2025-10-27 (+3d) |
| PG-12459 | Wooden doors | 2025-10-31 → 2025-11-04 (+4d) | 2025-11-07 → 2025-11-10 (+3d) |
| 1.3.1.3.4.22 | **Floor 19** | 2025-09-27 → 2025-09-30 (+3d) | 2025-12-12 → 2025-12-13 (+1d) |
| 1.3.1.3.4.22.1 | **Ceiling Finishing works - Civil** | 2025-10-08 → 2025-10-09 (+1d) | 2025-12-12 → 2025-12-13 (+1d) |
| PG-12460 | Gypsum Plastering | 2025-10-08 → 2025-10-09 (+1d) | 2025-10-15 → 2025-10-16 (+1d) |
| PG-12461 | Cornice fixing | 2025-10-24 → 2025-10-25 (+1d) | 2025-10-29 → 2025-10-30 (+1d) |
| PG-12463 | Toilet False ceiling | 2025-11-03 → 2025-11-05 (+2d) | 2025-11-07 → 2025-11-10 (+3d) |
| PG-12462 | Painting Works - Putty, Primer and 1st | 2025-11-13 → 2025-11-15 (+2d) | 2025-11-20 → 2025-11-22 (+2d) |
| PG-12464 | Final Coat Painting | 2025-11-20 → 2025-11-22 (+2d) | 2025-12-12 → 2025-12-13 (+1d) |
| 1.3.1.3.4.22.2 | **Wall Finishing works - Civil** | 2025-09-27 → 2025-09-30 (+3d) | 2025-12-12 → 2025-12-13 (+1d) |
| PG-12465 | Balcony Railing Fixing works | 2025-09-27 → 2025-09-30 (+3d) | 2025-10-03 → 2025-10-06 (+3d) |
| PG-12467 | Dadoing - Wet area | 2025-10-20 → 2025-10-22 (+2d) | 2025-10-25 → 2025-10-28 (+3d) |
| PG-12466 | UPVC Windows & Sliding doors | 2025-11-07 → 2025-11-10 (+3d) | 2025-11-13 → 2025-11-15 (+2d) |
| PG-12468 | Painting Works - Putty, Primer and 1st | 2025-11-13 → 2025-11-15 (+2d) | 2025-11-20 → 2025-11-22 (+2d) |
| PG-12469 | Final Coat Painting | 2025-11-20 → 2025-11-22 (+2d) | 2025-12-12 → 2025-12-13 (+1d) |
| 1.3.1.3.4.22.3 | **Floor Finishing Works - Civil** | 2025-09-27 → 2025-09-30 (+3d) | 2025-11-20 → 2025-11-22 (+2d) |
| PG-12470 | Waterproofing for sunken areas | 2025-09-27 → 2025-09-30 (+3d) | 2025-10-01 → 2025-10-04 (+3d) |
| PG-12471 | Floor Tiling - Wet area | 2025-10-25 → 2025-10-28 (+3d) | 2025-10-31 → 2025-11-04 (+4d) |
| PG-12472 | Floor Tiling - Dry area | 2025-10-31 → 2025-11-04 (+4d) | 2025-11-07 → 2025-11-10 (+3d) |
| PG-12473 | Wooden doors | 2025-11-14 → 2025-11-17 (+3d) | 2025-11-20 → 2025-11-22 (+2d) |
| 1.3.1.3.4.23 | **Floor 20** | 2025-10-11 → 2025-10-14 (+3d) | 2025-12-26 → 2025-12-27 (+1d) |
| 1.3.1.3.4.23.1 | **Ceiling Finishing works - Civil** | 2025-10-21 → 2025-10-22 (+1d) | 2025-12-26 → 2025-12-27 (+1d) |
| PG-12474 | Gypsum Plastering | 2025-10-21 → 2025-10-22 (+1d) | 2025-10-28 → 2025-10-29 (+1d) |
| PG-12475 | Cornice fixing | 2025-11-07 → 2025-11-08 (+1d) | 2025-11-12 → 2025-11-13 (+1d) |
| PG-12477 | Toilet False ceiling | 2025-11-15 → 2025-11-18 (+3d) | 2025-11-20 → 2025-11-22 (+2d) |
| PG-12476 | Painting Works - Putty, Primer and 1st | 2025-11-26 → 2025-11-28 (+2d) | 2025-12-03 → 2025-12-05 (+2d) |
| PG-12478 | Final Coat Painting | 2025-12-03 → 2025-12-05 (+2d) | 2025-12-26 → 2025-12-27 (+1d) |
| 1.3.1.3.4.23.2 | **Wall Finishing works - Civil** | 2025-10-11 → 2025-10-14 (+3d) | 2025-12-26 → 2025-12-27 (+1d) |
| PG-12479 | Balcony Railing Fixing works | 2025-10-11 → 2025-10-14 (+3d) | 2025-10-16 → 2025-10-18 (+2d) |
| PG-12481 | Dadoing - Wet area | 2025-11-03 → 2025-11-05 (+2d) | 2025-11-08 → 2025-11-11 (+3d) |
| PG-12480 | UPVC Windows & Sliding doors | 2025-11-20 → 2025-11-22 (+2d) | 2025-11-26 → 2025-11-28 (+2d) |
| PG-12482 | Painting Works - Putty, Primer and 1st | 2025-11-26 → 2025-11-28 (+2d) | 2025-12-03 → 2025-12-05 (+2d) |
| PG-12483 | Final Coat Painting | 2025-12-03 → 2025-12-05 (+2d) | 2025-12-26 → 2025-12-27 (+1d) |
| 1.3.1.3.4.23.3 | **Floor Finishing Works - Civil** | 2025-10-11 → 2025-10-14 (+3d) | 2025-12-03 → 2025-12-05 (+2d) |
| PG-12484 | Waterproofing for sunken areas | 2025-10-11 → 2025-10-14 (+3d) | 2025-10-15 → 2025-10-17 (+2d) |
| PG-12485 | Floor Tiling - Wet area | 2025-11-08 → 2025-11-11 (+3d) | 2025-11-14 → 2025-11-17 (+3d) |
| PG-12486 | Floor Tiling - Dry area | 2025-11-14 → 2025-11-17 (+3d) | 2025-11-20 → 2025-11-22 (+2d) |
| PG-12487 | Wooden doors | 2025-11-27 → 2025-11-29 (+2d) | 2025-12-03 → 2025-12-05 (+2d) |
| 1.3.1.3.4.24 | **Floor 21** | 2025-10-24 → 2025-10-27 (+3d) | 2026-01-08 → 2026-01-09 (+1d) |
| 1.3.1.3.4.24.1 | **Ceiling Finishing works - Civil** | 2025-11-04 → 2025-11-05 (+1d) | 2026-01-08 → 2026-01-09 (+1d) |
| PG-12488 | Gypsum Plastering | 2025-11-04 → 2025-11-05 (+1d) | 2025-11-11 → 2025-11-12 (+1d) |
| PG-12489 | Cornice fixing | 2025-11-20 → 2025-11-21 (+1d) | 2025-11-25 → 2025-11-26 (+1d) |
| PG-12491 | Toilet False ceiling | 2025-11-28 → 2025-11-29 (+1d) | 2025-12-03 → 2025-12-04 (+1d) |
| PG-12490 | Painting Works - Putty, Primer and 1st | 2025-12-09 → 2025-12-10 (+1d) | 2025-12-16 → 2025-12-17 (+1d) |
| PG-12492 | Final Coat Painting | 2025-12-16 → 2025-12-17 (+1d) | 2026-01-08 → 2026-01-09 (+1d) |
| 1.3.1.3.4.24.2 | **Wall Finishing works - Civil** | 2025-10-24 → 2025-10-27 (+3d) | 2026-01-08 → 2026-01-09 (+1d) |
| PG-12493 | Balcony Railing Fixing works | 2025-10-24 → 2025-10-27 (+3d) | 2025-10-29 → 2025-10-31 (+2d) |
| PG-12495 | Dadoing - Wet area | 2025-11-15 → 2025-11-17 (+2d) | 2025-11-21 → 2025-11-22 (+1d) |
| PG-12494 | UPVC Windows & Sliding doors | 2025-12-03 → 2025-12-04 (+1d) | 2025-12-09 → 2025-12-10 (+1d) |
| PG-12496 | Painting Works - Putty, Primer and 1st | 2025-12-09 → 2025-12-10 (+1d) | 2025-12-16 → 2025-12-17 (+1d) |
| PG-12497 | Final Coat Painting | 2025-12-16 → 2025-12-17 (+1d) | 2026-01-08 → 2026-01-09 (+1d) |

| ID | Task | Start | Finish |
| --- | --- | --- | --- |
| 1.3.1.3.4.24.3 | **Floor Finishing Works - Civil** | 2025-10-24 → 2025-10-27 (+3d) | 2025-12-16 → 2025-12-17 (+1d) |
| PG-12498 | Waterproofing for sunken areas | 2025-10-24 → 2025-10-27 (+3d) | 2025-10-28 → 2025-10-30 (+2d) |
| PG-12499 | Floor Tiling - Wet area | 2025-11-21 → 2025-11-22 (+1d) | 2025-11-27 → 2025-11-28 (+1d) |
| PG-12500 | Floor Tiling - Dry area | 2025-11-27 → 2025-11-28 (+1d) | 2025-12-03 → 2025-12-04 (+1d) |
| PG-12501 | Wooden doors | 2025-12-10 → 2025-12-11 (+1d) | 2025-12-16 → 2025-12-17 (+1d) |
| 1.3.1.3.4.25 | **Floor 22** | 2025-11-07 → 2025-11-10 (+3d) | 2026-01-21 → 2026-01-22 (+1d) |
| 1.3.1.3.4.25.1 | **Ceiling Finishing works - Civil** | 2025-11-17 → 2025-11-18 (+1d) | 2026-01-21 → 2026-01-22 (+1d) |
| PG-12502 | Gypsum Plastering | 2025-11-17 → 2025-11-18 (+1d) | 2025-11-24 → 2025-11-25 (+1d) |
| PG-12503 | Cornice fixing | 2025-12-03 → 2025-12-04 (+1d) | 2025-12-08 → 2025-12-09 (+1d) |
| PG-12505 | Toilet False ceiling | 2025-12-11 → 2025-12-12 (+1d) | 2025-12-16 → 2025-12-17 (+1d) |
| PG-12504 | Painting Works - Putty, Primer and 1st | 2025-12-22 → 2025-12-23 (+1d) | 2025-12-29 → 2025-12-30 (+1d) |
| PG-12506 | Final Coat Painting | 2025-12-29 → 2025-12-30 (+1d) | 2026-01-21 → 2026-01-22 (+1d) |
| 1.3.1.3.4.25.2 | **Wall Finishing works - Civil** | 2025-11-07 → 2025-11-10 (+3d) | 2026-01-21 → 2026-01-22 (+1d) |
| PG-12507 | Balcony Railing Fixing works | 2025-11-07 → 2025-11-10 (+3d) | 2025-11-12 → 2025-11-14 (+2d) |
| PG-12509 | Dadoing - Wet area | 2025-11-28 → 2025-11-29 (+1d) | 2025-12-04 → 2025-12-05 (+1d) |
| PG-12508 | UPVC Windows & Sliding doors | 2025-12-16 → 2025-12-17 (+1d) | 2025-12-22 → 2025-12-23 (+1d) |
| PG-12510 | Painting Works - Putty, Primer and 1st | 2025-12-22 → 2025-12-23 (+1d) | 2025-12-29 → 2025-12-30 (+1d) |
| PG-12511 | Final Coat Painting | 2025-12-29 → 2025-12-30 (+1d) | 2026-01-21 → 2026-01-22 (+1d) |
| 1.3.1.3.4.25.3 | **Floor Finishing Works - Civil** | 2025-11-07 → 2025-11-10 (+3d) | 2025-12-29 → 2025-12-30 (+1d) |
| PG-12512 | Waterproofing for sunken areas | 2025-11-07 → 2025-11-10 (+3d) | 2025-11-11 → 2025-11-13 (+2d) |
| PG-12513 | Floor Tiling - Wet area | 2025-12-04 → 2025-12-05 (+1d) | 2025-12-10 → 2025-12-11 (+1d) |
| PG-12514 | Floor Tiling - Dry area | 2025-12-10 → 2025-12-11 (+1d) | 2025-12-16 → 2025-12-17 (+1d) |
| PG-12515 | Wooden doors | 2025-12-23 → 2025-12-24 (+1d) | 2025-12-29 → 2025-12-30 (+1d) |
| 1.3.1.3.4.26 | **Floor 23** | 2025-11-20 → 2025-11-21 (+1d) | 2026-02-03 → 2026-02-04 (+1d) |
| 1.3.1.3.4.26.1 | **Ceiling Finishing works - Civil** | 2025-11-28 → 2025-11-29 (+1d) | 2026-02-03 → 2026-02-04 (+1d) |
| PG-12516 | Gypsum Plastering | 2025-11-28 → 2025-11-29 (+1d) | 2025-12-05 → 2025-12-06 (+1d) |
| PG-12517 | Cornice fixing | 2025-12-15 → 2025-12-16 (+1d) | 2025-12-19 → 2025-12-20 (+1d) |
| PG-12519 | Toilet False ceiling | 2025-12-23 → 2025-12-24 (+1d) | 2025-12-27 → 2025-12-29 (+2d) |
| PG-12518 | Painting Works - Putty, Primer and 1st | 2026-01-02 → 2026-01-03 (+1d) | 2026-01-09 → 2026-01-10 (+1d) |
| PG-12520 | Final Coat Painting | 2026-01-09 → 2026-01-10 (+1d) | 2026-02-03 → 2026-02-04 (+1d) |
| 1.3.1.3.4.26.2 | **Wall Finishing works - Civil** | 2025-11-20 → 2025-11-21 (+1d) | 2026-02-03 → 2026-02-04 (+1d) |
| PG-12521 | Balcony Railing Fixing works | 2025-11-20 → 2025-11-21 (+1d) | 2025-11-25 → 2025-11-26 (+1d) |
| PG-12523 | Dadoing - Wet area | 2025-12-10 → 2025-12-11 (+1d) | 2025-12-16 → 2025-12-17 (+1d) |
| PG-12522 | UPVC Windows & Sliding doors | 2025-12-27 → 2025-12-29 (+2d) | 2026-01-02 → 2026-01-03 (+1d) |
| PG-12524 | Painting Works - Putty, Primer and 1st | 2026-01-02 → 2026-01-03 (+1d) | 2026-01-09 → 2026-01-10 (+1d) |
| PG-12525 | Final Coat Painting | 2026-01-09 → 2026-01-10 (+1d) | 2026-02-03 → 2026-02-04 (+1d) |
| 1.3.1.3.4.26.3 | **Floor Finishing Works - Civil** | 2025-11-20 → 2025-11-21 (+1d) | 2026-01-09 → 2026-01-10 (+1d) |
| PG-12526 | Waterproofing for sunken areas | 2025-11-20 → 2025-11-21 (+1d) | 2025-11-24 → 2025-11-25 (+1d) |
| PG-12527 | Floor Tiling - Wet area | 2025-12-16 → 2025-12-17 (+1d) | 2025-12-22 → 2025-12-23 (+1d) |
| PG-12528 | Floor Tiling - Dry area | 2025-12-22 → 2025-12-23 (+1d) | 2025-12-27 → 2025-12-29 (+2d) |
| PG-12529 | Wooden doors | 2026-01-03 → 2026-01-05 (+2d) | 2026-01-09 → 2026-01-10 (+1d) |
| 1.3.1.3.4.27 | **Floor 24** | 2025-12-03 → 2025-12-04 (+1d) | 2026-02-17 → 2026-02-18 (+1d) |
| 1.3.1.3.4.27.1 | **Ceiling Finishing works - Civil** | 2025-12-12 → 2025-12-13 (+1d) | 2026-02-17 → 2026-02-18 (+1d) |
| PG-12530 | Gypsum Plastering | 2025-12-12 → 2025-12-13 (+1d) | 2025-12-19 → 2025-12-20 (+1d) |
| PG-12531 | Cornice fixing | 2025-12-29 → 2025-12-30 (+1d) | 2026-01-02 → 2026-01-03 (+1d) |
| PG-12533 | Toilet False ceiling | 2026-01-06 → 2026-01-07 (+1d) | 2026-01-10 → 2026-01-12 (+2d) |
| PG-12532 | Painting Works - Putty, Primer and 1st | 2026-01-16 → 2026-01-17 (+1d) | 2026-01-23 → 2026-01-24 (+1d) |
| PG-12534 | Final Coat Painting | 2026-01-23 → 2026-01-24 (+1d) | 2026-02-17 → 2026-02-18 (+1d) |
| 1.3.1.3.4.27.2 | **Wall Finishing works - Civil** | 2025-12-03 → 2025-12-04 (+1d) | 2026-02-17 → 2026-02-18 (+1d) |
| PG-12535 | Balcony Railing Fixing works | 2025-12-03 → 2025-12-04 (+1d) | 2025-12-08 → 2025-12-09 (+1d) |
| PG-12537 | Dadoing - Wet area | 2025-12-24 → 2025-12-25 (+1d) | 2025-12-30 → 2025-12-31 (+1d) |
| PG-12536 | UPVC Windows & Sliding doors | 2026-01-10 → 2026-01-12 (+2d) | 2026-01-16 → 2026-01-17 (+1d) |
| PG-12538 | Painting Works - Putty, Primer and 1st | 2026-01-16 → 2026-01-17 (+1d) | 2026-01-23 → 2026-01-24 (+1d) |
| PG-12539 | Final Coat Painting | 2026-01-23 → 2026-01-24 (+1d) | 2026-02-17 → 2026-02-18 (+1d) |
| 1.3.1.3.4.27.3 | **Floor Finishing Works - Civil** | 2025-12-03 → 2025-12-04 (+1d) | 2026-01-23 → 2026-01-24 (+1d) |
| PG-12540 | Waterproofing for sunken areas | 2025-12-03 → 2025-12-04 (+1d) | 2025-12-06 → 2025-12-08 (+2d) |
| PG-12541 | Floor Tiling - Wet area | 2025-12-30 → 2025-12-31 (+1d) | 2026-01-05 → 2026-01-06 (+1d) |
| PG-12542 | Floor Tiling - Dry area | 2026-01-05 → 2026-01-06 (+1d) | 2026-01-10 → 2026-01-12 (+2d) |
| PG-12543 | Wooden doors | 2026-01-17 → 2026-01-19 (+2d) | 2026-01-23 → 2026-01-24 (+1d) |
| 1.3.1.3.4.28 | **Floor 25** | 2025-12-25 → 2025-12-26 (+1d) | 2026-03-10 → 2026-03-11 (+1d) |
| 1.3.1.3.4.28.1 | **Ceiling Finishing works - Civil** | 2026-01-03 → 2026-01-05 (+2d) | 2026-03-10 → 2026-03-11 (+1d) |
| PG-12544 | Gypsum Plastering | 2026-01-03 → 2026-01-05 (+2d) | 2026-01-10 → 2026-01-12 (+2d) |
| PG-12545 | Cornice fixing | 2026-01-20 → 2026-01-21 (+1d) | 2026-01-24 → 2026-01-27 (+3d) |
| PG-12547 | Toilet False ceiling | 2026-01-28 → 2026-01-29 (+1d) | 2026-02-02 → 2026-02-03 (+1d) |
| PG-12546 | Painting Works - Putty, Primer and 1st | 2026-02-07 → 2026-02-09 (+2d) | 2026-02-14 → 2026-02-16 (+2d) |
| PG-12548 | Final Coat Painting | 2026-02-14 → 2026-02-16 (+2d) | 2026-03-10 → 2026-03-11 (+1d) |
| 1.3.1.3.4.28.2 | **Wall Finishing works - Civil** | 2025-12-25 → 2025-12-26 (+1d) | 2026-03-10 → 2026-03-11 (+1d) |
| PG-12549 | Balcony Railing Fixing works | 2025-12-25 → 2025-12-26 (+1d) | 2025-12-30 → 2025-12-31 (+1d) |
| PG-12551 | Dadoing - Wet area | 2026-01-14 → 2026-01-15 (+1d) | 2026-01-20 → 2026-01-21 (+1d) |
| PG-12550 | UPVC Windows & Sliding doors | 2026-02-02 → 2026-02-03 (+1d) | 2026-02-07 → 2026-02-09 (+2d) |

| ID | Task | Start | Finish |
| --- | --- | --- | --- |
| PG-12552 | Painting Works - Putty, Primer and 1st | 2026-02-07 → 2026-02-09 (+2d) | 2026-02-14 → 2026-02-16 (+2d) |
| PG-12553 | Final Coat Painting | 2026-02-14 → 2026-02-16 (+2d) | 2026-03-10 → 2026-03-11 (+1d) |
| 1.3.1.3.4.28.3 | **Floor Finishing Works - Civil** | 2025-12-25 → 2025-12-26 (+1d) | 2026-02-14 → 2026-02-16 (+2d) |
| PG-12554 | Waterproofing for sunken areas | 2025-12-25 → 2025-12-26 (+1d) | 2025-12-29 → 2025-12-30 (+1d) |
| PG-12555 | Floor Tiling - Wet area | 2026-01-20 → 2026-01-21 (+1d) | 2026-01-27 → 2026-01-28 (+1d) |
| PG-12556 | Floor Tiling - Dry area | 2026-01-27 → 2026-01-28 (+1d) | 2026-02-02 → 2026-02-03 (+1d) |
| PG-12557 | Wooden doors | 2026-02-09 → 2026-02-10 (+1d) | 2026-02-14 → 2026-02-16 (+2d) |
| 1.3.1.3.4.29 | **Floor 26** | 2026-01-15 → 2026-01-16 (+1d) | 2026-04-01 → 2026-04-02 (+1d) |
| 1.3.1.3.4.29.1 | **Ceiling Finishing works - Civil** | 2026-01-23 → 2026-01-27 (+4d) | 2026-04-01 → 2026-04-02 (+1d) |
| PG-12558 | Gypsum Plastering | 2026-01-23 → 2026-01-27 (+4d) | 2026-01-31 → 2026-02-03 (+3d) |
| PG-12559 | Cornice fixing | 2026-02-11 → 2026-02-12 (+1d) | 2026-02-14 → 2026-02-17 (+3d) |
| PG-12561 | Toilet False ceiling | 2026-02-19 → 2026-02-20 (+1d) | 2026-02-24 → 2026-02-25 (+1d) |
| PG-12560 | Painting Works - Putty, Primer and 1st | 2026-03-02 → 2026-03-03 (+1d) | 2026-03-09 → 2026-03-10 (+1d) |
| PG-12562 | Final Coat Painting | 2026-03-09 → 2026-03-10 (+1d) | 2026-04-01 → 2026-04-02 (+1d) |
| 1.3.1.3.4.29.2 | **Wall Finishing works - Civil** | 2026-01-15 → 2026-01-16 (+1d) | 2026-03-31 → 2026-04-01 (+1d) |
| PG-12563 | Balcony Railing Fixing works | 2026-01-15 → 2026-01-16 (+1d) | 2026-01-20 → 2026-01-21 (+1d) |
| PG-12565 | Dadoing - Wet area | 2026-02-06 → 2026-02-07 (+1d) | 2026-02-12 → 2026-02-13 (+1d) |
| PG-12564 | UPVC Windows & Sliding doors | 2026-02-24 → 2026-02-25 (+1d) | 2026-03-02 → 2026-03-03 (+1d) |
| PG-12566 | Painting Works - Putty, Primer and 1st | 2026-03-02 → 2026-03-03 (+1d) | 2026-03-09 → 2026-03-10 (+1d) |
| PG-12567 | Final Coat Painting | 2026-03-09 → 2026-03-10 (+1d) | 2026-03-31 → 2026-04-01 (+1d) |
| 1.3.1.3.4.29.3 | **Floor Finishing Works - Civil** | 2026-01-15 → 2026-01-16 (+1d) | 2026-03-09 → 2026-03-10 (+1d) |
| PG-12568 | Waterproofing for sunken areas | 2026-01-15 → 2026-01-16 (+1d) | 2026-01-19 → 2026-01-20 (+1d) |
| PG-12569 | Floor Tiling - Wet area | 2026-02-12 → 2026-02-13 (+1d) | 2026-02-18 → 2026-02-19 (+1d) |
| PG-12570 | Floor Tiling - Dry area | 2026-02-18 → 2026-02-19 (+1d) | 2026-02-24 → 2026-02-25 (+1d) |
| PG-12571 | Wooden doors | 2026-03-03 → 2026-03-04 (+1d) | 2026-03-09 → 2026-03-10 (+1d) |
| 1.3.1.3.4.30 | **Floor 27** | 2026-02-07 → 2026-02-09 (+2d) | 2026-04-22 → 2026-04-23 (+1d) |
| 1.3.1.3.4.30.1 | **Ceiling Finishing works - Civil** | 2026-02-16 → 2026-02-17 (+1d) | 2026-04-22 → 2026-04-23 (+1d) |
| PG-12572 | Gypsum Plastering | 2026-02-16 → 2026-02-17 (+1d) | 2026-02-23 → 2026-02-24 (+1d) |
| PG-12573 | Cornice fixing | 2026-03-04 → 2026-03-05 (+1d) | 2026-03-09 → 2026-03-10 (+1d) |
| PG-12575 | Toilet False ceiling | 2026-03-12 → 2026-03-13 (+1d) | 2026-03-17 → 2026-03-18 (+1d) |
| PG-12574 | Painting Works - Putty, Primer and 1st | 2026-03-23 → 2026-03-24 (+1d) | 2026-03-30 → 2026-03-31 (+1d) |
| PG-12576 | Final Coat Painting | 2026-03-30 → 2026-03-31 (+1d) | 2026-04-22 → 2026-04-23 (+1d) |
| 1.3.1.3.4.30.2 | **Wall Finishing works - Civil** | 2026-02-07 → 2026-02-09 (+2d) | 2026-04-22 → 2026-04-23 (+1d) |
| PG-12577 | Balcony Railing Fixing works | 2026-02-07 → 2026-02-09 (+2d) | 2026-02-12 → 2026-02-13 (+1d) |
| PG-12579 | Dadoing - Wet area | 2026-02-27 → 2026-02-28 (+1d) | 2026-03-05 → 2026-03-06 (+1d) |
| PG-12578 | UPVC Windows & Sliding doors | 2026-03-17 → 2026-03-18 (+1d) | 2026-03-23 → 2026-03-24 (+1d) |
| PG-12580 | Painting Works - Putty, Primer and 1st | 2026-03-23 → 2026-03-24 (+1d) | 2026-03-30 → 2026-03-31 (+1d) |
| PG-12581 | Final Coat Painting | 2026-03-30 → 2026-03-31 (+1d) | 2026-04-22 → 2026-04-23 (+1d) |
| 1.3.1.3.4.30.3 | **Floor Finishing Works - Civil** | 2026-02-07 → 2026-02-09 (+2d) | 2026-03-30 → 2026-03-31 (+1d) |
| PG-12582 | Waterproofing for sunken areas | 2026-02-07 → 2026-02-09 (+2d) | 2026-02-11 → 2026-02-12 (+1d) |
| PG-12583 | Floor Tiling - Wet area | 2026-03-05 → 2026-03-06 (+1d) | 2026-03-11 → 2026-03-12 (+1d) |
| PG-12584 | Floor Tiling - Dry area | 2026-03-11 → 2026-03-12 (+1d) | 2026-03-17 → 2026-03-18 (+1d) |
| PG-12585 | Wooden doors | 2026-03-24 → 2026-03-25 (+1d) | 2026-03-30 → 2026-03-31 (+1d) |
| 1.3.1.3.4.31 | **Floor 28** | 2026-02-28 → 2026-03-02 (+2d) | 2026-05-14 → 2026-05-15 (+1d) |
| 1.3.1.3.4.31.1 | **Ceiling Finishing works - Civil** | 2026-03-10 → 2026-03-11 (+1d) | 2026-05-14 → 2026-05-15 (+1d) |
| PG-12586 | Gypsum Plastering | 2026-03-10 → 2026-03-11 (+1d) | 2026-03-17 → 2026-03-18 (+1d) |
| PG-12587 | Cornice fixing | 2026-03-26 → 2026-03-27 (+1d) | 2026-03-31 → 2026-04-01 (+1d) |
| PG-12589 | Toilet False ceiling | 2026-04-03 → 2026-04-04 (+1d) | 2026-04-08 → 2026-04-09 (+1d) |
| PG-12588 | Painting Works - Putty, Primer and 1st | 2026-04-14 → 2026-04-15 (+1d) | 2026-04-21 → 2026-04-22 (+1d) |
| PG-12590 | Final Coat Painting | 2026-04-21 → 2026-04-22 (+1d) | 2026-05-14 → 2026-05-15 (+1d) |
| 1.3.1.3.4.31.2 | **Wall Finishing works - Civil** | 2026-02-28 → 2026-03-02 (+2d) | 2026-05-14 → 2026-05-15 (+1d) |
| PG-12591 | Balcony Railing Fixing works | 2026-02-28 → 2026-03-02 (+2d) | 2026-03-05 → 2026-03-06 (+1d) |
| PG-12593 | Dadoing - Wet area | 2026-03-21 → 2026-03-23 (+2d) | 2026-03-27 → 2026-03-28 (+1d) |
| PG-12592 | UPVC Windows & Sliding doors | 2026-04-08 → 2026-04-09 (+1d) | 2026-04-14 → 2026-04-15 (+1d) |
| PG-12594 | Painting Works - Putty, Primer and 1st | 2026-04-14 → 2026-04-15 (+1d) | 2026-04-21 → 2026-04-22 (+1d) |
| PG-12595 | Final Coat Painting | 2026-04-21 → 2026-04-22 (+1d) | 2026-05-14 → 2026-05-15 (+1d) |
| 1.3.1.3.4.31.3 | **Floor Finishing Works - Civil** | 2026-02-28 → 2026-03-02 (+2d) | 2026-04-21 → 2026-04-22 (+1d) |
| PG-12596 | Waterproofing for sunken areas | 2026-02-28 → 2026-03-02 (+2d) | 2026-03-04 → 2026-03-05 (+1d) |
| PG-12597 | Floor Tiling - Wet area | 2026-03-27 → 2026-03-28 (+1d) | 2026-04-02 → 2026-04-03 (+1d) |
| PG-12598 | Floor Tiling - Dry area | 2026-04-02 → 2026-04-03 (+1d) | 2026-04-08 → 2026-04-09 (+1d) |
| PG-12599 | Wooden doors | 2026-04-15 → 2026-04-16 (+1d) | 2026-04-21 → 2026-04-22 (+1d) |
| 1.3.1.3.4.32 | **Floor 29** | 2026-03-23 → 2026-03-24 (+1d) | 2026-06-04 → 2026-06-05 (+1d) |
| 1.3.1.3.4.32.1 | **Ceiling Finishing works - Civil** | 2026-04-01 → 2026-04-02 (+1d) | 2026-06-04 → 2026-06-05 (+1d) |
| PG-12600 | Gypsum Plastering | 2026-04-01 → 2026-04-02 (+1d) | 2026-04-08 → 2026-04-09 (+1d) |
| PG-12601 | Cornice fixing | 2026-04-24 → 2026-04-25 (+1d) | 2026-04-29 → 2026-04-30 (+1d) |
| PG-12603 | Toilet False ceiling | 2026-04-25 → 2026-04-27 (+2d) | 2026-04-30 → 2026-05-01 (+1d) |
| PG-12602 | Painting Works - Putty, Primer and 1st | 2026-05-06 → 2026-05-07 (+1d) | 2026-05-13 → 2026-05-14 (+1d) |
| PG-12604 | Final Coat Painting | 2026-05-13 → 2026-05-14 (+1d) | 2026-06-04 → 2026-06-05 (+1d) |
| 1.3.1.3.4.32.2 | **Wall Finishing works - Civil** | 2026-03-23 → 2026-03-24 (+1d) | 2026-06-04 → 2026-06-05 (+1d) |
| PG-12605 | Balcony Railing Fixing works | 2026-03-23 → 2026-03-24 (+1d) | 2026-03-27 → 2026-03-28 (+1d) |

| ID | Task | Start | Finish |
| --- | --- | --- | --- |
| PG-12607 | Dadoing - Wet area | 2026-04-13 → 2026-04-14 (+1d) | 2026-04-18 → 2026-04-20 (+2d) |
| PG-12606 | UPVC Windows & Sliding doors | 2026-04-30 → 2026-05-01 (+1d) | 2026-05-06 → 2026-05-07 (+1d) |
| PG-12608 | Painting Works - Putty, Primer and 1st | 2026-05-06 → 2026-05-07 (+1d) | 2026-05-13 → 2026-05-14 (+1d) |
| PG-12609 | Final Coat Painting | 2026-05-13 → 2026-05-14 (+1d) | 2026-06-04 → 2026-06-05 (+1d) |
| 1.3.1.3.4.32.3 | **Floor Finishing Works - Civil** | 2026-03-23 → 2026-03-24 (+1d) | 2026-05-13 → 2026-05-14 (+1d) |
| PG-12610 | Waterproofing for sunken areas | 2026-03-23 → 2026-03-24 (+1d) | 2026-03-26 → 2026-03-27 (+1d) |
| PG-12611 | Floor Tiling - Wet area | 2026-04-18 → 2026-04-20 (+2d) | 2026-04-24 → 2026-04-25 (+1d) |
| PG-12612 | Floor Tiling - Dry area | 2026-04-24 → 2026-04-25 (+1d) | 2026-04-30 → 2026-05-01 (+1d) |
| PG-12613 | Wooden doors | 2026-05-07 → 2026-05-08 (+1d) | 2026-05-13 → 2026-05-14 (+1d) |
| 1.3.1.3.4.33 | **External Finishing works** | 2025-12-31 → 2026-01-01 (+1d) | 2026-04-28 → 2026-04-29 (+1d) |
| PG-12614 | External walls tie rod hole plugging with GP2 | 2025-12-31 → 2026-01-01 (+1d) | 2026-02-05 → 2026-02-06 (+1d) |
| PG-12615 | External walls grinding works | 2026-01-23 → 2026-01-24 (+1d) | 2026-03-12 → 2026-03-13 (+1d) |
| PG-12616 | Texture and painting works | 2026-03-06 → 2026-03-07 (+1d) | 2026-04-28 → 2026-04-29 (+1d) |
| 1.3.1.3.5 | **Corridor & Fire Staircase Finishing works** | 2026-03-09 → 2026-03-10 (+1d) | 2026-07-04 → 2026-07-06 (+2d) |
| 1.3.1.3.5.1 | **Ceiling Finishing works - Civil** | 2026-03-09 → 2026-03-10 (+1d) | 2026-05-30 → 2026-06-01 (+2d) |
| PG-12617 | Gypsum Plastering | 2026-03-09 → 2026-03-10 (+1d) | 2026-03-16 → 2026-03-17 (+1d) |
| PG-12618 | Cornice fixing | 2026-03-14 → 2026-03-16 (+2d) | 2026-03-19 → 2026-03-20 (+1d) |
| PG-12619 | Painting Works - Putty, Primer and 1st | 2026-04-01 → 2026-04-02 (+1d) | 2026-04-08 → 2026-04-09 (+1d) |
| PG-12620 | False ceiling | 2026-04-08 → 2026-04-09 (+1d) | 2026-05-13 → 2026-05-14 (+1d) |
| PG-12621 | Final Coat Painting | 2026-04-24 → 2026-04-25 (+1d) | 2026-05-30 → 2026-06-01 (+2d) |
| 1.3.1.3.5.2 | **Wall Finishing works - Civil** | 2026-04-13 → 2026-04-14 (+1d) | 2026-07-04 → 2026-07-06 (+2d) |
| PG-12622 | UPVC Windows & Sliding doors | 2026-04-13 → 2026-04-14 (+1d) | 2026-04-18 → 2026-04-20 (+2d) |
| PG-12623 | Wall Cladding Upto 1.2 Mts | 2026-04-30 → 2026-05-01 (+1d) | 2026-05-23 → 2026-05-25 (+2d) |
| PG-12624 | Painting Works - Texture & one coat Painting works | 2026-05-30 → 2026-06-01 (+2d) | 2026-06-17 → 2026-06-18 (+1d) |
| PG-12625 | Final Coat Painting | 2026-06-11 → 2026-06-12 (+1d) | 2026-07-04 → 2026-07-06 (+2d) |
| 1.3.1.3.5.3 | **Floor Finishing Works - Civil** | 2026-03-16 → 2026-03-17 (+1d) | 2026-04-14 → 2026-04-15 (+1d) |
| PG-12626 | Fire Doors installation | 2026-03-16 → 2026-03-17 (+1d) | 2026-03-27 → 2026-03-28 (+1d) |
| PG-12627 | Vitrified tile flooring works | 2026-03-27 → 2026-03-28 (+1d) | 2026-04-14 → 2026-04-15 (+1d) |
| 1.3.1.3.5.4 | **Fire Staircase Finishing Works - Civil** | 2026-03-16 → 2026-03-17 (+1d) | 2026-07-04 → 2026-07-06 (+2d) |
| PG-12628 | Staircase Railing Fixing works | 2026-03-16 → 2026-03-17 (+1d) | 2026-04-08 → 2026-04-09 (+1d) |
| PG-12629 | Wall and ceiling Gypsum plastering | 2026-03-25 → 2026-03-26 (+1d) | 2026-05-01 → 2026-05-02 (+1d) |
| PG-12630 | Staircase Flooring and Skirting Works | 2026-04-14 → 2026-04-15 (+1d) | 2026-05-30 → 2026-06-01 (+2d) |
| PG-12631 | UPVC Window fixing works | 2026-05-29 → 2026-05-30 (+1d) | 2026-06-17 → 2026-06-18 (+1d) |
| PG-12632 | Staircase Painting works | 2026-06-11 → 2026-06-12 (+1d) | 2026-07-04 → 2026-07-06 (+2d) |
| 1.3.1.3.6 | **MEP Civil Works (Shaft, Lift Shaft & OHT )** | 2025-12-17 → 2025-12-18 (+1d) | 2026-05-16 → 2026-05-18 (+2d) |
| 1.3.1.3.6.1 | **Lift Shaft Works** | 2025-12-17 → 2025-12-18 (+1d) | 2026-05-16 → 2026-05-18 (+2d) |
| PG-12633 | Tie rod hole packing | 2025-12-17 → 2025-12-18 (+1d) | 2025-12-26 → 2025-12-27 (+1d) |
| PG-12634 | Grinding works | 2025-12-26 → 2025-12-27 (+1d) | 2026-01-01 → 2026-01-02 (+1d) |
| PG-12635 | Lift pit water proofing works | 2026-01-01 → 2026-01-02 (+1d) | 2026-01-27 → 2026-01-28 (+1d) |
| PG-12636 | Shaft door opening finishing | 2026-01-27 → 2026-01-28 (+1d) | 2026-02-03 → 2026-02-04 (+1d) |
| PG-12637 | Painting works | 2026-02-03 → 2026-02-04 (+1d) | 2026-02-12 → 2026-02-13 (+1d) |
| PG-12638 | Lift Wall Cladding Works | 2026-04-28 → 2026-04-30 (+2d) | 2026-05-16 → 2026-05-18 (+2d) |
| 1.3.1.3.6.2 | **Electrical Shaft works** | 2025-12-17 → 2025-12-18 (+1d) | 2026-01-19 → 2026-01-20 (+1d) |
| PG-12639 | Tie rod hole packing | 2025-12-17 → 2025-12-18 (+1d) | 2025-12-26 → 2025-12-27 (+1d) |
| PG-12640 | Grinding works | 2025-12-26 → 2025-12-27 (+1d) | 2026-01-01 → 2026-01-02 (+1d) |
| PG-12641 | Shaft door opening finishing | 2026-01-01 → 2026-01-02 (+1d) | 2026-01-09 → 2026-01-10 (+1d) |
| PG-12642 | Painting works | 2026-01-09 → 2026-01-10 (+1d) | 2026-01-19 → 2026-01-20 (+1d) |
| 1.3.1.3.6.3 | **FPS Shaft works** | 2025-12-17 → 2025-12-18 (+1d) | 2026-01-19 → 2026-01-20 (+1d) |
| PG-12643 | Tie rod hole packing | 2025-12-17 → 2025-12-18 (+1d) | 2025-12-26 → 2025-12-27 (+1d) |
| PG-12644 | Grinding works | 2025-12-26 → 2025-12-27 (+1d) | 2026-01-01 → 2026-01-02 (+1d) |
| PG-12645 | Shaft door opening finishing | 2026-01-01 → 2026-01-02 (+1d) | 2026-01-09 → 2026-01-10 (+1d) |
| PG-12646 | Painting works | 2026-01-09 → 2026-01-10 (+1d) | 2026-01-19 → 2026-01-20 (+1d) |
| 1.3.1.3.6.4 | **PHE Shaft works** | 2025-12-17 → 2025-12-18 (+1d) | 2026-01-19 → 2026-01-20 (+1d) |
| PG-12647 | Tie rod hole packing | 2025-12-17 → 2025-12-18 (+1d) | 2025-12-26 → 2025-12-27 (+1d) |
| PG-12648 | Grinding works | 2025-12-26 → 2025-12-27 (+1d) | 2026-01-01 → 2026-01-02 (+1d) |
| PG-12649 | Shaft door opening finishing | 2026-01-01 → 2026-01-02 (+1d) | 2026-01-09 → 2026-01-10 (+1d) |
| PG-12650 | Painting works | 2026-01-09 → 2026-01-10 (+1d) | 2026-01-19 → 2026-01-20 (+1d) |
| 1.3.1.3.6.5 | **Data & Communication Shaft** | 2025-12-17 → 2025-12-18 (+1d) | 2026-01-16 → 2026-01-17 (+1d) |
| PG-12651 | Tie rod hole packing | 2025-12-17 → 2025-12-18 (+1d) | 2025-12-26 → 2025-12-27 (+1d) |
| PG-12652 | Grinding works | 2025-12-26 → 2025-12-27 (+1d) | 2026-01-01 → 2026-01-02 (+1d) |
| PG-12653 | Shaft door opening finishing | 2026-01-01 → 2026-01-02 (+1d) | 2026-01-07 → 2026-01-08 (+1d) |
| PG-12654 | Painting works | 2026-01-07 → 2026-01-08 (+1d) | 2026-01-16 → 2026-01-17 (+1d) |
| 1.3.1.3.6.6 | **OHT Works** | 2025-12-17 → 2025-12-18 (+1d) | 2026-02-05 → 2026-02-06 (+1d) |
| PG-12655 | Tank materials Supply & Shifting | 2025-12-17 → 2025-12-18 (+1d) | 2025-12-29 → 2025-12-30 (+1d) |
| PG-12656 | Assembling OHT FRP Tank | 2025-12-29 → 2025-12-30 (+1d) | 2026-01-09 → 2026-01-10 (+1d) |
| PG-12657 | Installation of OHT Tank | 2026-01-09 → 2026-01-10 (+1d) | 2026-01-28 → 2026-01-29 (+1d) |
| PG-12658 | Water tightness works and checking | 2026-01-28 → 2026-01-29 (+1d) | 2026-02-05 → 2026-02-06 (+1d) |
| 1.3.1.3.7 | **MEP Shaft works** | 2026-01-16 → 2026-01-17 (+1d) | 2026-04-08 → 2026-04-09 (+1d) |
| 1.3.1.3.7.1 | **Electrical** | 2026-01-19 → 2026-01-20 (+1d) | 2026-02-28 → 2026-03-02 (+2d) |
| PG-12659 | Tray Works | 2026-01-19 → 2026-01-20 (+1d) | 2026-01-30 → 2026-01-31 (+1d) |

| ID | Task | Start | Finish | Complete | Total float |
| --- | --- | --- | --- | --- | --- |
| PG-12660 | Cable & Conducting works | 2026-01-30 → 2026-01-31 (+1d) | 2026-02-11 → 2026-02-12 (+1d) |  |  |
| PG-12661 | Wiring/DB/connector box installation and termination works | 2026-02-11 → 2026-02-12 (+1d) | 2026-02-28 → 2026-03-02 (+2d) |  |  |
| 1.3.1.3.7.2 | **FPS** | 2026-01-19 → 2026-01-20 (+1d) | 2026-02-28 → 2026-03-02 (+2d) |  |  |
| PG-12662 | Shaft MS Piping & fixtures installation | 2026-01-19 → 2026-01-20 (+1d) | 2026-02-11 → 2026-02-13 (+2d) |  |  |
| PG-12663 | Tray / cabling / conducting & wiring works | 2026-02-11 → 2026-02-13 (+2d) | 2026-02-28 → 2026-03-02 (+2d) |  |  |
| 1.3.1.3.7.3 | **Data & Communication** | 2026-01-16 → 2026-01-17 (+1d) | 2026-03-06 → 2026-03-07 (+1d) |  |  |
| PG-12664 | Tray Works | 2026-01-16 → 2026-01-17 (+1d) | 2026-01-31 → 2026-02-02 (+2d) |  |  |
| PG-12665 | Tray / cabling / conducting & wiring works | 2026-01-31 → 2026-02-02 (+2d) | 2026-02-17 → 2026-02-18 (+1d) |  |  |
| PG-12666 | Wiring/DB/connector box installation and termination works | 2026-02-17 → 2026-02-18 (+1d) | 2026-03-06 → 2026-03-07 (+1d) |  |  |
| 1.3.1.3.7.4 | **PHE** | 2026-01-19 → 2026-01-20 (+1d) | 2026-04-08 → 2026-04-09 (+1d) |  |  |
| PG-12667 | Bracket fixing works | 2026-01-19 → 2026-01-20 (+1d) | 2026-01-27 → 2026-01-28 (+1d) |  |  |
| PG-12668 | Piping Works | 2026-01-27 → 2026-01-28 (+1d) | 2026-02-13 → 2026-02-14 (+1d) |  |  |
| PG-12669 | Terrace Ring main & OHT Connection works | 2026-02-13 → 2026-02-14 (+1d) | 2026-04-01 → 2026-04-02 (+1d) |  |  |
| PG-12670 | Commissioning | 2026-04-01 → 2026-04-02 (+1d) | 2026-04-08 → 2026-04-09 (+1d) |  |  |
| 1.3.1.3.8 | **Lift Installation and Testing works** | 2026-01-01 → 2026-01-02 (+1d) | 2026-07-30 → 2026-07-31 (+1d) |  |  |
| PG-12671 | Lift Shaft Survey works | 2026-01-01 → 2026-01-02 (+1d) | 2026-01-13 → 2026-01-14 (+1d) |  |  |
| PG-12672 | Guide Rails fixing works | 2026-02-12 → 2026-02-13 (+1d) | 2026-04-01 → 2026-04-02 (+1d) |  |  |
| PG-12673 | Lift Frame fixing works | 2026-04-01 → 2026-04-02 (+1d) | 2026-04-28 → 2026-04-30 (+2d) |  |  |
| PG-12674 | CAR Assembly works | 2026-04-28 → 2026-04-30 (+2d) | 2026-05-22 → 2026-05-23 (+1d) |  |  |
| PG-12675 | Lift Machine Room Works | 2026-05-22 → 2026-05-23 (+1d) | 2026-06-25 → 2026-06-27 (+2d) |  |  |
| PG-12676 | Slow Speed & High Speed Testing works | 2026-06-25 → 2026-06-27 (+2d) | 2026-07-30 → 2026-07-31 (+1d) |  |  |
| 1.3.1.3.9 | **Electrical Panel Works** |  | 2026-07-21 → 2026-07-22 (+1d) |  |  |
| PG-12678 | Window, Louver and Door fixing works |  | 2026-01-07 → 2026-01-08 (+1d) |  | 49.12d → 49.92d |
| PG-12679 | Pedestal works | 2026-01-07 → 2026-01-08 (+1d) |  |  | 49.12d → 49.92d |
| 1.3.1.3.9.2 | **Electrical Panel works** |  | 2026-07-21 → 2026-07-22 (+1d) |  |  |
| PG-12682 | Electrical Panel installation and cable termination. | 2026-04-07 → 2026-04-08 (+1d) |  |  | 49.12d → 49.92d |
| PG-12683 | Electrical Panel Testing and commissioning works |  | 2026-07-21 → 2026-07-22 (+1d) |  | 49.12d → 49.92d |
| 1.3.1.3.10 | **Entrance Lobby works** | 2026-07-04 → 2026-07-06 (+2d) | 2026-10-19 → 2026-10-20 (+1d) |  |  |
| PG-12684 | Flooring Works | 2026-07-04 → 2026-07-06 (+2d) | 2026-07-21 → 2026-07-22 (+1d) |  |  |
| PG-12685 | Glass Door and installation Works | 2026-07-21 → 2026-07-22 (+1d) | 2026-08-13 → 2026-08-14 (+1d) |  |  |
| PG-12687 | Canopy Works | 2026-07-21 → 2026-07-22 (+1d) | 2026-08-20 → 2026-08-21 (+1d) |  |  |
| PG-12686 | Painting Works | 2026-08-13 → 2026-08-14 (+1d) | 2026-08-25 → 2026-08-26 (+1d) |  |  |
| PG-12688 | Interior Works | 2026-08-25 → 2026-08-26 (+1d) | 2026-10-19 → 2026-10-20 (+1d) |  |  |
| 1.3.1.3.11 | **Lightening Arrester works** | 2026-04-28 → 2026-04-29 (+1d) | 2026-05-08 → 2026-05-09 (+1d) |  |  |
| PG-12689 | Conductor will be lifted with RCC Works, But Terrace works will be done once Parapet Painting done | 2026-04-28 → 2026-04-29 (+1d) | 2026-05-08 → 2026-05-09 (+1d) |  |  |
| 1.3.1.5 | **Landscape and Hardscape works** | 2026-04-28 → 2026-04-29 (+1d) | 2026-08-10 → 2026-08-12 (+2d) |  |  |
| PG-12715 | Hardscape ( Granite, Planter, Walkways Etc..) | 2026-04-28 → 2026-04-29 (+1d) | 2026-06-19 → 2026-06-20 (+1d) |  |  |
| PG-12716 | Filter media and soil filling works | 2026-06-13 → 2026-06-15 (+2d) | 2026-07-07 → 2026-07-08 (+1d) |  |  |
| PG-12717 | Irrigation piping works | 2026-06-25 → 2026-06-26 (+1d) | 2026-07-18 → 2026-07-20 (+2d) |  |  |
| PG-12718 | Planting works | 2026-07-18 → 2026-07-20 (+2d) | 2026-08-10 → 2026-08-12 (+2d) |  |  |
| 1.3.9 | **Project Infrastructure Works ( Services/MEP )** |  | 2026-09-26 → 2026-09-29 (+3d) |  |  |
| 1.3.9.1 | **Civil & Services Works ( Transformer, DG,STP )** |  | 2026-09-26 → 2026-09-29 (+3d) |  |  |
| 1.3.9.1.1 | **Transformer Yard Civil Works** | 2026-03-23 → 2026-03-24 (+1d) | 2026-06-01 → 2026-06-02 (+1d) |  |  |
| 1.3.9.1.1.1 | **Transformer 01** | 2026-03-23 → 2026-03-24 (+1d) | 2026-06-01 → 2026-06-02 (+1d) |  |  |
| PG-30428 | Footing and Pedestal Excavation Works | 2026-03-23 → 2026-03-24 (+1d) | 2026-04-04 → 2026-04-06 (+2d) |  |  |
| PG-30429 | Footing and Pedestal Reinforcement works | 2026-04-06 → 2026-04-07 (+1d) | 2026-04-10 → 2026-04-11 (+1d) |  |  |
| PG-30430 | Footing and Pedestal Concrete works | 2026-04-10 → 2026-04-11 (+1d) | 2026-04-21 → 2026-04-22 (+1d) |  |  |
| PG-30431 | Fencing Retaining wall footing reinforcement works | 2026-04-21 → 2026-04-22 (+1d) | 2026-04-29 → 2026-04-30 (+1d) |  |  |
| PG-30432 | Fencing Retaining wall footing formwork and concrete works | 2026-04-29 → 2026-04-30 (+1d) | 2026-05-06 → 2026-05-07 (+1d) |  |  |
| PG-30434 | Fencing works MS/GRC | 2026-05-04 → 2026-05-05 (+1d) | 2026-05-28 → 2026-05-29 (+1d) |  |  |
| PG-30433 | Retaining wall upto low level concrete works | 2026-05-06 → 2026-05-07 (+1d) | 2026-05-11 → 2026-05-12 (+1d) |  |  |
| PG-30435 | Floor Aggregates spreading works | 2026-05-28 → 2026-05-29 (+1d) | 2026-06-01 → 2026-06-02 (+1d) |  |  |
| 1.3.9.1.2 | **Transformer Yard Electrical works** | 2026-08-10 → 2026-08-12 (+2d) | 2026-09-26 → 2026-09-29 (+3d) |  |  |
| 1.3.9.1.2.1 | **Transformer 01** | 2026-08-10 → 2026-08-12 (+2d) | 2026-09-26 → 2026-09-29 (+3d) |  |  |
| PG-30460 | Cable Trench works | 2026-08-10 → 2026-08-12 (+2d) | 2026-08-22 → 2026-08-24 (+2d) |  |  |
| PG-30461 | LTQS Installation Works | 2026-08-22 → 2026-08-24 (+2d) | 2026-09-01 → 2026-09-02 (+1d) |  |  |
| PG-30462 | Cable laying works | 2026-09-01 → 2026-09-02 (+1d) | 2026-09-16 → 2026-09-17 (+1d) |  |  |
| PG-30463 | Cable Termination works | 2026-09-16 → 2026-09-17 (+1d) | 2026-09-21 → 2026-09-22 (+1d) |  |  |
| PG-30464 | Testing and commissioning works | 2026-09-21 → 2026-09-22 (+1d) | 2026-09-26 → 2026-09-29 (+3d) |  |  |
| PG-30700 | Sprinkler fixing and Testing Works |  |  | 51% → 76% | 305.46d → 306.67d |
| 1.6 | **Testing And Commissioning Works** |  | 2026-10-31 → 2026-11-02 (+2d) |  |  |
| 1.6.1.1.1 | **Units** |  | 2026-02-21 → 2026-02-20 (-1d) |  |  |
| PG-30738 | T&C - Floor 7 |  | 2025-06-06 → 2025-06-07 A (+1d) | 99% → 100% | 407.21d → none |
| PG-30739 | T&C - Floor 8 |  |  | 57% → 78% | 393.36d → 394.56d |
| PG-30740 | T&C - Floor 9 |  |  | 15% → 36% | 382.15d → 383.35d |
| PG-30741 | T&C - Floor 10 | 2025-06-16 → 2025-06-17 (+1d) | 2025-07-21 → 2025-07-22 (+1d) |  | 368.66d → 368.83d |
| PG-30742 | T&C - Floor 11 | 2025-07-02 → 2025-07-03 (+1d) | 2025-08-07 → 2025-08-08 (+1d) |  | 353.91d → 354.09d |
| PG-30745 | T&C - Floor 14 | 2025-08-08 → 2025-08-06 (-2d) | 2025-09-11 → 2025-09-10 (-1d) |  | 324.71d → 327.54d |
| PG-30746 | T&C - Floor 15 | 2025-08-18 → 2025-08-19 (+1d) | 2025-09-20 → 2025-09-22 (+2d) |  | 317.4d → 317.58d |
| PG-30747 | T&C - Floor 16 | 2025-09-03 → 2025-08-30 (-4d) | 2025-10-07 → 2025-10-04 (-3d) |  | 303.8d → 307.74d |

| ID | Task | Start | Finish | Complete | Total float |
| --- | --- | --- | --- | --- | --- |
| PG-30748 | T&C - Floor 17 | 2025-09-16 → 2025-09-13 (-3d) | 2025-10-20 → 2025-10-18 (-2d) |  | 292.8d → 295.28d |
| PG-30749 | T&C - Floor 18 | 2025-09-29 → 2025-09-26 (-3d) | 2025-11-03 → 2025-10-31 (-3d) |  | 281.8d → 284.28d |
| PG-30750 | T&C - Floor 19 | 2025-10-24 → 2025-10-22 (-2d) | 2025-11-27 → 2025-11-26 (-1d) |  | 260.8d → 263.28d |
| PG-30751 | T&C - Floor 20 | 2025-11-15 → 2025-11-13 (-2d) | 2025-12-18 → 2025-12-17 (-1d) |  | 241.63d → 244.12d |
| PG-30752 | T&C - Floor 21 | 2025-12-08 → 2025-12-05 (-3d) | 2026-01-09 → 2026-01-08 (-1d) |  | 222.63d → 225.12d |
| PG-30753 | T&C - Floor 22 | 2025-12-30 → 2025-12-27 (-3d) | 2026-02-03 → 2026-02-02 (-1d) |  | 202.63d → 205.12d |
| PG-30754 | T&C - Floor 23 | 2026-01-19 → 2026-01-16 (-3d) | 2026-02-21 → 2026-02-20 (-1d) |  | 186.63d → 189.12d |
| 1.6.1.1.2 | **Common Areas** | 2025-10-07 → 2025-10-06 (-1d) |  |  |  |
| PG-30755 | T&C - Internal Electrical Works | 2025-10-07 → 2025-10-06 (-1d) | 2025-10-22 → 2025-10-20 (-2d) |  | 262.3d → 264.78d |
| PG-30756 | T&C - Internal FPS Works | 2025-10-07 → 2025-10-06 (-1d) | 2025-10-22 → 2025-10-21 (-1d) |  | 261.96d → 264.45d |
| PG-30757 | T&C - Data & Communication Works | 2025-10-13 → 2025-10-11 (-2d) | 2025-10-28 → 2025-10-27 (-1d) |  | 256.96d → 259.45d |
| PG-30761 | T&C - Lightining Arrestor works | 2025-12-17 → 2025-12-15 (-2d) | 2025-12-24 → 2025-12-23 (-1d) |  | 250.8d → 253.28d |
| PG-30760 | T&C - Electrical Panel Works | 2026-02-24 → 2026-02-26 (+2d) | 2026-03-20 → 2026-03-21 (+1d) |  | 134.9d → 135.08d |
| 1.6.1.2 | **Tower 2** |  | 2026-05-11 → 2026-05-12 (+1d) |  |  |
| 1.6.1.2.1 | **Units** |  | 2026-04-02 → 2026-04-03 (+1d) |  |  |
| PG-30770 | T&C - Floor 8 |  |  | 54% → 75% | 393.48d → 394.68d |
| PG-30771 | T&C - Floor 9 |  |  | 21% → 42% | 383.87d → 385.07d |
| PG-30772 | T&C - Floor 10 | 2025-06-18 → 2025-06-19 (+1d) | 2025-07-23 → 2025-07-24 (+1d) |  | 366.83d → 367d |
| PG-30774 | T&C - Floor 12 | 2025-07-11 → 2025-07-14 (+3d) | 2025-08-14 → 2025-08-18 (+4d) |  | 347.56d → 347.05d |
| PG-30775 | T&C - Floor 13 | 2025-07-25 → 2025-07-26 (+1d) | 2025-08-29 → 2025-08-30 (+1d) |  | 336.15d → 336.33d |
| PG-30776 | T&C - Floor 14 |  | 2025-09-13 → 2025-09-12 (-1d) |  | 323.3d → 324.89d |
| PG-30777 | T&C - Floor 15 | 2025-08-22 → 2025-08-23 (+1d) |  |  | 313.33d → 313.89d |
| PG-30778 | T&C - Floor 16 | 2025-09-02 → 2025-09-03 (+1d) | 2025-10-07 → 2025-10-08 (+1d) |  | 303.8d → 303.83d |
| PG-30779 | T&C - Floor 17 | 2025-09-15 → 2025-09-16 (+1d) | 2025-10-20 → 2025-10-21 (+1d) |  | 292.8d → 292.83d |
| PG-30780 | T&C - Floor 18 | 2025-09-29 → 2025-09-30 (+1d) | 2025-11-05 → 2025-11-06 (+1d) |  | 280.96d → 281d |
| PG-30781 | T&C - Floor 19 | 2025-10-13 → 2025-10-14 (+1d) | 2025-11-18 → 2025-11-19 (+1d) |  | 269.96d → 270d |
| PG-30782 | T&C - Floor 20 | 2025-10-27 → 2025-10-28 (+1d) | 2025-12-02 → 2025-12-03 (+1d) |  | 257.96d → 258d |
| PG-30783 | T&C - Floor 21 | 2025-11-08 → 2025-11-10 (+2d) | 2025-12-13 → 2025-12-15 (+2d) |  | 248.3d → 248.33d |
| PG-30784 | T&C - Floor 22 | 2025-12-01 → 2025-12-02 (+1d) | 2026-01-03 → 2026-01-05 (+2d) |  | 228.46d → 228.5d |
| PG-30785 | T&C - Floor 23 | 2025-12-22 → 2025-12-23 (+1d) | 2026-01-24 → 2026-01-28 (+4d) |  | 210.46d → 210.5d |
| PG-30786 | T&C - Floor 24 | 2026-01-10 → 2026-01-12 (+2d) | 2026-02-17 → 2026-02-18 (+1d) |  | 191.3d → 191.33d |
| PG-30787 | T&C - Floor 25 | 2026-02-05 → 2026-02-06 (+1d) | 2026-03-11 → 2026-03-12 (+1d) |  | 171.8d → 171.83d |
| PG-30788 | T&C - Floor 26 | 2026-02-25 → 2026-02-26 (+1d) | 2026-04-02 → 2026-04-03 (+1d) |  | 124.3d → 124.33d |
| 1.6.1.2.2 | **Common Areas** | 2025-11-14 → 2025-11-15 (+1d) | 2026-05-11 → 2026-05-12 (+1d) |  |  |
| PG-30790 | T&C - Internal FPS Works | 2025-11-14 → 2025-11-15 (+1d) | 2025-12-02 → 2025-12-03 (+1d) |  | 227.46d → 227.5d |
| PG-30789 | T&C - Internal Electrical Works | 2025-11-14 → 2025-11-15 (+1d) | 2025-12-02 → 2025-12-03 (+1d) |  | 227.63d → 227.67d |
| PG-30791 | T&C - Data & Communication Works | 2025-11-20 → 2025-11-21 (+1d) | 2025-12-08 → 2025-12-09 (+1d) |  | 222.13d → 222.17d |
| PG-30792 | T&C - Internal PHE Works including OHT | 2025-12-24 → 2025-12-26 (+2d) | 2026-01-17 → 2026-01-19 (+2d) |  | 186.3d → 186.33d |
| PG-30795 | T&C - Lightining Arrestor works | 2026-01-24 → 2026-01-27 (+3d) | 2026-02-02 → 2026-02-04 (+2d) |  | 220.46d → 220.5d |
| PG-30794 | T&C - Electrical Panel Works | 2026-02-27 → 2026-02-28 (+1d) |  |  | 162.33d → 162.89d |
| PG-30793 | T&C - Lift Works | 2026-04-18 → 2026-04-20 (+2d) | 2026-05-11 → 2026-05-12 (+1d) |  | 120.96d → 121d |
| 1.6.1.3.1 | **Units** |  | 2026-07-16 → 2026-07-17 (+1d) |  |  |
| PG-30799 | T&C - Floor 3 |  |  | 73% → 93% | 398.51d → 399.71d |
| PG-30800 | T&C - Floor 4 |  |  | 48% → 68% | 390.59d → 391.79d |
| PG-30803 | T&C - Floor 7 | 2025-07-08 → 2025-07-10 (+2d) | 2025-08-11 → 2025-08-13 (+2d) |  | 351.08d → 350.13d |
| PG-30801 | T&C - Floor 5 |  | 2025-09-15 → 2025-09-16 (+1d) |  | 321.79d → 322.73d |
| PG-30807 | T&C - Floor 11 | 2025-09-05 → 2025-09-06 (+1d) | 2025-10-11 → 2025-10-13 (+2d) |  |  |
| PG-30808 | T&C - Floor 12 | 2025-09-22 → 2025-09-23 (+1d) | 2025-10-27 → 2025-10-28 (+1d) |  |  |
| PG-30809 | T&C - Floor 13 | 2025-10-06 → 2025-10-07 (+1d) | 2025-11-10 → 2025-11-11 (+1d) |  |  |
| PG-30810 | T&C - Floor 14 | 2025-10-16 → 2025-10-17 (+1d) | 2025-11-20 → 2025-11-21 (+1d) |  |  |
| PG-30812 | T&C - Floor 16 | 2025-11-12 → 2025-11-13 (+1d) | 2025-12-16 → 2025-12-17 (+1d) |  |  |
| PG-30813 | T&C - Floor 17 | 2025-11-24 → 2025-11-25 (+1d) | 2025-12-29 → 2025-12-30 (+1d) |  |  |
| PG-30814 | T&C - Floor 18 | 2025-12-06 → 2025-12-08 (+2d) | 2026-01-10 → 2026-01-12 (+2d) |  |  |
| PG-30815 | T&C - Floor 19 | 2025-12-19 → 2025-12-20 (+1d) | 2026-01-23 → 2026-01-24 (+1d) |  |  |
| PG-30816 | T&C - Floor 20 | 2026-01-02 → 2026-01-03 (+1d) | 2026-02-06 → 2026-02-09 (+3d) |  |  |
| PG-30811 | T&C - Floor 15 | 2026-01-13 → 2026-01-14 (+1d) |  |  | 190.79d → 191.58d |
| PG-30817 | T&C - Floor 21 | 2026-01-15 → 2026-01-16 (+1d) | 2026-02-19 → 2026-02-20 (+1d) |  |  |
| PG-30818 | T&C - Floor 22 | 2026-01-29 → 2026-01-30 (+1d) | 2026-03-04 → 2026-03-05 (+1d) |  |  |
| PG-30819 | T&C - Floor 23 | 2026-02-10 → 2026-02-11 (+1d) | 2026-03-17 → 2026-03-18 (+1d) |  |  |
| PG-30820 | T&C - Floor 24 | 2026-02-24 → 2026-02-25 (+1d) | 2026-03-30 → 2026-03-31 (+1d) |  |  |
| PG-30821 | T&C - Floor 25 | 2026-03-17 → 2026-03-18 (+1d) | 2026-04-20 → 2026-04-22 (+2d) |  |  |
| PG-30822 | T&C - Floor 26 | 2026-04-07 → 2026-04-08 (+1d) | 2026-05-14 → 2026-05-15 (+1d) |  |  |
| PG-30823 | T&C - Floor 27 | 2026-04-29 → 2026-04-30 (+1d) | 2026-06-04 → 2026-06-05 (+1d) |  |  |
| PG-30824 | T&C - Floor 28 | 2026-05-21 → 2026-05-22 (+1d) | 2026-06-25 → 2026-06-26 (+1d) |  |  |
| PG-30825 | T&C - Floor 29 | 2026-06-11 → 2026-06-12 (+1d) | 2026-07-16 → 2026-07-17 (+1d) |  |  |
| 1.6.1.3.2 | **Common Areas** | 2026-02-28 → 2026-03-02 (+2d) |  |  |  |
| PG-30826 | T&C - Internal Electrical Works | 2026-02-28 → 2026-03-02 (+2d) | 2026-03-17 → 2026-03-18 (+1d) |  |  |
| PG-30827 | T&C - Internal FPS Works | 2026-02-28 → 2026-03-02 (+2d) | 2026-03-18 → 2026-03-19 (+1d) |  |  |
| PG-30828 | T&C - Data & Communication Works | 2026-03-06 → 2026-03-07 (+1d) | 2026-03-23 → 2026-03-25 (+2d) |  |  |
| PG-30829 | T&C - Internal PHE Works including OHT | 2026-04-08 → 2026-04-09 (+1d) | 2026-05-02 → 2026-05-04 (+2d) |  |  |

| ID | Task | Start | Finish | Complete | Total float |
| --- | --- | --- | --- | --- | --- |
| PG-30832 | T&C - Lightining Arrestor works | 2026-05-08 → 2026-05-09 (+1d) | 2026-05-16 → 2026-05-18 (+2d) |  |  |
| PG-30831 | T&C - Electrical Panel Works | 2026-07-21 → 2026-07-22 (+1d) |  |  | 49.12d → 49.92d |
| PG-30830 | T&C - Lift Works | 2026-07-30 → 2026-07-31 (+1d) | 2026-08-11 → 2026-08-12 (+1d) |  |  |
| 1.6.9 | **Project InfraStructure Works ( Services & MEP )** |  | 2026-10-31 → 2026-11-02 (+2d) |  |  |
| 1.6.9.1 | **Transformer Works** | 2026-09-26 → 2026-09-29 (+3d) | 2026-10-31 → 2026-11-02 (+2d) |  |  |
| PG-31514 | T&C - Transformer 01 ( Building 01 & 02 ) | 2026-09-26 → 2026-09-29 (+3d) | 2026-10-31 → 2026-11-02 (+2d) |  |  |
| 1.7 | **Snagging De Snagging** |  | 2026-12-05 → 2026-12-07 (+2d) |  |  |
| 1.7.1 | **Building 1** |  | 2026-11-05 → 2026-11-06 (+1d) |  |  |
| 1.7.1.1 | **Tower 1** |  | 2026-10-08 → 2026-10-09 (+1d) |  |  |
| 1.7.1.1.1 | **Units** |  | 2026-03-30 → 2026-03-28 (-2d) |  |  |
| PG-31539 | Floor 5 |  | 2025-06-11 → 2025-06-13 A (+2d) | 83% → 100% | 432.21d → none |
| PG-31540 | Floor 6 |  |  | 39% → 59% | 418.98d → 420.19d |
| PG-31541 | Floor 7 | 2025-06-06 → 2025-06-07 A (+1d) |  | 0% → 19% | 407.21d → 408.4d |
| PG-31544 | Floor 10 | 2025-07-21 → 2025-07-22 (+1d) | 2025-08-26 → 2025-08-27 (+1d) |  | 368.66d → 368.83d |
| PG-31545 | Floor 11 | 2025-08-07 → 2025-08-08 (+1d) | 2025-09-12 → 2025-09-13 (+1d) |  | 353.91d → 354.09d |
| PG-31548 | Floor 14 | 2025-09-11 → 2025-09-10 (-1d) | 2025-10-17 → 2025-10-15 (-2d) |  | 324.71d → 327.54d |
| PG-31549 | Floor 15 | 2025-09-20 → 2025-09-22 (+2d) | 2025-10-25 → 2025-10-27 (+2d) |  | 317.4d → 317.58d |
| PG-31550 | Floor 16 | 2025-10-07 → 2025-10-04 (-3d) | 2025-11-12 → 2025-11-08 (-4d) |  | 303.8d → 307.74d |
| PG-31551 | Floor 17 | 2025-10-20 → 2025-10-18 (-2d) | 2025-11-25 → 2025-11-24 (-1d) |  | 292.8d → 295.28d |
| PG-31552 | Floor 18 | 2025-11-03 → 2025-10-31 (-3d) | 2025-12-08 → 2025-12-06 (-2d) |  | 281.8d → 284.28d |
| PG-31553 | Floor 19 | 2025-11-27 → 2025-11-26 (-1d) | 2026-01-01 → 2025-12-31 (-1d) |  | 260.8d → 263.28d |
| PG-31554 | Floor 20 | 2025-12-18 → 2025-12-17 (-1d) | 2026-01-23 → 2026-01-22 (-1d) |  | 241.63d → 244.12d |
| PG-31555 | Floor 21 | 2026-01-09 → 2026-01-08 (-1d) | 2026-02-16 → 2026-02-14 (-2d) |  | 222.63d → 225.12d |
| PG-31556 | Floor 22 | 2026-02-03 → 2026-02-02 (-1d) | 2026-03-11 → 2026-03-10 (-1d) |  | 202.63d → 205.12d |
| PG-31557 | Floor 23 | 2026-02-21 → 2026-02-20 (-1d) | 2026-03-30 → 2026-03-28 (-2d) |  | 186.63d → 189.12d |
| 1.7.1.1.2 | **Common Areas** | 2025-10-22 → 2025-10-20 (-2d) | 2026-10-08 → 2026-10-09 (+1d) |  |  |
| PG-31559 | Internal Electrical Works | 2025-10-22 → 2025-10-20 (-2d) | 2025-12-30 → 2025-12-29 (-1d) |  | 262.3d → 264.78d |
| PG-31560 | Internal FPS Works | 2025-10-22 → 2025-10-21 (-1d) | 2025-12-31 → 2025-12-29 (-2d) |  | 261.96d → 264.45d |
| PG-31561 | Data & Communication Works | 2025-10-28 → 2025-10-27 (-1d) | 2026-01-06 → 2026-01-03 (-3d) |  | 256.96d → 259.45d |
| PG-31565 | Lightining Arrestor works | 2025-12-24 → 2025-12-23 (-1d) | 2026-01-13 → 2026-01-12 (-1d) |  | 250.8d → 253.28d |
| PG-31564 | Electrical Panel Works | 2026-03-20 → 2026-03-21 (+1d) | 2026-05-29 → 2026-05-30 (+1d) |  | 134.9d → 135.08d |
| PG-31558 | Common Area Civil Works | 2026-07-27 → 2026-07-28 (+1d) | 2026-10-08 → 2026-10-09 (+1d) |  | 23.98d → 24.17d |
| 1.7.1.2 | **Tower 2** |  | 2026-10-17 → 2026-10-19 (+2d) |  |  |
| 1.7.1.2.1 | **Units** |  | 2026-05-07 → 2026-05-08 (+1d) |  |  |
| PG-31571 | Floor 5 |  | 2025-06-11 → 2025-06-12 A (+1d) | 86% → 100% | 432.8d → none |
| PG-31572 | Floor 6 |  |  | 30% → 50% | 416.27d → 417.48d |
| PG-31573 | Floor 7 |  | 2025-07-09 → 2025-07-11 (+2d) | 3% → 19% | 408.27d → 408.25d |
| PG-31576 | Floor 10 | 2025-07-23 → 2025-07-24 (+1d) | 2025-08-28 → 2025-08-29 (+1d) |  | 366.83d → 367d |
| PG-31578 | Floor 12 | 2025-08-14 → 2025-08-18 (+4d) | 2025-09-19 → 2025-09-22 (+3d) |  | 347.56d → 347.05d |
| PG-31579 | Floor 13 | 2025-08-29 → 2025-08-30 (+1d) | 2025-10-04 → 2025-10-06 (+2d) |  | 336.15d → 336.33d |
| PG-31580 | Floor 14 | 2025-09-13 → 2025-09-12 (-1d) |  |  | 323.3d → 324.89d |
| PG-31581 | Floor 15 |  | 2025-10-30 → 2025-10-31 (+1d) |  | 313.33d → 313.89d |
| PG-31582 | Floor 16 | 2025-10-07 → 2025-10-08 (+1d) | 2025-11-12 → 2025-11-13 (+1d) |  | 303.8d → 303.83d |
| PG-31583 | Floor 17 | 2025-10-20 → 2025-10-21 (+1d) | 2025-11-25 → 2025-11-26 (+1d) |  | 292.8d → 292.83d |
| PG-31584 | Floor 18 | 2025-11-05 → 2025-11-06 (+1d) | 2025-12-09 → 2025-12-10 (+1d) |  | 280.96d → 281d |
| PG-31585 | Floor 19 | 2025-11-18 → 2025-11-19 (+1d) | 2025-12-22 → 2025-12-23 (+1d) |  | 269.96d → 270d |
| PG-31586 | Floor 20 | 2025-12-02 → 2025-12-03 (+1d) | 2026-01-05 → 2026-01-06 (+1d) |  | 257.96d → 258d |
| PG-31587 | Floor 21 | 2025-12-13 → 2025-12-15 (+2d) | 2026-01-15 → 2026-01-17 (+2d) |  | 248.3d → 248.33d |
| PG-31588 | Floor 22 | 2026-01-03 → 2026-01-05 (+2d) | 2026-02-09 → 2026-02-10 (+1d) |  | 228.46d → 228.5d |
| PG-31589 | Floor 23 | 2026-01-24 → 2026-01-28 (+4d) | 2026-03-02 → 2026-03-03 (+1d) |  | 210.46d → 210.5d |
| PG-31590 | Floor 24 | 2026-02-17 → 2026-02-18 (+1d) | 2026-03-24 → 2026-03-26 (+2d) |  | 191.3d → 191.33d |
| PG-31591 | Floor 25 | 2026-03-11 → 2026-03-12 (+1d) | 2026-04-16 → 2026-04-17 (+1d) |  | 171.8d → 171.83d |
| PG-31592 | Floor 26 | 2026-04-02 → 2026-04-03 (+1d) | 2026-05-07 → 2026-05-08 (+1d) |  | 153.96d → 154d |
| 1.7.1.2.2 | **Comman Areas** | 2025-12-02 → 2025-12-03 (+1d) | 2026-10-17 → 2026-10-19 (+2d) |  |  |
| PG-31595 | Internal FPS Works | 2025-12-02 → 2025-12-03 (+1d) | 2026-02-10 → 2026-02-11 (+1d) |  | 227.46d → 227.5d |
| PG-31596 | Data & Communication Works | 2025-12-08 → 2025-12-09 (+1d) | 2026-02-17 → 2026-02-18 (+1d) |  | 222.13d → 222.17d |
| PG-31597 | Internal PHE Works including OHT | 2026-01-17 → 2026-01-19 (+2d) | 2026-03-30 → 2026-04-01 (+2d) |  | 186.3d → 186.33d |
| PG-31600 | Lightining Arrestor works | 2026-02-02 → 2026-02-04 (+2d) | 2026-02-18 → 2026-02-19 (+1d) |  | 220.46d → 220.5d |
| PG-31599 | Electrical Panel Works |  | 2026-04-27 → 2026-04-28 (+1d) |  | 162.33d → 162.89d |
| PG-31594 | Internal Electrical Works | 2026-04-02 → 2026-04-03 (+1d) | 2026-06-10 → 2026-06-12 (+2d) |  | 124.3d → 124.33d |
| PG-31598 | Lift Works | 2026-05-11 → 2026-05-12 (+1d) | 2026-06-15 → 2026-06-16 (+1d) |  | 120.96d → 121d |
| PG-31593 | Common Area Civil Works | 2026-08-07 → 2026-08-08 (+1d) | 2026-10-17 → 2026-10-19 (+2d) |  | 15.46d → 15.5d |
| 1.7.1.3 | **Tower 3** |  | 2026-11-05 → 2026-11-06 (+1d) |  |  |
| 1.7.1.3.1 | **Units** |  | 2026-08-21 → 2026-08-22 (+1d) |  |  |
| PG-31602 | Floor 1 |  |  | 71% → 90% | 428.22d → 429.43d |
| PG-31603 | Floor 2 |  |  | 33% → 52% | 415.94d → 417.15d |
| PG-31608 | Floor 7 | 2025-08-11 → 2025-08-13 (+2d) | 2025-09-16 → 2025-09-18 (+2d) |  | 351.08d → 350.13d |
| PG-31606 | Floor 5 | 2025-09-15 → 2025-09-16 (+1d) |  |  | 321.79d → 322.73d |
| PG-31612 | Floor 11 | 2025-10-11 → 2025-10-13 (+2d) | 2025-11-15 → 2025-11-17 (+2d) |  |  |
| PG-31613 | Floor 12 | 2025-10-27 → 2025-10-28 (+1d) | 2025-12-02 → 2025-12-03 (+1d) |  |  |

| ID | Task | Start | Finish | Total float |
| --- | --- | --- | --- | --- |
| PG-31614 | Floor 13 | 2025-11-10 → 2025-11-11 (+1d) | 2025-12-13 → 2025-12-15 (+2d) |  |
| PG-31615 | Floor 14 | 2025-11-20 → 2025-11-21 (+1d) | 2025-12-24 → 2025-12-25 (+1d) |  |
| PG-31617 | Floor 16 | 2025-12-16 → 2025-12-17 (+1d) | 2026-01-19 → 2026-01-21 (+2d) |  |
| PG-31618 | Floor 17 | 2025-12-29 → 2025-12-30 (+1d) | 2026-02-02 → 2026-02-04 (+2d) |  |
| PG-31619 | Floor 18 | 2026-01-10 → 2026-01-12 (+2d) | 2026-02-14 → 2026-02-17 (+3d) |  |
| PG-31620 | Floor 19 | 2026-01-23 → 2026-01-24 (+1d) | 2026-02-27 → 2026-03-02 (+3d) |  |
| PG-31621 | Floor 20 | 2026-02-06 → 2026-02-09 (+3d) | 2026-03-13 → 2026-03-14 (+1d) |  |
| PG-31616 | Floor 15 | 2026-02-18 → 2026-02-19 (+1d) |  | 190.79d → 191.58d |
| PG-31622 | Floor 21 | 2026-02-19 → 2026-02-20 (+1d) | 2026-03-26 → 2026-03-27 (+1d) |  |
| PG-31623 | Floor 22 | 2026-03-04 → 2026-03-05 (+1d) | 2026-04-08 → 2026-04-09 (+1d) |  |
| PG-31624 | Floor 23 | 2026-03-17 → 2026-03-18 (+1d) | 2026-04-21 → 2026-04-22 (+1d) |  |
| PG-31625 | Floor 24 | 2026-03-30 → 2026-03-31 (+1d) | 2026-05-04 → 2026-05-05 (+1d) |  |
| PG-31626 | Floor 25 | 2026-04-20 → 2026-04-22 (+2d) | 2026-05-26 → 2026-05-27 (+1d) |  |
| PG-31627 | Floor 26 | 2026-05-14 → 2026-05-15 (+1d) | 2026-06-17 → 2026-06-19 (+2d) |  |
| PG-31628 | Floor 27 | 2026-06-04 → 2026-06-05 (+1d) | 2026-07-08 → 2026-07-09 (+1d) |  |
| PG-31629 | Floor 28 | 2026-06-25 → 2026-06-26 (+1d) | 2026-07-29 → 2026-07-30 (+1d) |  |
| PG-31630 | Floor 29 | 2026-07-16 → 2026-07-17 (+1d) | 2026-08-21 → 2026-08-22 (+1d) |  |
| 1.7.1.3.2 | **Common Areas** | 2026-03-17 → 2026-03-18 (+1d) | 2026-11-05 → 2026-11-06 (+1d) |  |
| PG-31632 | Internal Electrical Works | 2026-03-17 → 2026-03-18 (+1d) | 2026-04-04 → 2026-04-06 (+2d) |  |
| PG-31633 | Internal FPS Works | 2026-03-18 → 2026-03-19 (+1d) | 2026-04-04 → 2026-04-06 (+2d) |  |
| PG-31634 | Data & Communication Works | 2026-03-23 → 2026-03-25 (+2d) | 2026-04-09 → 2026-04-10 (+1d) |  |
| PG-31635 | Internal PHE Works including OHT | 2026-05-02 → 2026-05-04 (+2d) | 2026-05-25 → 2026-05-26 (+1d) |  |
| PG-31638 | Lightining Arrestor works | 2026-05-16 → 2026-05-18 (+2d) | 2026-05-25 → 2026-05-26 (+1d) |  |
| PG-31636 | Lift Works | 2026-08-11 → 2026-08-12 (+1d) | 2026-09-04 → 2026-09-05 (+1d) |  |
| PG-31631 | Common Area Civil Works | 2026-10-19 → 2026-10-20 (+1d) | 2026-11-05 → 2026-11-06 (+1d) |  |
| 1.7.9 | **Project InfraStructure Works ( Services & MEP )** |  | 2026-12-05 → 2026-12-07 (+2d) |  |
| 1.7.9.1 | **Transformer Works** | 2026-10-31 → 2026-11-02 (+2d) | 2026-12-05 → 2026-12-07 (+2d) |  |
| PG-32336 | Transformer 01 ( Building 01 & 02 ) | 2026-10-31 → 2026-11-02 (+2d) | 2026-12-05 → 2026-12-07 (+2d) |  |
| 1.8 | **Handing Over** |  | 2027-02-12 → 2027-02-15 (+3d) |  |
| PG-32378 | Building 1 | 2026-11-05 → 2026-11-06 (+1d) | 2026-11-16 → 2026-11-18 (+2d) |  |
| PG-32386 | Project InfraStructure Works ( Services & MEP ) | 2027-01-27 → 2027-01-28 (+1d) | 2027-02-12 → 2027-02-15 (+3d) |  |
| 1.10 | **Post Construction Statutory Approvals** |  | 2027-03-03 → 2027-03-04 (+1d) |  |
| PG-32394 | CEIG Approval - Lift | 2026-11-16 → 2026-11-18 (+2d) | 2026-12-21 → 2026-12-22 (+1d) |  |
| PG-32395 | Pollution Control board CFO | 2026-12-21 → 2026-12-22 (+1d) | 2027-01-27 → 2027-01-28 (+1d) |  |
| PG-32397 | Occupation Certificate | 2026-12-21 → 2026-12-22 (+1d) | 2027-03-03 → 2027-03-04 (+1d) |  |
| 2 | **Milestone** |  | 2027-03-03 → 2027-03-04 (+1d) |  |
| MS-1001 | Tower 1 - Structure Complete | 2025-08-19 → 2025-08-18 (-1d) | 2025-08-19 → 2025-08-18 (-1d) | 479.46d → 481.95d |
| MS-0105 | Electrical Panels Delivered | 2025-08-22 → 2025-08-23 (+1d) | 2025-08-22 → 2025-08-23 (+1d) | 476.4d → 476.58d |
| MS-2001 | Tower 2 - Structure Complete | 2025-09-26 → 2025-09-29 (+3d) | 2025-09-26 → 2025-09-29 (+3d) | 446.13d → 446.17d |
| MS-1002 | Tower 1 - MEP 1st Fix Complete | 2025-11-24 → 2025-11-22 (-2d) | 2025-11-24 → 2025-11-22 (-2d) | 398.46d → 400.95d |
| MS-1003 | Tower 1 - MEP 2nd Fix Complete | 2025-12-29 → 2025-12-27 (-2d) | 2025-12-29 → 2025-12-27 (-2d) | 368.46d → 370.95d |
| MS-2002 | Tower 2 - MEP 1st Fix Complete | 2025-12-29 → 2025-12-30 (+1d) | 2025-12-29 → 2025-12-30 (+1d) | 368.46d → 368.5d |
| MS-3001 | Tower 3 - Structure Complete | 2026-01-12 → 2026-01-13 (+1d) | 2026-01-12 → 2026-01-13 (+1d) |  |
| MS-1005 | Tower 1 - MEP Final Fix Complete | 2026-01-19 → 2026-01-16 (-3d) | 2026-01-19 → 2026-01-16 (-3d) | 350.96d → 353.45d |
| MS-2003 | Tower 2 - MEP 2nd Fix Complete | 2026-02-03 → 2026-02-04 (+1d) | 2026-02-03 → 2026-02-04 (+1d) | 338.63d → 338.67d |
| MS-2005 | Tower 2 - MEP Final Fix Complete | 2026-02-25 → 2026-02-26 (+1d) | 2026-02-25 → 2026-02-26 (+1d) | 319.3d → 319.33d |
| MS-2004 | Tower 2 - Internal Finishes Complete | 2026-03-21 → 2026-03-23 (+2d) | 2026-03-21 → 2026-03-23 (+2d) | 298.3d → 298.33d |
| MS-3002 | Tower 3 - MEP 1st Fix Complete | 2026-04-15 → 2026-04-16 (+1d) | 2026-04-15 → 2026-04-16 (+1d) |  |
| MS-2006 | Tower 2 - Lifts Commissioned | 2026-04-18 → 2026-04-20 (+2d) | 2026-04-18 → 2026-04-20 (+2d) | 274.8d → 274.83d |
| MS-2007 | Tower 2 - T&C Complete | 2026-05-11 → 2026-05-12 (+1d) | 2026-05-11 → 2026-05-12 (+1d) | 255.3d → 255.33d |
| MS-3003 | Tower 3 - MEP 2nd Fix Complete | 2026-05-20 → 2026-05-21 (+1d) | 2026-05-20 → 2026-05-21 (+1d) |  |
| MS-3005 | Tower 3 - MEP Final Fix Complete | 2026-06-11 → 2026-06-12 (+1d) | 2026-06-11 → 2026-06-12 (+1d) |  |
| MS-0108 | Tiles & Marble Delivered | 2026-07-03 → 2026-07-04 (+1d) | 2026-07-03 → 2026-07-04 (+1d) | 209.81d → 210d |
| MS-3004 | Tower 3 - Internal Finishes Complete | 2026-07-04 → 2026-07-06 (+2d) | 2026-07-04 → 2026-07-06 (+2d) |  |
| MS-1004 | Tower 1 - Internal Finishes Complete | 2026-07-27 → 2026-07-28 (+1d) | 2026-07-27 → 2026-07-28 (+1d) | 189.48d → 189.67d |
| MS-0103 | Transformer Delivered to Site | 2026-07-29 → 2026-07-30 (+1d) | 2026-07-29 → 2026-07-30 (+1d) |  |
| MS-3006 | Tower 3 - Lifts Commissioned | 2026-07-30 → 2026-07-31 (+1d) | 2026-07-30 → 2026-07-31 (+1d) |  |
| MS-9007 | Landscape Complete | 2026-08-10 → 2026-08-12 (+2d) | 2026-08-10 → 2026-08-12 (+2d) |  |
| MS-9002 | Transformer Charged | 2026-10-31 → 2026-11-02 (+2d) | 2026-10-31 → 2026-11-02 (+2d) |  |
| MS-9990 | Snagging Complete | 2026-12-05 → 2026-12-07 (+2d) | 2026-12-05 → 2026-12-07 (+2d) |  |
| MS-9999 | Project Finish / Handover | 2027-02-12 → 2027-02-15 (+3d) | 2027-02-12 → 2027-02-15 (+3d) |  |
| MS-9991 | Statutory Approvals Obtained | 2027-03-03 → 2027-03-04 (+1d) | 2027-03-03 → 2027-03-04 (+1d) |  |
